# CCAD CPM Rev.3 dt 24-Oct-2011 (Subcontractor Copy)

Schedule from Primavera P6, 2010-03-07 to 2013-06-22, data date 2011-09-30, costs in EGP, A marks actual dates.
Must finish by 2013-07-04

## Calendars

- R00-C01, 6 days with holidays: Mon-Thu 08:00-12:00, 13:00-17:00; Fri off; Sat-Sun 08:00-12:00, 13:00-17:00. Exceptions (off unless hours are given): 2010-07-08, 2010-09-11, 2010-11-15 to 2010-11-17, 2010-12-07, 2011-01-01, 2011-02-15 08:00-16:00, 2011-06-28, 2011-08-30 to 2011-08-31, 2011-11-06 to 2011-11-08, 2011-11-26, 2011-12-03, 2012-01-01, 2012-02-04, 2012-06-16, 2012-08-19 to 2012-08-20, 2012-10-27 to 2012-10-28, 2012-11-15, 2012-12-03, 2013-01-01, 2013-01-24, 2013-06-06.
- R00-C02, Calendar day: Mon-Sun 08:00-13:00, 14:00-17:00.

## Resources

| Resource | Group | Unit | Rate |
| --- | --- | --- | --- |
| Labor General | labor |  |  |
| Cost | material | AED | 1 |
| FACADE CURTAIN WALL 5 | labor |  |  |
| FACADE CURTAIN WALL 2 | labor |  |  |
| TESTING & COMMISSIONING | labor |  |  |
| MECHANICAL | labor |  |  |
| ELECTRICAL | labor |  |  |
| ASSORTED CEILING FINISH | labor |  |  |
| CEILING GYPSUM | labor |  |  |
| ASSORTED CEILING FINISH | material | m2 |  |
| CEILING GYPSUM | material | m2 |  |
| CEILING GRID FOR GYPSUM | labor |  |  |
| CEILING GRID FOR GYPSUM | material | m2 |  |
| PARTITIONS | labor |  |  |
| PARTITIONS - Metal Studs | material | m |  |
| PARTITIONS | material | m |  |
| ASSORTED DOORS | labor |  |  |
| ASSORTED DOORS | material | no |  |
| IRONMONGERY | labor |  |  |
| IRONMONGERY | material | no |  |
| WALL PAINT | labor |  |  |
| WALL PAINT | material | m2 |  |
| ASSORTED FLOOR FINISH | labor |  |  |
| ASSORTED FLOOR FINISH | material | m2 |  |
| RUBBER FLOOR | labor |  |  |
| RUBBER FLOOR | material | m2 |  |
| FF&E | labor |  |  |
| ASSORTED WALL FINISH | labor |  |  |
| ASSORTED WALL FINISH | material | m2 |  |
| SECONDARY STEEL | labor |  |  |
| PLUMBING | labor |  |  |
| SIGNAGES | labor |  |  |
| SIGNAGES | material | no |  |
| STONE FLOOR | material | m2 |  |
| STONE FLOOR | labor |  |  |
| THERMAL & MOISTURE | labor |  |  |
| THERMAL & MOISTURE | material | m2 |  |
| CERAMIC FLOOR TILES | labor |  |  |
| CERAMIC FLOOR TILES | material | m2 |  |
| STRUCTURAL STEEL | material | T(Fe) |  |
| WOOD WORK/CASEWORK | material | no |  |
| WOOD WORK/CASEWORK | labor |  |  |
| FF&E | material | no |  |
| CONCRETE | labor |  |  |
| CONCRETE | material | m3 |  |
| STRUCTURAL STEEL | labor |  |  |
| METAL DECKING | labor |  |  |
| METAL DECKING | material | m2 |  |
| CEMENTITIOUS FIREPROOFING | labor |  |  |
| CEMENTITIOUS FIREPROOFING | material | m2 |  |
| FACADE STONE PANEL 1 | labor |  |  |
| FACADE STONE PANEL 1 | material | m2 |  |
| FACADE TOTAL QUANTITY m2 | material | m2 |  |
| FACADE BACK PAINTED BUTT GLAZED | material | m2 |  |
| FACADE GLASS BOX | material | m2 |  |
| FACADE NATURAL STONE PANEL | labor |  |  |
| FACADE NATURAL STONE PANEL | material | m2 |  |
| BLOCKWORKS | labor |  |  |
| BLOCKWORKS | material | m2 |  |
| METAL DOORS | labor |  |  |
| METAL DOORS | material | no |  |
| FACADE CURTAIN WALL 3 | labor |  |  |
| FACADE BACK PAINTED BUTT GLAZED | labor |  |  |
| FACADE GLASS BOX | labor |  |  |
| FACADE CURTAIN WALL 3 | material | m2 |  |
| FACADE METAL PANEL 1 | labor |  |  |
| FACADE METAL PANEL 1 | material | m2 |  |
| FACADE CURTAIN WALL 4 | labor |  |  |
| FACADE CURTAIN WALL 4 | material | m2 |  |
| EXCAVATION & BACKFILLING | labor |  |  |
| EXCAVATION & BACKFILLING | material | m3 |  |
| ANTI-TERMITE | labor |  |  |
| ANTI-TERMITE | material | m2 |  |
| LANDSCAPING | labor |  |  |
| FACADE METAL PANEL 2 | labor |  |  |
| FACADE METAL PANEL 2 | material | m2 |  |
| FACADE SAND LOUVERS | labor |  |  |
| FACADE STEEL GRILL | labor |  |  |
| SERVICE LIFTS | labor |  |  |
| FACADE GRANITE VENEER | labor |  |  |
| TERRAZO FLOOR | labor |  |  |
| TERRAZO FLOOR | material | m2 |  |
| FACADE CURTAIN WALL 2 | material | m2 |  |
| FACADE STEEL GRILL | material | m2 |  |
| FACADE SAND LOUVERS | material | m2 |  |
| FACADE DIAMOND GLASS | labor |  |  |
| FACADE DIAMOND GLASS | material | m2 |  |
| FACADE GRANITE VENEER | material | m2 |  |
| CEILING PAINT | labor |  |  |
| CEILING PAINT | material | m2 |  |
| FACADE CURTAIN WALL 6 | labor |  |  |
| FACADE CURTAIN WALL 7 | labor |  |  |
| FACADE CURTAIN WALL 6 | material | m2 |  |
| FACADE CURTAIN WALL 7 | material | m2 |  |
| FACADE CASCADE WALL | labor |  |  |
| FACADE CASCADE WALL | material | m2 |  |
| FACADE ALUMINUM CURTAIL WALL | labor |  |  |
| FACADE ALUMINUM CURTAIN WALL | material | m2 |  |
| FACADE SKYLIGHT GLASS | labor |  |  |
| FACADE CURTAIN WALL 5 | material | m2 |  |
| FACADE LOUVER & GRILL | labor |  |  |
| FACADE LOUVER & GRILL | material | m2 |  |
| FACADE SKYLIGHT GLASS | material | m2 |  |
| FACADE METAL PANEL MWP1 | labor |  |  |
| FACADE METAL PANEL MWP1 | material | m2 |  |

## Schedule

| ID | WBS | Activity | Type | Duration | Start | Finish | Predecessors | Complete | Planned start | Planned finish | Total float | Free float | Constraint | Calendar | NEW ACTIVITY ID | change id | CCAD BUILDING(SET) | CCAD PHASE(SET) | CCAD FLOOR(SET) | CCAD ZONE(SET) | CCAD WORK(SET) | CCAD SECTION(SET) | CCAD SERIAL No.(SET) | CCAD BILL(SET) | CCAD TAG(SET) | CCAD REV(SET) | CCADACF (SET) | CCAD SSCF | CCAD HANDOVER(SET) |
| --- | --- | --- | --- | --- | --- | --- | --- | --- | --- | --- | --- | --- | --- | --- | --- | --- | --- | --- | --- | --- | --- | --- | --- | --- | --- | --- | --- | --- | --- |
|  | MI | **Contract Milestones** |  |  | 2010-03-07 | 2013-06-22 |  |  |  |  |  |  |  |  |  |  |  |  |  |  |  |  |  |  |  |  |  |  |  |
|  | S0 | **Early Milestones** |  |  | 2010-03-07 | 2012-01-09 |  |  |  |  |  |  |  |  |  |  |  |  |  |  |  |  |  |  |  |  |  |  |  |
| MGNMI00101M0 |  | CM-GN ; Commencement | milestone | 0d | 2010-03-07 A | 2010-03-07 A |  | 100% |  |  |  |  |  | R00-C02, Calendar day | 1526 | CGNAF00101M0 | CM | C | GN | MI | MI | 001 | 01 | B01 | MI | R00 | ACF00 | 001 |  |
| MGNMI00103M0 |  | CM-GN ; (1) Award Structural Steel Package & Release Steel For Fabrication | milestone | 0d | 2010-03-28 A | 2010-03-28 A | MGNMI00101M0 FS+22d | 100% |  |  |  |  |  | R00-C02, Calendar day | 1526 | CGNAF00101M0 | CM | C | GN | MI | MI | 000 | 03 | B01 | MI | R00 | ACF00 | 000 |  |
| MGNMI00105M0 |  | CM-GN ; (2) Mockups Ready for Medical Equipment and FF & E Installation | milestone | 0d | 2010-12-20 A | 2010-12-20 A | OGNMU00079S0 | 100% | 2011-01-12 | 2011-01-12 |  |  |  | R00-C02, Calendar day | 1526 | CGNAF00101M0 | CM | C | GN | MI | MI | 001 | 05 | B01 | MI | R00 | ACF00 | 001 |  |
| MGNMI00M07M0 |  | CM-GN ; (3) Utility Plant Complete & Ready to Receive all Municipal Utilities | milestone | 0d | 2012-01-09 | 2012-01-09 | UP2TS01801C0, UP3TS01801C0, UP3TS01813C0, UFNS203309C0 |  |  |  | -104d | 530d | finish on or before 2011-09-27 | R00-C02, Calendar day | 1526 | CGNAF00101M0 | CM | C | GN | MI | MI | 001 | 07 | B01 | 1 | R00 | ACF00 | 001 |  |
|  | S1 | **Section-2** |  |  | 2012-06-26 | 2013-05-01 |  |  |  |  |  |  |  |  |  |  |  |  |  |  |  |  |  |  |  |  |  |  |  |
| MGNSO00102M0 |  | CM-GN ; Section 2 - Time for Completion | milestone | 0d | 2013-05-01 | 2013-05-01 | DS2CZ01011G0, DS2CZ01120G0, DS2CZ11014G0, DS2CZ11020G0, IGNCZ01010G0, IGNCZ01811G0, IGNCZ11010G0, IGNCZ11020G0, LEXTS01803C0, MGNCZ00107M0 FS+107d, MGNCZ00109M0 FS+76d, MGNCZ00111M0 FS+61d, MGNCZ00113M0, MGNTH00109M0 FS+211d, MGNTH00111M0 FS+211d, MGNTH00113M0 FS+211d, MGNTH00115M0 FS+150d, MGNTH00117M0 FS+61d, PP2TS01803C0, PP3S105101C10, SGNCZ01010G0, SGNCZ01811G0, SGNCZ11010G0, SGNCZ11020G0, TGNCZ01010G0, TGNCZ01811G0, TGNCZ11010G0, TGNCZ11020G0, UAFTS01803C0, UGLTS01803C0, UP2TS01803C0, UP3TS01803C0, L04CO04405C0, T21TS01803C0, T09BM110B2C0, T21RF09601C0, SR8HP09601C0, S05BM110B2C0, IR8SP23001C0, I05BM110B2C0, S06CO04425C0, S07CO04425C0, I05CO04416C0, S05CO04417C0, S05CO04413C0, MGNTH00101M0 FF+309d, MGNCZ00106M0 FF+160d, MGNCZ00104M0 FF+100d, MGNCZ00108M0 FF+120d, BGNDS33004G0, BGNWS33011G0, CGNCZ01010G0, CGNCZ01810G0, CGNCZ01811G0, CGNCZ11010G0, CGNCZ11020G0, DGNCZ01010G0, DGNCZ01811G0, DGNCZ11010G0, DGNCZ11020G0, DVTLT09611C0, DVTLT09612C0, DVTLT22081C0, DVTLT22082C0, GGNCZ01010G0, GGNCZ01811G0, GGNCZ11010G0, GGNCZ11020G0, MGNCZ00101M0 FS+152d, MGNCZ00103M0 FS+91d, MGNCZ00105M0 FS+61d, MGNTH00103M0 FS+209d, MGNTH00105M0 FS+182d, MGNTH00107M0 FS+151d, PP1S903371C10, PP1SX03371C10, PP3BM26009C10, PP3TS01803C0, D04CO04429C0, CR5TS01803C0, D03CO04429C0, D02CO04425C0, DGLCO04427C0, BLZTC01548C0, C02CO04405C0, DP3CO04417C0, DP1CO04417C0, D03CO04430C0, D04CO04447C0, GP3CO04410C10, MGNTH00104M0 FF+278d, DS2CZ01010G0, DS2CZ01811G0, DS2CZ11012G0, DS2CZ11040G0, DS2CZ01020G0, DS2CZ01812G0, DS2CZ11010G0, DS2CZ11030G0, DGNCZ01810G0, DS2CZ01810G0, DS2CZ01820G0, DS2CZ01830G0, GGNCZ01810G0, IGNCZ01810G0, TGNCZ01810G0, TGNCZ01100G0, SGNCZ01100G0, IGNCZ01100G0, GGNCZ01100G0, DS2CZ01100G0, DS2CZ01110G0, DS2CZ01130G0, DGNCZ01130G0, CGNCZ11100G0, PP3OA31200C1, A10320 FS+120d, A10310 FS+225d, PZ9GZ31250R2, PZ9GZ09056R2, PZ9GZ10257R2, LZ9GZ31250R2, BAFTS01803G0, BAFTS01808G0, BAFTS01804G0, BAFTS01807G0, BAFTS01810G5, BAFTS01806G0, BAFTS01805G0, MGNSI00150M0 FS+170d, MGNSI00120M0 FS+202d, MGNSI00110M0 FS+140d, MGNSI00130M0 FS+51d, MGNSI00140M0 FS+109d, MGNSI00160M0 FS+79d, MGNSI00100M0 FS+19d, PV09GZ09057R2 FF, PV09GZ10258R2, LV09GZ31251R2, CP3OA31200C1, UP3OA31200C1, DP3OA31200C1 |  |  |  | 3.88d | 0d | finish on or before 2013-05-04 | R00-C02, Calendar day |  | MGNSO00102M0 | CM | C | GN | SO | MI | 001 | 02 | B01 | 2 | R00 | ACF00 | 001 | S2 |
|  | 01 | **TR Room** |  |  | 2012-06-26 | 2013-02-04 |  |  |  |  |  |  |  |  |  |  |  |  |  |  |  |  |  |  |  |  |  |  |  |
| MGNTH00101M0 |  | CM-GN ; (4) Readiness for Main TR/Server Rooms, Etisalat Rooms Podium 1 (D&T) | milestone | 0d | 2012-06-26 | 2012-06-26 | DP1TS01817C0 |  |  |  | 3.88d | 0d |  | R00-C02, Calendar day | 1444 | DGNTH00101M0 | CM | C | GN | TH | MI | 001 | 01 | B01 | 1 | R00 | ACF00 | 001 | S1 |
| MGNTH00104M0 |  | CM-GN ; (5-2) Readiness for all TR Rooms in the D&T (GL,2,3, & 4) | milestone | 0d | 2012-07-17 | 2012-07-17 | D02TR01803C0, D03TR01803C0, D04TR01803C0, DGLTR01803C0 |  |  |  | 13.8d | 9.93d |  | R00-C02, Calendar day | 1444 | DGNTH00103M0 | CM | C | GN | TH | MI | 001 | 03 | B01 | 1 | R00 | ACF00 | 001 | S1 |
| MGNTH00113M0 |  | CM-GN ; (11) Readiness for all TR Rooms in the Patient Tower L10-12 | milestone | 0d | 2012-09-13 | 2012-09-13 | T10TR01803C0, T11TR01803C0, T12TR01803C0 |  |  |  | 22.56d | 18.69d |  | R00-C02, Calendar day | 1444 | TGNTH00113M0 | CM | C | GN | TH | MI | 001 | 13 | B01 | 1 | R00 | ACF00 | 001 | S2 |
| MGNTH00103M0 |  | CM-GN ; (5-1) Readiness for all TR Rooms in the D&T (P3,P2,P1,1) | milestone | 0d | 2012-09-15 | 2012-09-15 | D01TR01803C0, DP1TR01803C0, DP2TR01803C0, DP3TR01803C0 |  |  |  | 22d | 18.12d |  | R00-C02, Calendar day | 1444 | DGNTH00103M0 | CM | C | GN | TH | MI | 001 | 03 | B01 | 1 | R00 | ACF00 | 001 | S1 |
| MGNTH00111M0 |  | CM-GN ; (11) Readiness for all TR Rooms in the ICU Building | milestone | 0d | 2012-09-18 | 2012-09-18 | I05TR01803C0, I06TR01803C0, I07TR01803C0, I08TR01803C0 |  |  |  | 17d | 13.12d |  | R00-C02, Calendar day | 1444 | IGNTH00111M0 | CM | C | GN | TH | MI | 001 | 11 | B01 | 2 | R00 | ACF00 | 001 | S2 |
| MGNTH00109M0 |  | CM-GN ; (11) Readiness for all TR Rooms in the Swing Wing | milestone | 0d | 2012-09-25 | 2012-09-25 | S05TR01803C0, S06TR01803C0, S07TR01803C0, S08TR01803C0 |  |  |  | 10.5d | 6.62d |  | R00-C02, Calendar day | 1444 | SGNTH00109M0 | CM | C | GN | TH | MI | 001 | 09 | B01 | 2 | R00 | ACF00 | 001 | S2 |
| MGNTH00105M0 |  | CM-GN ; (6) Readiness for all TR Rooms in the Clinic Building | milestone | 0d | 2012-10-22 | 2012-10-22 | C01TR01803C0, C02TR01803C0, C03TR01803C0, C04TR01803C0, CGLTR01803C0, CP1TR01803C0, CP2TR01803C0, CP3TR01803C0 |  |  |  | 12.35d | 8.47d |  | R00-C02, Calendar day | 1444 | CGNTH00105M0 | CM | C | GN | TH | MI | 001 | 05 | B01 | 1 | R00 | ACF00 | 001 | S1 |
| MGNTH00107M0 |  | CM-GN ; (7) Readiness for all TR Rooms in Gallery | milestone | 0d | 2012-10-25 | 2012-10-25 | G01TR01803C0, GGLTR01803C0, GP1TR01803C0, GP2TR01803C0, GGLTR01803C10 |  |  |  | 40.25d | 36.38d |  | R00-C02, Calendar day | 1444 | GGNTH00107M0 | CM | C | GN | TH | MI | 001 | 07 | B01 | 1 | R00 | ACF00 | 001 | S1 |
| MGNTH00115M0 |  | CM-GN ; (12) Readiness for all Patient Tower L13-16 TR Rooms | milestone | 0d | 2012-11-17 | 2012-11-17 | T13TR01803C0, T14TR01803C0, T15TR01803C0, T16TR01803C0 |  |  |  | 18.94d | 15.06d |  | R00-C02, Calendar day | 1444 | TGNTH00115M0 | CM | C | GN | TH | MI | 001 | 15 | B01 | 1 | R00 | ACF00 | 001 | S2 |
| MGNTH00117M0 |  | CM-GN ; (13) Readiness for all Patient Tower L17-20 TR Rooms | milestone | 0d | 2013-02-04 | 2013-02-04 | T17TR01803C0, T18TR01803C0, T19TR01803C0, T20TR01803C0 |  |  |  | 28.9d | 25.02d |  | R00-C02, Calendar day | 1444 | TGNTH00117M0 | CM | C | GN | TH | MI | 001 | 17 | B01 | 1 | R00 | ACF00 | 001 | S2 |
|  | 02 | **Controlled Zone** |  |  | 2012-11-11 | 2013-04-15 |  |  |  |  |  |  |  |  |  |  |  |  |  |  |  |  |  |  |  |  |  |  |  |
| MGNCZ00106M0 |  | CM-GN ; (9-4) Readiness for D&T Building "Controlled Zone" (GL) | milestone | 0d | 2012-11-11 | 2012-11-11 | DGLTS01811C0, DGLTS01812C0, DGLTS01813C0, DGLTS01814C0, DVT2014248C0, DVTLT09613C0, DVTLT09614C0, DVTLT09615C0, DVTLT09619C0, DVTLT22083C0, DVTLT22084C0, DVTLT22085C0, DVTLT22089C0, DVTTS01803C0 |  |  |  | 14.15d | 0d |  | R00-C02, Calendar day | 1445 | DGNCZ00101M0 | CM | C | GN | CZ | MI | 001 | 03 | B01 | 1 | R00 | ACF00 | 001 | S1 |
| MGNCZ00101M0 |  | CM-GN ; (8) Readiness for Clinic Building "Controlled Zone" | milestone | 0d | 2012-11-24 | 2012-11-24 | C01TS01805C0, C02TS01809C0, C02TS01810C0, C02TS01811C0, C03TS01809C0, C03TS01810C0, C03TS01811C0, C04TS01806C0, C04TS01807C0, CAFTS01803C0, CGLTS01817C0, CGLTS01818C0, CGLTS01819C0, CGLTS01820C0, CGLTS01821C0, CGLTS01822C0, CGLTS01823C0, CP1TS01809C0, CP1TS01810C0, CP1TS01811C0, CP2TS01809C0, CP2TS01810C0, CP2TS01811C0, CP3TS01809C0, CP3TS01810C0, CP3TS01811C0, CVT3914248C0, CVTLT09616C0 FF, CVTLT09617C0, CVTLT22086C0, CVTLT22087C0, CGLCO04408C0, DGLCO04434C0, D01CO04434C0, D02CO04434C0, D03CO04434C0, CZ9GZ31250R2 FF, CZ9GZ09055R2, CZ9GZ11057R2, CZ9GZ10256R2, CV09GZ10257R2, CV09GZ06154R2, CV09GZ11058R2, CV09GZ09055R2, CV10GZ10258R2, CV10GZ09055R2 |  |  |  | 9.32d | 0d |  | R00-C02, Calendar day | 1445 | CGNCZ00103M0 | CM | C | GN | CZ | MI | 001 | 01 | B01 | 1 | R00 | ACF00 | 001 | S1 |
| MGNCZ00108M0 |  | CM-GN ; (9-3) Readiness for D&T Building "Controlled Zone" (L2) | milestone | 0d | 2012-12-22 | 2012-12-22 | D02TS01813C0, D02TS01814C0, D02TS01815C0, D02TS01816C0, D02TS01817C0, DVT2014248C0, DVTLT09613C0, DVTLT09614C0, DVTLT09615C0, DVTLT09619C0, DVTLT22083C0, DVTLT22084C0, DVTLT22085C0, DVTLT22089C0, DVTTS01803C0 |  |  |  | 13.28d | 0d |  | R00-C02, Calendar day | 1445 | DGNCZ00101M0 | CM | C | GN | CZ | MI | 001 | 03 | B01 | 1 | R00 | ACF00 | 001 | S1 |
| MGNCZ00107M0 |  | CM-GN ; (14) Readiness for ICU Building "Controlled Zone" | milestone | 0d | 2012-12-24 | 2012-12-24 | I05TS01809C0, I05TS01810C0, I05TS01811C0, I06TS01811C0, I06TS01812C0, I06TS01813C0, I06TS01814C0, I07TS01811C0, I07TS01812C0, I07TS01813C0, I07TS01814C0, I08TS01811C0, I08TS01812C0, I08TS01813C0, I08TS01814C0, IAFTS01803C0, IR8TS01805C0, IR8TS01806C0, IVTLT09611C0, IVTLT09618C0, IVTLT22081C0, IVTLT22088C0, TVT1214247C0, IVT1614248C0, IVT1814248C0, IZ9GZ11058R2, IZ9GZ31250R2, IZ9GZ09056R2, IZ9GZ10257R2, IZ9GZ11059R2, IV09GZ09058R2 |  |  |  | 25d | 0d |  | R00-C02, Calendar day | 1445 | IGNCZ00109M0 | CM | C | GN | CZ | MI | 001 | 07 | B01 | 2 | R00 | ACF00 | 001 | S2 |
| MGNCZ00104M0 |  | CM-GN ; (9-2) Readiness for D&T Building "Controlled Zone" (L3,& L4) | milestone | 0d | 2013-01-13 | 2013-01-13 | D03TS01813C0, D03TS01814C0, D03TS01815C0, D03TS01816C0, D03TS01817C0, D04TS01809C0, D04TS01810C0, D04TS01811C0, DVT2014248C0, DVTLT09613C0, DVTLT09614C0, DVTLT09615C0, DVTLT09619C0, DVTLT22083C0, DVTLT22084C0, DVTLT22085C0, DVTLT22089C0, DVTTS01803C0, D04CO04422C0, D03CO04434C0, D02CO04434C0, D01CO04434C0, DGLCO04434C0, D04CO04431C0 |  |  |  | 11.03d | 0d |  | R00-C02, Calendar day | 1445 | DGNCZ00101M0 | CM | C | GN | CZ | MI | 001 | 03 | B01 | 1 | R00 | ACF00 | 001 | S1 |
| MGNCZ00103M0 |  | CM-GN ; (9-1) Readiness for D&T Building "Controlled Zone" (P3,P2,P1,L1) | milestone | 0d | 2013-01-15 | 2013-01-15 | D01TS01813C0, D01TS01814C0, D01TS01815C0, D01TS01816C0, D01TS01817C0, DP1TS01814C0, DP1TS01815C0, DP1TS01816C0, DP1TS01818C0, DP2TS01807C0, DP2TS01808C0, DP2TS01809C0, DP2TS01810C0, DP3TS01809C0, DP3TS01810C0, DP3TS01811C0, DR5TS01803C0, DVT2014248C0, DVTLT09613C0, DVTLT09614C0, DVTLT09615C0, DVTLT09619C0, DVTLT22083C0, DVTLT22084C0, DVTLT22085C0, DVTLT22089C0, DVTTS01803C0, D03CO04434C0, D02CO04434C0, D01CO04434C0, DGLCO04434C0, DZ9GZ31250R2, DZ9GZ09055R2, DZ9GZ10256R2, DZ9GZ11057R2, DVT1414247C0, DVT3614247C0, DVT5414247C0, DV09GZ09056R2, DV09GZ10258R2, DV09GZ11060R2, DV09GZ14455R2, DV10GZ09057R2, DV10GZ10258R2, DV10GZ11060R2, DV10GZ14455R2 |  |  |  | 18.1d | 0d |  | R00-C02, Calendar day | 1445 | DGNCZ00101M0 | CM | C | GN | CZ | MI | 001 | 03 | B01 | 1 | R00 | ACF00 | 001 | S1 |
| MGNCZ00109M0 |  | CM-GN ; (15) Readiness for Swing Wing "Controlled Zone" | milestone | 0d | 2013-01-29 | 2013-01-29 | S05TS01807C0, S05TS01808C0, S05TS01809C0, S06TS01806C0, S06TS01807C0, S06TS01808C0, S06TS01809C0, S07TS01808C0, S07TS01809C0, S07TS01810C0, S08TS01808C0, S08TS01809C0, S08TS01810C0, SAFTS01803C0, SR8TS01805C0, SR8TS01806C0, SVT4114248C0, SVTLT09612C0, SVTLT09619C0, SVTLT22082C0, SVTLT22089C0, SVT3414248C0, SZ9GZ31250R2, SZ9GZ09053R2, SZ9GZ10254R2, SZ9GZ11055R2, SVT4314247C0, SV09GZ09055R2 |  |  |  | 19d | 0d |  | R00-C02, Calendar day | 1445 | SGNCZ00107M0 | CM | C | GN | CZ | MI | 001 | 09 | B01 | 2 | R00 | ACF00 | 001 | S2 |
| MGNCZ00105M0 |  | CM-GN ; (10) Readiness for Gallery "Controlled Zone" | milestone | 0d | 2013-01-30 | 2013-01-30 | G01TS01805C0, G01TS01806C0, G02TS01803C0, G03TS01803C0, GAFTS01803C0, GGLTS01807C0, GGLTS01808C0, GP1TS01807C0, GP1TS01808C0, GP2TS01809C0, GP2TS01810C0, GP2TS01811C0, GP3TS01805C0, GP3TS01806C0, GVT4614247C0 FS+160d, GVT4914247C0 FS+190d, GVT5014247C0 FS+190d, GVT5314247C0 FS+160d, GVT5314248C0, GVT4914248C0, GVT5014248C0, G02CO04407C0, GGLTS01808C10, GZ9GZ31250R2, GZ9GZ09054R2, GZ9GZ10255R2, GZ9GZ11056R2, GZ9GZ13357R2, GV09GZ09056R2, GV09GZ10257R2, DV10GZ09054R2, DV10GZ10255R2, DV10GZ06156R2, DV10GZ07156R2 |  |  |  | 33d | 0d |  | R00-C02, Calendar day | 1445 | GGNCZ00105M0 | CM | C | GN | CZ | MI | 001 | 05 | B01 | 1 | R00 | ACF00 | 001 | S1 |
| MGNCZ00111M0 |  | CM-GN ; (16) Readiness for Patient Tower L10-16 "Controlled Zone" | milestone | 0d | 2013-02-20 | 2013-02-20 | T09TS01807C0, T09TS01808C0, T09TS01809C0, T10TS01809C0, T10TS01810C0, T10TS01811C0, T11TS01809C0, T11TS01810C0, T11TS01811C0, T12TS01809C0, T12TS01810C0, T12TS01811C0, T13TS01809C0, T13TS01810C0, T13TS01811C0, T14TS01809C0, T14TS01810C0, T14TS01811C0, T15TS01809C0, T15TS01810C0, T15TS01811C0, T16TS01813C0, T16TS01814C0, T16TS01815C0, TVT1014248C0, TVT2414248C0, TVT2814248C0, TVT3314247C0, TVTLT09611C0, TVTLT09612C0, TVTLT22081C0, TVTLT22082C0, T09CO04412C0, TVT1214248C0, TVT2514248C0, T09CO04407C0, T09CO04447C0 |  |  |  | 11d | 0d |  | R00-C02, Calendar day | 1445 | TGNCZ00111M0 | CM | C | GN | CZ | MI | 001 | 11 | B01 | 2 | R00 | ACF00 | 001 | S2 |
| MGNCZ00113M0 |  | CM-GN ; (17) Readiness for Patient Tower L17-20 "Controlled Zone" | milestone | 0d | 2013-04-15 | 2013-04-15 | T17TS01805C0, T18TS01809C0, T18TS01810C0, T18TS01811C0, T19TS01813C0, T19TS01814C0, T19TS01815C0, T19TS01816C0, T19TS01817C0, T20TS01809C0, T20TS01810C0, T20TS01811C0, TAFTS01803C0, TRXTS01803C0, TVTLT09611C0, TVTLT09612C0, TVTLT22081C0, TVTLT22082C0, T19CO04412C0, T16TS01817C0, T16TS01816C0, TZ9GZ09053R2, TZ9GZ10254R2, TZ9GZ11055R2, TVT3014247C0, TV09GZ09055R2, TV09GZ10256R2, TV09GZ11057R2 |  |  |  | 18.65d | 0d |  | R00-C02, Calendar day | 1445 | TGNCZ00113M0 | CM | C | GN | CZ | MI | 001 | 13 | B01 | 2 | R00 | ACF00 | 001 | S2 |

| ID | WBS | Activity | Type | Duration | Start | Finish | Predecessors | Complete | Planned start | Planned finish | Total float | Free float | Constraint | Calendar | change id | CCAD BUILDING(SET) | CCAD PHASE(SET) | CCAD FLOOR(SET) | CCAD ZONE(SET) | CCAD WORK(SET) | CCAD SECTION(SET) | CCAD SERIAL No.(SET) | CCAD BILL(SET) | CCAD HANDOVER(SET) | CCAD TAG(SET) | CCAD REV(SET) | CCADACF (SET) | CCAD SSCF | name | Y_id | YC_id | PERCENT COMPLETE |
| --- | --- | --- | --- | --- | --- | --- | --- | --- | --- | --- | --- | --- | --- | --- | --- | --- | --- | --- | --- | --- | --- | --- | --- | --- | --- | --- | --- | --- | --- | --- | --- | --- |
|  | S2 | **Section-3** |  |  | 2013-06-22 | 2013-06-22 |  |  |  |  |  |  |  |  |  |  |  |  |  |  |  |  |  |  |  |  |  |  |  |  |  |  |
| MGNSO00103M0 |  | CM-GN ; Section 3 - Time for Completion | milestone | 0d | 2013-06-22 | 2013-06-22 | BAFTS01801G0, MGNCZ00113M0 FS+61d, TGNCZ01020G0, TGNCZ01090G0, TGNCZ01821G0, TGNCZ11030G0, TGNCZ11040G0, TGNCZ01820G0, PZ9GZ11058R2, BAFTS01809G0, MGNMI00103M0, MGNMI00M07M0 |  |  |  | 11d | 0d | finish on or before 2013-07-04 | R00-C02, Calendar day | MGNSO00103M0 | S3 | C | GN | SO | MI | 001 | 03 | B01 | S3 | 3 | R00 | ACF00 | 001 |  |  |  |  |
|  | S4 | **Carpark Handing-over (SISJV Internal Milestones)** |  |  | 2012-10-04 | 2013-02-28 |  |  |  |  |  |  |  |  |  |  |  |  |  |  |  |  |  |  |  |  |  |  |  |  |  |  |
| MGNSI00120M0 |  | Handing Over Zone C | milestone | 0d | 2012-10-04 | 2012-10-04 | PP3CP09902C10 FF, PP3CP21113C10 FF, PP3CP23019C10 FF, PP3CP26017C10 FF, PP3CP27030C10 FF, PP3CP11004C10 FF, PP3CP22011C10 FF, PP3CP09903C10 FF, PP3CP05509C10 FF, PP3CP09902C20 FF, PP3CP22011C20 FF, PP3CP26017C20 FF, PP3CP23019C20 FF, PP3CP11006C20 FF, PP3CP21113C20 FF, PP3CP27030C20 FF, PP3CP09903C20 FF, PP3CP05509C20 FF, PP3CP11004C20 FF, PP3CE27003C0 FF, PP3CE23006C0 FF, PP3CE09904C0 FF, PP3CE09502C0 FF, PP3CE08103C0 FF, PP3CE08701C0 FF, PP3CE26004C0 FF, PP3CE09901C0 FF, PP3CE05501C0 FF, PP3CE22001C0 FF, PP3CE09203C0 FF, PP3CE09601C0 FF, PP3CE26003C0 FF, PP3CE26005C0 FF, PP3CE26006C0 FF, PP3CE21101C0 FF, PP3CE21102C0 FF, PP3CE21103C0 FF, PP3CE23005C0 FF, PP3CE27004C0 FF, PP3CM26008C0 FF, PP3CM27005C0 FF, PP3CM26007C0 FF, PP3CM21107C0 FF, PP3CM27004C0 FF, PP3CM08103C0 FF, PP3CM09901C0 FF, PP3CM23009C0 FF, PP3CM08701C0 FF, PP3CM08101C0 FF, PP3CM21106C0 FF, PP3CM23010C0 FF, PP3CM26009C0 FF, PP3CM26006C0 FF, PP3CM22004C0 FF, PP3CM09203C0 FF, PP3CM09601C0 FF, PP2CP23019C10 FF, PP2CP26017C10 FF, PP2CP21113C10 FF, PP2CP27030C10 FF, PP2CP22011C10 FF, PP2CP09903C10 FF, PP2CP09902C10 FF, PP2CP11006C10 FF, PP2CP05509C10 FF, PP2CP11004C10 FF, PP2CP09902C20 FF, PP2CP22011C20 FF, PP2CP26017C20 FF, PP2CP23019C20 FF, PP2CP21113C20 FF, PP2CP27030C20 FF, PP2CP09903C20 FF, PP2CP11006C20 FF, PP2CP05509C20 FF, PP2CP11004C20 FF, PP2CE27003C10 FF, PP2CE09904C10 FF, PP2CE09901C10 FF, PP2CE26004C10 FF, PP2CE05501C10 FF, PP2CE08103C10 FF, PP2CE09502C10 FF, PP2CE09203C10 FF, PP2CE09601C10 FF, PP2CE23005C10 FF, PP2CE27004C10 FF, PP2CE22001C10 FF, PP2CE26006C10 FF, PP2CE26003C10 FF, PP2CE26005C10 FF, PP2CE08701C10 FF, PP2CE21101C10 FF, PP2CE21102C10 FF, PP2CE21103C10 FF, PP2CE27003C0 FF, PP2CE09904C0 FF, PP2CE26004C0 FF, PP2CE08103C0 FF, PP2CE09901C0 FF, PP2CE05501C0 FF, PP2CE09502C0 FF, PP2CE09601C0 FF, PP2CE27004C0 FF, PP2CE23005C0 FF, PP2CE22001C0 FF, PP2CE26003C0 FF, PP2CE26006C0 FF, PP2CE26005C0 FF, PP2CE08701C0 FF, PP2CE21101C0 FF, PP2CE21102C0 FF, PP2CE21103C0 FF, PP1CP23019C10 FF, PP1CP26017C10 FF, PP1CP21113C10 FF, PP1CP27030C10 FF, PP1CP22011C10 FF, PP1CP09903C10 FF, PP1CP09902C10 FF, PP1CP11006C10 FF, PP1CP05509C10 FF, PP1CP11004C10 FF, PP1CP22011C20 FF, PP1CP26017C20 FF, PP1CP23019C20 FF, PP1CP21113C20 FF, PP1CP27030C20 FF, PP1CP09903C20 FF, PP1CP11006C20 FF, PP1CP05509C20 FF, PP1CP11004C20 FF, PP1CP09902C20 FF, PP1CE27003C10 FF, PP1CE09904C10 FF, PP1CE09901C10 FF, PP1CE26004C10 FF, PP1CE08103C10 FF, PP1CE05501C10 FF, PP1CE09601C10 FF, PP1CE21101C10 FF, PP1CE21102C10 FF, PP1CE21103C10 FF, PP1CE09502C10 FF, PP1CE22001C10 FF, PP1CE08701C10 FF, PP1CE09203C10 FF, PP1CE23005C10 FF, PP1CE27004C10 FF, PP1CE26003C10 FF, PP1CE26005C10 FF, PP1CE26006C10 FF, PP1CE27003C0 FF, PP1CE26004C0 FF, PP1CE08103C0 FF, PP1CE05501C0 FF, PP1CE09601C0 FF, PP1CE09502C0 FF, PP1CE22001C0 FF, PP1CE27004C0 FF, PP1CE23005C0 FF, PP1CE08701C0 FF, PP1CE26003C0 FF, PP1CE26006C0 FF, PP1CE26005C0 FF, PP1CE21101C0 FF, PP1CE21102C0 FF, PP1CE21103C0 FF, PP1CE09203C0 FF, PP1CM26008C10 FF, PP1CM27005C10 FF, PP1CM27004C10 FF, PP1CM26007C10 FF, PP1CM21107C10 FF, PP1CM23010C10 FF, PP1CM09901C10 FF, PP1CM08103C10 FF, PP1CM21106C10 FF, PP1CM26009C10 FF, PP1CM26006C10 FF, PP1CM09203C10 FF, PP1CM22004C10 FF, PP1CM09601C10 FF, PP1CM08701C10 FF, PP1CM08101C10 FF, PP1CM27005C0 FF, PP1CM26008C0 FF, PP1CM23010C0 FF, PP1CM27004C0 FF, PP1CM26007C0 FF, PP1CM08103C0 FF, PP1CM08101C0 FF, PP1CM09203C0 FF, PP1CM08701C0 FF, PP1CM21106C0 FF, PP1CM26009C0 FF, PP1CM26006C0 FF, PP1CM21107C0 FF, PP1CM09601C0 FF, PP1CM22004C0 FF |  |  |  | 10.2d | 6.33d |  | R00-C02, Calendar day |  |  |  |  |  |  | GEN |  | B02 |  |  | R00 |  | GEN |  |  |  |  |
| MGNSI00150M0 |  | Handing Over Zone F | milestone | 0d | 2012-11-05 | 2012-11-05 | PP3DP09903C10 FF, PP3DP11009C10 FF, PP3DP23019C10 FF, PP3DP22011C10 FF, PP3DP26017C10 FF, PP3DP27030C10 FF, PP3DP21113C10 FF, PP3DP11004C10 FF, PP3DP05509C10 FF, PP3DP09901C10 FF, PP3DP11006C10 FF, PP3DP09902C10 FF, PP3DM08101C0 FF, PP3DM04001C0 FF, PP3DM27004C0 FF, PP3DM22004C0 FF, PP3DM26006C0 FF, PP3DM27005C0 FF, PP3DM21106C0 FF, PP3DM23009C0 FF, PP3DM23010C0 FF, PP3DM26007C0 FF, PP3DM21107C0 FF, PP3DM26008C0 FF, PP3DM26009C0 FF, PP3DM09601C0 FF, PP3DM08701C0 FF, PP3DM08102C0 FF, PP3DM08103C0 FF, PP3DM09901C0 FF, PP3DM09902C0 FF, PP3EP09903C10 FF, PP3EP23019C10 FF, PP3EP22011C10 FF, PP3EP26017C10 FF, PP3EP27030C10 FF, PP3EP21113C10 FF, PP3EP11004C10 FF, PP3EP05509C10 FF, PP3EP09901C10 FF, PP3EP11006C10 FF, PP3EP09902C10 FF, PP3EE09904C0 FF, PP3EE09502C0 FF, PP3EE09501C0 FF, PP3EE09903C0 FF, PP3EE27003C0 FF, PP3EE21101C0 FF, PP3EE21103C0 FF, PP3EE21102C0 FF, PP3EE22001C0 FF, PP3EE26004C0 FF, PP3EE27004C0 FF, PP3EE23005C0 FF, PP3EE26006C0 FF, PP3EE26005C0 FF, PP3EE26003C0 FF, PP3EE09601C0 FF, PP3EE05501C0 FF, PP3EE08701C0 FF, PP3EE08102C0 FF, PP3EE08103C0 FF, PP3EE09901C0 FF, PP3EE09902C0 FF, PP3EM08101C10 FF, PP3EM04001C10 FF, PP3EM27004C10 FF, PP3EM22004C10 FF, PP3EM26006C10 FF, PP3EM27005C10 FF, PP3EM21106C10 FF, PP3EM23010C10 FF, PP3EM26007C10 FF, PP3EM21107C10 FF, PP3EM26008C10 FF, PP3EM26009C10 FF, PP3EM09601C10 FF, PP3EM08701C10 FF, PP3EM08102C10 FF, PP3EM08103C10 FF, PP3EM09901C10 FF, PP2DP09903C10 FF, PP2DP11009C10 FF, PP2DP23019C10 FF, PP2DP22011C10 FF, PP2DP26017C10 FF, PP2DP27030C10 FF, PP2DP21113C10 FF, PP2DP11004C10 FF, PP2DP05509C10 FF, PP2DP11006C10 FF, PP2DP09902C10 FF, PP2EP09902C10 FF, PP2EP21113C10 FF, PP2EP23019C10 FF, PP2EP26017C10 FF, PP2EP27030C10 FF, PP2EP22011C10 FF, PP2EP09903C10 FF, PP2EP05509C10 FF, PP2EP11004C10 FF, PP2EP11006C10 FF, PP2EE09601C10 FF, PP2EE09901C10 FF, PP2EE09904C10 FF, PP2EE27003C10 FF, PP2EE22001C10 FF, PP2EE26003C10 FF, PP2EE21101C10 FF, PP2EE21102C10 FF, PP2EE21103C10 FF, PP2EE23005C10 FF, PP2EE26004C10 FF, PP2EE26005C10 FF, PP2EE26006C10 FF, PP2EE27004C10 FF, PP2EE09503C10 FF, PP1DP09902C10 FF, PP1DP21113C10 FF, PP1DP23019C10 FF, PP1DP26017C10 FF, PP1DP27030C10 FF, PP1DP22011C10 FF, PP1DP09903C10 FF, PP1DP11006C10 FF, PP1DP05509C10 FF, PP1DP11004C10 FF, PP1DP11009C10 FF, PP1EP22011C10 FF, PP1EP09902C10 FF, PP1EP21113C10 FF, PP1EP23019C10 FF, PP1EP26017C10 FF, PP1EP27030C10 FF, PP1EP09903C10 FF, PP1EP05509C10 FF, PP1EP11004C10 FF, PP1EM21107C10 FF, PP1EM21106C10 FF, PP1EM26009C10 FF, PP1EM26006C10 FF, PP1EM26008C10 FF, PP1EM26007C10 FF, PP1EM27004C10 FF, PP1EM27005C10 FF, PP1EM08103C10 FF, PP1EM09901C10 FF, PP1EM09601C10 FF, PP1EM08101C10 FF, PP1EM23010C10 FF, PP1EM22004C10 FF, PP1EM08701C10 FF |  |  |  | 10d | 6.12d |  | R00-C02, Calendar day |  |  |  |  |  |  | GEN |  | B02 |  |  | R00 |  | GEN |  |  |  |  |
| MGNSI00110M0 |  | Handing Over Zone B | milestone | 0d | 2012-11-17 | 2012-11-17 | PP3BM21107C10 FF, PP3BM23009C10 FF, PP3BM26008C10 FF, PP3BM26007C10 FF, PP3BM27004C10 FF, PP3BM27005C10 FF, PP3BM09901C10 FF, PP3BM23010C10 FF, PP3BM09203C10 FF, PP3BM21106C10 FF, PP3BM26009C10 FF, PP3BM26006C10 FF, PP3BM09601C10 FF, PP3BM22004C10 FF, PP3BM08103C10 FF, PP3BM08101C10 FF, PP3BM08701C10 FF |  |  |  | 28.88d | 25d |  | R00-C02, Calendar day |  |  |  |  |  |  | GEN |  | B02 |  |  | R00 |  | GEN |  |  |  |  |
| MGNSI00130M0 |  | Handing Over Zone D | milestone | 0d | 2012-12-13 | 2012-12-13 | PP1EM26008C0 FF, PP1EM26007C0 FF, PP1EM27005C0 FF, PP1EM21107C0 FF, PP1EM23010C0 FF, PP1EM09203C0 FF, PP1EM21106C0 FF, PP1EM26009C0 FF, PP1EM27004C0 FF, PP1EM26006C0 FF, PP1EM09901C0 FF, PP1EM09601C0 FF, PP1EM22004C0 FF, PP1EM08103C0 FF, PP1EM08101C0 FF, PP1EM08701C0 FF |  |  |  | 91.34d | 87.47d |  | R00-C02, Calendar day |  |  |  |  |  |  | GEN |  | B02 |  |  | R00 |  | GEN |  |  |  |  |
| MGNSI00140M0 |  | Handing Over Zone E | milestone | 0d | 2012-12-31 | 2012-12-31 | PP3DP26017C20 FF, PP3DP23019C20 FF, PP3DP21113C20 FF, PP3DP27030C20 FF, PP3DP22011C20 FF, PP3DP09903C20 FF, PP3DP11006C20 FF, PP3DP05509C20 FF, PP3DP11004C20 FF, PP3DP11009C20 FF, PP3DM26009C10 FF, PP3DM21107C10 FF, PP3DM23010C10 FF, PP3DM26006C10 FF, PP3DM27005C10 FF, PP3DM26008C10 FF, PP3DM26007C10 FF, PP3DM09901C10 FF, PP3DM08103C10 FF, PP3DM09601C10 FF, PP3DM22004C10 FF, PP3DM08101C10 FF, PP3DM08701C10 FF, PP3DM21106C10 FF, PP3DM27004C10 FF, PP3EP26017C30 FF, PP3EP09902C30 FF, PP3EP21113C30 FF, PP3EP23019C30 FF, PP3EP27030C30 FF, PP3EP22011C30 FF, PP3EP09903C30 FF, PP3EP11006C30 FF, PP3EP05509C30 FF, PP3EP11004C30 FF, PP3EM21106C0 FF, PP3EM26006C0 FF, PP3EM27005C0 FF, PP3EM26009C0 FF, PP3EM23010C0 FF, PP3EM21107C0 FF, PP3EM27004C0 FF, PP3EM08103C0 FF, PP3EM26008C0 FF, PP3EM26007C0 FF, PP3EM08101C0 FF, PP3EM09601C0 FF, PP3EM09901C0 FF, PP3EM22004C0 FF, PP3EM08701C0 FF, PP2DP26017C20 FF, PP2DP21113C20 FF, PP2DP23019C20 FF, PP2DP27030C20 FF, PP2DP22011C20 FF, PP2DP09902C20 FF, PP2DP09903C20 FF, PP2DP11006C20 FF, PP2DP05509C20 FF, PP2DP11004C20 FF, PP2DP11009C20 FF, PP2EP26017C30 FF, PP2EP09902C30 FF, PP2EP21113C30 FF, PP2EP23019C30 FF, PP2EP27030C30 FF, PP2EP22011C30 FF, PP2EP09903C30 FF, PP2EP11006C30 FF, PP2EP05509C30 FF, PP2EP11004C30 FF, PP2EM08103C0 FF, PP2EM27005C0 FF, PP2EM21107C0 FF, PP2EM23010C0 FF, PP2EM08101C0 FF, PP2EM09203C0 FF, PP2EM21106C0 FF, PP2EM08701C0 FF, PP2EM26009C0 FF, PP2EM27004C0 FF, PP2EM26006C0 FF, PP2EM26008C0 FF, PP2EM26007C0 FF, PP2EM09901C0 FF, PP2EM22004C0 FF, PP2EM09601C0 FF, PP1DP09902C20 FF, PP1DP23019C20 FF, PP1DP26017C20 FF, PP1DP21113C20 FF, PP1DP27030C20 FF, PP1DP22011C20 FF, PP1DP09903C20 FF, PP1DP11006C20 FF, PP1DP05509C20 FF, PP1DP11004C20 FF, PP1DP11009C20 FF, PP1DM26009C0 FF, PP1DM27005C0 FF, PP1DM08103C0 FF, PP1DM09601C0 FF, PP1DM21107C0 FF, PP1DM23010C0 FF, PP1DM27004C0 FF, PP1DM21106C0 FF, PP1DM22004C0 FF, PP1DM26006C0 FF, PP1DM08101C0 FF, PP1DM26008C0 FF, PP1DM26007C0 FF, PP1DM09901C0 FF, PP1DM08701C0 FF, PP1EP09902C30 FF, PP1EP26017C30 FF, PP1EP23019C30 FF, PP1EP21113C30 FF, PP1EP27030C30 FF, PP1EP22011C30 FF, PP1EP09903C30 FF, PP1EP11006C30 FF, PP1EP05509C30 FF, PP1EP11004C30 FF |  |  |  | 15.07d | 11.2d |  | R00-C02, Calendar day |  |  |  |  |  |  | GEN |  | B02 |  |  | R00 |  | GEN |  |  |  |  |
| MGNSI00160M0 |  | Handing Over Zone G & J | milestone | 0d | 2013-01-14 | 2013-01-14 | PP3AP09902C10 FF, PP3AP21113C10 FF, PP3AP23019C10 FF, PP3AP26017C10 FF, PP3AP27030C10 FF, PP3AP22011C10 FF, PP3AP09903C10 FF, PP3AP11006C10 FF, PP3AP05509C10 FF, PP3AP11004C10 FF, PP3AP09902C20 FF, PP3AP21113C20 FF, PP3AP23019C20 FF, PP3AP26017C20 FF, PP3AP27030C20 FF, PP3AP22011C20 FF, PP3AP09903C20 FF, PP3AP11006C20 FF, PP3AP05509C20 FF, PP3AP11004C20 FF, PP3AE05501C0 FF, PP3AE23006C0 FF, PP3AE26004C0 FF, PP3AE27003C0 FF, PP3AE08103C0 FF, PP3AE09203C0 FF, PP3AE09601C0 FF, PP3AE09901C0 FF, PP3AE09904C0 FF, PP3AE09502C0 FF, PP3AE08701C0 FF, PP3AE22001C0 FF, PP3AE21101C0 FF, PP3AE21102C0 FF, PP3AE21103C0 FF, PP3AE23005C0 FF, PP3AE26003C0 FF, PP3AE26005C0 FF, PP3AE26006C0 FF, PP3AE27004C0 FF, PP3AM21107C0 FF, PP3AM23009C0 FF, PP3AM26008C0 FF, PP3AM26007C0 FF, PP3AM27004C0 FF, PP3AM27005C0 FF, PP3AM08103C0 FF, PP3AM09203C0 FF, PP3AM09901C0 FF, PP3AM23010C0 FF, PP3AM08101C0 FF, PP3AM21106C0 FF, PP3AM26009C0 FF, PP3AM26006C0 FF, PP3AM08701C0 FF, PP3AM09601C0 FF, PP3AM22004C0 FF, PP2AP09902C10 FF, PP2AP21113C10 FF, PP2AP23019C10 FF, PP2AP26017C10 FF, PP2AP27030C10 FF, PP2AP22011C10 FF, PP2AP09903C10 FF, PP2AP11006C10 FF, PP2AP05509C10 FF, PP2AP11004C10 FF, PP2AP09902C20 FF, PP2AP21113C20 FF, PP2AP23019C20 FF, PP2AP26017C20 FF, PP2AP27030C20 FF, PP2AP22011C20 FF, PP2AP09903C20 FF, PP2AP11006C20 FF, PP2AP05509C20 FF, PP2AP11004C20 FF, PP2AE26004C0 FF, PP2AE27003C0 FF, PP2AE09502C0 FF, PP2AE08103C0 FF, PP2AE09203C0 FF, PP2AE09904C0 FF, PP2AE08701C0 FF, PP2AE21101C0 FF, PP2AE21102C0 FF, PP2AE21103C0 FF, PP2AE23005C0 FF, PP2AE26003C0 FF, PP2AE26005C0 FF, PP2AE26006C0 FF, PP2AE27004C0 FF, PP2AE05501C0 FF, PP2AE09601C0 FF, PP2AE09901C0 FF, PP2AE08106C0 FF, PP2AE22001C0 FF, PP2AM21107C0 FF, PP2AM23010C0 FF, PP2AM26008C0 FF, PP2AM26007C0 FF, PP2AM27004C0 FF, PP2AM27005C0 FF, PP2AM08103C0 FF, PP2AM09203C0 FF, PP2AM09901C0 FF, PP2AM08101C0 FF, PP2AM21106C0 FF, PP2AM26009C0 FF, PP2AM26006C0 FF, PP2AM09601C0 FF, PP2AM08701C0 FF, PP2AM22004C0 FF |  |  |  | 31.31d | 27.43d |  | R00-C02, Calendar day |  |  |  |  |  |  | GEN |  | B02 |  |  | R00 |  | GEN |  |  |  |  |
| MGNSI00100M0 |  | Handing Over Zone A | milestone | 0d | 2013-02-28 | 2013-02-28 | PP3BP27030C20 FF, PP3BP22011C20 FF, PP3BP23019C20 FF, PP3BP26017C20 FF, PP3BP21113C20 FF, PP3BP09903C20 FF, PP3BP05509C20 FF, PP3BP11006C20 FF, PP3BP11004C20 FF, PP3BP11009C20 FF, PP2BP22011C20 FF, PP2BP23019C20 FF, PP2BP26017C20 FF, PP2BP21113C20 FF, PP2BP27030C20 FF, PP2BP09903C20 FF, PP2BP05509C20 FF, PP2BP11006C20 FF, PP2BP11004C20 FF, PP2BP11009C20 FF, PP2BM26008C0 FF, PP2BM27005C0 FF, PP2BM09901C0 FF, PP2BM26007C0 FF, PP2BM09201C0 FF, PP2BM21107C0 FF, PP2BM23010C0 FF, PP2BM27004C0 FF, PP2BM08102C0 FF, PP2BM08103C0 FF, PP2BM09202C0 FF, PP2BM08101C0 FF, PP2BM08701C0 FF, PP2BM09203C0 FF, PP2BM21106C0 FF, PP2BM26009C0 FF, PP2BM26006C0 FF, PP2BM09601C0 FF, PP2BM22004C0 FF, PP1BP22011C20 FF, PP1BP26017C20 FF, PP1BP23019C20 FF, PP1BP21113C20 FF, PP1BP27030C20 FF, PP1BP09903C20 FF, PP1BP05509C20 FF, PP1BP11006C20 FF, PP1BP11004C20 FF, PP1BP11009C20 FF |  |  |  | 46.24d | 42.36d |  | R00-C02, Calendar day |  |  |  |  |  |  | GEN |  | B02 |  |  | R00 |  | GEN |  |  |  |  |
|  | S31 | **Defect Notification** |  |  | 2013-05-01 | 2013-05-01 |  |  |  |  |  |  |  |  |  |  |  |  |  |  |  |  |  |  |  |  |  |  |  |  |  |  |
| MGNSO00104M0 |  | CM-GN ; Startup Defect Notification for Civil / Arch (12 Months) | milestone | 0d | 2013-05-01 | 2013-05-01 | MGNSO00102M0 |  |  |  | 63.88d | 52.87d |  | R00-C02, Calendar day | MGNSO00103M0 | CM | C | GN | SO | MI | 001 | 04 | B01 |  | 2 | R00 | ACF00 | 001 |  |  |  |  |
| MGNSO00105M0 |  | CM-GN ; Startup Defect Notification for MEP (24 Months) | milestone | 0d | 2013-05-01 | 2013-05-01 | MGNSO00102M0 |  |  |  | 63.88d | 52.87d |  | R00-C02, Calendar day | MGNSO00103M0 | CM | C | GN | SO | MI | 001 | 05 | B01 |  | 2 | R00 | ACF00 | 001 |  |  |  |  |
|  | DI | **Design Issue by Client (PCO119 & RFP12)** |  |  | 2011-07-11 | 2011-11-29 |  |  |  |  |  |  |  |  |  |  |  |  |  |  |  |  |  |  |  |  |  |  |  |  |  |  |
|  | 1 | **Volume # 2,3,4,5 & 6** |  |  | 2011-08-15 | 2011-11-29 |  |  |  |  |  |  |  |  |  |  |  |  |  |  |  |  |  |  |  |  |  |  |  |  |  |  |
|  | 1 | **Clinic Building** |  |  | 2011-08-18 | 2011-10-02 |  |  |  |  |  |  |  |  |  |  |  |  |  |  |  |  |  |  |  |  |  |  |  |  |  |  |
| CAFCI09202R02 |  | CB - Package-1, IFC Design Issue by Client (Partition Layout) | milestone | 0d | 2011-08-18 A | 2011-08-18 A | MGNMI00101M0 | 100% | 2011-07-18 | 2011-07-18 |  |  | finish on or after 2011-07-18 | R00-C02, Calendar day |  | AB | G | AF | CI | IS | 092 |  | B01 |  | 01 | VO |  | 092 | CAFEI09200R02 | PCO1196700 | AAFCI09202R02 |  |
| CAFCI09201R20 |  | CB - Clinical Package, IFC Design Issue by Client (GA, Civil & MEP) | milestone | 0d | 2011-08-25 A | 2011-08-25 A | MGNMI00101M0 | 100% | 2011-10-02 | 2011-10-02 |  |  |  | R00-C02, Calendar day |  | CB | G | AF | CI | IS | 092 |  | B01 |  | 01 | VO |  | GEN | CAFEI09201R02 | PCO1196710 | CAFCI09201R02 |  |
| CAFCI09201R02 |  | CB - Package-2, IFC Design Issue by Client (GA, Civil & MEP) | milestone | 0d | 2011-10-02 | 2011-10-02 | CAFCI09202R02 |  |  |  | 18.75d | 0d | finish on or after 2011-10-02 | R00-C02, Calendar day |  | CB | G | AF | CI | IS | 092 |  | B01 |  | 01 | VO |  | 092 | CAFEI09201R02 | PCO1196710 | CAFCI09201R02 |  |
| CAFCI22001R02 |  | CB - Package-3, IFC Design Issue by Client (Interior Design) | milestone | 0d | 2011-10-02 | 2011-10-02 | CAFCI09201R02, CAFCI09201R20 |  |  |  | 49d | 34.62d | finish on or after 2011-10-02 | R00-C02, Calendar day |  | CB | G | AF | CI | IS | 220 |  | B01 |  | 01 | VO |  | 220 | CAFEI22036R02 | PCO1196720 | CAFCI22001R02 |  |
|  | 2 | **D&T Building (Section 1)** |  |  | 2011-08-16 | 2011-09-30 |  |  |  |  |  |  |  |  |  |  |  |  |  |  |  |  |  |  |  |  |  |  |  |  |  |  |
| DAFCI09201R02 |  | DT, Sec 1 - Package-1, IFC Design Issue by Client (Partition Layout) | milestone | 0d | 2011-08-16 A | 2011-08-16 A | MGNMI00101M0 | 100% | 2011-07-18 | 2011-07-18 |  |  | finish on or after 2011-07-18 | R00-C02, Calendar day |  | DT | G | AF | CI | IS | 092 |  | B01 |  | CI | VO |  | 092 |  | PCO1193500 | DAFCI09201R02 |  |
| DAFCI09203R20 |  | DT, Sec 1 - Clinical Package, IFC Design Issue by Client (GA, Civil & MEP) | milestone | 0d | 2011-08-25 A | 2011-08-25 A | MGNMI00101M0 | 100% | 2011-10-02 | 2011-10-02 |  |  |  | R00-C02, Calendar day |  | DT | G | AF | CI | IS | 092 |  | B01 |  | CI | VO |  | GEN |  | PCO1194700 | DAFCI09203R02 |  |
| DAFCI09203R02 |  | DT, Sec 1 - Package-2, IFC Design Issue by Client (GA, Civil & MEP) | milestone | 0d | 2011-09-20 A | 2011-09-20 A | DAFCI09201R02 | 100% | 2011-10-02 | 2011-10-02 |  |  |  | R00-C02, Calendar day |  | DT | G | AF | CI | IS | 092 |  | B01 |  | CI | VO |  | 092 |  | PCO1194700 | DAFCI09203R02 |  |
| DAFCI22001R02 |  | DT, Sec 1 - Package-3, IFC Design Issue by Client (Interior Design) | milestone | 0d | 2011-09-30 | 2011-09-30 | DAFCI09203R02 |  |  |  | 163d | 121d |  | R00-C02, Calendar day |  | DT | G | AF | CI | IS | 220 |  | B01 |  | CI | VO |  | 220 |  | PCO1195100 | DAFCI22001R02 | 0 |

| ID | WBS | Activity | Type | Duration | Start | Finish | Predecessors | Complete | Planned start | Planned finish | Total float | Free float | Constraint | Calendar | Y_id | YC_id | CCAD BUILDING(SET) | CCAD PHASE(SET) | CCAD FLOOR(SET) | CCAD ZONE(SET) | CCAD SECTION(SET) | CCAD BILL(SET) | CCAD TAG(SET) | CCAD REV(SET) | CCAD SSCF | CCAD WORK(SET) |
| --- | --- | --- | --- | --- | --- | --- | --- | --- | --- | --- | --- | --- | --- | --- | --- | --- | --- | --- | --- | --- | --- | --- | --- | --- | --- | --- |
|  | 3 | **D&T Building (Section 2)** |  |  | 2011-08-18 | 2011-10-23 |  |  |  |  |  |  |  |  |  |  |  |  |  |  |  |  |  |  |  |  |
| DAFMI09202R02 |  | DT, Sec 2 - Package-1, IFC Design Issue by Client (Partition Layout) | milestone | 0d | 2011-08-18 A | 2011-08-18 A | MGNMI00101M0 | 100% | 2011-09-01 | 2011-09-01 |  |  |  | R00-C02, Calendar day | PCO1194000 | DAFMI09202R02 | DT | G | AF | MI | 092 | B01 | CI | VO | 092 |  |
| DAFMI22002R20 |  | DT, Sec 2 - Clinical Package, IFC Design Issue by Client (GA, Civil & MEP) | milestone | 0d | 2011-08-25 A | 2011-08-25 A | MGNMI00101M0 | 100% | 2011-09-30 | 2011-09-30 |  |  |  | R00-C02, Calendar day | PCO1195300 | DAFMI22002R02 | DT | G | AF | MI | 220 | B01 | CI | VO | 220 | IS |
| DAFMI22002R02 |  | DT, Sec 2 - Package-2, IFC Design Issue by Client (GA, Civil & MEP) | milestone | 0d | 2011-10-02 | 2011-10-02 | DAFMI09202R02 |  |  |  | 15.8d | 0d | finish on or after 2011-10-02 | R00-C02, Calendar day | PCO1195300 | DAFMI22002R02 | DT | G | AF | MI | 220 | B01 | CI | VO | 220 | IS |
| DAFMI22003R02 |  | DT, Sec 2 - Package-3, IFC Design Issue by Client (Interior Design) | milestone | 0d | 2011-10-23 | 2011-10-23 | DAFMI22002R02, DAFMI22002R20 |  |  |  | 101d | 53.62d | finish on or after 2011-10-23 | R00-C02, Calendar day | PCO1195800 | DAFMI22003R02 | DT | G | AF | MI | 220 | B01 | CI | VO | 220 | IS |
|  | 4 | **Gallery** |  |  | 2011-10-28 | 2011-11-29 |  |  |  |  |  |  |  |  |  |  |  |  |  |  |  |  |  |  |  |  |
| GAFCI22001R02 |  | GA - Package-2, IFC Design Issue by Client (GA, Civil & MEP) | milestone | 0d | 2011-10-28 | 2011-10-28 | MGNMI00101M0 |  |  |  | 55.38d | 12.12d | finish on or after 2011-10-28 | R00-C02, Calendar day | PCO1195000 | GAFCI22001R02 | GA | G | AF |  | 220 | B01 | 01 | VO | 220 | IS |
| GAFCI22002R02 |  | GA - Package-3, IFC Design Issue by Client (Interior Design) | milestone | 0d | 2011-11-29 | 2011-11-29 | GAFCI22001R02 |  |  |  | 90.62d | 26.2d | finish on or after 2011-11-29 | R00-C02, Calendar day | PCO1195200 | GAFCI22002R02 | GA | G | AF |  | 220 | B01 | 01 | VO | 220 | IS |
|  | 5 | **ICU** |  |  | 2011-08-25 | 2011-11-29 |  |  |  |  |  |  |  |  |  |  |  |  |  |  |  |  |  |  |  |  |
| IAFCI09201R02 |  | IC - Package-1, IFC Design Issue by Client (Partition Layout) | milestone | 0d | 2011-08-25 A | 2011-08-25 A | MGNMI00101M0 | 100% | 2011-07-18 | 2011-07-18 |  |  |  | R00-C02, Calendar day | PCO1194100 | IAFCI09201R02 | IC | G | AF |  | 092 | B01 | CI | VO | 092 | IS |
| IAFCI22001R20 |  | IC - Clinical Package, IFC Design Issue by Client (GA, Civil & MEP) | milestone | 0d | 2011-09-18 A | 2011-09-18 A | MGNMI00101M0 | 100% | 2011-11-01 | 2011-11-01 |  |  |  | R00-C02, Calendar day | PCO1195400 | AAFCI22001R02 | IC | G | AF |  | 220 | B01 | CI | VO | 220 | IS |
| IAFCI22001R02 |  | IC - Package-2, IFC Design Issue by Client (GA, Civil & MEP) | milestone | 0d | 2011-11-01 | 2011-11-01 | IAFCI09201R02 |  |  |  | 17d | 1d | finish on or after 2011-11-01 | R00-C02, Calendar day | PCO1195400 | AAFCI22001R02 | IC | G | AF |  | 220 | B01 | CI | VO | 220 | IS |
| IAFCI22002R02 |  | IC - Package-3, IFC Design Issue by Client (Interior Design) | milestone | 0d | 2011-11-29 | 2011-11-29 | IAFCI22001R02 |  |  |  | 87d | 51.05d | finish on or after 2011-11-29 | R00-C02, Calendar day | PCO1196000 | AAFCI22002R02 | IC | G | AF |  | 220 | B01 | CI | VO | 220 | IS |
|  | 6 | **Swing Wing** |  |  | 2011-08-25 | 2011-11-29 |  |  |  |  |  |  |  |  |  |  |  |  |  |  |  |  |  |  |  |  |
| SAFCI09201R02 |  | SW - Package-1, IFC Design Issue by Client (Partition Layout) | milestone | 0d | 2011-08-25 A | 2011-08-25 A | MGNMI00101M0 | 100% | 2011-07-18 | 2011-07-18 |  |  |  | R00-C02, Calendar day | PCO1193200 | SAFCI09201R02 | SW | G | AF |  | 092 | B01 | CI | VO | 092 | IS |
| SAFCI22001R20 |  | SW - Clinical Package, IFC Design Issue by Client (GA, Civil & MEP) | milestone | 0d | 2011-09-18 A | 2011-09-18 A | MGNMI00101M0 | 100% | 2011-11-01 | 2011-11-01 |  |  |  | R00-C02, Calendar day | PCO1195400 | AAFCI22001R02 | SW | G | AF |  | 220 | B01 | CI | VO | 220 | IS |
| SAFCI22001R02 |  | SW - Package-2, IFC Design Issue by Client (GA, Civil & MEP) | milestone | 0d | 2011-11-01 | 2011-11-01 | SAFCI09201R02 |  |  |  | 44.75d | 1d | finish on or after 2011-11-01 | R00-C02, Calendar day | PCO1195400 | AAFCI22001R02 | SW | G | AF |  | 220 | B01 | CI | VO | 220 | IS |
| SAFCI22002R02 |  | SW - Package-3, IFC Design Issue by Client (Interior Design) | milestone | 0d | 2011-11-29 | 2011-11-29 | SAFCI22001R02 |  |  |  | 72d | 38d | finish on or after 2011-11-29 | R00-C02, Calendar day | PCO1196000 | AAFCI22002R02 | SW | G | AF |  | 220 | B01 | CI | VO | 220 | IS |
|  | 7 | **Patient Tower (L10 - L16)** |  |  | 2011-08-25 | 2011-11-29 |  |  |  |  |  |  |  |  |  |  |  |  |  |  |  |  |  |  |  |  |
| TAFCI09202R02 |  | PT, L10-16 - Package-1, IFC Design Issue by Client (Partition Layout) | milestone | 0d | 2011-08-25 A | 2011-08-25 A | MGNMI00101M0 | 100% | 2011-09-01 | 2011-09-01 |  |  |  | R00-C02, Calendar day | PCO1194500 | TAFCI09202R02 | PT | G | AF |  | 092 | B01 | CI | VO | 092 | IS |
| TAFCI22011R20 |  | PT, L10-16 - Clinical Package, IFC Design Issue by Client (GA, Civil & MEP) | milestone | 0d | 2011-09-18 A | 2011-09-18 A | MGNMI00101M0 | 100% | 2011-11-01 | 2011-11-01 |  |  |  | R00-C02, Calendar day | PCO1195500 | TAFCI22001R02 | PT | G | AF | CI | 220 | B01 | CI | VO | 220 | IS |
| TAFCI22011R02 |  | PT, L10-16 - Package-2, IFC Design Issue by Client (GA, Civil & MEP) | milestone | 0d | 2011-11-01 | 2011-11-01 | TAFCI09202R02 |  |  |  | 30.75d | 1d | finish on or after 2011-11-01 | R00-C02, Calendar day | PCO1195500 | TAFCI22001R02 | PT | G | AF | CI | 220 | B01 | CI | VO | 220 | IS |
| TAFCI22022R02 |  | PT, L10-16 - Package-3, IFC Design Issue by Client (Interior Design) | milestone | 0d | 2011-11-29 | 2011-11-29 | TAFCI22011R02 |  |  |  | 136.88d | 79.62d | finish on or after 2011-11-29 | R00-C02, Calendar day | PCO1195900 | TAFCI22002R02 | PT | G | AF | CI | 220 | B01 | CI | VO | 220 | IS |
|  | 9 | **Patient Tower (L17 - L20)** |  |  | 2011-08-25 | 2011-11-29 |  |  |  |  |  |  |  |  |  |  |  |  |  |  |  |  |  |  |  |  |
| TAFCI09201R02 |  | PT, L17-20 - Package-1, IFC Design Issue by Client (Partition Layout) | milestone | 0d | 2011-08-25 A | 2011-08-25 A | MGNMI00101M0 | 100% | 2011-07-18 | 2011-07-18 |  |  |  | R00-C02, Calendar day | PCO1193300 | TAFCI09201R02 | PT | G | AF | CI | 092 | B01 | CI | VO | 092 | IS |
| TAFCI22001R20 |  | PT, L17-20 -Clinical Package, IFC Design Issue by Client (GA, Civil & MEP) | milestone | 0d | 2011-09-18 A | 2011-09-18 A | MGNMI00101M0 | 100% | 2011-11-02 | 2011-11-02 |  |  |  | R00-C02, Calendar day | PCO1195500 | TAFCI22001R02 | PT | G | AF | CI | 220 | B01 | CI | VO | 220 | IS |
| TAFCI22001R02 |  | PT, L17-20 - Package-2, IFC Design Issue by Client (GA, Civil & MEP) | milestone | 0d | 2011-11-02 | 2011-11-02 | TAFCI09201R02 |  |  |  | 77.12d | 27d | finish on or after 2011-11-02 | R00-C02, Calendar day | PCO1195500 | TAFCI22001R02 | PT | G | AF | CI | 220 | B01 | CI | VO | 220 | IS |
| TAFCI22002R02 |  | PT, L17-20 - Package-3, IFC Design Issue by Client (Interior Design) | milestone | 0d | 2011-11-29 | 2011-11-29 | TAFCI22001R02 |  |  |  | 200.75d | 153.64d | finish on or after 2011-11-29 | R00-C02, Calendar day | PCO1195900 | TAFCI22002R02 | PT | G | AF | CI | 220 | B01 | CI | VO | 220 | IS |

| ID | WBS | Activity | Type | Duration | Start | Finish | Predecessors | Complete | Planned start | Planned finish | Constraint | Calendar | Y_id | YC_id | CCAD BUILDING(SET) | CCAD PHASE(SET) | CCAD FLOOR(SET) | CCAD ZONE(SET) | CCAD WORK(SET) | CCAD SECTION(SET) | CCAD BILL(SET) | CCAD TAG(SET) | CCAD REV(SET) | CCAD SSCF | name |
| --- | --- | --- | --- | --- | --- | --- | --- | --- | --- | --- | --- | --- | --- | --- | --- | --- | --- | --- | --- | --- | --- | --- | --- | --- | --- |
|  | 8 | **Bathroom pods (Patient Tower)** |  |  | 2011-08-15 | 2011-08-15 |  |  |  |  |  |  |  |  |  |  |  |  |  |  |  |  |  |  |  |
| AAFCI09201R02 |  | PT, Pods, Completion of ACU bathroom design by Client | milestone | 0d | 2011-08-15 A | 2011-08-15 A | MGNMI00101M0 | 100% | 2011-07-19 | 2011-07-19 | finish on or after 2011-07-19 | R00-C02, Calendar day | PCO1193900 | AAFCI09201R02 | PT | G | AF | CI | IS | 220 | B01 | CI | VO | 220 |  |
|  | 2 | **Volume # 5** |  |  | 2011-07-13 | 2011-07-13 |  |  |  |  |  |  |  |  |  |  |  |  |  |  |  |  |  |  |  |
|  | 1 | **Sanitary Ware** |  |  | 2011-07-13 | 2011-07-13 |  |  |  |  |  |  |  |  |  |  |  |  |  |  |  |  |  |  |  |
| A10230 |  | Sanitary ware specification issue by Client | milestone | 0d | 2011-07-13 A | 2011-07-13 A | MGNMI00101M0 | 100% | 2011-09-01 | 2011-09-01 |  | R00-C02, Calendar day |  |  | GR | G |  |  |  |  | B01 |  | VO | GEN |  |
|  | 3 | **Volume # 6** |  |  |  |  |  |  |  |  |  |  |  |  |  |  |  |  |  |  |  |  |  |  |  |
|  | 1 | **Lighting Rationalisation** |  |  |  |  |  |  |  |  |  |  |  |  |  |  |  |  |  |  |  |  |  |  |  |
|  | 4 | **Volume # 7** |  |  | 2011-07-18 | 2011-07-18 |  |  |  |  |  |  |  |  |  |  |  |  |  |  |  |  |  |  |  |
|  | 1 | **Bent Canopy - Facade** |  |  | 2011-07-18 | 2011-07-18 |  |  |  |  |  |  |  |  |  |  |  |  |  |  |  |  |  |  |  |
| AAFCI04401R02 |  | Issue external Gas & details to allow facade design | milestone | 0d | 2011-07-18 A | 2011-07-18 A | MGNMI00101M0 | 100% |  |  | finish on or after 2011-07-18 | R00-C02, Calendar day | PCO1192500 | AAFCI04401R02 | SW | G | AF | CI | IS | 044 | B01 | 01 | VO | 044 | GAFEI0440R02 |
|  | 5 | **Volume # 8** |  |  | 2011-08-25 | 2011-08-25 |  |  |  |  |  |  |  |  |  |  |  |  |  |  |  |  |  |  |  |
|  | 1 | **T3 Connector Bridge (Carpark)** |  |  | 2011-08-25 | 2011-08-25 |  |  |  |  |  |  |  |  |  |  |  |  |  |  |  |  |  |  |  |
| A10260 |  | IFC Design Issue by Client | milestone | 0d | 2011-08-25 A | 2011-08-25 A | MGNMI00101M0 | 100% | 2011-09-01 | 2011-09-01 |  | R00-C02, Calendar day |  |  | PA | G |  |  |  |  | B01 |  | R00 | GEN |  |
| A10290 |  | EI 117 - T3 Link Bridge - Part 3 | milestone | 0d | 2011-08-25 A | 2011-08-25 A | MGNMI00101M0 | 100% | 2011-09-01 | 2011-09-01 |  | R00-C02, Calendar day |  |  | PA | G |  |  |  | GEN | B01 |  | R00 | GEN |  |
|  | 6 | **Volume # 9** |  |  | 2011-07-11 | 2011-07-11 |  |  |  |  |  |  |  |  |  |  |  |  |  |  |  |  |  |  |  |
|  | 1 | **Deletion of Water feature (External Works)** |  |  | 2011-07-11 | 2011-07-11 |  |  |  |  |  |  |  |  |  |  |  |  |  |  |  |  |  |  |  |
| GAFCI50038R02 |  | IFC drawings to be issued (as per PCO 119) | milestone | 0d | 2011-07-11 A | 2011-07-11 A | MGNMI00101M0 | 100% |  |  | finish on or after 2011-06-30 | R00-C02, Calendar day | PCO1193000 | GAFCI50038R02 | LA | G | AF | CI | IS | 500 | B01 | CI | VO | 328 | LEXEI50016R02 |
|  | 7 | **Volume # 10** |  |  | 2011-07-21 | 2011-07-21 |  |  |  |  |  |  |  |  |  |  |  |  |  |  |  |  |  |  |  |
|  | 1 | **CUP Life Safety (ADDC Comments)** |  |  | 2011-07-21 | 2011-07-21 |  |  |  |  |  |  |  |  |  |  |  |  |  |  |  |  |  |  |  |
| A10280 |  | IFC Design Issue by Client | milestone | 0d | 2011-07-21 A | 2011-07-21 A | MGNMI00101M0 | 100% | 2011-09-01 | 2011-09-01 |  | R00-C02, Calendar day |  |  | UP | G |  |  |  |  | B01 |  | R00 | GEN |  |
|  | SD | **Shop drawing preparation & Approval (PCO119 & RFP12)** |  |  |  |  |  |  |  |  |  |  |  |  |  |  |  |  |  |  |  |  |  |  |  |
|  | 1 | **Volume # 2,3,4,5 & 6** |  |  |  |  |  |  |  |  |  |  |  |  |  |  |  |  |  |  |  |  |  |  |  |
|  | 1 | **Clinic Building** |  |  |  |  |  |  |  |  |  |  |  |  |  |  |  |  |  |  |  |  |  |  |  |
|  | 1 | **Package-1, Shop dwg & approve** |  |  |  |  |  |  |  |  |  |  |  |  |  |  |  |  |  |  |  |  |  |  |  |
|  | 2 | **Package-2, Shop dwg & approve** |  |  |  |  |  |  |  |  |  |  |  |  |  |  |  |  |  |  |  |  |  |  |  |
|  | 3 | **Package-3, Shop dwg & approve** |  |  |  |  |  |  |  |  |  |  |  |  |  |  |  |  |  |  |  |  |  |  |  |
|  | 5 | **Clinic (P3 to L4) TO BE DELETED** |  |  |  |  |  |  |  |  |  |  |  |  |  |  |  |  |  |  |  |  |  |  |  |
|  | 4 | **All Areas - Clinic** |  |  |  |  |  |  |  |  |  |  |  |  |  |  |  |  |  |  |  |  |  |  |  |
|  | 2 | **D&T Building (Section 1)** |  |  |  |  |  |  |  |  |  |  |  |  |  |  |  |  |  |  |  |  |  |  |  |
|  | 1 | **Package-1, Shop dwg & approve** |  |  |  |  |  |  |  |  |  |  |  |  |  |  |  |  |  |  |  |  |  |  |  |
|  | 2 | **Package-2, Shop dwg & approve** |  |  |  |  |  |  |  |  |  |  |  |  |  |  |  |  |  |  |  |  |  |  |  |
|  | 3 | **Package-3, Shop dwg & approve** |  |  |  |  |  |  |  |  |  |  |  |  |  |  |  |  |  |  |  |  |  |  |  |
|  | 4 | **All Areas - D&T Section 1 TO BE DELETED** |  |  |  |  |  |  |  |  |  |  |  |  |  |  |  |  |  |  |  |  |  |  |  |
|  | 3 | **D&T Building (Section 2)** |  |  |  |  |  |  |  |  |  |  |  |  |  |  |  |  |  |  |  |  |  |  |  |
|  | 1 | **Package-1, Shop dwg & approve** |  |  |  |  |  |  |  |  |  |  |  |  |  |  |  |  |  |  |  |  |  |  |  |
|  | 2 | **Package-2, Shop dwg & approve** |  |  |  |  |  |  |  |  |  |  |  |  |  |  |  |  |  |  |  |  |  |  |  |
|  | 3 | **Package-3, Shop dwg & approve** |  |  |  |  |  |  |  |  |  |  |  |  |  |  |  |  |  |  |  |  |  |  |  |
|  | 4 | **All Areas - D&T Section 2 TO BE DELETED** |  |  |  |  |  |  |  |  |  |  |  |  |  |  |  |  |  |  |  |  |  |  |  |
|  | 4 | **Gallery** |  |  |  |  |  |  |  |  |  |  |  |  |  |  |  |  |  |  |  |  |  |  |  |
|  | 1 | **Package-1, Shop dwg & approve** |  |  |  |  |  |  |  |  |  |  |  |  |  |  |  |  |  |  |  |  |  |  |  |
|  | 2 | **Package-2, Shop dwg & approve** |  |  |  |  |  |  |  |  |  |  |  |  |  |  |  |  |  |  |  |  |  |  |  |
|  | 3 | **Package-3, Shop dwg & approve** |  |  |  |  |  |  |  |  |  |  |  |  |  |  |  |  |  |  |  |  |  |  |  |
|  | 4 | **All Areas - Gallery TO BE DELETED** |  |  |  |  |  |  |  |  |  |  |  |  |  |  |  |  |  |  |  |  |  |  |  |
|  | 5 | **ICU** |  |  |  |  |  |  |  |  |  |  |  |  |  |  |  |  |  |  |  |  |  |  |  |
|  | 1 | **Package-1, Shop dwg & approve** |  |  |  |  |  |  |  |  |  |  |  |  |  |  |  |  |  |  |  |  |  |  |  |
|  | 2 | **Package-2, Shop dwg & approve** |  |  |  |  |  |  |  |  |  |  |  |  |  |  |  |  |  |  |  |  |  |  |  |
|  | 3 | **Package-3, Shop dwg & approve** |  |  |  |  |  |  |  |  |  |  |  |  |  |  |  |  |  |  |  |  |  |  |  |
|  | 4 | **All Areas - ICU, SW, PTto L16 TO BE DELETED** |  |  |  |  |  |  |  |  |  |  |  |  |  |  |  |  |  |  |  |  |  |  |  |
|  | 6 | **Swing Wing** |  |  |  |  |  |  |  |  |  |  |  |  |  |  |  |  |  |  |  |  |  |  |  |
|  | 1 | **Package-1, Shop dwg & approve** |  |  |  |  |  |  |  |  |  |  |  |  |  |  |  |  |  |  |  |  |  |  |  |
|  | 2 | **Package-2, Shop dwg & approve** |  |  |  |  |  |  |  |  |  |  |  |  |  |  |  |  |  |  |  |  |  |  |  |
|  | 3 | **Package-3, Shop dwg & approve** |  |  |  |  |  |  |  |  |  |  |  |  |  |  |  |  |  |  |  |  |  |  |  |
|  | 7 | **Patient Tower (L10 - L16)** |  |  |  |  |  |  |  |  |  |  |  |  |  |  |  |  |  |  |  |  |  |  |  |
|  | 1 | **Package-1, Shop dwg & approve** |  |  |  |  |  |  |  |  |  |  |  |  |  |  |  |  |  |  |  |  |  |  |  |
|  | 2 | **Package-2, Shop dwg & approve** |  |  |  |  |  |  |  |  |  |  |  |  |  |  |  |  |  |  |  |  |  |  |  |
|  | 3 | **Package-3, Shop dwg & approve** |  |  |  |  |  |  |  |  |  |  |  |  |  |  |  |  |  |  |  |  |  |  |  |
|  | 4 | **All Areas - VIP & Royal Floors L17-20 TO BE DELETED** |  |  |  |  |  |  |  |  |  |  |  |  |  |  |  |  |  |  |  |  |  |  |  |
|  | 8 | **Patient Tower (L17 - L20)** |  |  |  |  |  |  |  |  |  |  |  |  |  |  |  |  |  |  |  |  |  |  |  |
|  | 1 | **Package-1, Shop dwg & approve** |  |  |  |  |  |  |  |  |  |  |  |  |  |  |  |  |  |  |  |  |  |  |  |
|  | 2 | **Package-2, Shop dwg & approve** |  |  |  |  |  |  |  |  |  |  |  |  |  |  |  |  |  |  |  |  |  |  |  |
|  | 3 | **Package-3, Shop dwg & approve** |  |  |  |  |  |  |  |  |  |  |  |  |  |  |  |  |  |  |  |  |  |  |  |
|  | 2 | **Volume # 5** |  |  |  |  |  |  |  |  |  |  |  |  |  |  |  |  |  |  |  |  |  |  |  |
|  | 1 | **Sanitary Ware** |  |  |  |  |  |  |  |  |  |  |  |  |  |  |  |  |  |  |  |  |  |  |  |
|  | 3 | **Volume # 6** |  |  |  |  |  |  |  |  |  |  |  |  |  |  |  |  |  |  |  |  |  |  |  |
|  | 1 | **Lighting Rationalisation** |  |  |  |  |  |  |  |  |  |  |  |  |  |  |  |  |  |  |  |  |  |  |  |
|  | 4 | **Volume # 7** |  |  |  |  |  |  |  |  |  |  |  |  |  |  |  |  |  |  |  |  |  |  |  |
|  | 1 | **Bent Canopy - Facade (Swing)** |  |  |  |  |  |  |  |  |  |  |  |  |  |  |  |  |  |  |  |  |  |  |  |
|  | 5 | **Volume # 8** |  |  |  |  |  |  |  |  |  |  |  |  |  |  |  |  |  |  |  |  |  |  |  |
|  | 1 | **T3 Connector Bridge (Carpark)** |  |  |  |  |  |  |  |  |  |  |  |  |  |  |  |  |  |  |  |  |  |  |  |
|  | 6 | **Volume # 9** |  |  |  |  |  |  |  |  |  |  |  |  |  |  |  |  |  |  |  |  |  |  |  |

| ID | WBS | Activity | Type | Duration | Start | Finish | Predecessors | Complete | Planned start | Planned finish | Total float | Free float | Calendar | Resources | CCAD BUILDING(SET) | CCAD PHASE(SET) | CCAD FLOOR(SET) | CCAD ZONE(SET) | CCAD WORK(SET) | CCAD SECTION(SET) | CCAD SERIAL No.(SET) | CCAD BILL(SET) | CCAD HANDOVER(SET) | CCAD TAG(SET) | CCAD REV(SET) | CCADACF (SET) | CCAD CSA | CCAD SSCF | change id | CCAD DIVISION(SET) | CCAD RESPONSIBILITY(SET) |
| --- | --- | --- | --- | --- | --- | --- | --- | --- | --- | --- | --- | --- | --- | --- | --- | --- | --- | --- | --- | --- | --- | --- | --- | --- | --- | --- | --- | --- | --- | --- | --- |
|  | 1 | **Deletion of Water feature (External Works)** |  |  |  |  |  |  |  |  |  |  |  |  |  |  |  |  |  |  |  |  |  |  |  |  |  |  |  |  |  |
|  | 7 | **Volume # 10** |  |  |  |  |  |  |  |  |  |  |  |  |  |  |  |  |  |  |  |  |  |  |  |  |  |  |  |  |  |
|  | 1 | **CUP Life Safety (ADDC Comments)** |  |  |  |  |  |  |  |  |  |  |  |  |  |  |  |  |  |  |  |  |  |  |  |  |  |  |  |  |  |
|  | 9 | **Summary Schedule** |  |  |  |  |  |  |  |  |  |  |  |  |  |  |  |  |  |  |  |  |  |  |  |  |  |  |  |  |  |
|  | 10 | **Overall Summary Schedule for Major Trades** |  |  |  |  |  |  |  |  |  |  |  |  |  |  |  |  |  |  |  |  |  |  |  |  |  |  |  |  |  |
|  | 1 | **CUP(Central Utility Plant)** |  |  |  |  |  |  |  |  |  |  |  |  |  |  |  |  |  |  |  |  |  |  |  |  |  |  |  |  |  |
|  | 1 | **CUP Summary** |  |  |  |  |  |  |  |  |  |  |  |  |  |  |  |  |  |  |  |  |  |  |  |  |  |  |  |  |  |
|  | 2 | **Clinic Building** |  |  |  |  |  |  |  |  |  |  |  |  |  |  |  |  |  |  |  |  |  |  |  |  |  |  |  |  |  |
|  | 1 | **Clinic Building Summary** |  |  |  |  |  |  |  |  |  |  |  |  |  |  |  |  |  |  |  |  |  |  |  |  |  |  |  |  |  |
|  | 3 | **D&T(Diagnostic & Treatment)** |  |  |  |  |  |  |  |  |  |  |  |  |  |  |  |  |  |  |  |  |  |  |  |  |  |  |  |  |  |
|  | 1 | **D&T Building Summary** |  |  |  |  |  |  |  |  |  |  |  |  |  |  |  |  |  |  |  |  |  |  |  |  |  |  |  |  |  |
|  | 4 | **Gallery** |  |  |  |  |  |  |  |  |  |  |  |  |  |  |  |  |  |  |  |  |  |  |  |  |  |  |  |  |  |
|  | 1 | **Gallery Building Summary** |  |  |  |  |  |  |  |  |  |  |  |  |  |  |  |  |  |  |  |  |  |  |  |  |  |  |  |  |  |
|  | 5 | **ICU** |  |  |  |  |  |  |  |  |  |  |  |  |  |  |  |  |  |  |  |  |  |  |  |  |  |  |  |  |  |
|  | 1 | **ICU Building Summary** |  |  |  |  |  |  |  |  |  |  |  |  |  |  |  |  |  |  |  |  |  |  |  |  |  |  |  |  |  |
|  | 6 | **Swing Wing** |  |  |  |  |  |  |  |  |  |  |  |  |  |  |  |  |  |  |  |  |  |  |  |  |  |  |  |  |  |
|  | 1 | **Swing Wing Building Summary** |  |  |  |  |  |  |  |  |  |  |  |  |  |  |  |  |  |  |  |  |  |  |  |  |  |  |  |  |  |
|  | 7 | **Patient Tower** |  |  |  |  |  |  |  |  |  |  |  |  |  |  |  |  |  |  |  |  |  |  |  |  |  |  |  |  |  |
|  | 1 | **Patient Tower Building Summary** |  |  |  |  |  |  |  |  |  |  |  |  |  |  |  |  |  |  |  |  |  |  |  |  |  |  |  |  |  |
|  | 8 | **Carpark** |  |  |  |  |  |  |  |  |  |  |  |  |  |  |  |  |  |  |  |  |  |  |  |  |  |  |  |  |  |
|  | 1 | **Car Park Building Summary** |  |  |  |  |  |  |  |  |  |  |  |  |  |  |  |  |  |  |  |  |  |  |  |  |  |  |  |  |  |
|  | PC | **Pre-Construction Activities** |  |  | 2011-01-12 | 2011-12-01 |  |  |  |  |  |  |  |  |  |  |  |  |  |  |  |  |  |  |  |  |  |  |  |  |  |
|  | PC | **Procurement / Engineering Constraints** |  |  | 2011-05-17 | 2011-11-23 |  |  |  |  |  |  |  |  |  |  |  |  |  |  |  |  |  |  |  |  |  |  |  |  |  |
| BAFT205509C1 |  | Steel Staircase Fab. & Delivery (Stair # 2) (P3 to GF) | milestone | 0d | 2011-05-17 A | 2011-05-17 A | MGNMI00101M0 | 100% |  |  |  |  |  |  | DT | F | AF | GEN | FD | 055 | 05 | B05 | S1 | 01 | R00 | ACF03 | ST | 055 |  |  |  |
| BAFT805509C1 |  | Steel Staircase Fab. & Delivery (Stair # 8) (P3 to 21F) | milestone | 0d | 2011-05-31 A | 2011-05-31 A | MGNMI00101M0 | 100% |  |  |  |  |  | Labor General | DT | F | AF | GEN | FD | 055 | 05 | B05 | S1 | 01 | R00 | ACF03 | ST | 055 |  |  |  |
| BAFT1405509C1 |  | Steel Staircase Fab. & Delivery (Stair # 14) (P2 to 4F) | milestone | 0d | 2011-05-31 A | 2011-05-31 A | MGNMI00101M0 | 100% |  |  |  |  |  |  | CB | F | AF | GEN | FD | 055 | 05 | B04 | S1 | 01 | R00 | ACF03 | ST | 055 |  |  |  |
| BAFT1805509C1 |  | Steel Staircase Fab. & Delivery (Stair # 18) (P3 to 2F) | milestone | 0d | 2011-06-06 A | 2011-06-06 A | MGNMI00101M0 | 100% |  |  |  |  |  | Labor General | GA | F | AF | GEN | FD | 055 | 05 | B06 | S1 | 01 | R00 | ACF03 | ST | 055 |  |  |  |
| BAFT1505509C1 |  | Steel Staircase Fab. & Delivery (Stair # 15) (P1 to 8FR) | milestone | 0d | 2011-06-07 A | 2011-06-07 A | MGNMI00101M0 | 100% |  |  |  |  |  |  | CB | F | AF | GEN | FD | 055 | 05 | B04 | S1 | 01 | R00 | ACF03 | ST | 055 |  |  |  |
| BAFT905509C1 |  | Steel Staircase Fab. & Delivery (Stair # 9) (P3 to 4F) | milestone | 0d | 2011-06-08 A | 2011-06-08 A | MGNMI00101M0 | 100% |  |  |  |  |  | Labor General | DT | F | AF | GEN | FD | 055 | 05 | B05 | S1 | 01 | R00 | ACF03 | ST | 055 |  |  |  |
| BAFT305509C1 |  | Steel Staircase Fab. & Delivery (Stair # 3) (GF to 4F) | milestone | 0d | 2011-07-04 A | 2011-07-04 A | MGNMI00101M0 | 100% |  |  |  |  |  | Labor General | DT | F | AF | GEN | FD | 055 | 05 | B05 | S1 | 01 | R00 | ACF03 | ST | 055 |  |  |  |
| BAFT1005509C1 |  | Steel Staircase Fab. & Delivery (Stair # 10) (P3 to 6F) | milestone | 0d | 2011-07-31 A | 2011-07-31 A | MGNMI00101M0 | 100% | 2011-09-01 | 2011-09-01 |  |  |  | Labor General | DT | F | AF | GEN | FD | 055 | 05 | B05 | S1 | 01 | R00 | ACF03 | ST | 055 |  |  |  |
| BAFT105509C1 |  | Steel Staircase Fab. & Delivery (Stair # 1) (GF to 21F) | milestone | 0d | 2011-07-31 A | 2011-07-31 A | MGNMI00101M0 | 100% | 2011-09-01 | 2011-09-01 |  |  |  | Labor General | DT | F | AF | GEN | FD | 055 | 05 | B05 | S1 | 01 | R00 | ACF03 | ST | 055 |  |  |  |
| BAFT1105509C1 |  | Steel Staircase Fab. & Delivery (Stair # 11) (P3 to 8F) | milestone | 0d | 2011-07-31 A | 2011-07-31 A | MGNMI00101M0 | 100% | 2011-09-01 | 2011-09-01 |  |  |  | Labor General | CB | F | AF | GEN | FD | 055 | 05 | B04 | S1 | 01 | R00 | ACF03 | ST | 055 |  |  |  |
| BAFT1205509C1 |  | Steel Staircase Fab. & Delivery (Stair # 12) (P3 to 4F) | milestone | 0d | 2011-07-31 A | 2011-07-31 A | MGNMI00101M0 | 100% | 2011-09-01 | 2011-09-01 |  |  |  | Labor General | CB | F | AF | GEN | FD | 055 | 05 | B04 | S1 | 01 | R00 | ACF03 | ST | 055 |  |  |  |
| GNHE08101C0 |  | AB-AF ; Delivery Constraints for Door Frames | milestone | 0d | 2011-08-24 A | 2011-08-24 A | MGNMI00101M0 | 100% | 2011-09-14 | 2011-09-14 |  |  | R00-C02, Calendar day |  | AB | F |  |  | DO | 081 | 01 | FABR |  | DF | R00 | ACF06 |  | 081 | UP3HE08101C0 | 08 | SIS |
| GNHE08101C10 |  | AB-AF ; Lift Shaft Hand-over(Access) | milestone | 0d | 2011-09-01 A | 2011-09-01 A | MGNMI00101M0 | 100% | 2011-09-14 | 2011-09-14 |  |  | R00-C02, Calendar day |  | AB | F |  |  | EL | 142 | 01 | B11 |  | 29 | R00 | ACF06 |  | 142 | UP3HE08101C0 | 11 | SIS |
| BAFT1705509C1 |  | Steel Staircase Fab. & Delivery (Stair # 17) (P2 to 2F) | milestone | 0d | 2011-10-01 | 2011-10-01 | BAFT305509C1 FS+6d, MGNMI00101M0 |  |  |  | 207.63d | 0d |  | Labor General | GA | F | AF | GEN | FD | 055 | 05 | B06 | S1 | 01 | R00 | ACF03 | ST | 055 |  |  | PP |
| BAFT1905509C1 |  | Steel Staircase Fab. & Delivery (Stair # 19) (P2 to GF) | milestone | 0d | 2011-10-01 | 2011-10-01 | BAFT105509C1 FF, MGNMI00101M0 |  |  |  | 194.5d | 0d |  | Labor General | GA | F | AF | GEN | FD | 055 | 05 | B06 | S1 | 01 | R00 | ACF03 | ST | 055 |  |  | PP |
| BAFT2105509C1 |  | Steel Staircase Fab. & Delivery (Stair # 21) (P3 to P2) | milestone | 0d | 2011-10-01 | 2011-10-01 | BAFT1005509C1 FS+3d, MGNMI00101M0 |  |  |  | 162.5d | 0d |  | Labor General | GA | F | AF | GEN | FD | 055 | 05 | B06 | S1 | 01 | R00 | ACF03 | ST | 055 |  |  | PP |
| BAFT2205509C1 |  | Steel Staircase Fab. & Delivery (Stair # 22) (2F to 3F) | milestone | 0d | 2011-10-01 | 2011-10-01 | BAFT305509C1 FS+12d, MGNMI00101M0 |  |  |  | 239.25d | 0d |  | Labor General | DT | F | AF | GEN | FD | 055 | 05 | B05 | S1 | 01 | R00 | ACF03 | ST | 055 |  |  |  |
| BAFT505509C1 |  | Steel Staircase Fab. & Delivery (Stair # 5) (P3 to 4F) | milestone | 0d | 2011-10-01 | 2011-10-01 | BAFT105509C1 FS+7d, MGNMI00101M0 |  |  |  | 169.5d | 0d |  | Labor General | DT | F | AF | GEN | FD | 055 | 05 | B05 | S1 | 01 | R00 | ACF03 | ST | 055 |  |  |  |
| IAFT605509C0 |  | Steel Staircase Fab. & Delivery (Stair # F5 & 6) | milestone | 0d | 2011-10-01 | 2011-10-01 | BAFT305509C1 FS+4d, MGNMI00101M0 |  |  |  | 127.31d | 0d |  |  | IC | F | AF | GEN | FD | 055 | 05 | FABR | S1 | 01 | R00 | ACF03 | ST | 055 |  |  |  |
| BAFT2305509C1 |  | Steel Staircase Fab. & Delivery (Stair # 23) (6F to 8F) | milestone | 0d | 2011-10-05 | 2011-10-05 | BAFT1005509C1 FS+76d, MGNMI00101M0 |  |  |  | 171.25d | 0d |  | Labor General | SW | F | AF | GEN | FD | 055 | 05 | B09 | S1 | 01 | R00 | ACF03 | ST | 055 |  |  |  |
| BAFT2005509C1 |  | Steel Staircase Fab. & Delivery (Stair # 20) (P3 to P1) | milestone | 0d | 2011-11-23 | 2011-11-23 | BAFT1005509C1 FS+95d, MGNMI00101M0 FS+95d |  |  |  | 113.5d | 0d |  | Labor General | GA | F | AF | GEN | FD | 055 | 05 | B06 | S1 | 01 | R00 | ACF03 | ST | 055 |  |  | PP |

| ID | WBS | Activity | Duration | Start | Finish | Predecessors | Complete | Remaining | Planned start | Planned finish | Total float | Free float | Constraint | Calendar | Resources | CCAD BILL(SET) | CCAD REV(SET) | CCAD SSCF | CCAD BUILDING(SET) | CCAD PHASE(SET) | CCAD SECTION(SET) |
| --- | --- | --- | --- | --- | --- | --- | --- | --- | --- | --- | --- | --- | --- | --- | --- | --- | --- | --- | --- | --- | --- |
|  | SD | **Shop dwg** |  |  |  |  |  |  |  |  |  |  |  |  |  |  |  |  |  |  |  |
|  | MS | **Material Submital / Approvals** |  |  |  |  |  |  |  |  |  |  |  |  |  |  |  |  |  |  |  |
|  | 1 | **Material Submittal, First Submittal** |  |  |  |  |  |  |  |  |  |  |  |  |  |  |  |  |  |  |  |
|  | 2 | **Client Review Matl Submittal, First Submittal** |  |  |  |  |  |  |  |  |  |  |  |  |  |  |  |  |  |  |  |
|  | 3 | **Material Submittal (Re-Submission)** |  |  |  |  |  |  |  |  |  |  |  |  |  |  |  |  |  |  |  |
|  | 4 | **Client Review/Approval Matl Submittal (Re-Submission)** |  |  |  |  |  |  |  |  |  |  |  |  |  |  |  |  |  |  |  |
|  | FD | **Fabrication, Manufacture & Delivery (1st Batch)** |  |  |  |  |  |  |  |  |  |  |  |  |  |  |  |  |  |  |  |
|  | 1 | **Major Long-lead Items** |  | 2011-01-12 | 2011-12-01 |  |  |  |  |  |  |  |  |  |  |  |  |  |  |  |  |
|  | 1 | **Caseworks** |  | 2011-06-29 | 2011-12-01 |  |  |  |  |  |  |  |  |  |  |  |  |  |  |  |  |
| A10350 |  | Caseworks ; Shop dwg submission & approval | 89d | 2011-06-29 A | 2011-09-30 | MGNMI00101M0 | 100% | 0d | 2011-09-30 | 2011-12-27 | 236d | 62d |  | R00-C02, Calendar day | Cost | B01 | R00 | GEN |  |  |  |
| A10330 |  | Caseworks ; Material Submission & Approval | 89d | 2011-08-06 A | 2011-09-30 | MGNMI00101M0 | 100% | 0d | 2011-09-30 | 2011-12-27 | 236d | 62d |  | R00-C02, Calendar day | Cost | B01 | R00 | GEN |  |  |  |
| A10360 |  | Caseworks ; Fabrication in shops (1st Batch) | 0d | 2011-12-01 | 2011-12-01 | A10330 SS, A10350 SS, A10330 FF, A10350 FF |  |  |  |  | 174d | 0d | start on or after 2011-12-01 | R00-C02, Calendar day | Cost | B01 | R00 | GEN |  |  |  |
| A10370 |  | Caseworks ; Delivery to site (1st Batch) | 0d | 2011-12-01 | 2011-12-01 | A10360 |  |  |  |  | 174d | 159.62d |  | R00-C02, Calendar day | Cost | B01 | R00 | GEN |  |  |  |
|  | 2 | **Natural Stones** |  | 2011-01-12 | 2011-11-15 |  |  |  |  |  |  |  |  |  |  |  |  |  |  |  |  |
| A10380 |  | Natural Stones ; Material Submission & Approval | 89d | 2011-01-12 A | 2011-09-30 | MGNMI00101M0 | 100% | 0d | 2011-09-30 | 2011-12-27 | 223.62d | 46d |  | R00-C02, Calendar day | Cost | B01 | R00 | GEN |  |  |  |
| A10390 |  | Natural Stones ; Shop dwg submission & approval | 89d | 2011-07-30 A | 2011-09-30 | MGNMI00101M0 | 100% | 0d | 2011-09-30 | 2011-12-27 | 223.62d | 46d |  | R00-C02, Calendar day | Cost | B01 | R00 | GEN |  |  |  |
| A10400 |  | Natural Stones ; Fabrication in shops (1st Batch) | 0d | 2011-11-15 | 2011-11-15 | A10380 SS, A10390 SS, A10380 FF, A10390 FF |  |  |  |  | 177.62d | 0d | start on or after 2011-11-15 | R00-C02, Calendar day | Cost | B01 | R00 | GEN |  |  |  |
| A10410 |  | Natural Stones ; Delivery to site (1st Batch) | 0d | 2011-11-15 | 2011-11-15 | A10400 |  |  |  |  | 177.62d | 117.88d |  | R00-C02, Calendar day | Cost | B01 | R00 | GEN |  |  |  |
|  | MU | **Mockup** |  |  |  |  |  |  |  |  |  |  |  |  |  |  |  |  |  |  |  |
|  | 1 | **Visual mockup** |  |  |  |  |  |  |  |  |  |  |  |  |  |  |  |  |  |  |  |
|  | 1 | **Design** |  |  |  |  |  |  |  |  |  |  |  |  |  |  |  |  |  |  |  |
|  | 2 | **Procument & fabrication** |  |  |  |  |  |  |  |  |  |  |  |  |  |  |  |  |  |  |  |
|  | 1 | **C2 system** |  |  |  |  |  |  |  |  |  |  |  |  |  |  |  |  |  |  |  |
|  | 2 | **Other system** |  |  |  |  |  |  |  |  |  |  |  |  |  |  |  |  |  |  |  |
|  | 3 | **Installation** |  |  |  |  |  |  |  |  |  |  |  |  |  |  |  |  |  |  |  |
|  | 4 | **Approval** |  |  |  |  |  |  |  |  |  |  |  |  |  |  |  |  |  |  |  |
|  | 2 | **Performance test of C2,C3,SY** |  |  |  |  |  |  |  |  |  |  |  |  |  |  |  |  |  |  |  |
|  | 1 | **Design** |  |  |  |  |  |  |  |  |  |  |  |  |  |  |  |  |  |  |  |
|  | 2 | **Procument** |  |  |  |  |  |  |  |  |  |  |  |  |  |  |  |  |  |  |  |
|  | 3 | **Installation** |  |  |  |  |  |  |  |  |  |  |  |  |  |  |  |  |  |  |  |
|  | 4 | **Approval** |  |  |  |  |  |  |  |  |  |  |  |  |  |  |  |  |  |  |  |
|  | 5 | **Performance test of C4,M1,S1,C5** |  |  |  |  |  |  |  |  |  |  |  |  |  |  |  |  |  |  |  |
|  | 1 | **Design** |  |  |  |  |  |  |  |  |  |  |  |  |  |  |  |  |  |  |  |
|  | 2 | **Procument** |  |  |  |  |  |  |  |  |  |  |  |  |  |  |  |  |  |  |  |
|  | 3 | **Installation** |  |  |  |  |  |  |  |  |  |  |  |  |  |  |  |  |  |  |  |
|  | 4 | **Approval** |  |  |  |  |  |  |  |  |  |  |  |  |  |  |  |  |  |  |  |
|  | TE | **Temporary Works** |  | 2010-04-10 | 2012-09-09 |  |  |  |  |  |  |  |  |  |  |  |  |  |  |  |  |
|  | 1 | **Temporary facilities** |  | 2012-09-09 | 2012-09-09 |  |  |  |  |  |  |  |  |  |  |  |  |  |  |  |  |
| A1010 |  | Removal of Site office | 0d | 2012-09-09 | 2012-09-09 | BLZTC01546C0, LP33W03301C0 SS |  |  |  |  | 166.65d | 100d |  |  | Cost | B01 | R00 | 015 | GR | C | 015 |

| ID | WBS | Activity | Duration | Start | Finish | Predecessors | Complete | Planned start | Planned finish | Total float | Free float | Constraint | Resources | change id | RENZ % COMPLETE | CCAD BUILDING(SET) | CCAD PHASE(SET) | CCAD FLOOR(SET) | CCAD ZONE(SET) | CCAD WORK(SET) | CCAD SECTION(SET) | CCAD SERIAL No.(SET) | CCAD BILL(SET) | CCAD TAG(SET) | CCAD REV(SET) | CCADACF (SET) | CCAD SSCF | ACCESS DATES |
| --- | --- | --- | --- | --- | --- | --- | --- | --- | --- | --- | --- | --- | --- | --- | --- | --- | --- | --- | --- | --- | --- | --- | --- | --- | --- | --- | --- | --- |
|  | TC | **Tower Crane** |  | 2010-04-10 | 2012-08-23 |  |  |  |  |  |  |  |  |  |  |  |  |  |  |  |  |  |  |  |  |  |  |  |
| BLZTC01508C0 |  | Foundation for Tower crane TC-08 (CU) | 10d | 2010-04-10 A | 2010-04-22 A | MGNMI00101M0 FS+30d | 100% | 2010-04-06 | 2010-04-17 |  |  |  | Labor General [8 h]; Cost | BLZTC01508C0 | 100 | AB | C | LZ | TC | TE | 015 | 08 | B01 | 01 | R00 | ACF01 | 015 |  |
| BLZTC01509C0 |  | Foundation for Tower crane TC-09 (PA) | 11.88d | 2010-04-24 A | 2010-05-06 A | BLZTC01508C0 SS+15d | 100% |  |  |  |  |  | Labor General [8 h]; Cost | BLZTC01509C0 | 100 | AB | C | LZ | TC | TE | 015 | 09 | B01 | 01 | R00 | ACF01 | 015 |  |
| BLZTC01528C0 |  | Installation of Tower crane TC-08 (CU) | 10d | 2010-04-26 A | 2010-05-05 A | BLZTC01508C0 | 100% | 2010-04-18 | 2010-04-28 |  |  |  | Labor General [8 h]; Cost | BLZTC01528C0 | 100 | AB | C | LZ | TC | TE | 015 | 28 | B01 | 02 | R00 | ACF01 | 015 |  |
| BLZTC01510C0 |  | Foundation for Tower crane TC-10 (PA) | 9d | 2010-05-08 A | 2010-05-17 A | BLZTC01509C0 SS+14d | 100% |  |  |  |  |  | Labor General [8 h]; Cost | BLZTC01510C0 | 100 | AB | C | LZ | TC | TE | 015 | 10 | B01 | 01 | R00 | ACF01 | 015 |  |
| BLZTC01529C0 |  | Installation of Tower crane TC-09 (PA) | 10d | 2010-05-08 A | 2010-05-18 A | BLZTC01509C0 | 100% |  |  |  |  |  | Labor General [8 h]; Cost | BLZTC01529C0 | 100 | AB | C | LZ | TC | TE | 015 | 29 | B01 | 02 | R00 | ACF01 | 015 |  |
| BLZTC01530C0 |  | Installation of Tower crane TC-10 (PA) | 17d | 2010-05-20 A | 2010-06-08 A | BLZTC01510C0 | 100% |  |  |  |  |  | Labor General [8 h]; Cost | BLZTC01530C0 | 100 | AB | C | LZ | TC | TE | 015 | 30 | B01 | 02 | R00 | ACF01 | 015 |  |
| BLZTC01503C0 |  | Foundation for Tower crane TC-03 (SW , PA) | 6.88d | 2010-05-23 A | 2010-05-31 A | BLZTC01506C0 SS+5d | 100% | 2010-05-27 | 2010-06-03 |  |  |  | Labor General [8 h]; Cost | BLZTC01503C0 | 100 | AB | C | LZ | TC | TE | 015 | 03 | B01 | 01 | R00 | ACF01 | 015 |  |
| BLZTC01513C0 |  | Foundation for Tower crane TC-15 (GA , PA) | 10.88d | 2010-05-30 A | 2010-06-10 A | BLZTC01503C0 SS+2d | 100% |  |  |  |  |  | Labor General [8 h]; Cost | BLZTC01513C0 | 100 | AB | C | LZ | TC | TE | 015 | 13 | B01 | 01 | R00 | ACF01 | 015 |  |
| BLZTC01505C0 |  | Foundation for Tower crane TC-05 (IC , PA) | 6.88d | 2010-06-01 A | 2010-06-08 A | BLZTC01501C0 SS+6d | 100% | 2010-06-10 | 2010-06-17 |  |  |  | Labor General [8 h]; Cost | BLZTC01505C0 | 100 | AB | C | LZ | TC | TE | 015 | 05 | B01 | 01 | R00 | ACF01 | 015 |  |
| BLZTC01501C0 |  | Foundation for Tower crane TC-01 (PT) | 14d | 2010-06-03 A | 2010-06-19 A | BLZTC01513C0 SS+4d | 100% |  |  |  |  |  | Labor General [8 h]; Cost | BLZTC01501C0 | 100 | AB | C | LZ | TC | TE | 015 | 01 | B01 | 01 | R00 | ACF01 | 015 |  |
| BLZTC01523C0 |  | Installation of Tower crane TC-03 (SW , PA) | 9d | 2010-06-05 A | 2010-06-14 A | BLZTC01503C0 | 100% |  |  |  |  |  | Labor General [8 h]; Cost | BLZTC01523C0 | 100 | AB | C | LZ | TC | TE | 015 | 23 | B01 | 02 | R00 | ACF01 | 015 |  |
| BLZTC01525C0 |  | Installation of Tower crane TC-05 (IC , PA) | 23d | 2010-06-10 A | 2010-06-17 A | BLZTC01505C0 | 100% | 2010-06-10 | 2010-07-06 |  |  |  | Labor General [8 h]; Cost | BLZTC01525C0 | 100 | AB | C | LZ | TC | TE | 015 | 25 | B01 | 02 | R00 | ACF01 | 015 |  |
| BLZTC01502C0 |  | Foundation for Tower crane TC-02 (PT) | 11d | 2010-06-16 A | 2010-06-28 A | BLZTC01505C0 SS+4d | 100% | 2010-06-15 | 2010-06-27 |  |  |  | Labor General [8 h]; Cost | BLZTC01502C0 | 100 | AB | C | LZ | TC | TE | 015 | 02 | B01 | 01 | R00 | ACF01 | 015 |  |
| BLZTC01533C0 |  | Installation of Tower crane TC-15 (GA , PA) | 16d | 2010-06-16 A | 2010-07-10 A | BLZTC01513C0 | 100% | 2010-06-12 | 2010-06-29 |  |  |  | Labor General [8 h]; Cost | BLZTC01533C0 | 100 | AB | C | LZ | TC | TE | 015 | 33 | B01 | 02 | R00 | ACF01 | 015 |  |
| BLZTC01526C0 |  | Installation of Tower crane TC-06 (GA) | 16d | 2010-06-21 A | 2010-07-08 A | BLZTC01506C0 | 100% | 2010-05-30 | 2010-06-16 |  |  |  | Labor General [8 h]; Cost | BLZTC01526C0 | 100 | AB | C | LZ | TC | TE | 015 | 26 | B01 | 02 | R00 | ACF01 | 015 |  |
| BLZTC01506C0 |  | Foundation for Tower crane TC-06 (GA) | 7d | 2010-06-22 A | 2010-07-04 A | BLZTC01510C0 SS+10d | 100% | 2010-05-22 | 2010-05-29 |  |  |  | Labor General [8 h]; Cost | BLZTC01506C0 | 100 | AB | C | LZ | TC | TE | 015 | 06 | B01 | 01 | R00 | ACF01 | 015 |  |
| BLZTC01521C0 |  | Installation of Tower crane TC-01 (PT) | 10d | 2010-06-26 A | 2010-07-06 A | BLZTC01501C0 | 100% | 2010-06-20 | 2010-06-30 |  |  |  | Labor General [8 h]; Cost | BLZTC01521C0 | 100 | AB | C | LZ | TC | TE | 015 | 21 | B01 | 02 | R00 | ACF01 | 015 |  |
| BLZTC01524C0 |  | Installation of Tower crane TC-04 (CB , PA) | 4.88d | 2010-06-27 A | 2010-07-06 A | BLZTC01504C0 | 100% | 2010-06-27 | 2010-07-01 |  |  |  | Labor General [8 h]; Cost | BLZTC01524C0 | 100 | AB | C | LZ | TC | TE | 015 | 24 | B01 | 02 | R00 | ACF01 | 015 |  |
| BLZTC01504C0 |  | Foundation for Tower crane TC-04 (CB , PA) | 10d | 2010-07-03 A | 2010-07-14 A | BLZTC01502C0 SS+15d | 100% |  |  |  |  |  | Labor General [8 h]; Cost | BLZTC01504C0 | 100 | AB | C | LZ | TC | TE | 015 | 04 | B01 | 01 | R00 | ACF01 | 015 |  |
| BLZTC01507C0 |  | Foundation for Tower crane TC-07 (GA , PA) | 13.88d | 2010-07-05 A | 2010-07-15 A | BLZTC01554C0 SS+6d | 100% | 2010-07-21 | 2010-08-05 |  |  |  | Labor General [8 h]; Cost | BLZTC01507C0 | 100 | AB | C | LZ | TC | TE | 015 | 07 | B01 | 01 | R00 | ACF01 | 015 |  |
| BLZTC01554C0 |  | Foundation for Tower crane TC-16 (PA , CU) | 13.88d | 2010-07-08 A | 2010-07-17 A | BLZTC01504C0 SS+9d | 100% | 2010-07-14 | 2010-07-29 |  |  |  | Labor General [8 h]; Cost | BLZTC01513C0 | 100 | AB | C | LZ | TC | TE | 015 | 54 | B01 | 01 | R00 | ACF01 | 015 |  |
| BLZTC01522C0 |  | Installation of Tower crane TC-02 (PT) | 12d | 2010-07-11 A | 2010-07-16 A | BLZTC01502C0 | 100% | 2010-06-28 | 2010-07-12 |  |  |  | Labor General [8 h]; Cost | BLZTC01522C0 | 100 | AB | C | LZ | TC | TE | 015 | 22 | B01 | 02 | R00 | ACF01 | 015 |  |
| BLZTC01511C0 |  | Foundation for Tower crane TC-11 (PA) | 14d | 2010-07-12 A | 2010-08-22 A | BLZTC01507C0 SS+8d | 100% | 2010-07-31 | 2010-08-15 |  |  |  | Labor General [8 h]; Cost | BLZTC01511C0 | 100 | AB | C | LZ | TC | TE | 015 | 11 | B01 | 01 | R00 | ACF01 | 015 |  |
| BLZTC01527C0 |  | Installation of Tower crane TC-07 (GA , PA) | 7d | 2010-07-19 A | 2010-07-31 A | BLZTC01507C0 | 100% | 2010-08-07 | 2010-08-14 |  |  |  | Labor General [8 h]; Cost | BLZTC01527C0 | 100 | AB | C | LZ | TC | TE | 015 | 27 | B01 | 02 | R00 | ACF01 | 015 |  |
| BLZTC01555C0 |  | Installation of Tower crane TC-16 (PA , CU) | 7d | 2010-07-19 A | 2010-07-29 A | BLZTC01554C0 | 100% | 2010-07-31 | 2010-08-07 |  |  |  | Labor General [8 h]; Cost | BLZTC01533C0 | 100 | AB | C | LZ | TC | TE | 015 | 55 | B01 | 02 | R00 | ACF01 | 015 |  |
| BLZTC01531C0 |  | Installation of Tower crane TC-11 (PA) | 7d | 2010-07-29 A | 2010-08-05 A | BLZTC01511C0 | 100% | 2010-08-16 | 2010-08-23 |  |  |  | Labor General [8 h]; Cost | BLZTC01531C0 | 100 | AB | C | LZ | TC | TE | 015 | 31 | B01 | 02 | R00 | ACF01 | 015 |  |
| BLZTC01512C0 |  | Foundation for Tower crane TC-12 (PA) | 14d | 2010-08-07 A | 2010-08-18 A | BLZTC01511C0 SS+20d | 100% | 2010-08-23 | 2010-09-07 |  |  |  | Labor General [8 h]; Cost | BLZTC01512C0 | 100 | AB | C | LZ | TC | TE | 015 | 12 | B01 | 01 | R00 | ACF01 | 015 |  |
| BLZTC01532C0 |  | Installation of Tower crane TC-12 (PA) | 6.88d | 2010-08-26 A | 2010-09-04 A | BLZTC01512C0 | 100% | 2010-09-08 | 2010-09-16 |  |  |  | Labor General [8 h]; Cost | BLZTC01532C0 | 100 | AB | C | LZ | TC | TE | 015 | 32 | B01 | 02 | R00 | ACF01 | 015 |  |
| BLZTC01544C0 |  | Dismantling of Tower crane TC-04 (CB , PA) | 12d | 2011-08-08 A | 2011-08-22 A | BLZTC01524C0, CR5S105101C0, CR5S203335C0, DR5S303399C0 | 100% | 2011-09-01 | 2011-09-14 |  |  |  | Labor General [0.5 h]; Cost | BLZTC01544C0 |  | AB | C | LZ | TC | TE | 015 | 44 | B01 | 03 | R00 | ACF01 | 015 | ACCESS |
| BLZTC01550C0 |  | Dismantling of Tower crane TC-10 (PA) | 25d | 2011-10-04 | 2011-11-02 | BLZTC01530C0, PGLS103391C100, PGLS103391C120, PGLS103391C130, PGLS603392C0, PGLS703392C0 |  |  |  | 25.5d | 0d |  | Labor General [0.5 h]; Cost | BLZTC01550C0 |  | AB | C | LZ | TC | TE | 015 | 50 | B01 | 03 | R00 | ACF01 | 015 |  |
| BLZTC01556C0 |  | Dismantling of Tower crane TC-16 (PA , CU) | 12d | 2011-10-19 | 2011-11-02 | BLZTC01555C0, PGLS103391C50, PGLS103391C60, PGLS103391C70, PGLS103391C80, PGLS103393C0, UGLS103303C0, UGLS203302C0, UGLS303302C0 |  |  |  | 264.14d | 74d |  | Labor General [0.5 h]; Cost | BLZTC01553C0 |  | AB | C | LZ | TC | TE | 015 | 56 | B01 | 03 | R00 | ACF01 | 015 |  |
| BLZTC01548C0 |  | Dismantling of Tower crane TC-08 (CU) - (Now TC18 (CU)) | 12d | 2011-11-15 | 2011-11-29 | BLZTC01528C0, UGLS103302C0, UGLS203302C0 |  |  |  | 435d | 432.12d | start on or after 2011-11-15 | Labor General [0.5 h]; Cost | BLZTC01548C0 |  | AB | C | LZ | TC | TE | 015 | 48 | B01 | 03 | R00 | ACF01 | 015 |  |
| BLZTC01549C0 |  | Dismantling of Tower crane TC-09 (PA) | 12d | 2011-11-15 | 2011-11-30 | BLZTC01529C0, PGLS103391C50, PGLS103391C60, PGLS103391C70, PGLS103391C80 FS+20d, PGLS103393C0, PGLS203393C0 |  |  |  | 246.64d | 0d |  | Labor General [0.5 h]; Cost | BLZTC01549C0 |  | AB | C | LZ | TC | TE | 015 | 49 | B01 | 03 | R00 | ACF01 | 015 |  |
| BLZTC01545C0 |  | Dismantling of Tower crane TC-05 (IC , PA) | 12d | 2012-06-20 | 2012-07-04 | BLZTC01525C0, IEXCO04405C0, IR8BM11001C0, PGLS503392C0, PGLS603391C0, PGLS703391C0, PGLS703392C0 |  |  |  | 11.2d | 0d |  | Labor General [0.5 h]; Cost | BLZTC01545C0 |  | AB | C | LZ | TC | TE | 015 | 45 | B01 | 03 | R00 | ACF01 | 015 |  |
| BLZTC01551C0 |  | Dismantling of Tower crane TC-11 (PA) | 12d | 2012-06-20 | 2012-07-04 | BLZTC01531C0, PGLS403391C0, PGLS503391C0, PGLS503392C0, PGLS403392C0 |  |  |  | 131.2d | 75.7d |  | Labor General [0.5 h]; Cost | BLZTC01551C0 |  | AB | C | LZ | TC | TE | 015 | 51 | B01 | 03 | R00 | ACF01 | 015 |  |
| BLZTC01543C0 |  | Dismantling of Tower crane TC-03 (SW , PA) | 12d | 2012-07-05 | 2012-07-19 | BLZTC01523C0, PGLS103391C160, SEXCO04405C0, SR8BM11001C0, SR8HP05309C0, PGLS103391C260, PGLS103392R02 |  |  |  | 67.3d | 0d |  | Labor General [0.5 h]; Cost | BLZTC01543C0 |  | AB | C | LZ | TC | TE | 015 | 43 | B01 | 03 | R00 | ACF01 | 015 |  |
| BLZTC01552C0 |  | Dismantling of Tower crane TC-12 (PA) | 12d | 2012-07-08 | 2012-07-22 | BLZTC01532C0, PGLS103391C140, PGLS103391C160, PGLS103391C180, PGLS103391C190, PGLS103391C200, PGLS703394R02, PGLS703394C0, PGLS103391C260, PGLS103392R02, PGLS103391C170, PGLS103394R02, PGLS103352R02 |  |  |  | 77.23d | 0d |  | Labor General [0.5 h]; Cost | BLZTC01552C0 |  | AB | C | LZ | TC | TE | 015 | 52 | B01 | 03 | R00 | ACF01 | 015 |  |
| BLZTC01546C0 |  | Dismantling of Tower crane TC-06 (GA) | 12d | 2012-07-30 | 2012-08-13 | BLZTC01526C0, G02BM11001C0, G02SP05501C0, G02RF07101C0 |  |  |  | 18.65d | 0d |  | Labor General [0.5 h]; Cost | BLZTC01546C0 |  | AB | C | LZ | TC | TE | 015 | 46 | B01 | 03 | R00 | ACF01 | 015 |  |
| BLZTC01547C0 |  | Dismantling of Tower crane TC-07 (GA , PA) | 12d | 2012-07-30 | 2012-08-13 | BLZTC01527C0, G02BM11001C0, PGLS103391C10, PGLS103391C20A, PGLS103391C30, PGLS103391C40, G02SP05501C0, G02RF07101C0 |  |  |  | 79.78d | 21d |  | Labor General [0.5 h]; Cost | BLZTC01547C0 |  | AB | C | LZ | TC | TE | 015 | 47 | B01 | 03 | R00 | ACF01 | 015 |  |
| BLZTC01553C0 |  | Dismantling of Tower crane TC-15 (GA , PA) | 12d | 2012-07-30 | 2012-08-13 | BLZTC01533C0, G02BM11001C0, PGLS203392C0, G02SP05501C0, G02RF07101C0 |  |  |  | 18.65d | 0d |  | Labor General [0.5 h]; Cost | BLZTC01553C0 |  | AB | C | LZ | TC | TE | 015 | 53 | B01 | 03 | R00 | ACF01 | 015 |  |
| BLZTC01541C0 |  | Dismantling of Tower crane TC-01 (PT) | 12d | 2012-08-08 | 2012-08-23 | BLZTC01521C0, T21BM11001C0 SS+6d, TEXCO04409C0, TEXCO04411C0, TEXCO04413C0 |  |  |  | 26.62d | 0d |  | Labor General [0.5 h]; Cost | BLZTC01541C0 |  | AB | C | LZ | TC | TE | 015 | 41 | B01 | 03 | R00 | ACF01 | 015 |  |
| BLZTC01542C0 |  | Dismantling of Tower crane TC-02 (PT) | 12d | 2012-08-08 | 2012-08-23 | BLZTC01522C0, BLZTC01541C0 SS, TEXCO04409C0, TEXCO04411C0, TEXCO04413C0 |  |  |  | 26.62d | 0d |  | Labor General [0.5 h]; Cost | BLZTC01542C0 |  | AB | C | LZ | TC | TE | 015 | 42 | B01 | 03 | R00 | ACF01 | 015 |  |

| ID | WBS | Activity | Duration | Start | Finish | Predecessors | Complete | Remaining | Planned start | Planned finish | Total float | Free float | Resources | change id | RENZ % COMPLETE | CCAD BUILDING(SET) | CCAD PHASE(SET) | CCAD FLOOR(SET) | CCAD ZONE(SET) | CCAD WORK(SET) | CCAD SECTION(SET) | CCAD SERIAL No.(SET) | CCAD BILL(SET) | CCAD TAG(SET) | CCAD REV(SET) | CCADACF (SET) | CCAD SSCF | Not include in Draft Application | P_811 | P_711 |
| --- | --- | --- | --- | --- | --- | --- | --- | --- | --- | --- | --- | --- | --- | --- | --- | --- | --- | --- | --- | --- | --- | --- | --- | --- | --- | --- | --- | --- | --- | --- |
|  | HC | **Hoist Car** |  | 2010-11-07 | 2012-05-28 |  |  |  |  |  |  |  |  |  |  |  |  |  |  |  |  |  |  |  |  |  |  |  |  |  |
| BLZHC01566C0 |  | Installation of Hoist car HC-06 (CB) | 7d | 2010-11-07 A | 2010-11-18 A | CGLS203335C0 | 100% |  | 2011-01-08 | 2011-01-16 |  |  | Labor General [8 h]; Cost | BLZHC01566C0 | 100 | AB | C | LZ | HC | TE | 015 | 66 | B01 | 01 | R00 | ACF01 | 015 |  |  |  |
| BLZHC01570C0 |  | Installation of Hoist car HC-10 (LIFT-CORE) | 7d | 2010-12-07 A | 2010-12-22 A | DGLS103399C0 | 100% |  | 2011-01-03 | 2011-01-10 |  |  | Labor General [8 h]; Cost | BLZHC01570C0 | 100 | AB | C | LZ | HC | TE | 015 | 70 | B01 | 01 | R00 | ACF01 | 015 |  |  |  |
| BLZHC01571C0 |  | Installation of Hoist car HC-11 (LIFT-CORE) | 7d | 2010-12-09 A | 2010-12-22 A | DGLS103399C0 | 100% |  | 2011-01-03 | 2011-01-10 |  |  | Labor General [8 h]; Cost | BLZHC01571C0 | 100 | AB | C | LZ | HC | TE | 015 | 71 | B01 | 01 | R00 | ACF01 | 015 |  |  |  |
| BLZHC01565C0 |  | Installation of Hoist car HC-05 (DT) | 7d | 2011-01-18 A | 2011-03-15 A | DGLS303399C0 | 100% |  | 2011-01-04 | 2011-01-11 |  |  | Labor General [8 h]; Cost | BLZHC01565C0 | 100 | AB | C | LZ | HC | TE | 015 | 65 | B01 | 01 | R00 | ACF01 | 015 |  |  |  |
| BLZHC01567C0 |  | Installation of Hoist car HC-07 (CB) | 7d | 2011-01-18 A | 2011-03-15 A | CGLS103335C0 | 100% |  | 2011-01-06 | 2011-01-15 |  |  | Labor General [8 h]; Cost | BLZHC01567C0 | 100 | AB | C | LZ | HC | TE | 015 | 67 | B01 | 01 | R00 | ACF01 | 015 |  |  |  |
| BLZHC01569C0 |  | Installation of Hoist car HC-09 (SW) | 7d | 2011-04-04 A | 2011-04-18 A | S08S103399C0 | 100% |  | 2011-10-01 | 2011-10-08 |  |  | Labor General [0.5 h]; Cost | BLZHC01569C0 |  | AB | C | LZ | HC | TE | 015 | 69 | B01 | 01 | R00 | ACF01 | 015 | Y |  |  |
| BLZHC01568C0 |  | Installation of Hoist car HC-08 (ICU) | 7d | 2011-05-09 A | 2011-08-30 A | I08S203399C0 | 100% |  | 2011-06-18 | 2011-06-26 |  |  | Labor General [8 h]; Cost | BLZHC01568C0 | 30 | AB | C | LZ | HC | TE | 015 | 68 | B01 | 01 | R00 | ACF01 | 015 |  | 100 | 30 |
| BLZHC01561C0 |  | Installation of Hoist car HC-01 (PT) | 7d | 2011-05-10 A | 2011-08-22 A | T12CO03399C0 | 100% |  | 2011-07-19 | 2011-07-27 |  |  | Labor General [8 h]; Cost | BLZHC01561C0 | 70 | AB | C | LZ | HC | TE | 015 | 61 | B01 | 01 | R00 | ACF01 | 015 |  | 100 | 70 |
| BLZHC01590C0 |  | Dismantling of Hoist car HC-10 (LIFT-CORE) | 12d | 2011-07-11 A | 2011-07-24 A | T20SA03301C0 | 100% |  | 2011-10-01 | 2011-10-13 |  |  | Labor General [0.5 h]; Cost | BLZHC01590C0 |  | AB | C | LZ | HC | TE | 015 | 90 | B01 | 02 | R00 | ACF01 | 015 | Y |  |  |
| BLZHC01564C0 |  | Installation of Hoist car HC-04 (DT) | 7d | 2011-07-20 A | 2011-08-30 A | DGLS203399C0 | 100% |  | 2011-07-31 | 2011-08-07 |  |  | Labor General [8 h]; Cost | BLZHC01564C0 |  | AB | C | LZ | HC | TE | 015 | 64 | B01 | 01 | R00 | ACF01 | 015 |  | 100 | 0 |
| BLZHC01563C0 |  | Installation of Hoist car HC-03 (DT) | 7d | 2011-07-26 A | 2011-08-30 A | DGLS203399C0 | 100% |  | 2011-07-31 | 2011-08-07 |  |  | Labor General [8 h]; Cost | BLZHC01563C0 |  | AB | C | LZ | HC | TE | 015 | 63 | B01 | 01 | R00 | ACF01 | 015 |  | 100 | 0 |
| BLZHC01591C0 |  | Dismantling of Hoist car HC-11 (LIFT-CORE) | 12d | 2011-08-23 A | 2011-09-01 A | T20SB03303C0, T21CO03399C0 | 100% |  | 2011-10-03 | 2011-10-17 |  |  | Labor General [0.5 h]; Cost | BLZHC01591C0 |  | AB | C | LZ | HC | TE | 015 | 91 | B01 | 02 | R00 | ACF01 | 015 | Y |  |  |
| BLZHC01562C0 |  | Installation of Hoist car HC-02 (PT) | 7d | 2011-09-20 A | 2011-10-08 | T12CO03399C0 | 70% | 7d | 2011-10-01 | 2011-10-08 | 53.38d | 29d | Labor General [0.5 h]; Cost | BLZHC01562C0 |  | AB | C | LZ | HC | TE | 015 | 62 | B01 | 01 | R00 | ACF01 | 015 | Y |  |  |
| BLZHC01583C0 |  | Dismantling of Hoist car HC-03 (DT) | 11.88d | 2011-10-01 | 2011-10-13 | MGNMI00101M0 |  |  |  |  | 305.12d | 0d | Labor General [0.5 h]; Cost | BLZHC01583C0 |  | AB | C | LZ | HC | TE | 015 | 83 | B01 | 02 | R00 | ACF01 | 015 | Y |  |  |
| BLZHC01588C0 |  | Dismantling of Hoist car HC-08 (ICU) | 12d | 2012-02-15 | 2012-02-29 | IVT1814247C0 FS+28d, TVT1214247C0 FS+28d |  |  |  |  | 108.75d | 0d | Labor General [0.5 h]; Cost | BLZHC01588C0 |  | AB | C | LZ | HC | TE | 015 | 88 | B01 | 02 | R00 | ACF01 | 015 |  |  |  |
| BLZHC01586C0 |  | Dismantling of Hoist car HC-06 (CB) | 12d | 2012-03-31 | 2012-04-14 | CVT3914247C0 FS+28d |  |  |  |  | 41.48d | 0d | Labor General [0.5 h]; Cost | BLZHC01586C0 |  | AB | C | LZ | HC | TE | 015 | 86 | B01 | 02 | R00 | ACF01 | 015 |  |  |  |
| BLZHC01587C0 |  | Dismantling of Hoist car HC-07 (CB) | 12d | 2012-03-31 | 2012-04-14 | CVT3914247C0 FS+28d |  |  |  |  | 67.38d | 0d | Labor General [0.5 h]; Cost | BLZHC01587C0 |  | AB | C | LZ | HC | TE | 015 | 87 | B01 | 02 | R00 | ACF01 | 015 |  |  |  |
| BLZHC01584C0 |  | Dismantling of Hoist car HC-04 (DT) | 12d | 2012-04-02 | 2012-04-16 | DVT2014247C0 FS+28d, TVT2414247C0 FS+28d |  |  |  |  | 149.6d | 0d | Labor General [0.5 h]; Cost | BLZHC01584C0 |  | AB | C | LZ | HC | TE | 015 | 84 | B01 | 02 | R00 | ACF01 | 015 |  |  |  |
| BLZHC01585C0 |  | Dismantling of Hoist car HC-05 (DT) | 12d | 2012-04-02 | 2012-04-16 | DVT2014247C0 FS+28d, TVT2414247C0 FS+28d |  |  |  |  | 19.24d | 0d | Labor General [0.5 h]; Cost | BLZHC01585C0 |  | AB | C | LZ | HC | TE | 015 | 85 | B01 | 02 | R00 | ACF01 | 015 |  |  |  |
| BLZHC01589C0 |  | Dismantling of Hoist car HC-09 (SW) | 12d | 2012-04-02 | 2012-04-16 | SVT3414247C0 FS+28d, TVT2414247C0 FS+28d |  |  |  |  | 19.24d | 0d | Labor General [0.5 h]; Cost | BLZHC01589C0 |  | AB | C | LZ | HC | TE | 015 | 89 | B01 | 02 | R00 | ACF01 | 015 |  |  |  |
| BLZHC01581C0 |  | Dismantling of Hoist car HC-01 (PT) | 12d | 2012-05-10 | 2012-05-23 | TVT0714247C0 FS+28d, TVT0914247C0 FS+28d, TVT1014247C0 FS+28d |  |  |  |  | 50d | 0d | Labor General [0.5 h]; Cost | BLZHC01581C0 |  | AB | C | LZ | HC | TE | 015 | 81 | B01 | 02 | R00 | ACF01 | 015 |  |  |  |
| BLZHC01582C0 |  | Dismantling of Hoist car HC-02 (PT) | 9d | 2012-05-17 | 2012-05-28 | TVT2414247C0 FS+28d, TVT2514247C0 FS+28d, TVT2614247C0 FS+28d, TVT2814247C0 FS+28d |  |  |  |  | 111.25d | 0d | Labor General [0.5 h]; Cost | BLZHC01582C0 |  | AB | C | LZ | HC | TE | 015 | 82 | B01 | 02 | R00 | ACF01 | 015 |  |  |  |
|  | GU | **Global Utility, Leave-out & T&C** |  | 2011-03-24 | 2013-06-22 |  |  |  |  |  |  |  |  |  |  |  |  |  |  |  |  |  |  |  |  |  |  |  |  |  |
|  | UC | **Utility Connection** |  | 2011-10-31 | 2013-01-05 |  |  |  |  |  |  |  |  |  |  |  |  |  |  |  |  |  |  |  |  |  |  |  |  |  |
|  | 1 | **Water Supply** |  | 2012-09-29 | 2013-01-05 |  |  |  |  |  |  |  |  |  |  |  |  |  |  |  |  |  |  |  |  |  |  |  |  |  |
| BGNWS33001G0 |  | External Connection to Water Network of ADDG | 14.04d | 2012-09-29 | 2012-10-15 | PP3AP22025C20, PP3BP22025C10, PP3BP22025C20, PP3BP22025C30, PP3CP22025C10, PP3CP22025C20, UP3CW22002C0, UP3OS22001C0 |  |  |  |  | 101.19d | 0d | Labor General [0.5 h]; Cost | BGNWS33001G0 |  | AB | C | GN | WS | MI | 330 | 01 | B01 | GN | R00 | ACF00 | 330 |  |  |  |
| BGNWS33002G0 |  | Receipt of Completion Letter from Client | 3.96d | 2012-10-15 | 2012-10-20 | BGNWS33001G0 |  |  |  |  | 101.19d | 0d | Labor General [0.5 h]; Cost | BGNWS33002G0 |  | AB | C | GN | WS | MI | 330 | 02 | B01 | GN | R00 | ACF00 | 330 |  |  |  |
| BGNWS33003G0 |  | Preparation of overall External Layout Proposal | 14.04d | 2012-10-20 | 2012-11-07 | BGNWS33002G0 |  |  |  |  | 101.19d | 0d | Labor General [0.5 h]; Cost | BGNWS33003G0 |  | AB | C | GN | WS | MI | 330 | 03 | B01 | GN | R00 | ACF00 | 330 |  |  |  |
| BGNWS33004G0 |  | Receipt of approval from town planning | 14d | 2012-11-07 | 2012-11-25 | BGNWS33003G0 |  |  |  |  | 101.19d | 0d | Labor General [0.5 h]; Cost | BGNWS33004G0 |  | AB | C | GN | WS | MI | 330 | 04 | B01 | GN | R00 | ACF00 | 330 |  |  |  |
| BGNWS33005G0 |  | Receipt of ADDC Clearance | 4d | 2012-11-25 | 2012-11-29 | BGNWS33004G0 |  |  |  |  | 101.19d | 0d | Labor General [0.5 h]; Cost | BGNWS33005G0 |  | AB | C | GN | WS | MI | 330 | 05 | B01 | GN | R00 | ACF00 | 330 |  |  |  |
| BGNWS33007G0 |  | Work Order for Work by ADDC | 1.96d | 2012-11-29 | 2012-12-02 | BGNWS33005G0 |  |  |  |  | 101.19d | 0d | Labor General [0.5 h]; Cost | BGNWS33007G0 |  | AB | C | GN | WS | MI | 330 | 07 | B01 | GN | R00 | ACF00 | 330 |  |  |  |
| BGNWS33009G0 |  | Completion of works by 3rd party | 21.04d | 2012-12-02 | 2012-12-27 | BGNWS33007G0 |  |  |  |  | 101.19d | 0d | Labor General [0.5 h]; Cost | BGNWS33009G0 |  | AB | C | GN | WS | MI | 330 | 09 | B01 | GN | R00 | ACF00 | 330 |  |  |  |
| BGNWS33010G0 |  | Shutdown | 4d | 2012-12-27 | 2013-01-02 | BGNWS33009G0 |  |  |  |  | 101.19d | 0d | Labor General [0.5 h]; Cost | BGNWS33010G0 |  | AB | C | GN | WS | MI | 330 | 10 | B01 | GN | R00 | ACF00 | 330 |  |  |  |
| BGNWS33011G0 |  | Final Connection Works | 2d | 2013-01-02 | 2013-01-05 | BGNWS33010G0 |  |  |  |  | 101.19d | 98.32d | Labor General [0.5 h]; Cost | BGNWS33011G0 |  | AB | C | GN | WS | MI | 330 | 11 | B01 | GN | R00 | ACF00 | 330 |  |  |  |

| ID | WBS | Activity | Type | Duration | Start | Finish | Predecessors | Total float | Free float | Resources | change id | CCAD BUILDING(SET) | CCAD PHASE(SET) | CCAD FLOOR(SET) | CCAD ZONE(SET) | CCAD WORK(SET) | CCAD SECTION(SET) | CCAD SERIAL No.(SET) | CCAD BILL(SET) | CCAD TAG(SET) | CCAD REV(SET) | CCADACF (SET) | CCAD SSCF | Not include in Draft Application | CCAD HANDOVER(SET) | CCAD CSA |
| --- | --- | --- | --- | --- | --- | --- | --- | --- | --- | --- | --- | --- | --- | --- | --- | --- | --- | --- | --- | --- | --- | --- | --- | --- | --- | --- |
|  | 2 | **Drainage Service** |  |  | 2012-09-29 | 2012-11-17 |  |  |  |  |  |  |  |  |  |  |  |  |  |  |  |  |  |  |  |  |
| BGNDS33001G0 |  | Connection Works to ADSSC Drainage Network |  | 21.04d | 2012-09-29 | 2012-10-23 | PP3AP22025C10, PP3AP22025C20, PP3BP22025C10, PP3BP22025C20, PP3BP22025C30, PP3EP22025C20 | 141.19d | 0d | Labor General [0.5 h]; Cost | BGNDS33001G0 | AB | C | GN | DS | MI | 330 | 01 | B01 | GN | R00 | ACF00 | 330 |  |  |  |
| BGNDS33002G0 |  | External Works Completion & Inspection by Client / ADSSC |  | 7d | 2012-10-23 | 2012-11-03 | BGNDS33001G0 | 141.19d | 0d | Labor General [0.5 h]; Cost | BGNDS33002G0 | AB | C | GN | DS | MI | 330 | 02 | B01 | GN | R00 | ACF00 | 330 |  |  |  |
| BGNDS33003G0 |  | Snagging & Substantial Completion of Work |  | 7d | 2012-11-03 | 2012-11-11 | BGNDS33002G0 | 141.19d | 0d | Labor General [0.5 h]; Cost | BGNDS33003G0 | AB | C | GN | DS | MI | 330 | 03 | B01 | GN | R00 | ACF00 | 330 |  |  |  |
| BGNDS33004G0 |  | Stamp & Receipt of Certificate from ADSSC |  | 4d | 2012-11-11 | 2012-11-17 | BGNDS33003G0 | 141.19d | 138.32d | Labor General [0.5 h]; Cost | BGNDS33004G0 | AB | C | GN | DS | MI | 330 | 04 | B01 | GN | R00 | ACF00 | 330 |  |  |  |
|  | 4 | **Energisation per Building** |  |  | 2011-12-15 | 2012-06-09 |  |  |  |  |  |  |  |  |  |  |  |  |  |  |  |  |  |  |  |  |
| BGNEN33002G10 |  | Energisation @CUP | milestone | 0d | 2011-12-15 | 2011-12-15 | BGNEN33002G0 | 473.51d | 463.51d |  | BGNEN33002G0 | AB | C | GN | EN | MI | 330 | 02 | B01 | CU | R00 | ACF00 | 330 |  |  |  |
| BAFTS01801G100 |  | Energisation @ Clinic Building | milestone | 0d | 2012-04-10 | 2012-04-10 | BGNEN33004G0 | 12.4d | 0d | Labor General |  | CB | C | AF | EN | MI | 330 |  | B01 | ST | R00 | ACF00 | 330 |  |  |  |
| BAFTS01801G110 |  | DT Energisation @ D&T Building (P3,P2,P1 & G) | milestone | 0d | 2012-04-10 | 2012-04-10 | BGNEN33004G0 | 51.4d | 0d |  |  | DT | C | AF | EN | MI | 330 |  | B01 | DT | R00 | ACF00 | 330 |  |  |  |
| BAFTS01801G160 |  | Energisation @ Gallery | milestone | 0d | 2012-04-10 | 2012-04-10 | BGNEN33004G0 | 83.15d | 28.28d | Labor General |  | GA | C | GN | EN | MI | 330 |  | B01 | GA | R00 | ACF00 | 330 |  |  |  |
| BAFTS01801G170 |  | Energisation @ Car park | milestone | 0d | 2012-04-10 | 2012-04-10 | BGNEN33004G0 | 375.4d | 365.4d | Labor General |  | PA | C | GN | EN | MI | 330 |  | B01 | CP | R00 | ACF00 | 330 |  |  |  |
| BAFTS01801G120 |  | Energisation @ Swing Wing | milestone | 0d | 2012-06-09 | 2012-06-09 | BGNEN33007G0 | 24d | 0d | Labor General |  | SW | C | GN | EN | MI | 330 |  | B01 | SW | R00 | ACF00 | 330 |  |  |  |
| BAFTS01801G130 |  | Energisation @ ICU | milestone | 0d | 2012-06-09 | 2012-06-09 | BGNEN33007G0 | 41.75d | 0d | Labor General |  | IC | C | GN | EN | MI | 330 |  | B01 | IC | R00 | ACF00 | 330 |  |  |  |
| BAFTS01801G140 |  | Energisation @ Patient Tower 10-16 | milestone | 0d | 2012-06-09 | 2012-06-09 | BGNEN33007G0 | 29.25d | 4.5d | Labor General |  | PT | C | GN | EN | MI | 330 |  | B01 | PT | R00 | ACF00 | 330 |  |  |  |
| BAFTS01801G180 |  | DT Energisation @ D&T Building (L2 & L3) | milestone | 0d | 2012-06-09 | 2012-06-09 | BGNEN33007G0 | 25.88d | 0d |  |  | DT | C | AF | EN | MI | 330 |  | B01 | DT | R00 | ACF00 | 330 |  |  |  |
|  | 3 | **Energisation up to transformers** |  |  | 2011-10-31 | 2012-06-09 |  |  |  |  |  |  |  |  |  |  |  |  |  |  |  |  |  |  |  |  |
| BGNEN33001G0 |  | Stage 1 - ADDC Inspection @cup |  | 34d | 2011-10-31 | 2011-12-15 | UP3SG26006C0, UP3SG09601C0, UP3MT27004C0, UP3LV26004C0, UP3LV27006C0, UP3HV26004C0, UP3TA27005C0, UP3ME08106C0, UP3LV08102C0, UP3LV21102C0, UP3LV21104C0, UP3LV26001C0, UP3LV26002C0, UP3LV26003C0, UP3LV26006C0, UP3LV26007C0, UP3LV26010C0, UP3LV27005C0, UP3HV08102C0, UP3HV21103C0, UP3HV21105C0, UP3HV23013C0, UP3HV26001C0, UP3TA08104C0, UP3TA21109C0, UP3TA21108C0, UP3TA26001C0, UP3TA26002C0, UP3MT21101C0, UP3MT26001C0, UP3MT26004C0, UP3ME21110C0, UP3ME21111C0, UP3ME21112C0, UP3ME21113C0, UP3ME26001C0, UP3ME26003C0, UP3SG08102C0, UP3SG21104C0, UP3SG21103C0, UP3SG26001C0, UP3SG26002C0, UP3SG26007C0 | 26.51d | 0d | Labor General [0.5 h]; Cost | BGNEN33001G0 | AB | C | GN | EN | MI | 330 | 01 | B01 | CU | R00 | ACF00 | 330 | Y |  |  |
| BGNEN33002G0 |  | Stage 1 - Energisation @cup | milestone | 0d | 2011-12-15 | 2011-12-15 | BGNEN33001G0 | 26.51d | 0d |  | BGNEN33002G0 | AB | C | GN | EN | MI | 330 | 02 | B01 | CU | R00 | ACF00 | 330 |  |  |  |
| BGNEN33003G0 |  | Stage 2 - ADDC Inspection @P2 & L1 |  | 24d | 2012-03-13 | 2012-04-10 | BGNEN33002G0 FS+60d, PP2EE08103C10, PP2EE09601C10, PP2EE21102C10, PP2EE21101C10, PP2EE23008C10, PP2EE26009C10, PP2EE09503C10, D01ER08105C0, D01ER09503C0, D01ER21109C0, D01ER26024C0, D01ER26030C0, D01ER09601C0, D01ER23030C0, PP2EE26003C10, PP2EE23005C10 | 12.4d | 0d | Labor General [0.5 h]; Cost | BGNEN33003G0 | AB | C | GN | EN | MI | 330 | 03 | B01 | GN | R00 | ACF00 | 330 |  | S1 |  |
| BGNEN33004G0 |  | Stage 2 - Energisation @ P2 & L1 | milestone | 0d | 2012-04-10 | 2012-04-10 | BGNEN33003G0, BGNEN33002G0 | 12.4d | 0d |  | BGNEN33004G0 | AB | C | GN | EN | MI | 330 | 04 | B01 | GN | R00 | ACF00 | 330 |  | S1 |  |
| BGNEN33005G0 |  | Stage 3 - ADDC Inspection @L4 & L19 |  | 24d | 2012-05-13 | 2012-06-09 | D04ER08105C0, D04ER09503C0, D04ER23030C0, D04ER26024C0, D04ER26030C0, D04ER21109C0, D04ER09601C0, T19ER08105C0, T19ER21109C0, T19ER23030C0, T19ER26024C0, T19ER26030C0, T19ER26039C0, T19ER26034C0, T19ER23032C0 | 24d | 0d | Labor General [0.5 h]; Cost | BGNEN33005G0 | AB | C | GN | EN | MI | 330 | 05 | B01 | GN | R00 | ACF00 | 330 |  | S2 |  |
| BGNEN33007G0 |  | Stage 3 - Energisation @ L4 & L19 | milestone | 0d | 2012-06-09 | 2012-06-09 | BGNEN33005G0 | 24d | 0d |  | BGNEN33007G0 | AB | C | GN | EN | MI | 330 | 07 | B01 | GN | R00 | ACF00 | 330 |  | S2 |  |
|  | LO | **Leave-out** |  |  | 2011-10-13 | 2012-07-04 |  |  |  |  |  |  |  |  |  |  |  |  |  |  |  |  |  |  |  |  |
|  | FA | **Facade** |  |  | 2011-10-13 | 2012-07-04 |  |  |  |  |  |  |  |  |  |  |  |  |  |  |  |  |  |  |  |  |
| DVTLT04453C0 |  | DT-GN ; Transom & Mullion Leave-out & Snagging (HC-3) (Leave Out) |  | 18d | 2011-10-13 | 2011-11-03 | BLZHC01583C0 | 305.12d | 0d | Labor General [1364.3 h]; Cost | DVTLO04453C0 | DT | C | VT | LT | FA | 044 | 53 | B05 | FC2 | R00 | ACF05 | 044 |  | S1 | FA |
| DVTLT04433C0 |  | DT-GN ; Glazing Leave-out & Snagging (HC-3) (Leave Out) |  | 14d | 2011-11-03 | 2011-11-23 | DVTLT04453C0 | 305.12d | 0d | Labor General [568.4 h]; Cost | DVTLO04433C0 | DT | C | VT | LT | FA | 044 | 33 | B05 | FC2 | R00 | ACF05 | 044 |  | S1 | FA |
| IVTLT04458C0 |  | IC-GN ; C2 Transom & Mullion Leave-out & Snagging (HC-8) (Leave Out) |  | 16.25d | 2012-02-29 | 2012-03-19 | BLZHC01588C0 | 242.75d | 0d | FACADE CURTAIN WALL 2 [331.1 h]; Cost | IVTLO04458C0 | IC | C | VT | LT | FA | 044 | 58 | B08 | FC2 | R00 | ACF05 | 044 |  | S2 | FA |
| IVTLT04438C0 |  | IC-GN ; C2 Glazing Leave-out & Snagging (HC-8) (Leave Out) |  | 10.5d | 2012-03-19 | 2012-04-01 | IVTLT04458C0 | 242.75d | 0d | FACADE CURTAIN WALL 2 [794.4 h]; Cost | IVTLO04438C0 | IC | C | VT | LT | FA | 044 | 38 | B08 | FC2 | R00 | ACF05 | 044 |  | S2 | FA |
| CVTLT04456C0 |  | CB-VT ; Transom & Mullion Leave-out (HC-6) (Leave Out) |  | 24d | 2012-04-14 | 2012-05-12 | BLZHC01586C0 | 157.88d | 0d | Labor General [2120.8 h]; Cost | CVTLO04456C0 | CB | C | VT | LT | FA | 044 | 56 | B04 | FC2 | R00 | ACF05 | 044 |  | S1 | FA |
| CVTLT04457C0 |  | CB-VT ; Transom & Mullion Leave-out (HC-7) (Leave Out) |  | 24d | 2012-04-14 | 2012-05-12 | BLZHC01587C0 | 157.88d | 0d | Labor General [2120.8 h]; Cost | CVTLO04457C0 | CB | C | VT | LT | FA | 044 | 57 | B04 | FC2 | R00 | ACF05 | 044 |  | S1 | FA |
| DVTLT04454C0 |  | DT-GN ; Transom & Mullion Leave-out & Snagging (HC-4) (Leave Out) |  | 18d | 2012-04-16 | 2012-05-07 | BLZHC01584C0 | 149.6d | 0d | Labor General [3220.3 h]; Cost | DVTLO04454C0 | DT | C | VT | LT | FA | 044 | 54 | B05 | FC2 | R00 | ACF05 | 044 |  | S1 | FA |
| DVTLT04455C0 |  | DT-GN ; Transom & Mullion Leave-out & Snagging (HC-5) (Leave Out) |  | 12d | 2012-04-16 | 2012-04-30 | BLZHC01585C0 | 159.6d | 0d | Labor General [1364.3 h]; Cost | DVTLO04455C0 | DT | C | VT | LT | FA | 044 | 55 | B05 | FC2 | R00 | ACF05 | 044 |  | S1 | FA |
| DVTLT04459C0 |  | DT-GN ; Transom & Mullion Leave-out & Snagging (HC-9) (Leave Out) |  | 18d | 2012-04-16 | 2012-05-07 | BLZHC01589C0 | 153.6d | 0d | Labor General [1364.3 h]; Cost | SVTLO04459C0 | DT | C | VT | LT | FA | 044 | 59 | B05 | FC2 | R00 | ACF05 | 044 |  | S1 | FA |
| SVTLT04459C0 |  | SW-GN ; C5 Transom & Mullion Leave-out & Snagging (HC-9) (Leave Out) |  | 18d | 2012-04-16 | 2012-05-07 | BLZHC01589C0 | 215.6d | 0d | FACADE CURTAIN WALL 5 [1095.4 h]; Cost | SVTLO04459C0 | SW | C | VT | LT | FA | 044 | 59 | B09 | FC5 | R00 | ACF05 | 044 |  | S2 | FA |
| DVTLT04435C0 |  | DT-GN ; Glazing Leave-out & Snagging (HC-5) (Leave Out) |  | 14d | 2012-04-30 | 2012-05-16 | DVTLT04455C0 | 159.6d | 0d | Labor General [568.4 h]; Cost | DVTLO04435C0 | DT | C | VT | LT | FA | 044 | 35 | B05 | FC2 | R00 | ACF05 | 044 |  | S1 | FA |
| DVTLT04434C0 |  | DT-GN ; Glazing Leave-out & Snagging (HC-4) (Leave Out) |  | 18d | 2012-05-07 | 2012-05-28 | DVTLT04454C0 | 149.6d | 0d | Labor General [1342 h]; Cost | DVTLO04434C0 | DT | C | VT | LT | FA | 044 | 34 | B05 | FC2 | R00 | ACF05 | 044 |  | S1 | FA |
| DVTLT04439C0 |  | DT-GN ; Glazing Leave-out & Snagging (HC-9) (Leave Out) |  | 14d | 2012-05-07 | 2012-05-23 | DVTLT04459C0 | 153.6d | 0d | Labor General [568.4 h]; Cost | SVTLO04439C0 | DT | C | VT | LT | FA | 044 | 39 | B05 | FC2 | R00 | ACF05 | 044 |  | S1 | FA |
| SVTLT04439C0 |  | SW-GN ; C5 Glazing Leave-out & Snagging (HC-9) (Leave Out) |  | 14d | 2012-05-07 | 2012-05-23 | SVTLT04459C0 | 215.6d | 0d | FACADE CURTAIN WALL 5 [456.5 h]; Cost | SVTLO04439C0 | SW | C | VT | LT | FA | 044 | 39 | B09 | FC5 | R00 | ACF05 | 044 |  | S2 | FA |
| CVTLT04436C0 |  | CB-VT ; Glazing Leave-out (HC-6) (Leave Out) |  | 12d | 2012-05-12 | 2012-05-26 | CVTLT04456C0 | 157.88d | 0d | Labor General [884 h]; Cost | CVTLO04436C0 | CB | C | VT | LT | FA | 044 | 36 | B04 | FC2 | R00 | ACF05 | 044 |  | S1 | FA |
| CVTLT04437C0 |  | CB-VT ; Glazing Leave-out (HC-7) (Leave Out) |  | 12d | 2012-05-12 | 2012-05-26 | CVTLT04457C0 | 157.88d | 0d | Labor General [884 h]; Cost | CVTLO04437C0 | CB | C | VT | LT | FA | 044 | 37 | B04 | FC2 | R00 | ACF05 | 044 |  | S1 | FA |
| DVTLT04451C0 |  | DT-GN ; Transom & Mullion Leave-out & Snagging (HC-1) (Leave Out) |  | 12d | 2012-05-24 | 2012-06-06 | BLZHC01581C0 | 269d | 0d | Labor General [1364.3 h]; Cost | TVTLO04451C0 | DT | C | VT | LT | FA | 044 | 51 | B05 | FC2 | R00 | ACF05 | 044 |  | S1 | FA |
| IVTLT04451C0 |  | IC-GN ; C2 Transom & Mullion Leave-out & Snagging (HC-1) (Leave Out) |  | 12d | 2012-05-24 | 2012-06-06 | BLZHC01581C0 | 179d | 0d | FACADE CURTAIN WALL 2 [331.1 h]; Cost | TVTLO04451C0 | IC | C | VT | LT | FA | 044 | 51 | B08 | FC2 | R00 | ACF05 | 044 |  | S2 | FA |
| TVTLT04451C0 |  | PT-GN ; C5 / (C4 Lvl 20 & 21) Transom & Mullion Leave-out & Snagging (HC-1) (Leave Out) |  | 18d | 2012-05-24 | 2012-06-13 | BLZHC01581C0 | 202d | 0d | FACADE CURTAIN WALL 5 [1871.6 h]; Cost | TVTLO04451C0 | PT | C | VT | LT | FA | 044 | 51 | B10 | FC5 | R00 | ACF05 | 044 |  | S2 | FA |
| DVTLT04452C0 |  | DT-GN ; Transom & Mullion Leave-out & Snagging (HC-2) (Leave Out) |  | 12d | 2012-05-28 | 2012-06-11 | BLZHC01582C0 | 200.25d | 0d | Labor General [1348.2 h]; Cost | TVTLO04452C0 | DT | C | VT | LT | FA | 044 | 52 | B05 | FC2 | R00 | ACF05 | 044 |  | S1 | FA |
| SVTLT04452C0 |  | SW-GN ; C5 Transom & Mullion Leave-out & Snagging (HC-2) (Leave Out) |  | 10.5d | 2012-05-28 | 2012-06-10 | BLZHC01582C0 | 266.75d | 0d | FACADE CURTAIN WALL 5 [1095.4 h]; Cost | TVTLO04452C0 | SW | C | VT | LT | FA | 044 | 52 | B09 | FC5 | R00 | ACF05 | 044 |  | S2 | FA |
| TVTLT04452C0 |  | PT-GN ; C5 / (C4 Lvl 20 & 21) Transom & Mullion Leave-out & Snagging (HC-2) (Leave Out) |  | 16.5d | 2012-05-28 | 2012-06-18 | BLZHC01582C0 | 199.75d | 0d | FACADE CURTAIN WALL 5 [1871.6 h]; Cost | TVTLO04452C0 | PT | C | VT | LT | FA | 044 | 52 | B10 | FC5 | R00 | ACF05 | 044 |  | S2 | FA |
| DVTLT04431C0 |  | DT-GN ; Glazing Leave-out & Snagging (HC-1) (Leave Out) |  | 6d | 2012-06-07 | 2012-06-13 | DVTLT04451C0 | 269d | 0d | Labor General [568.4 h]; Cost | TVTLO04431C0 | DT | C | VT | LT | FA | 044 | 31 | B05 | FC2 | R00 | ACF05 | 044 |  | S1 | FA |
| IVTLT04431C0 |  | IC-GN ; C2 Glazing Leave-out & Snagging (HC-1) (Leave Out) |  | 6d | 2012-06-07 | 2012-06-13 | IVTLT04451C0 | 179d | 0d | FACADE CURTAIN WALL 2 [794.4 h]; Cost | TVTLO04431C0 | IC | C | VT | LT | FA | 044 | 31 | B08 | FC2 | R00 | ACF05 | 044 |  | S2 | FA |
| DVTLT04432C0 |  | DT-GN ; Glazing Leave-out & Snagging (HC-2) (Leave Out) |  | 6d | 2012-06-10 | 2012-06-18 | SVTLT04452C0 | 266.75d | 0d | Labor General [561.7 h]; Cost | TVTLO04432C0 | DT | C | VT | LT | FA | 044 | 32 | B05 | FC2 | R00 | ACF05 | 044 |  | S1 | FA |
| SVTLT04432C0 |  | SW-GN ; C5 Glazing Leave-out & Snagging (HC-2) (Leave Out) |  | 6d | 2012-06-11 | 2012-06-19 | DVTLT04452C0 | 200.25d | 0d | FACADE CURTAIN WALL 5 [456.5 h]; Cost | TVTLO04432C0 | SW | C | VT | LT | FA | 044 | 32 | B09 | FC5 | R00 | ACF05 | 044 |  | S2 | FA |
| TVTLT04431C0 |  | PT-GN ; C5 / (C4 Lvl 20 & 21) Glazing Leave-out & Snagging (HC-1) (Leave Out) |  | 14d | 2012-06-14 | 2012-07-01 | TVTLT04451C0 | 202d | 0d | FACADE CURTAIN WALL 5 [779.8 h]; Cost | TVTLO04431C0 | PT | C | VT | LT | FA | 044 | 31 | B10 | FC5 | R00 | ACF05 | 044 |  | S2 | FA |
| TVTLT04432C0 |  | PT-GN ; C5 / (C4 Lvl 20 & 21) Glazing Leave-out & Snagging (HC-2) (Leave Out) |  | 14d | 2012-06-18 | 2012-07-04 | TVTLT04452C0 | 199.75d | 0d | FACADE CURTAIN WALL 5 [779.8 h]; Cost | TVTLO04432C0 | PT | C | VT | LT | FA | 044 | 32 | B10 | FC5 | R00 | ACF05 | 044 |  | S2 | FA |

| ID | WBS | Activity | Duration | Start | Finish | Predecessors | Total float | Free float | Resources | change id | CCAD BUILDING(SET) | CCAD PHASE(SET) | CCAD FLOOR(SET) | CCAD ZONE(SET) | CCAD WORK(SET) | CCAD SECTION(SET) | CCAD SERIAL No.(SET) | CCAD BILL(SET) | CCAD HANDOVER(SET) | CCAD TAG(SET) | CCAD REV(SET) | CCADACF (SET) | CCAD CSA | CCAD SSCF |
| --- | --- | --- | --- | --- | --- | --- | --- | --- | --- | --- | --- | --- | --- | --- | --- | --- | --- | --- | --- | --- | --- | --- | --- | --- |
|  | ME | **MEP** |  | 2011-11-23 | 2012-07-04 |  |  |  |  |  |  |  |  |  |  |  |  |  |  |  |  |  |  |  |
| DVTLT22073C0 |  | DT-GN ; 2nd Fix MEP Work Leave-out & Snagging (HC-3) (Leave Out) | 0d | 2011-11-23 | 2011-11-23 | DVTLT22093C0 | 305.12d | 0d | Cost | DVTLO04473C0 | DT | C | VT | LT | ME | 220 | 73 | B05 | S1 | 2F | R00 | ACF07 | MEP | 220 |
| DVTLT22083C0 |  | DT-GN ; Final Fix, MEP Work Leave-out & Snagging (HC-3) (Leave Out) | 0d | 2011-11-23 | 2011-11-23 | DVTLT22073C0 | 305.12d | 293.98d | Cost | DVTLO04483C0 | DT | C | VT | LT | ME | 220 | 83 | B05 | S1 | FF | R00 | ACF07 | MEP | 220 |
| DVTLT22093C0 |  | DT-GN ; Rough-In Finishes Leave-out & Snagging (HC-3) (Leave Out) | 0d | 2011-11-23 | 2011-11-23 | DVTLT04433C0 | 305.12d | 0d | Cost | DVTLO04493C0 | DT | C | VT | LT | ME | 220 | 93 | B05 | S1 | FF | R00 | ACF07 | MEP | 220 |
| IVTLT22078C0 |  | IC-GN ; 2nd Fix MEP Work Leave-out & Snagging (HC-8) (Leave Out) | 0d | 2012-04-01 | 2012-04-01 | IVTLT22098C0 | 242.75d | 0d | Cost | IVTLO04478C0 | IC | C | VT | LT | ME | 220 | 78 | B08 | S2 | 2F | R00 | ACF07 | MEP | 220 |
| IVTLT22088C0 |  | IC-GN ; Final Fix, MEP Work Leave-out & Snagging (HC-8) (Leave Out) | 0d | 2012-04-01 | 2012-04-01 | IVTLT22078C0 | 242.75d | 221.75d | Cost | IVTLO04488C0 | IC | C | VT | LT | ME | 220 | 88 | B08 | S2 | FF | R00 | ACF07 | MEP | 220 |
| IVTLT22098C0 |  | IC-GN ; Rough-In Finishes Leave-out & Snagging (HC-8) (Leave Out) | 0d | 2012-04-01 | 2012-04-01 | IVTLT04438C0 | 242.75d | 0d | Cost | IVTLO04498C0 | IC | C | VT | LT | ME | 220 | 98 | B08 | S2 | FF | R00 | ACF07 | MEP | 220 |
| DVTLT22075C0 |  | DT-GN ; 2nd Fix MEP Work Leave-out & Snagging (HC-5) (Leave Out) | 0d | 2012-05-16 | 2012-05-16 | DVTLT22095C0 | 159.6d | 0d | Cost | DVTLO04475C0 | DT | C | VT | LT | ME | 220 | 75 | B05 | S1 | 2F | R00 | ACF07 | MEP | 220 |
| DVTLT22085C0 |  | DT-GN ; Final Fix, MEP Work Leave-out & Snagging (HC-5) (Leave Out) | 0d | 2012-05-16 | 2012-05-16 | DVTLT22075C0 | 159.6d | 148.45d | Cost | DVTLO04485C0 | DT | C | VT | LT | ME | 220 | 85 | B05 | S1 | FF | R00 | ACF07 | MEP | 220 |
| DVTLT22095C0 |  | DT-GN ; Rough-In Finishes Leave-out & Snagging (HC-5) (Leave Out) | 0d | 2012-05-16 | 2012-05-16 | DVTLT04435C0 | 159.6d | 0d | Cost | DVTLO04495C0 | DT | C | VT | LT | ME | 220 | 95 | B05 | S1 | FF | R00 | ACF07 | MEP | 220 |
| DVTLT22079C0 |  | DT-GN ; 2nd Fix MEP Work Leave-out & Snagging (HC-9) (Leave Out) | 0d | 2012-05-23 | 2012-05-23 | DVTLT22099C0 | 153.6d | 0d | Cost | SVTLO04479C0 | DT | C | VT | LT | ME | 220 | 79 | B05 | S1 | 2F | R00 | ACF07 | MEP | 220 |
| DVTLT22089C0 |  | DT-GN ; Final Fix, MEP Work Leave-out & Snagging (HC-9) (Leave Out) | 0d | 2012-05-23 | 2012-05-23 | DVTLT22079C0 | 153.6d | 142.45d | Cost | SVTLO04489C0 | DT | C | VT | LT | ME | 220 | 89 | B05 | S1 | FF | R00 | ACF07 | MEP | 220 |
| DVTLT22099C0 |  | DT-GN ; Rough-In Finishes Leave-out & Snagging (HC-9) (Leave Out) | 0d | 2012-05-23 | 2012-05-23 | DVTLT04439C0 | 153.6d | 0d | Cost | SVTLO04499C0 | DT | C | VT | LT | ME | 220 | 99 | B05 | S1 | FF | R00 | ACF07 | MEP | 220 |
| SVTLT22079C0 |  | SW-GN ; 2nd Fix MEP Work Leave-out & Snagging (HC-9) (Leave Out) | 0d | 2012-05-23 | 2012-05-23 | SVTLT22099C0 | 215.6d | 0d | Cost | SVTLO04479C0 | SW | C | VT | LT | ME | 220 | 79 | B09 | S2 | 2F | R00 | ACF07 | MEP | 220 |
| SVTLT22089C0 |  | SW-GN ; Final Fix, MEP Work Leave-out & Snagging (HC-9) (Leave Out) | 0d | 2012-05-23 | 2012-05-23 | SVTLT22079C0 | 222.6d | 206.6d | Cost | SVTLO04489C0 | SW | C | VT | LT | ME | 220 | 89 | B09 | S2 | FF | R00 | ACF07 | MEP | 220 |
| SVTLT22099C0 |  | SW-GN ; Rough-In Finishes Leave-out & Snagging (HC-9) (Leave Out) | 0d | 2012-05-23 | 2012-05-23 | SVTLT04439C0 | 215.6d | 0d | Cost | SVTLO04499C0 | SW | C | VT | LT | ME | 220 | 99 | B09 | S2 | FF | R00 | ACF07 | MEP | 220 |
| CVTLT22076C0 |  | CB-VT ; 2nd Fix MEP Work Leave-out (HC-6) (Leave Out) | 0d | 2012-05-26 | 2012-05-26 | CVTLT22096C0 | 157.88d | 0d | Cost | CVTLO04476C0 | CB | C | VT | LT | ME | 220 | 76 | B04 | S1 | 2F | R00 | ACF07 | MEP | 220 |
| CVTLT22077C0 |  | CB-VT ; 2nd Fix MEP Work Leave-out (HC-7) (Leave Out) | 0d | 2012-05-26 | 2012-05-26 | CVTLT22097C0 | 157.88d | 0d | Cost | CVTLO04477C0 | CB | C | VT | LT | ME | 220 | 77 | B04 | S1 | 2F | R00 | ACF07 | MEP | 220 |
| CVTLT22086C0 |  | CB-VT ; Final Fix, MEP Work Leave-out & Snagging (HC-6) (Leave Out) | 0d | 2012-05-26 | 2012-05-26 | CVTLT22076C0 | 157.88d | 150.55d | Cost | CVTLO04486C0 | CB | C | VT | LT | ME | 220 | 86 | B04 | S1 | FF | R00 | ACF07 | MEP | 220 |
| CVTLT22087C0 |  | CB-VT ; Final Fix, MEP Work Leave-out & Snagging (HC-7) (Leave Out) | 0d | 2012-05-26 | 2012-05-26 | CVTLT22077C0 | 157.88d | 150.55d | Cost | CVTLO04487C0 | CB | C | VT | LT | ME | 220 | 87 | B04 | S1 | FF | R00 | ACF07 | MEP | 220 |
| CVTLT22096C0 |  | CB-VT ;' Rough-In Finishes Leave-out (HC-6) (Leave Out) | 0d | 2012-05-26 | 2012-05-26 | CVTLT04436C0 | 157.88d | 0d | Cost | CVTLO04496C0 | CB | C | VT | LT | ME | 220 | 96 | B04 | S1 | FF | R00 | ACF07 | MEP | 220 |
| CVTLT22097C0 |  | CB-VT ;' Rough-In Finishes Leave-out (HC-7) (Leave Out) | 0d | 2012-05-26 | 2012-05-26 | CVTLT04437C0 | 157.88d | 0d | Cost | CVTLO04497C0 | CB | C | VT | LT | ME | 220 | 97 | B04 | S1 | FF | R00 | ACF07 | MEP | 220 |
| DVTLT22074C0 |  | DT-GN ; 2nd Fix MEP Work Leave-out & Snagging (HC-4) (Leave Out) | 0d | 2012-05-28 | 2012-05-28 | DVTLT22094C0 | 149.6d | 0d | Cost | DVTLO04474C0 | DT | C | VT | LT | ME | 220 | 74 | B05 | S1 | 2F | R00 | ACF07 | MEP | 220 |
| DVTLT22084C0 |  | DT-GN ; Final Fix, MEP Work Leave-out & Snagging (HC-4) (Leave Out) | 0d | 2012-05-28 | 2012-05-28 | DVTLT22074C0 | 149.6d | 138.45d | Cost | DVTLO04484C0 | DT | C | VT | LT | ME | 220 | 84 | B05 | S1 | FF | R00 | ACF07 | MEP | 220 |
| DVTLT22094C0 |  | DT-GN ; Rough-In Finishes Leave-out & Snagging (HC-4) (Leave Out) | 0d | 2012-05-28 | 2012-05-28 | DVTLT04434C0 | 149.6d | 0d | Cost | DVTLO04494C0 | DT | C | VT | LT | ME | 220 | 94 | B05 | S1 | FF | R00 | ACF07 | MEP | 220 |
| DVTLT22071C0 |  | DT-GN ; 2nd Fix MEP Work Leave-out & Snagging (HC-1) (Leave Out) | 0d | 2012-06-14 | 2012-06-14 | DVTLT22091C0 | 269d | 0d | Cost | TVTLO04471C0 | DT | C | VT | LT | ME | 220 | 71 | B05 | S1 | 2F | R00 | ACF07 | MEP | 220 |
| DVTLT22081C0 |  | DT-GN ; Final Fix, MEP Work Leave-out & Snagging (HC-1) (Leave Out) | 0d | 2012-06-14 | 2012-06-14 | DVTLT22071C0 | 269d | 266.12d | Cost | TVTLO04481C0 | DT | C | VT | LT | ME | 220 | 81 | B05 | S1 | FF | R00 | ACF07 | MEP | 220 |
| DVTLT22091C0 |  | DT-GN ; Rough-In Finishes Leave-out & Snagging (HC-1) (Leave Out) | 0d | 2012-06-14 | 2012-06-14 | DVTLT04431C0 | 269d | 0d | Cost | TVTLO04491C0 | DT | C | VT | LT | ME | 220 | 91 | B05 | S1 | FF | R00 | ACF07 | MEP | 220 |
| IVTLT22071C0 |  | IC-GN ; 2nd Fix MEP Work Leave-out & Snagging (HC-1) (Leave Out) | 0d | 2012-06-14 | 2012-06-14 | IVTLT22091C0 | 179d | 0d | Cost | TVTLO04471C0 | IC | C | VT | LT | ME | 220 | 71 | B08 | S2 | 2F | R00 | ACF07 | MEP | 220 |
| IVTLT22081C0 |  | IC-GN ; Final Fix, MEP Work Leave-out & Snagging (HC-1) (Leave Out) | 0d | 2012-06-14 | 2012-06-14 | IVTLT22071C0 | 179d | 158d | Cost | TVTLO04481C0 | IC | C | VT | LT | ME | 220 | 81 | B08 | S2 | FF | R00 | ACF07 | MEP | 220 |
| IVTLT22091C0 |  | IC-GN ; Rough-In Finishes Leave-out & Snagging (HC-1) (Leave Out) | 0d | 2012-06-14 | 2012-06-14 | IVTLT04431C0 | 179d | 0d | Cost | TVTLO04491C0 | IC | C | VT | LT | ME | 220 | 91 | B08 | S2 | FF | R00 | ACF07 | MEP | 220 |
| DVTLT22072C0 |  | DT-GN ; 2nd Fix MEP Work Leave-out & Snagging (HC-2) (Leave Out) | 0d | 2012-06-18 | 2012-06-18 | DVTLT22092C0 | 266.75d | 0d | Cost | TVTLO04472C0 | DT | C | VT | LT | ME | 220 | 72 | B05 | S1 | 2F | R00 | ACF07 | MEP | 220 |
| DVTLT22082C0 |  | DT-GN ; Final Fix, MEP Work Leave-out & Snagging (HC-2) (Leave Out) | 0d | 2012-06-18 | 2012-06-18 | DVTLT22072C0 | 266.75d | 263.88d | Cost | TVTLO04482C0 | DT | C | VT | LT | ME | 220 | 82 | B05 | S1 | FF | R00 | ACF07 | MEP | 220 |
| DVTLT22092C0 |  | DT-GN ; Rough-In Finishes Leave-out & Snagging (HC-2) (Leave Out) | 0d | 2012-06-18 | 2012-06-18 | DVTLT04432C0 | 266.75d | 0d | Cost | TVTLO04492C0 | DT | C | VT | LT | ME | 220 | 92 | B05 | S1 | FF | R00 | ACF07 | MEP | 220 |
| SVTLT22072C0 |  | SW-GN ; 2nd Fix MEP Work Leave-out & Snagging (HC-2) (Leave Out) | 0d | 2012-06-19 | 2012-06-19 | SVTLT22092C0 | 200.25d | 0d | Cost | TVTLO04472C0 | SW | C | VT | LT | ME | 220 | 72 | B09 | S2 | 2F | R00 | ACF07 | MEP | 220 |
| SVTLT22082C0 |  | SW-GN ; Final Fix, MEP Work Leave-out & Snagging (HC-2) (Leave Out) | 0d | 2012-06-19 | 2012-06-19 | SVTLT22072C0 | 200.25d | 184.25d | Cost | TVTLO04482C0 | SW | C | VT | LT | ME | 220 | 82 | B09 | S2 | FF | R00 | ACF07 | MEP | 220 |
| SVTLT22092C0 |  | SW-GN ; Rough-In Finishes Leave-out & Snagging (HC-2) (Leave Out) | 0d | 2012-06-19 | 2012-06-19 | SVTLT04432C0 | 200.25d | 0d | Cost | TVTLO04492C0 | SW | C | VT | LT | ME | 220 | 92 | B09 | S2 | FF | R00 | ACF07 | MEP | 220 |
| TVTLT22071C0 |  | PT-GN ; 2nd Fix MEP Work Leave-out & Snagging (HC-1) (Leave Out) | 0d | 2012-07-02 | 2012-07-02 | TVTLT22091C0 | 202d | 0d | Cost | TVTLO04471C0 | PT | C | VT | LT | ME | 220 | 71 | B10 | S2 | 2F | R00 | ACF07 | MEP | 220 |
| TVTLT22081C0 |  | PT-GN ; Final Fix, MEP Work Leave-out & Snagging (HC-1) (Leave Out) | 0d | 2012-07-02 | 2012-07-02 | TVTLT22071C0 | 202d | 193d | Cost | TVTLO04481C0 | PT | C | VT | LT | ME | 220 | 81 | B10 | S2 | FF | R00 | ACF07 | MEP | 220 |
| TVTLT22091C0 |  | PT-GN ; Rough-In Finishes Leave-out & Snagging (HC-1) (Leave Out) | 0d | 2012-07-02 | 2012-07-02 | TVTLT04431C0 | 202d | 0d | Cost | TVTLO04491C0 | PT | C | VT | LT | ME | 220 | 91 | B10 | S2 | FF | R00 | ACF07 | MEP | 220 |
| TVTLT22072C0 |  | PT-GN ; 2nd Fix MEP Work Leave-out & Snagging (HC-2) (Leave Out) | 0d | 2012-07-04 | 2012-07-04 | TVTLT22092C0 | 199.75d | 0d | Cost | TVTLO04472C0 | PT | C | VT | LT | ME | 220 | 72 | B10 | S2 | 2F | R00 | ACF07 | MEP | 220 |
| TVTLT22082C0 |  | PT-GN ; Final Fix, MEP Work Leave-out & Snagging (HC-2) (Leave Out) | 0d | 2012-07-04 | 2012-07-04 | TVTLT22072C0 | 199.75d | 190.75d | Cost | TVTLO04482C0 | PT | C | VT | LT | ME | 220 | 82 | B10 | S2 | FF | R00 | ACF07 | MEP | 220 |
| TVTLT22092C0 |  | PT-GN ; Rough-In Finishes Leave-out & Snagging (HC-2) (Leave Out) | 0d | 2012-07-04 | 2012-07-04 | TVTLT04432C0 | 199.75d | 0d | Cost | TVTLO04492C0 | PT | C | VT | LT | ME | 220 | 92 | B10 | S2 | FF | R00 | ACF07 | MEP | 220 |

| ID | WBS | Activity | Type | Duration | Start | Finish | Predecessors | Total float | Free float | Resources | change id | CCAD BUILDING(SET) | CCAD PHASE(SET) | CCAD FLOOR(SET) | CCAD ZONE(SET) | CCAD WORK(SET) | CCAD SECTION(SET) | CCAD SERIAL No.(SET) | CCAD BILL(SET) | CCAD HANDOVER(SET) | CCAD TAG(SET) | CCAD REV(SET) | CCADACF (SET) | CCAD SSCF |
| --- | --- | --- | --- | --- | --- | --- | --- | --- | --- | --- | --- | --- | --- | --- | --- | --- | --- | --- | --- | --- | --- | --- | --- | --- |
|  | FI | **Finish** |  |  | 2011-11-23 | 2012-07-04 |  |  |  |  |  |  |  |  |  |  |  |  |  |  |  |  |  |  |
| DVTLT09613C0 |  | DT-GN ; Final Finishes Leave-out & Snagging (HC-3) (Leave Out) |  | 0d | 2011-11-23 | 2011-11-23 | DVTLT22073C0 | 305.12d | 293.98d | Cost | DVTLO04413C0 | DT | C | VT | LT | FI | 096 | 13 | B05 | S1 | 01 | R00 | ACF06 | FF |
| IVTLT09618C0 |  | IC-GN ; Final Finishes Leave-out & Snagging (HC-8) (Leave Out) |  | 0d | 2012-04-01 | 2012-04-01 | IVTLT22078C0 | 242.75d | 221.75d | Cost | IVTLO04418C0 | IC | C | VT | LT | FI | 096 | 18 | B08 | S2 | 01 | R00 | ACF06 | FF |
| DVTLT09615C0 |  | DT-GN ; Final Finishes Leave-out & Snagging (HC-5) (Leave Out) |  | 0d | 2012-05-16 | 2012-05-16 | DVTLT22075C0 | 159.6d | 148.45d | Cost | DVTLO04415C0 | DT | C | VT | LT | FI | 096 | 15 | B05 | S1 | 01 | R00 | ACF06 | FF |
| DVTLT09619C0 |  | DT-GN ; Final Finishes Leave-out & Snagging (HC-9) (Leave Out) |  | 0d | 2012-05-23 | 2012-05-23 | DVTLT22079C0 | 153.6d | 142.45d | Cost | SVTLO04419C0 | DT | C | VT | LT | FI | 096 | 19 | B05 | S1 | 01 | R00 | ACF06 | FF |
| SVTLT09619C0 |  | SW-GN ; Final Finishes Leave-out & Snagging (HC-9) (Leave Out) |  | 0d | 2012-05-23 | 2012-05-23 | SVTLT22079C0 | 215.6d | 199.6d | Cost | SVTLO04419C0 | SW | C | VT | LT | FI | 096 | 19 | B09 | S2 | 01 | R00 | ACF06 | FF |
| CVTLT09616C0 |  | CB-VT ;' Final Finishes Leave-out & Snagging (HC-6) (Leave Out) |  | 0d | 2012-05-26 | 2012-05-26 | CVTLT22076C0 | 157.88d | 150.55d | Cost | CVTLO04416C0 | CB | C | VT | LT | FI | 096 | 16 | B04 | S1 | 01 | R00 | ACF06 | FF |
| CVTLT09617C0 |  | CB-VT ;' Final Finishes Leave-out & Snagging (HC-7) (Leave Out) |  | 0d | 2012-05-26 | 2012-05-26 | CVTLT22077C0 | 157.88d | 150.55d | Cost | CVTLO04417C0 | CB | C | VT | LT | FI | 096 | 17 | B04 | S1 | 01 | R00 | ACF06 | FF |
| DVTLT09614C0 |  | DT-GN ; Final Finishes Leave-out & Snagging (HC-4) (Leave Out) |  | 0d | 2012-05-28 | 2012-05-28 | DVTLT22074C0 | 149.6d | 138.45d | Cost | DVTLO04414C0 | DT | C | VT | LT | FI | 096 | 14 | B05 | S1 | 01 | R00 | ACF06 | FF |
| DVTLT09611C0 |  | DT-GN ; Final Finishes Leave-out & Snagging (HC-1) (Leave Out) |  | 0d | 2012-06-14 | 2012-06-14 | DVTLT22071C0 | 269d | 266.12d | Cost | TVTLO04411C0 | DT | C | VT | LT | FI | 096 | 11 | B05 | S1 | 01 | R00 | ACF06 | FF |
| IVTLT09611C0 |  | IC-GN ; Final Finishes Leave-out & Snagging (HC-1) (Leave Out) |  | 0d | 2012-06-14 | 2012-06-14 | IVTLT22071C0 | 179d | 158d | Cost | TVTLO04411C0 | IC | C | VT | LT | FI | 096 | 11 | B08 | S2 | 01 | R00 | ACF06 | FF |
| DVTLT09612C0 |  | DT-GN ; Final Finishes Leave-out & Snagging (HC-2) (Leave Out) |  | 0d | 2012-06-18 | 2012-06-18 | DVTLT22072C0 | 266.75d | 263.88d | Cost | TVTLO04412C0 | DT | C | VT | LT | FI | 096 | 12 | B05 | S1 | 01 | R00 | ACF06 | FF |
| SVTLT09612C0 |  | SW-GN ; Final Finishes Leave-out & Snagging (HC-2) (Leave Out) |  | 0d | 2012-06-19 | 2012-06-19 | SVTLT22072C0 | 200.25d | 184.25d | Cost | TVTLO04412C0 | SW | C | VT | LT | FI | 096 | 12 | B09 | S2 | 01 | R00 | ACF06 | FF |
| TVTLT09611C0 |  | PT-GN ; Final Finishes Leave-out & Snagging (HC-1) (Leave Out) |  | 0d | 2012-07-02 | 2012-07-02 | TVTLT22071C0 | 202d | 193d | Cost | TVTLO04411C0 | PT | C | VT | LT | FI | 096 | 11 | B10 | S2 | 01 | R00 | ACF06 | FF |
| TVTLT09612C0 |  | PT-GN ; Final Finishes Leave-out & Snagging (HC-2) (Leave Out) |  | 0d | 2012-07-04 | 2012-07-04 | TVTLT22072C0 | 199.75d | 190.75d | Cost | TVTLO04412C0 | PT | C | VT | LT | FI | 096 | 12 | B10 | S2 | 01 | R00 | ACF06 | FF |
|  | 1 | **T&C per building** |  |  | 2011-12-15 | 2013-06-22 |  |  |  |  |  |  |  |  |  |  |  |  |  |  |  |  |  |  |
| BAFTS01802G0 |  | T&C @ CUP | level of effort | 360.51d | 2011-12-15 | 2013-02-20 | BGNEN33002G10 | 9d | 0d | Labor General; Cost |  | UP |  | GN |  |  |  |  | B03 |  | COM | R00 | ACF00 | GEN |
| BAFTS01803G0 |  | T&C @ Car Park | level of effort | 321.52d | 2012-04-10 | 2013-05-01 | BAFTS01801G170, PP2AE21101C0 FF, PP2AE21102C0 FF, PP2AE21103C0 FF, PP2AE22001C0 FF, PP2AE23005C0 FF, PP2AE23006C0 FF, PP2AE26003C0 FF, PP2AE26004C0 FF, PP2AE26005C0 FF, PP2AE26006C0 FF, PP2AE27003C0 FF, PP2AE27004C0 FF, PP2AM21106C0 FF, PP2AM21107C0 FF, PP2AM22004C0 FF, PP2AM23009C0 FF, PP2AM23010C0 FF, PP2AM26006C0 FF, PP2AM26007C0 FF, PP2AM26008C0 FF, PP2AM26009C0 FF, PP2AM27004C0 FF, PP2AM27005C0 FF, PP2AP21113C10 FF, PP2AP21113C20 FF, PP2AP22011C10 FF, PP2AP22011C20 FF, PP2AP23019C10 FF, PP2AP23019C20 FF, PP2AP26017C10 FF, PP2AP26017C20 FF, PP2AP27030C10 FF, PP2AP27030C20 FF, PP2BE21101C0 FF, PP2BE21102C0 FF, PP2BE21103C0 FF, PP2BE22001C0 FF, PP2BE23005C0 FF, PP2BE23006C0 FF, PP2BE26003C0 FF, PP2BE26004C0 FF, PP2BE26005C0 FF, PP2BE26006C0 FF, PP2BE27003C0 FF, PP2BE27004C0 FF, PP2BM21106C0 FF, PP2BM21107C0 FF, PP2BM22004C0 FF, PP2BM23009C0 FF, PP2BM23010C0 FF, PP2BM26006C0 FF, PP2BM26007C0 FF, PP2BM26008C0 FF, PP2BM26009C0 FF, PP2BM27004C0 FF, PP2BM27005C0 FF, PP2BP21113C10 FF, PP2BP21113C20 FF, PP2BP21113C30 FF, PP2BP22011C10 FF, PP2BP22011C20 FF, PP2BP22011C30 FF, PP2BP23019C10 FF, PP2BP23019C20 FF, PP2BP23019C30 FF, PP2BP26017C10 FF, PP2BP26017C20 FF, PP2BP26017C30 FF, PP2BP27030C10 FF, PP2BP27030C20 FF, PP2BP27030C30 FF, PP2CE21101C0 FF, PP2CE21101C10 FF, PP2CE21102C0 FF, PP2CE21102C10 FF, PP2CE21103C0 FF, PP2CE21103C10 FF, PP2CE22001C0 FF, PP2CE22001C10 FF, PP2CE23005C0 FF, PP2CE23005C10 FF, PP2CE23006C0 FF, PP2CE23006C10 FF, PP2CE26003C0 FF, PP2CE26003C10 FF, PP2CE26004C0 FF, PP2CE26004C10 FF, PP2CE26005C0 FF, PP2CE26005C10 FF, PP2CE26006C0 FF, PP2CE26006C10 FF, PP2CE27003C0 FF, PP2CE27003C10 FF, PP2CE27004C0 FF, PP2CE27004C10 FF, PP2CP21113C10 FF, PP2CP21113C20 FF, PP2CP22011C10 FF, PP2CP22011C20 FF, PP2CP23019C10 FF, PP2CP23019C20 FF, PP2CP26017C10 FF, PP2CP26017C20 FF, PP2CP27030C10 FF, PP2CP27030C20 FF, PP2DP21113C10 FF, PP2DP21113C20 FF, PP2DP22011C10 FF, PP2DP22011C20 FF, PP2DP23019C10 FF, PP2DP23019C20 FF, PP2DP26017C10 FF, PP2DP26017C20 FF, PP2DP27030C10 FF, PP2DP27030C20 FF, PP2EE21101C0 FF, PP2EE21101C10 FF, PP2EE21102C0 FF, PP2EE21102C10 FF, PP2EE21103C0 FF, PP2EE21103C10 FF, PP2EE22001C0 FF, PP2EE22001C10 FF, PP2EE23005C0 FF, PP2EE23005C10 FF, PP2EE23006C0 FF, PP2EE23006C10 FF, PP2EE26003C0 FF, PP2EE26003C10 FF, PP2EE26004C0 FF, PP2EE26004C10 FF, PP2EE26005C0 FF, PP2EE26005C10 FF, PP2EE26006C0 FF, PP2EE26006C10 FF, PP2EE27003C0 FF, PP2EE27003C10 FF, PP2EE27004C0 FF, PP2EE27004C10 FF, PP2EM21106C0 FF, PP2EM21107C0 FF, PP2EM22004C0 FF, PP2EM23009C0 FF, PP2EM23010C0 FF, PP2EM26006C0 FF, PP2EM26007C0 FF, PP2EM26008C0 FF, PP2EM26009C0 FF, PP2EM27004C0 FF, PP2EM27005C0 FF, PP2EP21113C10 FF, PP2EP21113C20 FF, PP2EP21113C30 FF, PP2EP22011C10 FF, PP2EP22011C20 FF, PP2EP22011C30 FF, PP2EP23019C10 FF, PP2EP23019C20 FF, PP2EP23019C30 FF, PP2EP26017C10 FF, PP2EP26017C20 FF, PP2EP26017C30 FF, PP2EP27030C10 FF, PP2EP27030C20 FF, PP2EP27030C30 FF | 2.88d | 0d | Labor General [0.5 h]; Cost |  | PA | C | GN |  |  |  |  | B01 |  | CP | R00 | ACF00 | GEN |
| BAFTS01804G0 |  | T&C @ Clinic Building | level of effort | 321.52d | 2012-04-10 | 2013-05-01 | BAFTS01801G100, C04M121121C0 FF, C04M121123C0 FF, C04M122003C0 FF, C04M123021C0 FF, C04M123023C0 FF, C04M126013C0 FF, C04M126015C0 FF, C04M126017C0 FF, C04M126019C0 FF, C04M127003C0 FF, C04M127030C0 FF, C04PA21113C0 FF, C04PA23019C0 FF, C04PA26003C0 FF, C04PA26015C0 FF, C04PA26017C0 FF, C04PA26019C0 FF, C04PA27030C0 FF, C04TR23074C0 FF, C04TR26013C0 FF, C04TR26015C0 FF, C04TR26017C0 FF, C04TR26076C0 FF, C04TR27030C0 FF | 2.88d | 0d | Labor General [0.5 h]; Cost |  | CB | C | AF |  |  |  |  | B01 |  | ST | R00 | ACF00 | GEN |
| BAFTS01805G0 |  | T&C @ D&T Building | level of effort | 321.52d | 2012-04-10 | 2013-05-01 | BAFTS01801G110, D04ER21109C0 FF, D04ER22037C0 FF, D04ER23030C0 FF, D04ER23032C0 FF, D04ER26030C0 FF, D04ER26032C0 FF, D04ER26034C0 FF, D04ER26039C0 FF, D04ER27030C0 FF, D04ER27032C0 FF, D04M121121C0 FF, D04M121123C0 FF, D04M122003C0 FF, D04M123021C0 FF, D04M123023C0 FF, D04M126013C0 FF, D04M126015C0 FF, D04M126017C0 FF, D04M126019C0 FF, D04M127003C0 FF, D04M127030C0 FF, D04M221121C0 FF, D04M221123C0 FF, D04M222003C0 FF, D04M223021C0 FF, D04M223023C0 FF, D04M226013C0 FF, D04M226015C0 FF, D04M226017C0 FF, D04M226019C0 FF, D04M227003C0 FF, D04M227030C0 FF, D04TR23003C0 FF, D04TR23074C0 FF, D04TR26013C0 FF, D04TR26015C0 FF, D04TR26017C0 FF, D04TR26019C0 FF, D04TR26076C0 FF, D04TR27030C0 FF, BAFTS01801G180 | 2.88d | 0d | Labor General [0.5 h]; Cost |  | DT | C | AF |  |  |  |  | B01 |  | DT | R00 | ACF00 | GEN |
| BAFTS01810G5 |  | T&C @ Gallery | level of effort | 321.52d | 2012-04-10 | 2013-05-01 | BAFTS01801G160, G02M121121C0 FF, G02M121123C0 FF, G02M122003C0 FF, G02M123023C0 FF, G02M126013C0 FF, G02M126015C0 FF, G02M126017C0 FF, G02M126019C0 FF, G02M127003C0 FF, G02M127030C0 FF | 2.88d | 0d | Labor General [0.5 h]; Cost |  | GA | C | GN |  |  |  |  | B01 |  | GA | R00 | ACF00 | GEN |
| BAFTS01806G0 |  | T&C @ Swing Wing | level of effort | 270.12d | 2012-06-10 | 2013-05-01 | BAFTS01801G120, S08F121113C0 FF, S08F122021C0 FF, S08F122025C0 FF, S08F122027C0 FF, S08F122029C0 FF, S08F123019C0 FF, S08F126003C0 FF, S08F126015C0 FF, S08F126017C0 FF, S08F126019C0 FF, S08F127030C0 FF, S08F140303C0 FF, S08F221113C0 FF, S08F222021C0 FF, S08F222025C0 FF, S08F222027C0 FF, S08F222029C0 FF, S08F223019C0 FF, S08F226003C0 FF, S08F226015C0 FF, S08F226017C0 FF, S08F226019C0 FF, S08F227030C0 FF, S08F240303C0 FF, S08PA21113C0 FF, S08PA23019C0 FF, S08PA26003C0 FF, S08PA26015C0 FF, S08PA26017C0 FF, S08PA26019C0 FF, S08PA27030C0 FF, S08TR23003C0 FF, S08TR23074C0 FF, S08TR26013C0 FF, S08TR26015C0 FF, S08TR26017C0 FF, S08TR26019C0 FF, S08TR26076C0 FF, S08TR27030C0 FF | 2.88d | 0d | Labor General [0.5 h]; Cost |  | SW | C | GN |  |  |  |  | B01 |  | SW | R00 | ACF00 | GEN |
| BAFTS01807G0 |  | T&C @ ICU | level of effort | 270.12d | 2012-06-10 | 2013-05-01 | BAFTS01801G130, I08P121113C0 FF, I08P122021C0 FF, I08P122025C0 FF, I08P122027C0 FF, I08P122029C0 FF, I08P123019C0 FF, I08P126003C0 FF, I08P126015C0 FF, I08P126017C0 FF, I08P126019C0 FF, I08P127030C0 FF, I08P221113C0 FF, I08P222021C0 FF, I08P222025C0 FF, I08P222027C0 FF, I08P222029C0 FF, I08P223019C0 FF, I08P226003C0 FF, I08P226015C0 FF, I08P226017C0 FF, I08P226019C0 FF, I08P227030C0 FF, I08PA21113C0 FF, I08PA23019C0 FF, I08PA26003C0 FF, I08PA26015C0 FF, I08PA26017C0 FF, I08PA26019C0 FF, I08PA27030C0 FF, I08PA40303C0 FF, I08SL21113C0 FF, I08SL22021C0 FF, I08SL22025C0 FF, I08SL22027C0 FF, I08SL23019C0 FF, I08SL26003C0 FF, I08SL26015C0 FF, I08SL26017C0 FF, I08SL26019C0 FF, I08SL27030C0 FF, I08TR23003C0 FF, I08TR23074C0 FF, I08TR26013C0 FF, I08TR26015C0 FF, I08TR26017C0 FF, I08TR26019C0 FF, I08TR26076C0 FF, I08TR27030C0 FF | 2.88d | 0d | Labor General [0.5 h]; Cost |  | IC | C | GN |  |  |  |  | B01 |  | IC | R00 | ACF00 | GEN |
| BAFTS01808G0 |  | T&C @ Patient Tower 10-16 | level of effort | 270.12d | 2012-06-10 | 2013-05-01 | BAFTS01801G140, T16P121113C0 FF, T16P122021C0 FF, T16P122025C0 FF, T16P122027C0 FF, T16P122029C0 FF, T16P126003C0 FF, T16P126015C0 FF, T16P126017C0 FF, T16P126019C0 FF, T16P127030C0 FF, T16P140303C0 FF, T16P221113C0 FF, T16P222021C0 FF, T16P222025C0 FF, T16P222027C0 FF, T16P222029C0 FF, T16P226003C0 FF, T16P226015C0 FF, T16P226017C0 FF, T16P226019C0 FF, T16P227030C0 FF, T16P240303C0 FF, T16PA21113C0 FF, T16PA23019C0 FF, T16PA26003C0 FF, T16PA26015C0 FF, T16PA26017C0 FF, T16PA26019C0 FF, T16PA27030C0 FF, T16TR23003C0 FF, T16TR23074C0 FF, T16TR26013C0 FF, T16TR26015C0 FF, T16TR26017C0 FF, T16TR26019C0 FF, T16TR26076C0 FF, T16TR27030C0 FF | 2.88d | 0d | Labor General [0.5 h]; Cost |  | PT | C | GN |  |  |  |  | B01 |  | PT | R00 | ACF00 | GEN |
| BAFTS01809G0 |  | T&C @ Patient tower 17-20 | level of effort | 284d | 2012-07-16 | 2013-06-22 | T20PA21113C0 FF, T20PA23019C0 FF, T20PA26003C0 FF, T20PA26015C0 FF, T20PA26017C0 FF, T20PA26019C0 FF, T20PA27030C0 FF, T20R140303C0 FF, T20R221113C0 FF, T20R222021C0 FF, T20R222025C0 FF, T20R222027C0 FF, T20R222029C0 FF, T20R223019C0 FF, T20R226003C0 FF, T20R226015C0 FF, T20R226017C0 FF, T20R226019C0 FF, T20R227030C0 FF, T20R240303C0 FF, T20TR23003C0 FF, T20TR23074C0 FF, T20TR26013C0 FF, T20TR26015C0 FF, T20TR26017C0 FF, T20TR26019C0 FF, T20TR26076C0 FF, T20TR27030C0 FF, BAFTS01808G0 SS+30d | 10d | 0d | Labor General [0.5 h]; Cost |  | PT | C | GN |  |  |  |  | B01 |  | PT | R00 | ACF00 | GEN |

| ID | WBS | Activity | Type | Duration | Start | Finish | Predecessors | Complete | Planned start | Planned finish | Total float | Free float | Constraint | Calendar | Resources | change id | CCAD BUILDING(SET) | CCAD PHASE(SET) | CCAD FLOOR(SET) | CCAD ZONE(SET) | CCAD WORK(SET) | CCAD SECTION(SET) | CCAD SERIAL No.(SET) | CCAD BILL(SET) | CCAD TAG(SET) | CCAD REV(SET) | CCADACF (SET) | CCAD SSCF | CCAD HANDOVER(SET) | RENZ % COMPLETE | Not include in Draft Application |
| --- | --- | --- | --- | --- | --- | --- | --- | --- | --- | --- | --- | --- | --- | --- | --- | --- | --- | --- | --- | --- | --- | --- | --- | --- | --- | --- | --- | --- | --- | --- | --- |
|  | TC | **Integrated T&C** |  |  | 2013-02-21 | 2013-06-22 |  |  |  |  |  |  |  |  |  |  |  |  |  |  |  |  |  |  |  |  |  |  |  |  |  |
| BAFTS01801G0 |  | Integrated T&C for all Buildings |  | 122d | 2013-02-21 | 2013-06-22 | BAFTS01802G0, BAFTS01803G0 SS, BAFTS01804G0 SS, BAFTS01805G0 SS, BAFTS01806G0 SS, BAFTS01807G0 SS, BAFTS01808G0 SS, BAFTS01809G0 SS, BAFTS01810G5 SS, MGNCZ00101M0, MGNCZ00103M0, MGNCZ00104M0, MGNCZ00105M0, MGNCZ00106M0, MGNCZ00107M0, MGNCZ00108M0, MGNCZ00109M0, MGNCZ00111M0 |  |  |  | 11d | 0d |  | R00-C02, Calendar day | Labor General [0.5 h]; Cost | BAFTS01801G0 | AB | C | AF | TS | SC | 018 | 01 | B01 | GN | R00 | ACF07 | 018 |  |  |  |
|  | WA | **Wild Air** |  |  | 2011-03-24 | 2012-07-14 |  |  |  |  |  |  |  |  |  |  |  |  |  |  |  |  |  |  |  |  |  |  |  |  |  |
|  | 1 | **Temporary Wild Air** |  |  | 2011-03-24 | 2011-11-10 |  |  |  |  |  |  |  |  |  |  |  |  |  |  |  |  |  |  |  |  |  |  |  |  |  |
| DAFWA00112M0 |  | DT-WA ; Start-up Wild Air by External Air(Temp) (Wild Air) | milestone | 0d | 2011-03-24 A | 2011-03-24 A | DP1PH09203C0 SS | 100% | 2011-10-12 | 2011-10-12 |  |  |  |  |  | DAFWA00112M0 | DT | C | AF | WA | MI | 001 | 12 | B01 | DT | R00 | ACF00 | 001 | S2 |  |  |
| CAFWA00115M0 |  | CB-WA ; Start-up Wild Air by External Air(Temp) (Wild Air) | milestone | 0d | 2011-04-05 A | 2011-04-05 A | CP2PA09203C0 SS | 100% |  |  |  |  |  |  |  | CAFWA00115M0 | CB | C | AF | WA | MI | 001 | 15 | B01 | ST | R00 | ACF00 | 001 | S1 |  |  |
| GAFWA00110M0 |  | GA-WA ; Start-up Wild Air by External Air(Temp) (Wild Air) | milestone | 0d | 2011-05-31 A | 2011-05-31 A | GP2PA09203C0 SS | 100% |  |  |  |  |  |  |  | GAFWA00110M0 | GA | C | AF | WA | MI | 001 | 10 | B01 | GA | R00 | ACF00 | 001 | S1 |  |  |
| IAFWA00104M0 |  | IC-WA ; Start-up Wild Air by External Air(Temp) (Wild Air) | milestone | 0d | 2011-06-01 A | 2011-06-01 A | I07PA09203C0 SS | 100% |  |  |  |  |  |  |  | IAFWA00104M0 | IC | C | AF | WA | MI | 001 | 04 | B01 | IC | R00 | ACF00 | 001 | S2 |  |  |
| SAFWA00107M0 |  | SW-WA ; Start-up Wild Air by External Air(Temp) (Wild Air) | milestone | 0d | 2011-06-08 A | 2011-06-08 A | S07AL09203C0 SS | 100% |  |  |  |  |  |  |  | SAFWA00107M0 | SW | C | AF | WA | MI | 001 | 07 | B01 | SW | R00 | ACF00 | 001 | S2 |  |  |
| TAFWA00102M0 |  | PT-WA ; Start-up Wild Air by External Air(Temp) (Wild Air) | milestone | 0d | 2011-11-10 | 2011-11-10 | T10CO04407C0 |  |  |  | 39.79d | 0d |  |  |  | TAFWA00102M0 | PT | C | AF | WA | MI | 001 | 02 | B01 | PT | R00 | ACF00 | 001 | S2 |  |  |
|  | 2 | **Permanent Wild Air** |  |  | 2012-05-08 | 2012-07-14 |  |  |  |  |  |  |  |  |  |  |  |  |  |  |  |  |  |  |  |  |  |  |  |  |  |
| CAFWA00113M0 |  | CB-WA ; Start-up Wild Air by HVAC System (Wild Air) | milestone | 0d | 2012-05-08 | 2012-05-08 | CAFAF23029C0, D01M123013C0, D01M123011C0, C03E123017C0, C03E123023C0, C03E223017C0, C03E223023C0, C03PA23017C0, C03PA23023C0, BAFTS01801G100 FS+24d |  |  |  | 12.4d | 0d |  |  |  | CAFWA00113M0 | CB | C | AF | WA | MI | 001 | 13 | B01 | ST | R00 | ACF00 | 001 | S1 |  |  |
| DAFWA00119M0 |  | DT-WA ; Start-up Wild Air by HVAC System P2 to GL (Wild Air) | milestone | 0d | 2012-05-08 | 2012-05-08 | D01M123013C0, D01M123011C0, DGLTF23023C0, DGLTF23017C0, DGLMR23017C0, DGLMR23023C0, DGLPA23023C0, DGLPA23017C0, BAFTS01801G110 FS+24d |  |  |  | 51.4d | 34.9d |  |  |  | DAFWA00111M0 | DT | C | AF | WA | MI | 001 | 11 | B01 | DT | R00 | ACF00 | 001 | S2 |  |  |
| GAFWA00109M0 |  | GA-WA ; Start-up Wild Air by HVAC System (Wild Air) | milestone | 0d | 2012-06-10 | 2012-06-10 | G02M123013C0, GAFAF23029C0, G02CO04404C0, G01CO04404C0, GGLCO04404C0, GP1CO04404C0, GP2CO04404C0, D01M123013C0, D01M123011C0, G01PA23017C50, G01PA23023C50, G01M123019C10, G01M123005C10, BAFTS01801G160 FS+24d |  |  |  | 54.87d | 0d |  |  |  | GAFWA00109M0 | GA | C | AF | WA | MI | 001 | 09 | B01 | GA | R00 | ACF00 | 001 | S1 |  |  |
| DAFWA00111M0 |  | DT-WA ; Start-up Wild Air by HVAC System L2 to L3 (Wild Air) | milestone | 0d | 2012-07-09 | 2012-07-09 | D04M223013C0, D04M123013C0, D04M123011C0, D03G123017C0, D03G123023C0, D03G223023C0, D03G223017C0, D03UR23017C0, D03UR23023C0, D03EY23017C0, D03EY23023C0, D03PA23017C0, D03PA23023C0, BAFTS01801G180 FS+24d |  |  |  | 25.88d | 0d |  |  |  | DAFWA00111M0 | DT | C | AF | WA | MI | 001 | 11 | B01 | DT | R00 | ACF00 | 001 | S2 |  |  |
| IAFWA00103M0 |  | IC-WA ; Start-up Wild Air by HVAC System (Wild Air) | milestone | 0d | 2012-07-09 | 2012-07-09 | I08CO04405C0, IAFAF23029C0, IR8M123013C0, I08SL23017C0, I08SL23023C0, I08P123017C0, I08P123023C0, I08P223017C0, I08P223023C0, I08PA23017C0, I08PA23023C0, BAFTS01801G130 FS+24d, I06CO04409C0, I07CO04405C0 |  |  |  | 41.75d | 13d |  |  |  | IAFWA00103M0 | IC | C | AF | WA | MI | 001 | 03 | B01 | IC | R00 | ACF00 | 001 | S2 |  |  |
| SAFWA00105M0 |  | SW-WA ; Start-up Wild Air by HVAC System (Wild Air) | milestone | 0d | 2012-07-09 | 2012-07-09 | S08CO04406C0, SR8M123013C0, SR8M123011C0, S08PA23017C0, S08PA23023C0, S08F123017C0, S08F123023C0, S08F223017C0, S08F223023C0, BAFTS01801G120 FS+24d, S06CO04406C0, S07CO04406C0 |  |  |  | 24d | 0d |  |  |  | SAFWA00105M0 | SW | C | AF | WA | MI | 001 | 05 | B01 | SW | R00 | ACF00 | 001 | S2 |  |  |
| TAFWA00101M0 |  | PT-WA ; Start-up Wild Air by HVAC System (Wild Air) | milestone | 0d | 2012-07-14 | 2012-07-14 | T19M223013C0, T20CO04407C0, T20PA23023C0, T20R123023C0, T20R223023C0, T19M123011C0, T20R123017C0, T20R123023C0 SS, T20R223023C0 SS, T20R223017C0, T20PA23017C0, T20PA23023C0 SS, BAFTS01801G140 FS+24d, T10CO04407C0, T11CO04407C0, T12CO04407C0, T13CO04407C0, T14CO04407C0, T15CO04407C0, T16CO04407C0, T17CO04407C0, T18CO04407C0, T20CO04407C0 SS |  |  |  | 24.75d | 0d |  |  |  | TAFWA00101M0 | PT | C | AF | WA | MI | 001 | 01 | B01 | PT | R00 | ACF00 | 001 | S2 |  |  |
|  | 5 | **Flushing** |  |  |  |  |  |  |  |  |  |  |  |  |  |  |  |  |  |  |  |  |  |  |  |  |  |  |  |  |  |
|  | 2 | **Operation & Maintenance Training** |  |  | 2012-09-18 | 2013-01-01 |  |  |  |  |  |  |  |  |  |  |  |  |  |  |  |  |  |  |  |  |  |  |  |  |  |
| A10310 |  | O&M Training Starting | milestone | 0d | 2012-09-18 | 2012-09-18 | MGNMI00101M0 |  |  |  | 3.88d | 0d | as late as possible | R00-C02, Calendar day |  |  |  |  |  |  |  | GEN |  | B01 |  | R00 |  | GEN |  |  |  |
| A10320 |  | O&M Manuals (1st draft) submission completion | milestone | 0d | 2013-01-01 | 2013-01-01 | MGNMI00101M0 |  |  |  | 3.88d | 0d | as late as possible | R00-C02, Calendar day |  |  |  |  |  |  |  | GEN |  | B01 |  | R00 |  | GEN |  |  |  |
|  | MU | **Mockup** |  |  | 2010-05-08 | 2011-09-25 |  |  |  |  |  |  |  |  |  |  |  |  |  |  |  |  |  |  |  |  |  |  |  |  |  |
| OGNMU00003S0 |  | MOCK UP - Floor Screed |  | 3d | 2010-05-08 A | 2010-06-15 A | OGNMU00001S0 | 100% | 2010-05-26 | 2010-05-29 |  |  |  |  | Cost | OGNMU00003S0 | MO | C | GN | MU | MU | 000 | 03 | B01 | MU | R00 | ACF01 | 000 |  | 100 |  |
| OGNMU00001S0 |  | MOCK UP - CMU Walls Install |  | 15d | 2010-05-11 A | 2010-06-05 A | MGNMI00101M0 FS+62d | 100% | 2010-05-08 | 2010-05-24 |  |  |  |  | Cost | OGNMU00001S0 | MO | C | GN | MU | MU | 000 | 01 | B01 | MU | R00 | ACF01 | 000 |  | 100 |  |
| OGNMU00005S0 |  | MOCK UP - Structural Steel/Decking Install |  | 3d | 2010-06-06 A | 2010-06-13 A | OGNMU00003S0 | 100% | 2010-05-31 | 2010-06-02 |  |  |  |  | Cost | OGNMU00005S0 | MO | C | GN | MU | MU | 000 | 05 | B01 | MU | R00 | ACF01 | 000 |  | 100 |  |
| OGNMU00009S0 |  | MOCK UP - Walls Steel Stud Framing |  | 20d | 2010-06-16 A | 2010-08-30 A | OGNMU00005S0 | 100% | 2010-06-05 | 2010-06-27 |  |  |  |  | Cost | OGNMU00009S0 | MO | C | GN | MU | MU | 000 | 09 | B01 | MU | R00 | ACF01 | 000 |  | 100 |  |
| OGNMU00007S0 |  | MOCK UP - MEP Systems |  | 79d | 2010-06-20 A | 2010-10-03 A | OGNMU00005S0 | 100% | 2010-06-05 | 2010-09-05 |  |  |  |  | Cost | OGNMU00007S0 | MO | C | GN | MU | MU | 000 | 07 | B01 | MU | R00 | ACF01 | 000 |  | 100 |  |
| OGNMU00011S0 |  | MOCK UP - MEP Ceiling Roughing-In |  | 24d | 2010-06-20 A | 2010-08-15 A | OGNMU00009S0 SS+2d | 100% | 2010-06-07 | 2010-07-04 |  |  |  |  | Cost | OGNMU00011S0 | MO | C | GN | MU | MU | 000 | 11 | B01 | MU | R00 | ACF01 | 000 |  | 100 |  |
| OGNMU00029S0 |  | MOCK UP - A/C Final Overhead Rough-In |  | 17d | 2010-06-23 A | 2010-08-09 A | OGNMU00017S0 | 100% | 2010-07-15 | 2010-08-03 |  |  |  |  | Cost | OGNMU00029S0 | MO | C | GN | MU | MU | 000 | 29 | B01 | MU | R00 | ACF01 | 000 |  | 100 |  |
| OGNMU00019S0 |  | MOCK UP - MEP Wall Rough-In |  | 6d | 2010-06-25 A | 2010-08-15 A | OGNMU00009S0 | 100% | 2010-06-29 | 2010-07-05 |  |  |  |  | Cost | OGNMU00019S0 | MO | C | GN | MU | MU | 000 | 19 | B01 | MU | R00 | ACF01 | 000 |  | 100 |  |
| OGNMU00013S0 |  | MOCK UP - Overhead Steel Supports Shop Dwgs Package 1 & 2 |  | 5d | 2010-07-11 A | 2010-08-09 A | OGNMU00009S0, OGNMU00009S0 SS+15d | 100% | 2010-06-29 | 2010-07-04 |  |  |  |  | Cost | OGNMU00013S0 | MO | C | GN | MU | MU | 000 | 13 | B01 | MU | R00 | ACF01 | 000 |  | 100 |  |
| OGNMU00021S0 |  | MOCK UP - Overhead Steel Supports Shop Dwg Pack 3 |  | 5d | 2010-07-11 A | 2010-08-09 A | OGNMU00013S0 | 100% | 2010-07-06 | 2010-07-12 |  |  |  |  | Cost | OGNMU00021S0 | MO | C | GN | MU | MU | 000 | 21 | B01 | MU | R00 | ACF01 | 000 |  | 100 |  |
| OGNMU00015S0 |  | MOCK UP - Gypsum Wall Lining & Tape |  | 20d | 2010-07-19 A | 2010-09-14 A | OGNMU00009S0 SS+19d | 100% | 2010-06-27 | 2010-07-20 |  |  |  |  | Cost | OGNMU00015S0 | MO | C | GN | MU | MU | 000 | 15 | B01 | MU | R00 | ACF01 | 000 |  | 100 |  |
| OGNMU00027S0 |  | MOCK UP - Door & Window HM Frames Install |  | 6d | 2010-07-24 A | 2010-07-29 A | OGNMU00017S0 | 100% | 2010-07-15 | 2010-07-21 |  |  |  |  | Cost | OGNMU00027S0 | MO | C | GN | MU | MU | 000 | 27 | B01 | MU | R00 | ACF01 | 000 |  | 100 |  |
| OGNMU00031S0 |  | MOCK UP - Head & Foot Walls/Casework Install Plinths |  | 2d | 2010-08-05 A | 2010-08-14 A | OGNMU00029S0 SS+1d | 100% | 2010-07-17 | 2010-07-18 |  |  |  |  | Cost | OGNMU00031S0 | MO | C | GN | MU | MU | 000 | 31 | B01 | MU | R00 | ACF01 | 000 |  | 100 |  |
| OGNMU00017S0 |  | MOCK UP - OSS Fabrication & Installation Package 1 & 2 |  | 6d | 2010-08-11 A | 2010-08-13 A | OGNMU00013S0 | 100% | 2010-07-06 | 2010-07-13 |  |  |  |  | Cost | OGNMU00017S0 | MO | C | GN | MU | MU | 000 | 17 | B01 | MU | R00 | ACF01 | 000 |  | 100 |  |
| OGNMU00025S0 |  | MOCK UP - Hilti Structural Frame Install 2 PAT Rooms |  | 4d | 2010-08-12 A | 2010-08-18 A | OGNMU00017S0 SS+5d | 100% | 2010-07-13 | 2010-07-17 |  |  |  |  | Cost | OGNMU00025S0 | MO | C | GN | MU | MU | 000 | 25 | B01 | MU | R00 | ACF01 | 000 |  | 100 |  |
| OGNMU00033S0 |  | MOCK UP - OSS Fabrication & Install Pack 3 CATH LAB & GEN OR |  | 8d | 2010-08-12 A | 2010-08-15 A | OGNMU00021S0 | 100% | 2010-07-14 | 2010-07-22 |  |  |  |  | Cost | OGNMU00033S0 | MO | C | GN | MU | MU | 000 | 33 | B01 | MU | R00 | ACF01 | 000 |  | 100 |  |
| OGNMU00037S0 |  | MOCK UP - Suspended Ceiling Framing |  | 6d | 2010-08-15 A | 2010-09-30 A | OGNMU00019S0, OGNMU00023S0 | 100% | 2010-07-14 | 2010-07-20 |  |  |  |  | Cost | OGNMU00037S0 | MO | C | GN | MU | MU | 000 | 37 | B01 | MU | R00 | ACF01 | 000 |  | 100 |  |
| OGNMU00053S0 |  | MOCK UP - Liko Rails Install |  | 2d | 2010-08-17 A | 2010-08-19 A | OGNMU00023S0 SS+23d | 100% | 2010-07-31 | 2010-08-01 |  |  |  |  | Cost | OGNMU00053S0 | MO | C | GN | MU | MU | 000 | 53 | B01 | MU | R00 | ACF01 | 000 |  | 100 |  |
| OGNMU00047S0 |  | MOCK UP - MEP Final Ceiling Install A/C & ELEC |  | 6d | 2010-08-25 A | 2010-10-16 A | OGNMU00015S0 | 100% | 2010-07-22 | 2010-07-28 |  |  |  |  | Cost | OGNMU00047S0 | MO | C | GN | MU | MU | 000 | 47 | B01 | MU | R00 | ACF01 | 000 |  | 100 |  |
| OGNMU00049S0 |  | MOCK UP - MEP Final Wall Installations |  | 4d | 2010-08-25 A | 2010-10-16 A | OGNMU00015S0 | 100% | 2010-07-22 | 2010-07-26 |  |  |  |  | Cost | OGNMU00049S0 | MO | C | GN | MU | MU | 000 | 49 | B01 | MU | R00 | ACF01 | 000 |  | 100 |  |
| OGNMU00069S0 |  | MOCK UP - Initial Clear |  | 5d | 2010-08-28 A | 2010-09-02 A | OGNMU00039S0, OGNMU00041S0, OGNMU00043S0, OGNMU00045S0, OGNMU00057S0 SS, OGNMU00067S0 | 100% | 2010-08-28 | 2010-09-01 |  |  |  |  | Cost | OGNMU00069S0 | MO | C | GN | MU | MU | 000 | 69 | B01 | MU | R00 | ACF01 | 000 |  | 100 |  |
| OGNMU00023S0 |  | MOCK UP - Gypsum Ceiling Framing |  | 8d | 2010-09-01 A | 2010-09-15 A | OGNMU00011S0 SS+22d | 100% | 2010-07-03 | 2010-07-12 |  |  |  |  | Cost | OGNMU00023S0 | MO | C | GN | MU | MU | 000 | 23 | B01 | MU | R00 | ACF01 | 000 |  | 100 |  |
| OGNMU00041S0 |  | MOCK UP - Hilti Install Struct Frame CATH LAB & GEN OR |  | 4d | 2010-09-10 A | 2010-09-20 A | OGNMU00033S0 SS+6d | 100% | 2010-07-21 | 2010-07-25 |  |  |  |  | Cost | OGNMU00041S0 | MO | C | GN | MU | MU | 000 | 41 | B01 | MU | R00 | ACF01 | 000 |  | 100 |  |
| OGNMU00057S0 |  | MOCK UP - Painting |  | 15d | 2010-09-12 A | 2010-10-02 A | OGNMU00053S0 SS+2d | 100% | 2010-08-02 | 2010-08-18 |  |  |  |  | Cost | OGNMU00057S0 | MO | C | GN | MU | MU | 000 | 57 | B01 | MU | R00 | ACF01 | 000 |  | 100 |  |
| OGNMU00043S0 |  | MOCK UP - Suspended Tile Install |  | 11d | 2010-09-15 A | 2010-10-02 A | OGNMU00037S0 | 100% | 2010-07-22 | 2010-08-03 |  |  |  |  | Cost | OGNMU00043S0 | MO | C | GN | MU | MU | 000 | 43 | B01 | MU | R00 | ACF01 | 000 |  | 100 |  |
| OGNMU00045S0 |  | MOCK UP - Porcelain Tiling Lay/Waterproofing |  | 23d | 2010-09-17 A | 2010-10-08 A | OGNMU00035S0 SS+9d | 100% | 2010-07-31 | 2010-08-25 |  |  |  |  | Cost | OGNMU00045S0 | MO | C | GN | MU | MU | 000 | 45 | B01 | MU | R00 | ACF01 | 000 |  | 100 |  |
| OGNMU00039S0 |  | MOCK UP - Glazing Install |  | 1d | 2010-09-18 A | 2010-10-02 A | OGNMU00027S0 | 100% | 2010-07-24 | 2010-07-24 |  |  |  |  | Cost | OGNMU00039S0 | MO | C | GN | MU | MU | 000 | 39 | B01 | MU | R00 | ACF01 | 000 |  | 100 |  |
| OGNMU00035S0 |  | MOCK UP - Terrazzo Flooring Lay |  | 14d | 2010-09-19 A | 2010-10-05 A | OGNMU00015S0 SS+11d, OGNMU00031S0 | 100% | 2010-07-20 | 2010-08-04 |  |  |  |  | Cost | OGNMU00035S0 | MO | C | GN | MU | MU | 000 | 35 | B01 | MU | R00 | ACF01 | 000 |  | 100 |  |
| OGNMU00051S0 |  | MOCK UP - Stone Flooring & Wall |  | 5d | 2010-09-19 A | 2010-09-20 A | OGNMU00025S0, OGNMU00035S0 | 100% | 2010-08-07 | 2010-08-11 |  |  |  |  | Cost | OGNMU00051S0 | MO | C | GN | MU | MU | 000 | 51 | B01 | MU | R00 | ACF01 | 000 |  | 100 |  |
| OGNMU00075S0 |  | MOCK UP - Final Clear |  | 5d | 2010-09-20 A | 2011-09-25 A | OGNMU00073S0 | 100% | 2010-09-08 | 2010-09-14 |  |  |  |  | Cost | OGNMU00075S0 | MO | C | GN | MU | MU | 000 | 75 | B01 | MU | R00 | ACF01 | 000 |  | 80 | Y |
| OGNMU00055S0 |  | MOCK UP - Rubber Flooring |  | 8d | 2010-09-22 A | 2010-09-25 A | OGNMU00051S0 SS+4d | 100% | 2010-08-11 | 2010-08-19 |  |  |  |  | Cost | OGNMU00055S0 | MO | C | GN | MU | MU | 000 | 55 | B01 | MU | R00 | ACF01 | 000 |  | 100 |  |
| OGNMU00071S0 |  | MOCK UP - Signage |  | 1d | 2010-09-23 A | 2010-10-02 A | OGNMU00057S0 | 100% | 2010-08-21 | 2010-08-21 |  |  |  |  | Cost | OGNMU00071S0 | MO | C | GN | MU | MU | 000 | 71 | B01 | MU | R00 | ACF01 | 000 |  | 100 |  |
| OGNMU00065S0 |  | MOCK UP - Aluminum Doors Install |  | 4d | 2010-09-25 A | 2010-10-11 A | OGNMU00059S0 | 100% | 2010-08-22 | 2010-08-25 |  |  |  |  | Cost | OGNMU00065S0 | MO | C | GN | MU | MU | 000 | 65 | B01 | MU | R00 | ACF01 | 000 |  | 100 |  |
| OGNMU00061S0 |  | MOCK UP - Cabinet Install |  | 12d | 2010-09-28 A | 2010-10-17 A | OGNMU00051S0 | 100% | 2010-08-14 | 2010-08-26 |  |  |  |  | Cost | OGNMU00061S0 | MO | C | GN | MU | MU | 000 | 61 | B01 | MU | R00 | ACF01 | 000 |  | 100 |  |
| OGNMU00063S0 |  | MOCK UP - Install Wall Protection |  | 6d | 2010-09-30 A | 2010-10-02 A | OGNMU00061S0 SS | 100% | 2010-08-14 | 2010-08-19 |  |  |  |  | Cost | OGNMU00063S0 | MO | C | GN | MU | MU | 000 | 63 | B01 | MU | R00 | ACF01 | 000 |  | 100 |  |
| OGNMU00073S0 |  | MOCK UP - Snags |  | 3d | 2010-10-04 A | 2011-09-25 A | OGNMU00007S0 FF, OGNMU00047S0, OGNMU00049S0, OGNMU00063S0, OGNMU00065S0, OGNMU00069S0, OGNMU00071S0 | 100% | 2010-09-04 | 2010-09-06 |  |  |  |  | Cost | OGNMU00073S0 | MO | C | GN | MU | MU | 000 | 73 | B01 | MU | R00 | ACF01 | 000 |  | 90 | Y |
| OGNMU00067S0 |  | MOCK UP - Install Onyx/Glass/Deco Panels |  | 2d | 2010-10-06 A | 2010-12-28 A | OGNMU00055S0 | 100% | 2010-08-22 | 2010-08-23 |  |  |  |  | Cost | OGNMU00067S0 | MO | C | GN | MU | MU | 000 | 67 | B01 | MU | R00 | ACF01 | 000 |  | 100 |  |
| OGNMU00059S0 |  | MOCK UP - Doors & Hardware Install |  | 6d | 2010-10-11 A | 2010-10-17 A | OGNMU00051S0 | 100% | 2010-08-14 | 2010-08-19 |  |  |  |  | Cost | OGNMU00059S0 | MO | C | GN | MU | MU | 000 | 59 | B01 | MU | R00 | ACF01 | 000 |  | 100 |  |
| OGNMU00079S0 |  | MOCK UP - Ready/Practical Completion |  | 0d | 2010-10-31 A | 2010-12-20 A | OGNMU00075S0, OGNMU00077S0 | 100% | 2010-09-16 | 2010-09-16 |  |  |  |  | Cost | OGNMU00079S0 | MO | C | GN | MU | MU | 000 | 79 | B01 | MU | R00 | ACF01 | 000 |  | 100 |  |
| OGNMU00077S0 |  | MOCK UP - Owners Supply Contractor Install Equipment |  | 2d | 2010-11-15 A | 2010-12-19 A | OGNMU00073S0 | 100% | 2010-11-09 | 2010-11-10 |  |  |  |  | Cost | OGNMU00077S0 | MO | C | GN | MU | MU | 000 | 77 | B01 | MU | R00 | ACF01 | 000 |  | 100 |  |

| ID | WBS | Activity | Duration | Start | Finish | Predecessors | Complete | Planned start | Planned finish | Resources | change id | RENZ % COMPLETE | CCAD BUILDING(SET) | CCAD PHASE(SET) | CCAD DIVISION(SET) | CCAD FLOOR(SET) | CCAD ZONE(SET) | CCAD WORK(SET) | CCAD SECTION(SET) | CCAD SERIAL No.(SET) | CCAD RESPONSIBILITY(SET) | CCAD CUP CODE(SET) | CCAD CBS(SET) | CCAD BILL(SET) | CCAD TAG(SET) | CCAD REV(SET) | CCADACF (SET) | CCAD SSCF |
| --- | --- | --- | --- | --- | --- | --- | --- | --- | --- | --- | --- | --- | --- | --- | --- | --- | --- | --- | --- | --- | --- | --- | --- | --- | --- | --- | --- | --- |
|  | CU | **CUP(Central Utility Plant)** |  | 2010-04-17 | 2012-02-09 |  |  |  |  |  |  |  |  |  |  |  |  |  |  |  |  |  |  |  |  |  |  |  |
|  | OA | **Overall** |  |  |  |  |  |  |  |  |  |  |  |  |  |  |  |  |  |  |  |  |  |  |  |  |  |  |
|  | FN | **Foundation** |  | 2010-04-17 | 2011-09-29 |  |  |  |  |  |  |  |  |  |  |  |  |  |  |  |  |  |  |  |  |  |  |  |
|  | S1 | **Zone S1** |  | 2010-05-16 | 2011-02-27 |  |  |  |  |  |  |  |  |  |  |  |  |  |  |  |  |  |  |  |  |  |  |  |
| UFNS103304C0 |  | CU-FN ; Pile Cap & Grade Beam (Zone S1-3) | 80d | 2010-05-16 A | 2010-11-04 A | MGNMI00101M0 FS+107d | 100% | 2010-11-01 | 2011-02-07 | ANTI-TERMITE [1360 h]; CONCRETE [16104 h]; CONCRETE [405 m3]; ANTI-TERMITE [900 m2]; THERMAL & MOISTURE [2457 m2]; THERMAL & MOISTURE [1848 h]; Cost | UFNS103304C0 | 100 | UP | C | 03 | FN | S1 | CT | 033 | 04 | SIS | 3 | BILL 3 | B03 | 02 | R00 | ACF02 | 033 |
| UFNS103303C0 |  | CU-FN ; Pile Cap & Grade Beam (Zone S1-2) | 70d | 2010-05-23 A | 2010-09-27 A | MGNMI00101M0 FS+122d | 100% | 2010-11-01 | 2011-01-26 | ANTI-TERMITE [840 h]; CONCRETE [13960 h]; CONCRETE [351 m3]; ANTI-TERMITE [562 m2]; THERMAL & MOISTURE [2129 m2]; THERMAL & MOISTURE [1600 h]; Cost | UFNS103303C0 | 100 | UP | C | 03 | FN | S1 | CT | 033 | 03 | SIS | 2 | BILL 3 | B03 | 02 | R00 | ACF02 | 033 |
| UFNS103302C0 |  | CU-FN ; Pile Cap & Grade Beam (Zone S1-1) | 40d | 2010-05-30 A | 2011-01-11 A | MGNMI00101M0 FS+142d, UAFOA31201C1 FF | 100% | 2010-11-01 | 2010-12-21 | ANTI-TERMITE [840 h]; CONCRETE [15184 h]; CONCRETE [382 m3]; ANTI-TERMITE [562 m2]; THERMAL & MOISTURE [2317 m2]; THERMAL & MOISTURE [1744 h]; Cost | UFNS103302C0 | 100 | UP | C | 03 | FN | S1 | CT | 033 | 02 | SIS | 1 | BILL 3 | B03 | 02 | R00 | ACF02 | 033 |
| UFNS131204C0 |  | CU-FN ; Back Filling Upto the Top of Pile Cap (Zone S1-3) | 45d | 2010-07-01 A | 2010-11-11 A | UFNS103304C0 SS+30d, UFNS103304C0 FF | 100% | 2010-12-16 | 2011-02-07 | EXCAVATION & BACKFILLING [4463 m3]; EXCAVATION & BACKFILLING [4463 h]; Cost | UFNS131204C0 | 100 | UP | C | 31 | FN | S1 | EK | 312 | 04 | SIS | 3 | BILL 3 | B03 | 03 | R00 | ACF02 | 312 |
| UFNS131203C0 |  | CU-FN ; Back Filling Upto the Top of Pile Cap (Zone S1-2) | 12d | 2010-07-14 A | 2010-10-05 A | UFNS103303C0 SS+50d | 100% | 2011-01-04 | 2011-01-17 | EXCAVATION & BACKFILLING [2672 m3]; EXCAVATION & BACKFILLING [2672 h]; Cost | UFNS131203C0 | 100 | UP | C | 31 | FN | S1 | EK | 312 | 03 | SIS | 2 | BILL 3 | B03 | 03 | R00 | ACF02 | 312 |
| UFNS103301C0 |  | CU-FN ; Chilled Water Connection Pit Base/Wall Concrete (Zone S1) | 33d | 2010-07-17 A | 2011-01-16 A | MGNMI00101M0 FS+120d | 100% | 2010-11-01 | 2010-12-13 | CONCRETE [784 h]; Cost | UFNS103301C0 | 100 | UP | C | 03 | FN | S1 | CT | 033 | 01 | SIS | S1 | BILL 3 | B03 | 10 | R00 | ACF03 | 033 |
| UFNS103305C0 |  | CU-FN ; Walls upto P3 (Zone S1-1) | 21d | 2010-08-04 A | 2011-01-29 A | UFNS103302C0 SS+30d, UFNS131202C0 FF+6d | 100% | 2010-12-11 | 2011-01-04 | CONCRETE [2992 h]; CONCRETE [75 m3]; Cost | UFNS103305C0 | 100 | UP | C | 03 | FN | S1 | CT | 033 | 05 | SIS | 1 | BILL 3 | B03 | 05 | R00 | ACF03 | 033 |
| UFNS131202C0 |  | CU-FN ; Back Filling Upto the Top of Pile Cap (Zone S1-1) | 5d | 2010-08-07 A | 2011-01-20 A | UFNS103302C0 FF+3d | 100% | 2010-12-20 | 2010-12-25 | EXCAVATION & BACKFILLING [1405 m3]; EXCAVATION & BACKFILLING [1405 h]; Cost | UFNS131202C0 | 100 | UP | C | 31 | FN | S1 | EK | 312 | 02 | SIS | 1 | BILL 3 | B03 | 03 | R00 | ACF02 | 312 |
| UFNS131201C0 |  | CU-FN ; Chilled Water Connection Pit Back Filling (Zone S1) | 5d | 2010-08-08 A | 2011-01-27 A | UFNS103301C0 | 100% | 2010-12-14 | 2010-12-19 | EXCAVATION & BACKFILLING [1405 m3]; EXCAVATION & BACKFILLING [1405 h]; Cost | UFNS131201C0 | 100 | UP | C | 31 | FN | S1 | EK | 312 | 01 | SIS | S1 | BILL 3 | B03 | 04 | R00 | ACF02 | 312 |
| UFNS103307C0 |  | CU-FN ; Walls upto P3 (Zone S1-2) | 12d | 2010-08-11 A | 2010-10-06 A | UFNS103303C0 FF+3d, UFNS131203C0 FF+4d, UFNS131207C0 FF | 100% | 2011-02-06 | 2011-02-19 | CONCRETE [760 h]; CONCRETE [19 m3]; Cost | UFNS103307C0 | 100 | UP | C | 03 | FN | S1 | CT | 033 | 07 | SIS | 2 | BILL 3 | B03 | 05 | R00 | ACF03 | 033 |
| UFNS103309C0 |  | CU-FN ; Walls upto P3 (Zone S1-3) | 11d | 2010-08-11 A | 2010-11-20 A | UFNS131204C0, UFNS131207C0 FF | 100% | 2011-02-08 | 2011-02-20 | CONCRETE [1432 h]; CONCRETE [36 m3]; Cost | UFNS103309C0 | 100 | UP | C | 03 | FN | S1 | CT | 033 | 09 | SIS | 3 | BILL 3 | B03 | 05 | R00 | ACF03 | 033 |
| UFNS131207C0 |  | CU-FN ; Back Filling Upto the Soffit of SOG (Zone S1-0) | 18d | 2010-08-19 A | 2011-01-29 A | UFNS103319C0 SS+3d | 100% | 2011-01-30 | 2011-02-19 | EXCAVATION & BACKFILLING [232 m3]; EXCAVATION & BACKFILLING [232 h]; Cost | UFNS131207C0 | 100 | UP | C | 31 | FN | S1 | EK | 312 | 07 | SIS | 0 | BILL 3 | B03 | 03 | R00 | ACF02 | 312 |
| UFNS103310C0 |  | CU-FN ; Electrical Trench (Zone S1-2) | 12d | 2010-09-02 A | 2010-10-02 A | UFNS131203C0 SS+2d | 100% | 2011-01-06 | 2011-01-19 | CONCRETE [1944 h]; CONCRETE [49 m3]; Cost | UFNS103310C0 | 100 | UP | C | 03 | FN | S1 | CT | 033 | 10 | SIS | 2 | BILL 3 | B03 | 09 | R00 | ACF02 | 033 |
| UFNS103319C0 |  | CU-FN ; Duct Bank (Zone S1-1) & 3 | 13.88d | 2010-09-02 A | 2010-11-13 A | UFNS131204C0 SS+34d | 100% | 2011-01-26 | 2011-02-10 | CONCRETE [2784 h]; CONCRETE [70 m3]; Cost | UFNS103319C0 | 100 | UP | C | 03 | FN | S1 | CT | 033 | 19 | SIS | 1 | BILL 3 | B03 | 09 | R00 | ACF02 | 033 |
| UFNS103332C0 |  | CU-FN ; SOG (Zone S1-0) | 12d | 2010-10-05 A | 2011-02-16 A | UFNS103305C0 FF, UFNS103307C0 FF+3d, UFNS103309C0 FF, UFNS103310C0 FF+3d, UFNS103310C0 SS, UFNS103319C0 FF, UFNS131201C0, UFNS131202C0, UFNS131205C0, UFNS131207C0 FF+6d | 100% | 2011-02-13 | 2011-02-26 | ANTI-TERMITE [1600 h]; CONCRETE [36288 h]; CONCRETE [913 m3]; ANTI-TERMITE [1063 m2]; THERMAL & MOISTURE [5539 m2]; THERMAL & MOISTURE [4152 h]; Cost | UFNS103332C0 | 100 | UP | C | 03 | FN | S1 | CT | 033 | 32 | SIS | 0 | BILL 3 | B03 | 06 | R00 | ACF02 | 033 |
| UFNS131205C0 |  | CU-FN ; Manhole Drainage (Zone S1-0) | 7d | 2010-10-27 A | 2011-02-27 A | UFNS131207C0 SS | 100% | 2010-11-21 | 2010-11-29 | CONCRETE [32 h]; Cost | UFNS131205C0 | 100 | UP | C | 31 | FN | S1 | EK | 312 | 05 | SIS | 0 | BILL 3 | B03 | 04 | R00 | ACF02 | 312 |
|  | S2 | **Zone S2** |  | 2010-05-10 | 2011-07-20 |  |  |  |  |  |  |  |  |  |  |  |  |  |  |  |  |  |  |  |  |  |  |  |
| UFNS203302C0 |  | CU-FN ; Pile Cap & Grade Beam (Zone S2-2) | 70d | 2010-05-10 A | 2011-07-20 A | UAFOA31201C1 FF, UFNS203301C0 SS+15d | 100% | 2010-11-22 | 2011-02-13 | ANTI-TERMITE [1272 h]; CONCRETE [29584 h]; CONCRETE [744 m3]; ANTI-TERMITE [844 m2]; THERMAL & MOISTURE [4513 m2]; THERMAL & MOISTURE [3384 h]; Cost | UFNS203302C0 | 90 | UP | C | 03 | FN | S2 | CT | 033 | 02 | SIS | 2 | BILL 3 | B03 | 02 | R00 | ACF02 | 033 |
| UFNS203301C0 |  | CU-FN ; Pile Cap & Grade Beam (Zone S2-1) | 80d | 2010-06-05 A | 2010-10-21 A | MGNMI00101M0 FS+105d | 100% | 2010-11-01 | 2011-02-07 | ANTI-TERMITE [760 h]; CONCRETE [20320 h]; CONCRETE [511 m3]; ANTI-TERMITE [506 m2]; THERMAL & MOISTURE [3100 m2]; THERMAL & MOISTURE [2328 h]; Cost | UFNS203301C0 | 100 | UP | C | 03 | FN | S2 | CT | 033 | 01 | SIS | 1 | BILL 3 | B03 | 02 | R00 | ACF02 | 033 |
| UFNS231201C0 |  | CU-FN ; Back Filling Upto the Top of Pile Cap (Zone S2-1) | 5d | 2010-07-04 A | 2010-11-01 A | UFNS203301C0 SS+8d, UFNS203301C0 FF | 100% | 2011-02-02 | 2011-02-07 | EXCAVATION & BACKFILLING [2314 m3]; EXCAVATION & BACKFILLING [2314 h]; Cost | UFNS231201C0 | 100 | UP | C | 31 | FN | S2 | EK | 312 | 01 | SIS | 1 | BILL 3 | B03 | 03 | R00 | ACF02 | 312 |
| UFNS231202C0 |  | CU-FN ; Back Filling Upto the Top of Pile Cap (Zone S2-2) | 15d | 2010-07-18 A | 2010-12-30 A | UFNS203302C0 SS+10d, UFNS203302C0 FF | 100% | 2011-01-27 | 2011-02-13 | EXCAVATION & BACKFILLING [4215 m3]; EXCAVATION & BACKFILLING [4215 h]; Cost | UFNS231202C0 | 100 | UP | C | 31 | FN | S2 | EK | 312 | 02 | SIS | 2 | BILL 3 | B03 | 03 | R00 | ACF02 | 312 |
| UFNS203303C0 |  | CU-FN ; Walls upto P3 (Zone S2-1) | 12d | 2010-09-15 A | 2010-12-04 A | UFNS203301C0 FF+5d, UFNS203305C0 SS+10d, UFNS231201C0 | 100% | 2011-02-21 | 2011-03-06 | CONCRETE [1192 h]; CONCRETE [30 m3]; Cost | UFNS203303C0 | 100 | UP | C | 03 | FN | S2 | CT | 033 | 03 | SIS | 1 | BILL 3 | B03 | 05 | R00 | ACF03 | 033 |
| UFNS203304C0 |  | CU-FN ; Walls upto P3 (Zone S2-2) | 12d | 2010-10-26 A | 2011-01-30 A | UFNS203302C0 SS+50d, UFNS231202C0 | 100% | 2011-02-14 | 2011-02-27 | CONCRETE [1120 h]; CONCRETE [28 m3]; Cost | UFNS203304C0 | 100 | UP | C | 03 | FN | S2 | CT | 033 | 04 | SIS | 2 | BILL 3 | B03 | 05 | R00 | ACF03 | 033 |
| UFNS203307C0 |  | CU-FN ; Duct Bank (Zone S2-2) | 11.88d | 2010-10-26 A | 2011-04-08 A | UFNS203302C0 FF+2d, UFNS231202C0 FF+4d | 100% | 2010-11-20 | 2010-12-02 | CONCRETE [9184 h]; CONCRETE [231 m3]; Cost | UFNS203307C0 | 100 | UP | C | 03 | FN | S2 | CT | 033 | 07 | SIS | 2 | BILL 3 | B03 | 09 | R00 | ACF02 | 033 |
| UFNS231203C0 |  | CU-FN ; Back Filling Upto the Soffit of SOG (Zone S2-0) | 12d | 2010-10-26 A | 2011-07-20 A | UFNS203307C0 FF+1d, UFNS231204C0 FF | 100% | 2011-02-06 | 2011-02-19 | EXCAVATION & BACKFILLING [184 m3]; EXCAVATION & BACKFILLING [184 h]; Cost | UFNS231203C0 | 90 | UP | C | 31 | FN | S2 | EK | 312 | 03 | SIS | 0 | BILL 3 | B03 | 03 | R00 | ACF02 | 312 |
| UFNS203309C0 |  | CU-FN ; SOG (Zone S2-0) | 10d | 2010-11-02 A | 2011-05-30 A | UFNS203303C0 FF+4d, UFNS203304C0, UFNS203305C0 FF, UFNS203307C0 SS+6d, UFNS203310C0 FF, UFNS203321C0 FF, UFNS231203C0 FF+2d, UFNS231205C0 FF | 100% | 2010-12-09 | 2010-12-20 | ANTI-TERMITE [1264 h]; CONCRETE [33832 h]; CONCRETE [851 m3]; ANTI-TERMITE [842 m2]; THERMAL & MOISTURE [5163 m2]; THERMAL & MOISTURE [3880 h]; Cost | UFNS203309C0 | 100 | UP | C | 03 | FN | S2 | CT | 033 | 09 | SIS | 0 | BILL 3 | B03 | 06 | R00 | ACF02 | 033 |
| UFNS203305C0 |  | CU-FN ; Duct Bank (Zone S2-1) | 12d | 2010-11-03 A | 2010-12-07 A | UFNS203301C0 FF+4d, UFNS231201C0 | 100% | 2010-11-10 | 2010-11-27 | CONCRETE [6960 h]; CONCRETE [175 m3]; Cost | UFNS203305C0 | 100 | UP | C | 03 | FN | S2 | CT | 033 | 05 | SIS | 1 | BILL 3 | B03 | 09 | R00 | ACF02 | 033 |
| UFNS231204C0 |  | CU-FN ; Excavation for Oil Water Separation Tank (Zone S2-3) | 3d | 2010-12-23 A | 2010-12-25 A | UFNS203301C0 FF, UFNS203301C0 SS+8d | 100% | 2011-01-02 | 2011-01-04 | Cost | UFNS231204C0 | 100 | UP | C | 31 | FN | S2 | EK | 312 | 04 | SIS | 3 | BILL 3 | B03 | 03 | R00 | ACF02 | 312 |
| UFNS203310C0 |  | CU-FN ; Oil Water Separation Tank Base Concrete (Zone S2-3) | 5d | 2010-12-26 A | 2010-12-30 A | UFNS203302C0 SS+15d, UFNS231204C0 SS+3d | 100% | 2010-12-01 | 2010-12-06 | CONCRETE [2296 h]; Cost | UFNS203310C0 | 100 | UP | C | 03 | FN | S2 | CT | 033 | 10 | SIS | 3 | BILL 3 | B03 | 10 | R00 | ACF03 | 033 |
| UFNS231205C0 |  | CU-FN ; Backfilling for Oil Water Separation Tank (Zone S2-3) | 2.88d | 2010-12-29 A | 2011-05-31 A | UFNS203321C0 | 100% | 2010-12-14 | 2010-12-16 | EXCAVATION & BACKFILLING [2424 m3]; EXCAVATION & BACKFILLING [2424 h]; Cost | UFNS231205C0 | 100 | UP | C | 31 | FN | S2 | EK | 312 | 05 | SIS | 3 | BILL 3 | B03 | 03 | R00 | ACF02 | 312 |
| UFNS203321C0 |  | CU-FN ; Oil Water Separation Tank Wall Concrete (Zone S2-3) | 5d | 2011-01-03 A | 2011-01-11 A | UFNS203310C0 | 100% | 2011-01-10 | 2011-01-15 | CONCRETE [40 h]; Cost | UFNS203321C0 | 100 | UP | C | 03 | FN | S2 | CT | 033 | 21 | SIS | 3 | BILL 3 | B03 | 10 | R00 | ACF03 | 033 |

| ID | WBS | Activity | Duration | Start | Finish | Predecessors | Complete | Remaining | Planned start | Planned finish | Total float | Free float | Constraint | Resources | change id | RENZ % COMPLETE | CCAD BUILDING(SET) | CCAD PHASE(SET) | CCAD DIVISION(SET) | CCAD FLOOR(SET) | CCAD ZONE(SET) | CCAD WORK(SET) | CCAD SECTION(SET) | CCAD SERIAL No.(SET) | CCAD RESPONSIBILITY(SET) | CCAD CUP CODE(SET) | CCAD CBS(SET) | CCAD BILL(SET) | CCAD TAG(SET) | CCAD REV(SET) | CCADACF (SET) | CCAD SSCF | Claimed This Month | P_811 | P_711 | CCAD CSA |
| --- | --- | --- | --- | --- | --- | --- | --- | --- | --- | --- | --- | --- | --- | --- | --- | --- | --- | --- | --- | --- | --- | --- | --- | --- | --- | --- | --- | --- | --- | --- | --- | --- | --- | --- | --- | --- |
|  | S3 | **Zone S3** |  | 2010-06-03 | 2011-09-29 |  |  |  |  |  |  |  |  |  |  |  |  |  |  |  |  |  |  |  |  |  |  |  |  |  |  |  |  |  |  |  |
| UFNS303301C0 |  | CU-FN ; Pile Cap & Grade Beam (Zone S3-1) | 82.88d | 2010-06-03 A | 2011-05-30 A | MGNMI00101M0 FS+104d | 100% |  | 2010-11-01 | 2011-02-10 |  |  |  | ANTI-TERMITE [1176 h]; CONCRETE [16936 h]; CONCRETE [426 m3]; ANTI-TERMITE [787 m2]; THERMAL & MOISTURE [2584 m2]; THERMAL & MOISTURE [1944 h]; Cost | UFNS303301C0 | 100 | UP | C | 03 | FN | S3 | CT | 033 | 01 | SIS | 1 | BILL 3 | B03 | 02 | R00 | ACF02 | 033 |  |  |  |  |
| UFNS303302C0 |  | CU-FN ; Pile Cap & Grade Beam (Zone S3-2) | 70d | 2010-06-06 A | 2011-01-29 A | UFNS303301C0 SS+16d | 100% |  | 2010-11-23 | 2011-02-14 |  |  |  | ANTI-TERMITE [1272 h]; CONCRETE [7360 h]; CONCRETE [185 m3]; ANTI-TERMITE [844 m2]; THERMAL & MOISTURE [1122 m2]; THERMAL & MOISTURE [840 h]; Cost | UFNS303302C0 | 100 | UP | C | 03 | FN | S3 | CT | 033 | 02 | SIS | 2 | BILL 3 | B03 | 02 | R00 | ACF02 | 033 |  |  |  |  |
| UFNS331201C0 |  | CU-FN ; Back Filling Upto the Top of Pile Cap (Zone S3-1) | 23.88d | 2010-06-30 A | 2011-03-12 A | UFNS303301C0 SS+33d, UFNS303301C0 FF | 100% |  | 2011-01-15 | 2011-02-10 |  |  |  | EXCAVATION & BACKFILLING [3885 m3]; EXCAVATION & BACKFILLING [3885 h]; Cost | UFNS331201C0 | 100 | UP | C | 31 | FN | S3 | EK | 312 | 01 | SIS | 1 | BILL 3 | B03 | 03 | R00 | ACF02 | 312 |  |  |  |  |
| UFNS331202C0 |  | CU-FN ; Back Filling Upto the Top of Pile Cap (Zone S3-2) | 5d | 2010-07-18 A | 2011-02-02 A | UFNS303302C0 SS+30d, UFNS303302C0 FF | 100% |  | 2011-02-09 | 2011-02-14 |  |  |  | EXCAVATION & BACKFILLING [4160 m3]; EXCAVATION & BACKFILLING [4160 h]; Cost | UFNS331202C0 | 100 | UP | C | 31 | FN | S3 | EK | 312 | 02 | SIS | 2 | BILL 3 | B03 | 03 | R00 | ACF02 | 312 |  |  |  |  |
| UFNS303303C0 |  | CU-FN ; Walls upto P3 (Zone S3-1) | 11.88d | 2010-09-04 A | 2011-02-27 A | UFNS331201C0 FF | 100% |  | 2011-01-29 | 2011-02-10 |  |  |  | CONCRETE [840 h]; CONCRETE [21 m3]; Cost | UFNS303303C0 | 100 | UP | C | 03 | FN | S3 | CT | 033 | 03 | SIS | 1 | BILL 3 | B03 | 05 | R00 | ACF03 | 033 |  |  |  |  |
| UFNS331203C0 |  | CU-FN ; Back Filling Upto the Soffit of SOG (Zone S3-0) | 12d | 2010-10-20 A | 2011-05-30 A | UFNS303305C0 FF, UFNS303305C0 SS+8d, UFNS331201C0 FF+3d | 100% |  | 2011-01-30 | 2011-02-12 |  |  |  | EXCAVATION & BACKFILLING [309 m3]; EXCAVATION & BACKFILLING [309 h]; Cost | UFNS331203C0 | 100 | UP | C | 31 | FN | S3 | EK | 312 | 03 | SIS | 0 | BILL 3 | B03 | 03 | R00 | ACF02 | 312 |  |  |  |  |
| UFNS303304C0 |  | CU-FN ; Walls upto P3 (Zone S3-2) | 15d | 2010-10-26 A | 2010-12-13 A | UFNS331202C0 | 100% |  | 2011-02-16 | 2011-03-05 |  |  |  | CONCRETE [720 h]; CONCRETE [18 m3]; Cost | UFNS303304C0 | 100 | UP | C | 03 | FN | S3 | CT | 033 | 04 | SIS | 2 | BILL 3 | B03 | 05 | R00 | ACF03 | 033 |  |  |  |  |
| UFNS303305C0 |  | CU-FN ; Duct Bank (Zone S3-1) | 12d | 2010-10-28 A | 2011-03-10 A | UFNS331201C0 SS+5d | 100% |  | 2010-11-30 | 2010-12-15 |  |  |  | CONCRETE [6960 h]; CONCRETE [175 m3]; Cost | UFNS303305C0 | 100 | UP | C | 03 | FN | S3 | CT | 033 | 05 | SIS | 1 | BILL 3 | B03 | 09 | R00 | ACF02 | 033 |  |  |  |  |
| UFNS303307C0 |  | CU-FN ; SOG (Zone S3-0) | 12d | 2011-01-29 A | 2011-05-30 A | UFNS303303C0 FF, UFNS303304C0 FF+6d, UFNS331203C0 FF, UFNS331203C0 SS+8d | 100% |  | 2011-01-10 | 2011-01-24 |  |  |  | ANTI-TERMITE [2128 h]; CONCRETE [25768 h]; CONCRETE [648 m3]; ANTI-TERMITE [1417 m2]; THERMAL & MOISTURE [3931 m2]; THERMAL & MOISTURE [2952 h]; Cost | UFNS303307C0 | 100 | UP | C | 03 | FN | S3 | CT | 033 | 07 | SIS | 0 | BILL 3 | B03 | 06 | R00 | ACF02 | 033 |  |  |  |  |
| UFNS303306C0 |  | Complete backfilling and SOG at TC-08 box-out | 2d | 2011-06-30 A | 2011-09-29 A | UFNS303307C0 SS | 100% |  | 2011-06-30 | 2011-07-02 |  |  |  | Labor General [1 h]; Cost |  |  | UP |  |  | P3 |  | CT | 033 |  |  |  | BILL 3 | B03 | 06 | R00 | ACF00 | 033 |  |  |  |  |
|  | S4 | **Zone S4** |  | 2010-04-17 | 2011-07-20 |  |  |  |  |  |  |  |  |  |  |  |  |  |  |  |  |  |  |  |  |  |  |  |  |  |  |  |  |  |  |  |
| UFNS403301C0 |  | CU-FN ; Pile Cap on South Property Line (Zone S4-0) | 20d | 2010-04-17 A | 2010-07-27 A | MGNMI00101M0 FS+120d | 100% |  | 2010-11-01 | 2010-11-27 |  |  |  | CONCRETE [17848 h]; CONCRETE [449 m3]; THERMAL & MOISTURE [2724 m2]; THERMAL & MOISTURE [2040 h]; Cost | UFNS403301C0 | 100 | UP | C | 03 | FN | S4 | CT | 033 | 01 | SIS | 0 | BILL 3 | B03 | 02 | R00 | ACF02 | 033 |  |  |  |  |
| UFNS403302C0 |  | CU-FN ; Pile Cap Others (Zone S4-0) | 54d | 2010-04-17 A | 2010-07-22 A | UFNS403301C0 FF, UFNS403301C0 SS+6d | 100% |  | 2010-11-08 | 2011-01-15 |  |  |  | CONCRETE [22416 h]; CONCRETE [564 m3]; THERMAL & MOISTURE [3421 m2]; THERMAL & MOISTURE [2568 h]; Cost | UFNS403302C0 | 100 | UP | C | 03 | FN | S4 | CT | 033 | 02 | SIS | 0 | BILL 3 | B03 | 02 | R00 | ACF02 | 033 |  |  |  |  |
| UFNS431201C0 |  | CU-FN ; Back Filling Upto the Soffit of SOG (Zone S4-0) | 6d | 2010-07-24 A | 2010-08-01 A | UFNS403302C0 FF, UFNS403302C0 SS+4d | 100% |  | 2011-01-09 | 2011-01-15 |  |  |  | EXCAVATION & BACKFILLING [242 m3]; EXCAVATION & BACKFILLING [242 h]; Cost | UFNS431201C0 | 100 | UP | C | 31 | FN | S4 | EK | 312 | 01 | SIS | 0 | BILL 3 | B03 | 03 | R00 | ACF02 | 312 |  |  |  |  |
| UFNS403303C0 |  | CU-FN ;SOG (Zone S4-0) | 10d | 2010-08-03 A | 2010-09-06 A | UFNS403302C0 SS+40d, UFNS431201C0 | 100% |  | 2010-12-29 | 2011-01-10 |  |  |  | ANTI-TERMITE [3144 h]; CONCRETE [13240 h]; CONCRETE [333 m3]; ANTI-TERMITE [2099 m2]; THERMAL & MOISTURE [2020 m2]; THERMAL & MOISTURE [1512 h]; Cost | UFNS403303C0 | 100 | UP | C | 03 | FN | S4 | CT | 033 | 03 | SIS | 0 | BILL 3 | B03 | 06 | R00 | ACF02 | 033 |  |  |  |  |
| UFNS431202C0 |  | CU-FN ; 1st Back Filling Upto the Soffit of Tank (Zone S4-0) | 18d | 2011-03-14 A | 2011-07-20 A | UFNS431201C0 FF, UP3S403301C0 FS+35d | 100% |  | 2011-03-14 | 2011-04-03 |  |  |  | EXCAVATION & BACKFILLING [606 m3]; EXCAVATION & BACKFILLING [606 h]; Cost | UP3S431201C0 | 90 | UP | C | 31 | FN | S4 | EK | 312 | 02 | SIS | 0 | BILL 3 | B03 | 03 | R00 | ACF02 | 312 |  |  |  |  |
|  | 10 | **Precommissioning Tesing & snagging** |  |  |  |  |  |  |  |  |  |  |  |  |  |  |  |  |  |  |  |  |  |  |  |  |  |  |  |  |  |  |  |  |  |  |
|  | P3 | **Podium 3** |  | 2010-06-06 | 2012-01-15 |  |  |  |  |  |  |  |  |  |  |  |  |  |  |  |  |  |  |  |  |  |  |  |  |  |  |  |  |  |  |  |
|  | S1 | **Zone S1** |  | 2010-08-24 | 2011-10-03 |  |  |  |  |  |  |  |  |  |  |  |  |  |  |  |  |  |  |  |  |  |  |  |  |  |  |  |  |  |  |  |
| UP3S103311C0 |  | CU-P3 ; Walls & Columns P3 to P2 (Zone S1-1) | 12d | 2010-08-24 A | 2011-02-26 A | UFNS103305C0, UFNS103332C0 SS+6d | 100% |  | 2011-02-21 | 2011-03-06 |  |  |  | CONCRETE [14472 h]; CONCRETE [364 m3]; Cost | UP3S103311C0 | 100 | UP | C | 03 | P3 | S1 | CT | 033 | 11 | SIS | 1 | BILL 3 | B03 | 05 | R00 | ACF03 | 033 |  |  |  |  |
| UP3S103302C0 |  | CU-P3 ; Walls & Columns P3 to P2 (Zone S1-2) | 12d | 2010-09-20 A | 2010-11-09 A | UFNS103307C0, UFNS131203C0, UP3S103311C0 SS | 100% |  | 2011-02-21 | 2011-03-06 |  |  |  | CONCRETE [4656 h]; CONCRETE [117 m3]; Cost | UP3S103302C0 | 100 | UP | C | 03 | P3 | S1 | CT | 033 | 02 | SIS | 2 | BILL 3 | B03 | 05 | R00 | ACF03 | 033 |  |  |  |  |
| UP3S103303C0 |  | CU-P3 ; Walls & Columns P3 to P2 (Zone S1-3) | 12d | 2010-10-18 A | 2011-03-02 A | UFNS103309C0, UFNS103332C0 FF+6d, UP3S203303C0 FF | 100% |  | 2011-02-22 | 2011-03-07 |  |  |  | CONCRETE [7552 h]; CONCRETE [190 m3]; Cost | UP3S103303C0 | 100 | UP | C | 03 | P3 | S1 | CT | 033 | 03 | SIS | 3 | BILL 3 | B03 | 05 | R00 | ACF03 | 033 |  |  |  |  |
| UP3S104001C0 |  | CU-P3 ; Block Wall P3 to P2 (Zone S1-2) | 5d | 2011-03-01 A | 2011-07-20 A | UGLS103302C0, UP2S103301C0 FS+14d | 100% |  | 2011-03-16 | 2011-03-21 |  |  |  | BLOCKWORKS [623 h]; BLOCKWORKS [178 m2]; Cost | UP3S104001C0 | 90 | UP | C | 04 | P3 | S1 | BL | 040 | 01 | SIS | 2 | BILL 3 | B03 | BL | R00 | ACF06 | 040 | 5410 |  |  |  |
| UP3S104003C0 |  | CU-P3 ; Plaster for Block Wall P3 to P2 (Zone S1-2) | 5d | 2011-03-01 A | 2011-07-20 A | UP3S104001C0 FF, UP3S104001C0 SS | 100% |  | 2011-03-16 | 2011-03-21 |  |  |  | BLOCKWORKS [23 h]; Cost | UP3S104003C0 | 90 | UP | C | 04 | P3 | S1 | BL | 040 | 03 | SIS | 2 | BILL 3 | B03 | BL | R00 | ACF06 | 040 | 954.77 |  |  |  |
| UP3S104002C0 |  | CU-P3 ; Block Wall P3 to P2 (Zone S1-3) | 4.88d | 2011-05-10 A | 2011-08-30 A | UGLS103303C0, UP2S103302C0 FS+14d | 100% |  | 2011-06-19 | 2011-06-23 |  |  |  | BLOCKWORKS [1089 h]; BLOCKWORKS [311 m2]; Cost | UP3S104002C0 | 20 | UP | C | 04 | P3 | S1 | BL | 040 | 02 | SIS | 3 | BILL 3 | B03 | BL | R00 | ACF06 | 040 | 28402.52 | 100 | 80 |  |
| UP3S104004C0 |  | CU-P3 ; Plaster for Block Wall P3 to P2 (Zone S1-3) | 4.88d | 2011-05-10 A | 2011-08-02 A | UP3S104002C0 FF, UP3S104002C0 SS | 100% |  | 2011-06-19 | 2011-06-23 |  |  |  | BLOCKWORKS [40 h]; Cost | UP3S104004C0 | 20 | UP | C | 04 | P3 | S1 | BL | 040 | 04 | SIS | 3 | BILL 3 | B03 | BL | R00 | ACF06 | 040 | 5012.21 | 100 | 80 |  |
| UP3S105509C0 |  | CU-P3 ; Steel Staircase & Handrails(A14,A15,A16,A17,A18,A19,A21,A22,A23) (Zone S1) | 24d | 2011-09-05 A | 2011-10-03 | UP3S103302C0, UP3S103303C0, UP3S103311C0 | 90% | 2.4d | 2011-09-01 | 2011-09-28 | 447d | 0d | as late as possible | SECONDARY STEEL [1808 h]; STRUCTURAL STEEL [9 T(Fe)]; Cost | UP3S104004C0 |  | UP | C | 04 | P3 | S1 | SW | 055 | 04 | SIS | 3 | BILL 3 | B03 | 01 | R00 | ACF03 | 055 |  |  |  | ST |

| ID | WBS | Activity | Type | Duration | Start | Finish | Predecessors | Complete | Remaining | Planned start | Planned finish | Total float | Free float | Constraint | Resources | Cost | Actual cost | change id | RENZ % COMPLETE | CCAD BUILDING(SET) | CCAD PHASE(SET) | CCAD DIVISION(SET) | CCAD FLOOR(SET) | CCAD ZONE(SET) | CCAD WORK(SET) | CCAD SECTION(SET) | CCAD SERIAL No.(SET) | CCAD RESPONSIBILITY(SET) | CCAD CUP CODE(SET) | CCAD CBS(SET) | CCAD BILL(SET) | CCAD TAG(SET) | CCAD REV(SET) | CCADACF (SET) | CCAD SSCF | Phase | Claimed This Month | P_811 | P_711 | user_number8 | user_integer1 | user_integer2 | user_number7 | CCAD CSA | DIVISION FOR ACTIVITY ID | July2011 Target% Complete |
| --- | --- | --- | --- | --- | --- | --- | --- | --- | --- | --- | --- | --- | --- | --- | --- | --- | --- | --- | --- | --- | --- | --- | --- | --- | --- | --- | --- | --- | --- | --- | --- | --- | --- | --- | --- | --- | --- | --- | --- | --- | --- | --- | --- | --- | --- | --- |
|  | S2 | **Zone S2** |  |  | 2010-12-26 | 2011-10-03 |  |  |  |  |  |  |  |  |  |  |  |  |  |  |  |  |  |  |  |  |  |  |  |  |  |  |  |  |  |  |  |  |  |  |  |  |  |  |  |  |
| UP3S203302C0 |  | CU-P3 ; Walls & Columns P3 to P2 (Zone S2-2) |  | 12d | 2010-12-26 A | 2011-05-30 A | UFNS203302C0 | 100% |  | 2011-02-01 | 2011-02-14 |  |  |  | CONCRETE [5208 h]; CONCRETE [131 m3]; Cost |  |  | UP3S203302C0 | 100 | UP | C | 03 | P3 | S2 | CT | 033 | 02 | SIS | 2 | BILL 3 | B03 | 05 | R00 | ACF03 | 033 |  |  |  |  |  |  |  |  |  |  |  |
| UP3S203301C0 |  | CU-P3 ; Walls & Columns P3 to P2 (Zone S2-1) |  | 10d | 2010-12-29 A | 2011-04-28 A | UFNS203303C0, UP3S203303C0 | 100% |  | 2011-01-18 | 2011-01-30 |  |  |  | CONCRETE [6208 h]; CONCRETE [156 m3]; Cost |  |  | UP3S203301C0 | 100 | UP | C | 03 | P3 | S2 | CT | 033 | 01 | SIS | 1 | BILL 3 | B03 | 05 | R00 | ACF03 | 033 |  |  |  |  |  |  |  |  |  |  |  |
| UP3S203303C0 |  | Completion of external cabling by Al Naboodah | milestone | 0d | 2011-04-21 A | 2011-04-21 A | MGNMI00101M0 | 100% |  |  |  |  |  | finish on or after 2011-03-21 | Labor General |  |  |  |  | UP |  | 01 | GN |  |  |  |  |  |  |  | B03 | CU | R00 | ACF00 | GEN | Z2 |  |  |  |  |  |  |  |  |  |  |
| UP3S204002C0 |  | CU-P3 ; Block Wall P3 to P2 (Zone S2-2) |  | 5d | 2011-05-09 A | 2011-07-20 A | UGLS203302C0 FS+14d | 100% |  | 2011-07-02 | 2011-07-07 |  |  |  | BLOCKWORKS [987 h]; BLOCKWORKS [282 m2]; Cost |  |  | UP3S204002C0 | 80 | UP | C | 04 | P3 | S2 | BL | 040 | 02 | SIS | 2 | BILL 3 | B03 | BL | R00 | ACF06 | 040 |  | 17131.68 |  |  |  |  |  |  |  |  |  |
| UP3S204001C0 |  | CU-P3 ; Block Wall P3 to P2 (Zone S2-1) |  | 4.88d | 2011-05-10 A | 2011-08-30 A | UGLS203301C0 FS+18d | 100% |  | 2011-07-10 | 2011-07-14 |  |  |  | BLOCKWORKS [571 h]; BLOCKWORKS [163 m2]; Cost |  |  | UP3S204001C0 | 20 | UP | C | 04 | P3 | S2 | BL | 040 | 01 | SIS | 1 | BILL 3 | B03 | BL | R00 | ACF06 | 040 |  | 19836.68 | 100 | 80 |  |  |  |  |  |  |  |
| UP3S204003C0 |  | CU-P3 ; Plaster for Block Wall P3 to P2 (Zone S2-1) |  | 5d | 2011-06-15 A | 2011-08-30 A | UP3S204001C0 FF, UP3S204001C0 SS | 100% |  | 2011-06-15 | 2011-06-20 |  |  |  | BLOCKWORKS [21 h]; Cost |  |  | UP3S204003C0 |  | UP | C | 04 | P3 | S2 | BL | 040 | 03 | SIS | 1 | BILL 3 | B03 | BL | R00 | ACF06 | 040 |  | 5250.89 | 100 | 80 |  |  |  |  |  |  |  |
| UP3S204004C0 |  | CU-P3 ; Plaster for Block Wall P3 to P2 (Zone S2-2) |  | 4d | 2011-06-23 A | 2011-07-20 A | UP3S204002C0 FF, UP3S204002C0 SS | 100% |  | 2011-06-23 | 2011-06-27 |  |  |  | BLOCKWORKS [36 h]; Cost |  |  | UP3S204004C0 |  | UP | C | 04 | P3 | S2 | BL | 040 | 04 | SIS | 2 | BILL 3 | B03 | BL | R00 | ACF06 | 040 |  | 15116.19 |  |  |  |  |  |  |  |  |  |
| UP3S205509C0 |  | CU-P3 ; Steel Staircase & Handrails(A1,A5) (Zone S2) |  | 24d | 2011-08-02 A | 2011-10-03 | UP3S203301C0, UP3S203302C0 | 90% | 2.4d | 2011-08-02 | 2011-09-01 | 459.6d | 0d | as late as possible | SECONDARY STEEL [904 h]; Cost |  |  | UP3S104004C0 |  | UP | C | 04 | P3 | S2 | SW | 055 | 04 | SIS | 3 | BILL 3 | B03 | 01 | R00 | ACF03 | 055 |  |  | 10 | 0 | 0 | 0 | 0 | 0 | ST |  |  |
|  | S3 | **Zone S3** |  |  | 2010-10-18 | 2011-10-03 |  |  |  |  |  |  |  |  |  |  |  |  |  |  |  |  |  |  |  |  |  |  |  |  |  |  |  |  |  |  |  |  |  |  |  |  |  |  |  |  |
| UP3S303301C0 |  | CU-P3 ; Walls & Columns P3 to P2 (Zone S3-1) |  | 12d | 2010-10-18 A | 2011-06-01 A | UFNS303303C0, UFNS303307C0 FF, UFNS303307C0 SS, UFNS331203C0 FF | 100% |  | 2011-03-06 | 2011-03-19 |  |  |  | CONCRETE [4728 h]; CONCRETE [119 m3]; Cost |  |  | UP3S303301C0 | 90 | UP | C | 03 | P3 | S3 | CT | 033 | 01 | SIS | 1 | BILL 3 | B03 | 05 | R00 | ACF03 | 033 |  | 24222.41 |  |  |  |  |  |  |  |  |  |
| UP3S303302C0 |  | CU-P3 ; Walls & Columns P3 to P2 (Zone S3-2) |  | 12d | 2010-12-06 A | 2011-04-17 A | UFNS303304C0, UP3S303301C0 FF, UP3S303301C0 SS+2d | 100% |  | 2010-12-20 | 2011-01-04 |  |  |  | CONCRETE [4896 h]; CONCRETE [123 m3]; Cost |  |  | UP3S303302C0 | 100 | UP | C | 03 | P3 | S3 | CT | 033 | 02 | SIS | 2 | BILL 3 | B03 | 05 | R00 | ACF03 | 033 |  |  |  |  |  |  |  |  |  |  |  |
| UP3S304001C0 |  | CU-P3 ; Block Wall P3 to P2 (Zone S3-1) |  | 5d | 2011-06-01 A | 2011-07-20 A | OGNMU00001S0, UP2S303303C0 FS+14d | 100% |  | 2011-06-01 | 2011-06-07 |  |  |  | BLOCKWORKS [935 h]; BLOCKWORKS [267 m2]; Cost |  |  | UP3S304001C0 |  | UP | C | 04 | P3 | S3 | BL | 040 | 01 | SIS | 1 | BILL 3 | B03 | BL | R00 | ACF06 | 040 |  | 24345.02 |  |  |  |  |  |  |  |  |  |
| UP3S304003C0 |  | CU-P3 ; Plaster for Block Wall P3 to P2 (Zone S3-1) |  | 5d | 2011-06-01 A | 2011-07-20 A | UP3S304001C0 FF, UP3S304001C0 SS | 100% |  | 2011-06-01 | 2011-06-07 |  |  |  | BLOCKWORKS [34 h]; Cost |  |  | UP3S304003C0 |  | UP | C | 04 | P3 | S3 | BL | 040 | 03 | SIS | 1 | BILL 3 | B03 | BL | R00 | ACF06 | 040 |  | 4296.18 |  |  |  |  |  |  |  |  |  |
| UP3S304002C0 |  | CU-P3 ; Block Wall P3 to P2 (Zone S3-2) |  | 4d | 2011-06-25 A | 2011-08-08 A | UGLS303302C0 FS+14d | 100% |  | 2011-06-25 | 2011-06-30 |  |  |  | BLOCKWORKS [987 h]; BLOCKWORKS [282 m2]; Cost |  |  | UP3S304002C0 |  | UP | C | 04 | P3 | S3 | BL | 040 | 02 | SIS | 2 | BILL 3 | B03 | BL | R00 | ACF06 | 040 |  | 34263.36 | 100 | 90 |  |  |  |  |  |  |  |
| UP3S304004C0 |  | CU-P3 ; Plaster for Block Wall P3 to P2 (Zone S3-2) |  | 4d | 2011-06-25 A | 2011-08-30 A | UP3S304002C0 FF, UP3S304002C0 SS | 100% |  | 2011-06-25 | 2011-06-30 |  |  |  | BLOCKWORKS [36 h]; Cost |  |  | UP3S304004C0 |  | UP | C | 04 | P3 | S3 | BL | 040 | 04 | SIS | 2 | BILL 3 | B03 | BL | R00 | ACF06 | 040 |  | 6046.48 | 100 | 90 |  |  |  |  |  |  |  |
| UP3S305509C0 |  | CU-P3 ; Steel Staircase & Handrails(A2,A3,A4,A20) (Zone S3) |  | 24d | 2011-08-02 A | 2011-10-03 | UP3S303301C0, UP3S303302C0 | 95% | 1.2d | 2011-08-02 | 2011-09-01 | 459.6d | 0d | as late as possible | SECONDARY STEEL [904 h]; Cost |  |  | UP3S104004C0 |  | UP | C | 04 | P3 | S3 | SW | 055 | 04 | SIS | 3 | BILL 3 | B03 | 01 | R00 | ACF03 | 055 |  |  | 10 | 0 | 0 | 0 | 0 | 0 | ST |  |  |
|  | S4 | **Zone S4** |  |  | 2010-09-02 | 2011-01-30 |  |  |  |  |  |  |  |  |  |  |  |  |  |  |  |  |  |  |  |  |  |  |  |  |  |  |  |  |  |  |  |  |  |  |  |  |  |  |  |  |
| UP3S403301C0 |  | CU-P3 ; Walls at P3 (1 Concrete) (Zone S4-0) |  | 56d | 2010-09-02 A | 2011-01-30 A | UFNS403303C0 SS+15d | 100% |  | 2011-01-17 | 2011-03-22 |  |  |  | CONCRETE [22864 h]; CONCRETE [575 m3]; Cost |  |  | UP3S403301C0 | 100 | UP | C | 03 | P3 | S4 | CT | 033 | 01 | SIS | 0 | BILL 3 | B03 | 05 | R00 | ACF03 | 033 |  |  |  |  |  |  |  |  |  |  |  |
|  | 01 | **HEAT EXCH. & CHW PUMP RM** |  |  | 2010-07-19 | 2011-11-22 |  |  |  |  |  |  |  |  |  |  |  |  |  |  |  |  |  |  |  |  |  |  |  |  |  |  |  |  |  |  |  |  |  |  |  |  |  |  |  |  |
| UP3HE26010C0 |  | CU-P3 ; Lightning Prot. / Earthing Tape (Heat Exch) |  | 6d | 2010-07-19 A | 2011-10-01 | MGNMI00101M0 | 95% | 0.3d | 2011-04-27 | 2011-05-04 | -28.3d | 0d |  | ELECTRICAL [2323.2 h]; Cost [158470 AED] | 158,470 | 150,546.5 | UP3HE26010C0 | 95 | UP | C | 26 | P3 | HE | ME | 260 | 10 | ETA |  | BILL 3 | B03 | MEL | R00 | ACF07 | 260 |  |  |  |  |  |  |  |  | MEP | 26062 | 98 |
| UP3HE03301C0 |  | CU-P3 ; Equipment Plinth (Heat Exch) |  | 12d | 2010-12-15 A | 2011-01-29 A | UGLS103301C0 FS+26d | 100% |  | 2011-02-20 | 2011-03-06 |  |  |  | Cost |  |  | UP3HE03301C0 | 100 | UP | C | 03 | P3 | HE | CT | 033 | 01 | SIS |  | BILL 3 | B03 | 10 | R00 | ACF03 | 033 |  |  |  |  |  |  |  |  |  |  |  |
| UP3HE23001C0 |  | CU-P3 ; Inst. Of CHW Pumps - 10 Nos. (Heat Exch) |  | 23d | 2011-04-25 A | 2011-05-04 A | UP3HE03301C0, UP3HE23004C0, UP3HE23005C0 | 100% |  | 2011-06-01 | 2011-06-27 |  |  |  | MECHANICAL [2188.8 h]; Cost [1194951 AED] | 1,194,951.2 | 1,194,951.2 | UP3HE23001C0 | 100 | UP | C | 23 | P3 | HE | ME | 230 | 01 | ETA |  | BILL 3 | B03 | MHV | R00 | ACF04 | 230 |  |  |  |  |  |  |  |  | MEP | 23060 |  |
| UP3HE26011C0 |  | CU-P3 ; Back Boxes & Conduites On Wall (Heat Exch) |  | 8d | 2011-04-27 A | 2011-10-01 | UP3HE03301C0 | 95% | 0.4d | 2011-04-02 | 2011-04-10 | -48.8d | 0d |  | ELECTRICAL [2090.4 h]; Cost [6501.63 AED] | 6,501.63 | 6,176.55 | UP3HE26011C0 | 85 | UP | C | 26 | P3 | HE | ME | 260 | 11 | ETA |  | BILL 3 | B03 | MEL | R00 | ACF04 | 260 |  | 8494.2 | 90 | 85 |  |  |  |  | MEP |  | 95 |
| UP3HE27002C0 |  | CU-P3 ; Trnk & Conduiting For ELV Sys (Heat Exch) |  | 27.88d | 2011-05-10 A | 2011-10-20 | UP3HE26011C0 | 40% | 16.73d | 2011-04-11 | 2011-05-12 | -48.8d | 0d |  | ELECTRICAL [52.8 h]; Cost [2874.8 AED] | 2,874.8 | 1,149.92 | UP3HE27002C0 | 10 | UP | C | 27 | P3 | HE | ME | 270 | 02 | ETA |  | BILL 3 | B03 | MELV | R00 | ACF04 | 270 |  | 331.58 | 40 | 20 |  |  |  |  | MEP | 27010 | 45 |
| UP3HE09901C0 |  | CU-P3 ; Wall Prime & 1st Coat (Heat Exch) |  | 13d | 2011-05-15 A | 2011-10-11 | UP3HE03301C0 | 30% | 9.1d | 2011-08-15 | 2011-09-01 | -44.35d | 0d |  | WALL PAINT [590 h]; WALL PAINT [735 m2]; Cost |  |  | UP3HE09901C0 | 10 | UP | C | 09 | P3 | HE | PA | 099 | 01 | SIS |  | BILL 3 | B03 | 01 | R00 | ACF06 | 099 |  |  |  |  | 0 | 0 | 0 | 0 |  |  |  |
| UP3HE21101C0 |  | CU-P3 ; Inst. Of Fire Fighting Pipe (Heat Exch) |  | 21d | 2011-05-15 A | 2011-10-22 | UP3HE22001C0 FF, UP3HE22001C0 SS | 60% | 8.4d | 2011-07-14 | 2011-08-07 | -52.36d | 0d |  | MECHANICAL [487.2 h]; Cost [26612.8 AED] | 26,612.84 | 15,967.7 | UP3HE21101C0 | 20 | UP | C | 21 | P3 | HE | ME | 211 | 01 | ETA |  | BILL 3 | B03 | MFS | R00 | ACF04 | 211 |  |  | 75 | 20 |  |  |  |  | MEP | 21140 | 45 |
| UP3HE22009C0 |  | CU-P3 ; Inst. Of Sump Pumps (Heat Exch) |  | 8d | 2011-05-15 A | 2011-10-08 | MGNMI00101M0 | 20% | 6.4d | 2011-07-28 | 2011-08-06 | -22.4d | 60.6d |  | Labor General [1.2 h]; Cost |  |  | UP3HE22009C0 | 20 | UP | C | 22 | P3 | HE | ME | 220 | 09 | ETA |  | BILL 3 | B03 | MPL | R00 | ACF04 | 220 |  |  |  |  |  |  |  |  | MEP | 22052 | 50 |
| UP3HE23004C0 |  | CU-P3 ; Main CHW Pipe Supp. & Piping (Heat Exch) |  | 20.88d | 2011-05-15 A | 2011-10-03 | UP3HE03301C0 | 90% | 2.09d | 2011-05-31 | 2011-06-23 | -58.59d | 0d |  | MECHANICAL [1729.2 h]; Cost [37738.7 AED] | 37,738.68 | 33,964.82 | UP3HE23004C0 | 30 | UP | C | 23 | P3 | HE | ME | 230 | 04 | ETA |  | BILL 3 | B03 | MHV | R00 | ACF04 | 230 |  | 28007.45 | 85 | 50 | 0 | 0 | 0 | 0 | MEP | 23010 | 65 |
| UP3HE23005C0 |  | CU-P3 ; CHW Pipe Supp. & Piping - Branch (Heat Exch) |  | 21d | 2011-05-15 A | 2011-10-10 | UP3HE23004C0 SS, UP3HE23012C0 SS | 75% | 5.25d | 2011-07-07 | 2011-07-31 | -58.59d | 0d |  | MECHANICAL [669.6 h]; Cost [37738.7 AED] | 37,738.68 | 28,304.01 | UP3HE23005C0 | 30 | UP | C | 23 | P3 | HE | ME | 230 | 05 | ETA |  | BILL 3 | B03 | MHV | R00 | ACF04 | 230 |  |  | 60 | 30 | 0 | 0 | 0 | 0 | MEP | 23010 | 40 |
| UP3HE26003C0 |  | CU-P3 ; Trnk & Cnduit-Light,Pwr & Emerg. (Heat Exch) |  | 11d | 2011-05-15 A | 2011-10-20 | UP3HE27002C0 FF, UP3HE27002C0 SS+14d | 60% | 4.4d | 2011-06-16 | 2011-06-30 | -40.4d | 0d |  | ELECTRICAL [490.8 h]; Cost [6501.63 AED] | 6,501.63 | 3,900.98 | UP3HE26003C0 | 50 | UP | C | 26 | P3 | HE | ME | 260 | 03 | ETA |  | BILL 3 | B03 | MEL | R00 | ACF04 | 260 |  |  | 60 | 50 |  |  |  |  | MEP | 26020 | 75 |
| UP3HE27001C0 |  | CU-P3 ; Wiring For Lighting, Pwr & Emerg. (Heat Exch) |  | 14d | 2011-05-15 A | 2011-10-11 | MGNMI00101M0 | 30% | 9.8d | 2011-07-16 | 2011-08-01 | -44.8d | 0d |  | ELECTRICAL [740.4 h]; Cost [10136.5 AED] | 10,136.46 | 3,040.94 | UP3HE27001C0 | 20 | UP | C | 27 | P3 | HE | ME | 270 | 01 | ETA |  | BILL 3 | B03 | MELV | R00 | ACF07 | 270 |  |  | 30 | 20 |  |  |  |  | MEP | 27021 | 35 |
| UP3HE27005C0 |  | CU-P3 ; Inst. Of DDC Panel (Heat Exch) |  | 12d | 2011-05-15 A | 2011-10-03 | UP3HE27003C0 SS | 80% | 2.4d | 2011-07-10 | 2011-07-24 | -48.8d | 0d |  | ELECTRICAL [4558.8 h]; Cost [308717 AED] | 308,716.73 | 154,358.37 | UP3HE27005C0 | 20 | UP | C | 27 | P3 | HE | ME | 270 | 05 | ETA |  | BILL 3 | B03 | MELV | R00 | ACF07 | 270 |  |  |  |  |  |  |  |  | MEP | 27030 | 30 |
| UP3HE22004C0 |  | CU-P3 ; Inst. Of Muw Pipe (Heat Exch) |  | 15d | 2011-05-25 A | 2011-10-12 | UP3HE23004C0 | 47% | 8d | 2011-06-25 | 2011-07-12 | -58.59d | 0d |  | Labor General [1.2 h]; Cost |  |  | UP3HE22004C0 | 20 | UP | C | 22 | P3 | HE | ME | 220 | 04 | ETA |  | BILL 3 | B03 | MPL | R00 | ACF04 | 220 |  |  | 40 | 20 |  |  |  |  | MEP | 22023 | 30 |
| UP3HE26005C0 |  | CU-P3 ; Inst. Of Vfd Panels (Heat Exch) |  | 9d | 2011-06-06 A | 2011-06-15 A | UP3HE27001C0 | 100% |  | 2011-07-27 | 2011-08-07 |  |  |  | ELECTRICAL [4558.8 h]; Cost [308717 AED] | 308,716.73 | 308,716.73 | UP3HE26005C0 |  | UP | C | 26 | P3 | HE | ME | 260 | 05 | ETA |  | BILL 3 | B03 | MEL | R00 | ACF04 | 260 |  | 361041.15 |  |  |  |  |  |  | MEP | 26060 |  |
| UP3HE26001C0 |  | CU-P3 ; Inst. Of Cable Trays (Heat Exch) |  | 12d | 2011-06-22 A | 2011-10-20 | UP3HE26003C0 SS | 60% | 4.8d | 2011-06-30 | 2011-07-14 | -40.4d | 0d |  | ELECTRICAL [703.2 h]; Cost [10561.5 AED] | 10,561.54 | 6,336.92 | UP3HE26001C0 |  | UP | C | 26 | P3 | HE | ME | 260 | 01 | ETA |  | BILL 3 | B03 | MEL | R00 | ACF04 | 260 |  | 22998.45 | 60 | 25 |  |  |  |  | MEP | 26030 | 65 |
| UP3HE23007C0 |  | CU-P3 ; Inst. Of Valves To Branch Pipe (Heat Exch) |  | 10d | 2011-07-03 A | 2011-10-31 | UP3HE23005C0 SS, UV08P322001R2 | 65% | 3.5d | 2011-08-10 | 2011-08-22 | -58.59d | 0d |  | MECHANICAL [2419.2 h]; Cost [1321086 AED] | 1,321,085.76 | 858,705.74 | UP3HE23007C0 |  | UP | C | 23 | P3 | HE | ME | 230 | 07 | ETA |  | BILL 3 | B03 | MHV | R00 | ACF04 | 230 |  |  | 50 | 30 | 0 | 0 | 0 | 0 | MEP | 23053 | 20 |
| UP3HE23009C0 |  | CU-P3 ; CHW Pipe Conn.To Equipments (Heat Exch) |  | 18d | 2011-07-05 A | 2011-10-18 | UP3HE23001C0 SS+14d | 60% | 7.2d | 2011-08-22 | 2011-09-14 | -47.54d | 11.05d |  | MECHANICAL [4593.6 h]; Cost [1321086 AED] | 1,321,085.76 | 792,651.45 | UP3HE23009C0 |  | UP | C | 23 | P3 | HE | ME | 230 | 09 | ETA |  | BILL 3 | B03 | MHV | R00 | ACF07 | 230 |  |  | 60 | 40 | 0 | 0 | 0 | 0 | MEP | 23027 | 40 |
| UP3HE23012C0 |  | CU-P3 ; Wld CHW Pipe & Insp. For Clear. (Heat Exch) |  | 18d | 2011-07-10 A | 2011-10-15 | UP3HE23004C0 FF+10d | 50% | 9d | 2011-07-03 | 2011-07-24 | -58.59d | 0d |  | MECHANICAL [2419.2 h]; Cost [1321086 AED] | 1,321,085.76 | 660,542.88 | UP3HE23012C0 |  | UP | C | 23 | P3 | HE | ME | 230 | 12 | ETA |  | BILL 3 | B03 | MHV | R00 | ACF07 | 230 |  |  | 30 | 25 | 0 | 0 | 0 | 0 | MEP | 23095 | 25 |
| UP3HE23010C0 |  | CU-P3 ; Press. Tst CHW Pipe &Insp.By Cnslt (Heat Exch) |  | 7d | 2011-07-13 A | 2011-10-02 | MGNMI00101M0 | 85% | 1.05d | 2011-10-15 | 2011-10-23 | -33.05d | 25.54d |  | MECHANICAL [2419.2 h]; Cost [1321086 AED] | 1,321,085.76 | 1,122,922.89 | UP3HE23010C0 |  | UP | C | 23 | P3 | HE | ME | 230 | 10 | ETA |  | BILL 3 | B03 | MHV | R00 | ACF07 | 230 |  |  |  |  | 0 | 0 | 0 | 0 | MEP | 23090 |  |
| UP3HE09903C0 |  | CU-P3 ; Ceiling Prime & 1st Coat (Heat Exch) |  | 15d | 2011-08-08 A | 2011-10-01 | MGNMI00101M0 | 100% | 0d | 2011-09-20 | 2011-10-08 | -9d | 28.49d |  | Cost |  |  | UP3HE09903C0 |  | UP | C | 09 | P3 | HE | PA | 099 | 03 | SIS |  | BILL 3 | B03 | 01 | R00 | ACF06 | 099 |  |  | 10 | 0 |  |  |  |  |  |  |  |
| UP3HE23002C0 |  | CU-P3 ; Expansion Tanks - 3 Nos. (Heat Exch) |  | 16d | 2011-08-10 A | 2011-10-19 | UP3HE23001C0 SS+10d | 47% | 8.5d | 2011-08-21 | 2011-09-11 | -49.84d | 0d |  | Labor General [1.2 h]; Cost |  |  | UP3HE23002C0 |  | UP | C | 23 | P3 | HE | ME | 230 | 02 | ETA |  | BILL 3 | B03 | MHV | R00 | ACF04 | 230 |  |  | 25 | 0 |  |  |  |  | MEP | 23071 | 50 |
| UP3HE26002C0 |  | CU-P3 ; Cable Pulling Works (Heat Exch) |  | 12d | 2011-08-10 A | 2011-10-12 | MGNMI00101M0 | 15% | 10.2d | 2011-09-21 | 2011-10-05 | -45.2d | 4.64d |  | ELECTRICAL [8728.8 h]; Cost [551876 AED] | 551,876.2 | 82,781.43 | UP3HE26002C0 |  | UP | C | 26 | P3 | HE | ME | 260 | 02 | ETA |  | BILL 3 | B03 | MEL | R00 | ACF07 | 260 |  |  | 15 | 0 |  |  |  |  | MEP | 26040 | 35 |
| UP3HE27003C0 |  | CU-P3 ; Wiring Works For ELV Systems (Heat Exch) |  | 18d | 2011-08-10 A | 2011-10-19 | UP3HE27002C0 SS+12d | 10% | 16.2d | 2011-08-01 | 2011-08-22 | -48.8d | 0d |  | ELECTRICAL [46.8 h]; Cost [2549.35 AED] | 2,549.35 | 254.94 | UP3HE27003C0 |  | UP | C | 27 | P3 | HE | ME | 270 | 03 | ETA |  | BILL 3 | B03 | MELV | R00 | ACF07 | 270 |  | 297.43 | 10 | 0 |  |  |  |  | MEP | 27020 | 25 |
| UP3HE08101C0 |  | CU-P3 ; Door Frames (Heat Exch) |  | 5d | 2011-09-05 A | 2011-10-12 | UP3HE09901C0, A10280 FS+58d | 75% | 1.25d | 2011-09-17 | 2011-09-21 | -44.35d | 0d |  | ASSORTED DOORS [34 h]; Cost |  |  | UP3HE08101C0 |  | UP | C | 08 | P3 | HE | DO | 081 | 01 | SIS |  | BILL 3 | B03 | DF | R00 | ACF06 | 081 |  |  |  |  |  |  |  |  |  |  |  |
| UP3HE22001C0 |  | CU-P3 ; Inst. Of Air Separator (Heat Exch) |  | 10d | 2011-09-05 A | 2011-10-20 | UP3HE22004C0 | 25% | 7.5d | 2011-09-15 | 2011-09-27 | -58.59d | 0d |  | Labor General [1.2 h]; Cost |  |  | UP3HE22001C0 |  | UP | C | 22 | P3 | HE | ME | 220 | 01 | ETA |  | BILL 3 | B03 | MPL | R00 | ACF04 | 220 |  |  |  |  |  |  |  |  | MEP | 22064 |  |
| UP3HE23013C0 |  | CU-P3 ; CHW Conn.To Heat Exchangers (Heat Exch) |  | 1.88d | 2011-09-05 A | 2011-10-11 | UP3HE23001C0 SS | 60% | 0.75d | 2011-09-01 | 2011-09-03 | -25.09d | 57.91d |  | MECHANICAL [7836 h]; Cost [534822 AED] | 534,821.76 | 320,893.06 | UP3HE23013C0 |  | UP | C | 23 | P3 | HE | ME | 230 | 13 | ETA |  | BILL 3 | B03 | MHV | R00 | ACF07 | 230 |  |  |  |  |  |  |  |  | MEP | 23025 | 10 |
| UP3HE26004C0 |  | CU-P3 ; Light Fitt. / Switches / Sockets (Heat Exch) |  | 8d | 2011-10-01 | 2011-10-10 | UP3HE26010C0 |  |  |  |  | -28.3d | 54.7d |  | ELECTRICAL [357.6 h]; Cost |  |  | UP3HE26004C0 |  | UP | C | 26 | P3 | HE | ME | 260 | 04 | ETA |  | BILL 3 | B03 | MEL | R00 | ACF07 | 260 |  |  |  |  |  |  |  |  | MEP | 26061 |  |
| UP3HE27007C0 |  | CU-P3 ; Dress., Gland.&Termin.Of DDC Pnls (Heat Exch) |  | 12d | 2011-10-03 | 2011-10-17 | UP3HE27005C0 |  |  |  |  | -48.8d | 0d |  | ELECTRICAL [259.2 h]; Cost |  |  | UP3HE27007C0 |  | UP | C | 27 | P3 | HE | ME | 270 | 07 | ETA |  | BILL 3 | B03 | MELV | R00 | ACF07 | 270 |  |  |  |  |  |  |  |  | MEP | 27051 |  |
| UP3HE27009C0 |  | CU-P3 ; Bms Conn. Works To Equipments (Heat Exch) |  | 16d | 2011-10-08 | 2011-10-26 | UP3HE27007C0 FF+8d |  |  |  |  | -48.8d | 0d |  | ELECTRICAL [54 h]; Cost |  |  | UP3HE27009C0 |  | UP | C | 27 | P3 | HE | ME | 270 | 09 | ETA |  | BILL 3 | B03 | MELV | R00 | ACF07 | 270 |  |  |  |  |  |  |  |  | MEP | 27060 |  |
| UP3HE09902C0 |  | CU-P3 ; Wall 2nd Coat (Heat Exch) |  | 10d | 2011-10-11 | 2011-10-23 | UP3HE09901C0 |  |  |  |  | -35.1d | 47.9d |  | WALL PAINT [318 h]; WALL PAINT [396 m2]; Cost |  |  | UP3HE09902C0 |  | UP | C | 09 | P3 | HE | PA | 099 | 02 | SIS |  | BILL 3 | B03 | 02 | R00 | ACF06 | 099 |  |  |  |  |  |  |  |  |  |  |  |
| UP3HE22007C0 |  | CU-P3 ; Sump Pit Works (Heat Exch) |  | 12d | 2011-10-12 | 2011-10-26 | UP3HE22004C0 |  |  |  |  | -45.09d | 37.91d |  | Labor General [1.2 h]; Cost |  |  | UP3HE22007C0 |  | UP | C | 22 | P3 | HE | ME | 220 | 07 | ETA |  | BILL 3 | B03 | MPL | R00 | ACF04 | 220 |  |  |  |  |  |  |  |  | MEP | 22091 |  |
| UP3HE08102C0 |  | CU-P3 ; Doors (Heat Exch) |  | 6d | 2011-10-12 | 2011-10-19 | UP3HE08101C0, UP3HE09901C0 |  |  |  |  | -44.35d | 0.49d |  | METAL DOORS [60 h]; METAL DOORS [6 no]; Cost |  |  | UP3HE08102C0 |  | UP | C | 08 | P3 | HE | DO | 081 | 02 | SIS |  | BILL 3 | B03 | DR | R00 | ACF06 | 081 |  |  |  |  |  |  |  |  |  |  |  |
| UP3HE26009C0 |  | CU-P3 ; Isolators & Elec. Conn. To Equip. (Heat Exch) |  | 12d | 2011-10-17 | 2011-10-31 | UP3HE23001C0, UP3HE23002C0 FF+10d, UP3HE26002C0, UP3HE26005C0 |  |  |  |  | -49.84d | 33.16d |  | ELECTRICAL [270 h]; Cost |  |  | UP3HE26009C0 |  | UP | C | 26 | P3 | HE | ME | 260 | 09 | ETA |  | BILL 3 | B03 | MEL | R00 | ACF04 | 260 |  |  |  |  |  |  |  |  | MEP | 26073 |  |
| UP3HE09601C0 |  | CU-P3 ; Floor Finishing (Heat Exch) |  | 12d | 2011-10-19 | 2011-11-02 | UP3HE08102C0, UP3HE23003C0 FF |  |  |  |  | -44.84d | 38.16d |  | ASSORTED FLOOR FINISH [1952 h]; ASSORTED FLOOR FINISH [1082 m2]; Cost |  |  | UP3HE09601C0 |  | UP | C | 09 | P3 | HE | FF | 096 | 01 | SIS |  | BILL 3 | B03 | 01 | R00 | ACF06 | FF |  |  |  |  |  |  |  |  |  |  |  |
| UP3HE23003C0 |  | CU-P3 ; Chemical Dosing Pot - 1 Nos. (Heat Exch) |  | 12d | 2011-10-19 | 2011-11-02 | UGLS103301C0 FS+14d, UP3HE23002C0 |  |  |  |  | -44.84d | 0d |  | MECHANICAL [4094.4 h]; Cost |  |  | UP3HE23003C0 |  | UP | C | 23 | P3 | HE | ME | 230 | 03 | ETA |  | BILL 3 | B03 | MHV | R00 | ACF04 | 230 |  |  |  |  |  |  |  |  | MEP | 23054 |  |
| UP3HE26007C0 |  | CU-P3 ; Gland. & Termin.Works - Vfd Pnls (Heat Exch) |  | 6.88d | 2011-10-20 | 2011-10-29 | UP3HE26002C0, UP3HE26005C0, UP3HE26001C0 |  |  |  |  | -40.4d | 42.6d |  | ELECTRICAL [259.2 h]; Cost |  |  | UP3HE26007C0 |  | UP | C | 26 | P3 | HE | ME | 260 | 07 | ETA |  | BILL 3 | B03 | MEL | R00 | ACF07 | 260 |  |  |  |  |  |  |  |  | MEP | 26051 |  |
| UP3HE22002C0 |  | CU-P3 ; Inst. Of Water Hammer Arrester (Heat Exch) |  | 10d | 2011-10-20 | 2011-11-01 | UP3HE22001C0 |  |  |  |  | -58.59d | 0d |  | Labor General [1.2 h]; Cost |  |  | UP3HE22002C0 |  | UP | C | 22 | P3 | HE | ME | 220 | 02 | ETA |  | BILL 3 | B03 | MPL | R00 | ACF04 | 220 |  |  |  |  |  |  |  |  | MEP | 22082 | 20 |
| UP3HE21102C0 |  | CU-P3 ; Press. Tst FF Pipe & Insp. By Cnslt (Heat Exch) |  | 7d | 2011-10-22 | 2011-10-30 | UP3HE21101C0 |  |  |  |  | -52.36d | 0d |  | MECHANICAL [487.2 h]; Cost |  |  | UP3HE21102C0 |  | UP | C | 21 | P3 | HE | ME | 211 | 02 | ETA |  | BILL 3 | B03 | MFS | R00 | ACF07 | 211 |  |  |  |  |  |  |  |  | MEP | 21180 | 50 |
| UP3HE27004C0 |  | CU-P3 ; ELV Dev.- Snsr, Smk Detector/ Spkrs (Heat Exch) |  | 6d | 2011-10-26 | 2011-11-02 | UP3HE27003C0, UP3HE27009C0 |  |  |  |  | -48.8d | 34.2d |  | ELECTRICAL [153.6 h]; Cost |  |  | UP3HE27004C0 |  | UP | C | 27 | P3 | HE | ME | 270 | 04 | ETA |  | BILL 3 | B03 | MELV | R00 | ACF07 | 270 |  |  |  |  |  |  |  |  | MEP | 27040 |  |
| UP3HE21103C0 |  | CU-P3 ; Inst. Of Sprinkler Heads (Heat Exch) |  | 10d | 2011-10-30 | 2011-11-14 | UP3HE21102C0 |  |  |  |  | -52.36d | 0d |  | MECHANICAL [70.8 h]; Cost |  |  | UP3HE21103C0 |  | UP | C | 21 | P3 | HE | ME | 211 | 03 | ETA |  | BILL 3 | B03 | MFS | R00 | ACF04 | 211 |  |  |  |  |  |  |  |  | MEP | 21150 | 10 |
| UP3HE21104C0 |  | CU-P3 ; Fire Extinguishers / Fhc (Heat Exch) |  | 10.88d | 2011-10-30 | 2011-11-15 | UP3HE21103C0 SS |  |  |  |  | -52.36d | 30.64d |  | MECHANICAL [343.2 h]; Cost |  |  | UP3HE21104C0 |  | UP | C | 21 | P3 | HE | ME | 211 | 04 | ETA |  | BILL 3 | B03 | MFS | R00 | ACF04 | 211 |  |  |  |  |  |  |  |  | MEP | 21160 |  |
| UP3HE23011C0 |  | CU-P3 ; Insul. CHW Pipe & Insp. By Cnslt (Heat Exch) |  | 9d | 2011-10-31 | 2011-11-14 | UP3HE23010C0, UP3HE23007C0, UP3HE23009C0 |  |  |  |  | -58.59d | 24.41d |  | MECHANICAL [903.6 h]; Cost |  |  | UP3HE23011C0 |  | UP | C | 23 | P3 | HE | ME | 230 | 11 | ETA |  | BILL 3 | B03 | MHV | R00 | ACF04 | 230 |  |  |  |  |  |  |  |  | MEP | 23080 | 10 |
| UP3HE22003C0 |  | CU-P3 ; Inst. For Back Flow Preventer (Heat Exch) |  | 8d | 2011-11-01 | 2011-11-14 | UP3HE22002C0 |  |  |  |  | -58.59d | 0d |  | Labor General [1.2 h]; Cost |  |  | UP3HE22003C0 |  | UP | C | 22 | P3 | HE | ME | 220 | 03 | ETA |  | BILL 3 | B03 | MPL | R00 | ACF04 | 220 |  |  |  |  |  |  |  |  | MEP | 22030 |  |
| UP3HE09904C0 |  | CU-P3 ; Ceiling Final Coat (Heat Exch) |  | 0d | 2011-11-02 | 2011-11-02 | UP3HE09903C0, UP3HE21103C0 SS+3d |  |  |  |  | -37.49d | 45.51d |  | Cost |  |  | UP3HE09904C0 |  | UP | C | 09 | P3 | HE | PA | 099 | 04 | SIS |  | BILL 3 | B03 | 02 | R00 | ACF06 | 099 |  |  |  |  |  |  |  |  |  |  |  |
| UP3HE22005C0 |  | CU-P3 ; Inst. Of Hose Bib (Heat Exch) |  | 5d | 2011-11-16 | 2011-11-22 | UP3HE22003C0 FF+7d |  |  |  |  | -58.59d | 24.41d |  | PLUMBING [148.8 h]; Cost |  |  | UP3HE22005C0 |  | UP | C | 22 | P3 | HE | ME | 220 | 05 | ETA |  | BILL 3 | B03 | MPL | R00 | ACF04 | 220 |  |  |  |  |  |  |  |  | MEP | 22075 | 10 |

| ID | WBS | Activity | Duration | Start | Finish | Predecessors | Complete | Remaining | Planned start | Planned finish | Total float | Free float | Resources | Cost | Actual cost | change id | DIVISION FOR ACTIVITY ID | RENZ % COMPLETE | Claimed This Month | CCAD BUILDING(SET) | CCAD PHASE(SET) | CCAD DIVISION(SET) | CCAD FLOOR(SET) | CCAD ZONE(SET) | CCAD WORK(SET) | CCAD SECTION(SET) | CCAD SERIAL No.(SET) | CCAD RESPONSIBILITY(SET) | CCAD CBS(SET) | CCAD BILL(SET) | CCAD TAG(SET) | CCAD REV(SET) | CCADACF (SET) | CCAD CSA | CCAD SSCF | July2011 Target% Complete | P_811 | P_711 | user_number8 | user_integer1 | user_integer2 | user_number7 | Act Selector % |
| --- | --- | --- | --- | --- | --- | --- | --- | --- | --- | --- | --- | --- | --- | --- | --- | --- | --- | --- | --- | --- | --- | --- | --- | --- | --- | --- | --- | --- | --- | --- | --- | --- | --- | --- | --- | --- | --- | --- | --- | --- | --- | --- | --- |
|  | 02 | **OFF/SHOPS &TLTS** |  | 2010-10-25 | 2011-12-17 |  |  |  |  |  |  |  |  |  |  |  |  |  |  |  |  |  |  |  |  |  |  |  |  |  |  |  |  |  |  |  |  |  |  |  |  |  |  |
| UP3OS22010C0 |  | CU-P3 ; Inst. Of Drainage Pipe (SHOPS & TLTS) | 12d | 2010-10-25 A | 2011-06-29 A | UP2S104002C0 | 100% |  | 2011-05-03 | 2011-05-17 |  |  | PLUMBING [298.8 h]; Cost [16284.7 AED] | 16,284.74 | 16,284.74 | UP3OS22010C0 | 22020 | 95 | 944.52 | UP | C | 22 | P3 | OS | ME | 220 | 10 | ETA | BILL 3 | B03 | MPL | R00 | ACF04 | MEP | 220 |  |  |  |  |  |  |  |  |
| UP3OS26004C0 |  | CU-P3 ; Back Boxes & Conduites On Wall (SHOPS & TLTS) | 8d | 2011-04-06 A | 2011-10-01 | UP2S104002C0 FF | 90% | 0.8d | 2011-05-18 | 2011-05-28 | -61.6d | 16.35d | ELECTRICAL [490.8 h]; Cost [6501.63 AED] | 6,501.63 | 5,851.47 | UP3OS26004C0 |  | 35 | 15510.5 | UP | C | 26 | P3 | OS | ME | 260 | 04 | ETA | BILL 3 | B03 | MEL | R00 | ACF04 | MEP | 260 | 95 | 85 | 50 |  |  |  |  |  |
| UP3OS26001C0 |  | CU-P3 ; Inst. Of Trunking & Conduiting (SHOPS & TLTS) | 12d | 2011-05-15 A | 2011-10-09 | UP3OS27002C0 FF, UP3OS27002C0 SS+6d | 40% | 7.15d | 2011-06-15 | 2011-06-30 | -77.95d | 0d | ELECTRICAL [490.8 h]; Cost [6501.63 AED] | 6,501.63 | 2,275.57 | UP3OS26001C0 | 26020 | 30 |  | UP | C | 26 | P3 | OS | ME | 260 | 01 | ETA | BILL 3 | B03 | MEL | R00 | ACF04 | MEP | 260 | 35 | 35 | 30 |  |  |  |  |  |
| UP3OS26002C0 |  | CU-P3 ; Inst. Of Cable Tray (SHOPS & TLTS) | 20d | 2011-05-15 A | 2011-10-09 | UP3OS26001C0 FF, UP3OS26001C0 SS | 66% | 6.8d | 2011-06-15 | 2011-07-10 | -77.95d | 0d | ELECTRICAL [703.2 h]; Cost [10561.5 AED] | 10,561.54 | 6,336.92 | UP3OS26002C0 | 26030 | 10 |  | UP | C | 26 | P3 | OS | ME | 260 | 02 | ETA | BILL 3 | B03 | MEL | R00 | ACF04 | MEP | 260 | 40 | 35 | 10 |  |  |  |  |  |
| UP3OS22003C0 |  | CU-P3 ; Inst. Of Elec. Water Heater (SHOPS & TLTS) | 7d | 2011-07-13 A | 2011-07-30 A | UP3OS22002C0 FF, UP3OS22002C0 SS+2d | 100% |  | 2011-08-28 | 2011-09-06 |  |  | PLUMBING [1467.6 h]; Cost [801121 AED] | 801,121.41 | 801,121.41 | UP3OS22003C0 | 22071 |  |  | UP | C | 22 | P3 | OS | ME | 220 | 03 | ETA | BILL 3 | B03 | MPL | R00 | ACF04 | MEP | 220 | 45 |  |  |  |  |  |  |  |
| UP3OS09201C0 |  | CU-P3 ; Metal studs (SHOPS & TLTS) | 10d | 2011-08-09 A | 2011-10-02 | UP2S104002C0 | 85% | 1.5d | 2011-09-03 | 2011-09-14 | -66.8d | 0d | PARTITIONS [237 h]; Cost |  |  | UP3OS09201C0 |  |  |  | UP | C | 09 | P3 | OS | PT | 092 | 01 | SIS | BILL 3 | B03 | 1F | R00 | ACF06 | GP | 092 |  | 50 | 0 | 0 | 0 | 0 | 0 |  |
| UP3OS21101C0 |  | CU-P3 ; Inst. Of Fire Fighting Main Pipe (SHOPS & TLTS) | 12d | 2011-08-10 A | 2011-10-06 | UP3OS23001C0 | 75% | 3d | 2011-09-06 | 2011-09-19 | -44d | 0d | MECHANICAL [487.2 h]; Cost [26612.8 AED] | 26,612.84 | 19,959.63 | UP3OS21101C0 | 21140 |  |  | UP | C | 21 | P3 | OS | ME | 211 | 01 | ETA | BILL 3 | B03 | MFS | R00 | ACF04 | MEP | 211 | 35 | 75 | 0 |  |  |  |  |  |
| UP3OS21102C0 |  | CU-P3 ; Inst. Of Fire Fighting Brach Pipe (SHOPS & TLTS) | 6d | 2011-08-10 A | 2011-10-06 | UP3OS21101C0 SS+6d | 50% | 3d | 2011-09-13 | 2011-09-19 | -44d | 0d | MECHANICAL [487.2 h]; Cost [26612.8 AED] | 26,612.84 | 13,306.42 | UP3OS21102C0 | 21140 |  |  | UP | C | 21 | P3 | OS | ME | 211 | 02 | ETA | BILL 3 | B03 | MFS | R00 | ACF04 | MEP | 211 | 45 | 40 | 0 | 0 | 0 | 0 | 0 |  |
| UP3OS23001C0 |  | CU-P3 ; Duct Supp. & Ducting (Supply/Rtrn&Fire R) (SHOPS & TLTS) | 12d | 2011-08-10 A | 2011-10-03 | UP2S104002C0 | 75% | 3d | 2011-08-21 | 2011-09-05 | -44d | 0d | MECHANICAL [669.6 h]; Cost [37738.7 AED] | 37,738.68 | 28,304.01 | UP3OS23001C0 | 23015 |  |  | UP | C | 23 | P3 | OS | ME | 230 | 01 | ETA | BILL 3 | B03 | MHV | R00 | ACF04 | MEP | 230 | 25 | 20 | 0 | 0 | 0 | 0 | 0 |  |
| UP3OS23005C0 |  | CU-P3 ; CHW Pipe Supp.s & Piping Works (SHOPS & TLTS) | 18d | 2011-08-10 A | 2011-10-13 | UP3OS26001C0 FF, UP3OS26001C0 SS | 35% | 11.7d | 2011-08-10 | 2011-09-03 | -46.1d | 0d | MECHANICAL [669.6 h]; Cost [37738.7 AED] | 37,738.68 | 13,208.54 | UP3OS23005C0 | 23010 |  |  | UP | C | 23 | P3 | OS | ME | 230 | 05 | ETA | BILL 3 | B03 | MHV | R00 | ACF04 | MEP | 230 | 45 | 35 | 0 |  |  |  |  |  |
| UP3OS27002C0 |  | CU-P3 ; Trnk & Conduiting Works For ELV Syss (SHOPS & TLTS) | 18d | 2011-08-10 A | 2011-10-03 | UGLS103303C0 | 85% | 2.7d | 2011-07-31 | 2011-08-20 | -77.95d | 0d | ELECTRICAL [52.8 h]; Cost [2874.8 AED] | 2,874.8 | 2,443.58 | UP3OS27002C0 | 27010 |  |  | UP | C | 27 | P3 | OS | ME | 270 | 02 | ETA | BILL 3 | B03 | MELV | R00 | ACF04 | MEP | 270 | 35 | 85 | 0 |  |  |  |  |  |
| UP3OS27003C0 |  | CU-P3 ; Wiring Works For ELV Systems (SHOPS & TLTS) | 18d | 2011-08-10 A | 2011-10-17 | UP3OS27002C0 FF, UP3OS27002C0 SS+8d | 20% | 14.4d | 2011-08-09 | 2011-08-29 | -40.4d | 0d | ELECTRICAL [46.8 h]; Cost [2549.35 AED] | 2,549.35 | 509.87 | UP3OS27003C0 | 27020 |  | 594.87 | UP | C | 27 | P3 | OS | ME | 270 | 03 | ETA | BILL 3 | B03 | MELV | R00 | ACF07 | MEP | 270 | 25 | 20 | 0 |  |  |  |  |  |
| UP3OS22001C0 |  | CU-P3 ; Inst. Of Cold & Hot Water Pipe (SHOPS & TLTS) | 6d | 2011-09-05 A | 2011-10-06 | UP3OS22010C0 | 10% | 5.4d | 2011-09-01 | 2011-09-07 | -43d | 0d | PLUMBING [649.2 h]; Cost [35447.7 AED] | 35,447.7 | 3,544.77 | UP3OS22001C0 | 22021 |  |  | UP | C | 22 | P3 | OS | ME | 220 | 01 | ETA | BILL 3 | B03 | MPL | R00 | ACF04 | MEP | 220 | 35 |  |  |  |  |  |  |  |
| UP3OS23002C0 |  | CU-P3 ; Inst. Of Vcd'S / Fire Dampers (SHOPS & TLTS) | 6d | 2011-09-05 A | 2011-10-06 | UP3OS23001C0 | 50% | 3d | 2011-09-12 | 2011-09-19 | -38d | 8.1d | MECHANICAL [87.6 h]; Cost [4756.4 AED] | 4,756.4 | 2,378.2 | UP3OS23002C0 | 23070 |  |  | UP | C | 23 | P3 | OS | ME | 230 | 02 | ETA | BILL 3 | B03 | MHV | R00 | ACF04 | MEP | 230 |  |  |  |  |  |  |  |  |
| UP3OS23004C0 |  | CU-P3 ; Inst. Of Fcu'S (SHOPS & TLTS) | 6d | 2011-09-05 A | 2011-10-17 | UP3OS23005C0 | 60% | 2.4d | 2011-09-14 | 2011-09-21 | -46.1d | 0d | MECHANICAL [951.6 h]; Cost [51954.2 AED] | 51,954.24 | 31,172.54 | UP3OS23004C0 | 23052 |  |  | UP | C | 23 | P3 | OS | ME | 230 | 04 | ETA | BILL 3 | B03 | MHV | R00 | ACF04 | MEP | 230 | 10 |  |  |  |  |  |  |  |
| UP3OS08101C0 |  | CU-P3 ; Door Frames (SHOPS & TLTS) | 6d | 2011-09-08 A | 2011-10-13 | UP3OS09202C0, UP3S104002C0 | 10% | 5.4d | 2011-09-08 | 2011-09-14 | -39.8d | 0d | ASSORTED DOORS [15 h]; Cost |  |  | UP3OS08101C0 |  |  |  | UP | C | 08 | P3 | OS | DO | 081 | 01 | SIS | BILL 3 | B03 | DF | R00 | ACF06 |  | 081 |  |  |  |  |  |  |  |  |
| UP3OS08102C0 |  | CU-P3 ; Doors (SHOPS & TLTS) | 6d | 2011-09-10 A | 2011-12-08 | UP3OS08101C0, UP3OS09203C0, UP3OS09901C0 FS+7d | 10% | 5.4d | 2011-10-15 | 2011-10-22 | -77.95d | 0d | METAL DOORS [30 h]; METAL DOORS [3 no]; Cost |  |  | UP3OS08102C0 |  |  |  | UP | C | 08 | P3 | OS | DO | 081 | 02 | SIS | BILL 3 | B03 | DR | R00 | ACF06 |  | 081 |  |  |  |  |  |  |  |  |
| UP3OS09901C0 |  | CU-P3 ; Wall Prime & 1st Coat (SHOPS & TLTS) | 12d | 2011-09-10 A | 2011-11-22 | UP3OS09203C0 FS+5d | 55% | 5.4d | 2011-10-08 | 2011-10-22 | -77.95d | 0d | WALL PAINT [268 h]; WALL PAINT [334 m2]; Cost |  |  | UP3OS09901C0 |  |  |  | UP | C | 09 | P3 | OS | PA | 099 | 01 | SIS | BILL 3 | B03 | 01 | R00 | ACF06 |  | 099 |  |  |  |  |  |  |  |  |
| UP3OS22005C0 |  | CU-P3 ; Sanitary Fixtures / Water Closets (SHOPS & TLTS) | 6d | 2011-09-10 A | 2011-10-19 | UP3OS22003C0 FF, UP3OS22003C0 SS+4d | 10% | 5.4d | 2011-09-26 | 2011-10-02 | -32.4d | 50.6d | PLUMBING [181.2 h]; Cost [8097.71 AED] | 8,097.71 | 809.77 | UP3OS22005C0 | 22078 |  |  | UP | C | 22 | P3 | OS | ME | 220 | 05 | ETA | BILL 3 | B03 | MPL | R00 | ACF04 | MEP | 220 |  |  |  |  |  |  |  |  |
| UP3OS09202C0 |  | CU-P3 ; Partition 1st Face (SHOPS & TLTS) | 6d | 2011-10-01 | 2011-10-06 | UP3OS09201C0 SS+12d |  |  |  |  | -66.8d | 0d | PARTITIONS [144.21 m]; PARTITIONS [1386 h]; Cost |  |  | UP3OS09202C0 |  |  |  | UP | C | 09 | P3 | OS | PT | 092 | 02 | SIS | BILL 3 | B03 | 2F | R00 | ACF06 | GP | 092 |  |  |  |  |  |  |  | P1F |
| UP3OS22007C0 |  | CU-P3 ; Inst. Of Ox Pipe For Medical Gas (SHOPS & TLTS) | 6d | 2011-10-01 | 2011-10-06 | UP3OS22001C0 FF, UP3OS22001C0 SS+10d |  |  |  |  | -43d | 0d | Labor General [1.2 h]; Cost |  |  | UP3OS22007C0 | 22024 |  |  | UP | C | 22 | P3 | OS | ME | 220 | 07 | ETA | BILL 3 | B03 | MPL | R00 | ACF04 | MEP | 220 | 10 |  |  |  |  |  |  |  |
| UP3OS26005C0 |  | CU-P3 ; Inst. Of Light Fittings / Sockets / Switches (SHOPS & TLTS) | 6d | 2011-10-05 | 2011-10-12 | UP3TA26005C0 |  |  |  |  | -30.18d | 52.83d | ELECTRICAL [357.6 h]; Cost |  |  | UP3OS26005C0 | 26061 |  |  | UP | C | 26 | P3 | OS | ME | 260 | 05 | ETA | BILL 3 | B03 | MEL | R00 | ACF07 | MEP | 260 |  |  |  |  |  |  |  |  |
| UP3OS21103C0 |  | CU-P3 ; Inst. Of Sprinkler Droppers (SHOPS & TLTS) | 6d | 2011-10-08 | 2011-10-13 | UP3OS21102C0 |  |  |  |  | -44d | 0d | MECHANICAL [1309.2 h]; Cost |  |  | UP3OS21103C0 | 21145 |  |  | UP | C | 21 | P3 | OS | ME | 211 | 03 | ETA | BILL 3 | B03 | MFS | R00 | ACF04 | MEP | 211 |  |  |  |  |  |  |  |  |
| UP3OS22002C0 |  | CU-P3 ; Inst. Of Water Hammer Arrester (SHOPS & TLTS) | 5d | 2011-10-08 | 2011-10-12 | UP3OS22007C0 FF, UP3OS22007C0 SS+6d |  |  |  |  | -43d | 0d | Labor General [1.2 h]; Cost |  |  | UP3OS22002C0 | 22082 |  |  | UP | C | 22 | P3 | OS | ME | 220 | 02 | ETA | BILL 3 | B03 | MPL | R00 | ACF04 | MEP | 220 | 25 |  |  |  |  |  |  |  |
| UP3OS22004C0 |  | CU-P3 ; Inst. Of Hose Bib (SHOPS & TLTS) | 4d | 2011-10-09 | 2011-10-12 | UP3OS22007C0 FF, UP3OS22007C0 SS+7d |  |  |  |  | -37d | 0d | PLUMBING [148.8 h]; Cost |  |  | UP3OS22004C0 | 22075 |  |  | UP | C | 22 | P3 | OS | ME | 220 | 04 | ETA | BILL 3 | B03 | MPL | R00 | ACF04 | MEP | 220 |  |  |  |  |  |  |  |  |
| UP3OS27001C0 |  | CU-P3 ; Wiring For Small Pwr / Lighting & Emerg. (SHOPS & TLTS) | 10d | 2011-10-09 | 2011-10-20 | UP3OS26002C0 |  |  |  |  | -77.95d | 0d | ELECTRICAL [740.4 h]; Cost |  |  | UP3OS27001C0 | 27021 |  |  | UP | C | 27 | P3 | OS | ME | 270 | 01 | ETA | BILL 3 | B03 | MELV | R00 | ACF07 | MEP | 270 | 20 |  |  |  |  |  |  |  |
| UP3OS21104C0 |  | CU-P3 ; Press. Tst Fire Fight. Pipe & Insp. By Cnslt (SHOPS & TLTS) | 5d | 2011-10-12 | 2011-10-17 | UP3OS21103C0 FF+3d |  |  |  |  | -44d | 0d | MECHANICAL [487.2 h]; Cost |  |  | UP3OS21104C0 | 21180 |  |  | UP | C | 21 | P3 | OS | ME | 211 | 04 | ETA | BILL 3 | B03 | MFS | R00 | ACF07 | MEP | 211 |  |  |  |  |  |  |  |  |
| UP3OS22009C0 |  | CU-P3 ; Conn. Works To External Sewer Network (SHOPS & TLTS) | 6d | 2011-10-13 | 2011-10-19 | UP3OS22001C0 FF, UP3OS22001C0 SS+10d, UP3OS22004C0 |  |  |  |  | -37d | 46d | PLUMBING [298.8 h]; Cost |  |  | UP3OS22009C0 | 22020 |  |  | UP | C | 22 | P3 | OS | ME | 220 | 09 | ETA | BILL 3 | B03 | MPL | R00 | ACF07 | MEP | 220 |  |  |  |  |  |  |  |  |
| UP3OS09601C0 |  | CU-P3 ; Floor Finishing (SHOPS & TLTS) | 6d | 2011-10-13 | 2011-10-20 | UP3OS08101C0 |  |  |  |  | -33.4d | 49.6d | ASSORTED FLOOR FINISH [888 h]; ASSORTED FLOOR FINISH [492 m2]; Cost |  |  | UP3OS09601C0 |  |  |  | UP | C | 09 | P3 | OS | FF | 096 | 01 | SIS | BILL 3 | B03 | 01 | R00 | ACF06 |  | FF |  |  |  |  |  |  |  |  |
| UP3OS09501C0 |  | CU-P3 ; False Ceiling - Gird Works (SHOPS & TLTS) | 6d | 2011-10-17 | 2011-10-24 | UP3OS22003C0 SS, UP3OS22010C0 SS, UP3OS23002C0, UP3OS23004C0, UP3OS27003C0 SS |  |  |  |  | -46.1d | 0d | MECHANICAL [3262.9 h]; CEILING GRID FOR GYPSUM [613.62 h]; Cost |  |  | UP3OS09501C0 |  |  |  | UP | C | 09 | P3 | OS | CE | 095 | 01 | ETA | BILL 3 | B03 | 01 | R00 | ACF06 |  | 095 |  |  |  |  |  |  |  |  |
| UP3OS23003C0 |  | CU-P3 ; Inst. Of Diffusers (SHOPS & TLTS) | 6d | 2011-10-17 | 2011-10-24 | UP3OS23002C0, UP3OS23004C0 |  |  |  |  | -40.1d | 42.9d | MECHANICAL [1317.6 h]; Cost |  |  | UP3OS23003C0 | 23050 |  |  | UP | C | 23 | P3 | OS | ME | 230 | 03 | ETA | BILL 3 | B03 | MHV | R00 | ACF04 | MEP | 230 |  |  |  |  |  |  |  |  |
| UP3OS27004C0 |  | CU-P3 ; ELV Dev.- Smk Detector/ Pull Stn./ Spkrs (SHOPS & TLTS) | 6d | 2011-10-17 | 2011-10-24 | UP3OS27003C0 |  |  |  |  | -40.4d | 42.6d | ELECTRICAL [153.6 h]; Cost |  |  | UP3OS27004C0 | 27041 |  |  | UP | C | 27 | P3 | OS | ME | 270 | 04 | ETA | BILL 3 | B03 | MELV | R00 | ACF07 | MEP | 270 |  |  |  |  |  |  |  |  |
| UP3OS21105C0 |  | CU-P3 ; Inst. Of Fire Extinguishers / Fhc'S (SHOPS & TLTS) | 6d | 2011-10-18 | 2011-10-24 | UP3OS21104C0 |  |  |  |  | -44d | 39d | MECHANICAL [166.8 h]; Cost |  |  | UP3OS21105C0 | 21160 |  |  | UP | C | 21 | P3 | OS | ME | 211 | 05 | ETA | BILL 3 | B03 | MFS | R00 | ACF04 | MEP | 211 |  |  |  |  |  |  |  |  |
| UP3OS09203C0 |  | CU-P3 ; Partition 2nd Face (SHOPS & TLTS) | 15d | 2011-10-20 | 2011-11-10 | UAFOA09202C1 FF, UP3OS09202C0, UP3OS27001C0, UP3OS26004C0, UV10AF09207R2 FF |  |  |  |  | -77.95d | 0d | PARTITIONS [201.23 m]; PARTITIONS [1934 h]; Cost |  |  | UP3OS09203C0 |  |  |  | UP | C | 09 | P3 | OS | PT | 092 | 03 | SIS | BILL 3 | B03 | FF | R00 | ACF06 | GP | 092 |  |  |  |  |  |  |  |  |
| UP3OS09502C0 |  | CU-P3 ; Ceiling - Boarding Works (SHOPS & TLTS) | 6d | 2011-10-24 | 2011-10-31 | OGNMU00023S0, OGNMU00037S0, UP3OS09501C0 |  |  |  |  | -46.1d | 36.9d | ASSORTED CEILING FINISH [143.91 h]; ASSORTED CEILING FINISH [234 m2]; MECHANICAL [91.43 h]; Cost |  |  | UP3OS09502C0 |  |  |  | UP | C | 09 | P3 | OS | CE | 095 | 02 | ETA | BILL 3 | B03 | 02 | R00 | ACF06 |  | 095 |  |  |  |  |  |  |  |  |
| UP3OS26003C0 |  | CU-P3 ; Light Fittings / Sockets / Switches (SHOPS & TLTS) | 7d | 2011-10-30 | 2011-11-10 | UP3OS27001C0, UP3OS09203C0 FF |  |  |  |  | -52.15d | 30.85d | ELECTRICAL [1984.8 h]; Cost |  |  | UP3OS26003C0 | 26061 |  |  | UP | C | 26 | P3 | OS | ME | 260 | 03 | ETA | BILL 3 | B03 | MEL | R00 | ACF07 | MEP | 260 |  |  |  |  |  |  |  |  |
| UP3OS09670C1 |  | CUP-P3, Carpet Tile Finish (Offices) | 0d | 2011-12-08 | 2011-12-08 | UP3OS09902C0 SS |  |  |  |  | -74.95d | 8.05d | Cost |  |  |  |  |  |  | UP | C |  | P3 | OS | FF | 096 |  |  |  | B03 |  | R00 | ACF06 | CPT | CPT |  |  |  |  |  |  |  |  |
| UP3OS09902C0 |  | CU-P3 ; Wall 2nd Coat (SHOPS & TLTS) | 7d | 2011-12-08 | 2011-12-17 | UP3OS08102C0 FF+7d, UP3OS09901C0 |  |  |  |  | -77.95d | 0d | WALL PAINT [145 h]; WALL PAINT [180 m2]; Cost |  |  | UP3OS09902C0 |  |  |  | UP | C | 09 | P3 | OS | PA | 099 | 02 | SIS | BILL 3 | B03 | 02 | R00 | ACF06 |  | 099 |  |  |  |  |  |  |  |  |

| ID | WBS | Activity | Duration | Start | Finish | Predecessors | Complete | Remaining | Planned start | Planned finish | Total float | Free float | Resources | Cost | Actual cost | change id | DIVISION FOR ACTIVITY ID | RENZ % COMPLETE | Claimed This Month | CCAD BUILDING(SET) | CCAD PHASE(SET) | CCAD DIVISION(SET) | CCAD FLOOR(SET) | CCAD ZONE(SET) | CCAD WORK(SET) | CCAD SECTION(SET) | CCAD SERIAL No.(SET) | CCAD RESPONSIBILITY(SET) | CCAD CBS(SET) | CCAD BILL(SET) | CCAD TAG(SET) | CCAD REV(SET) | CCADACF (SET) | CCAD CSA | CCAD SSCF | user_number8 | user_integer1 | user_integer2 | user_number7 | July2011 Target% Complete | P_811 | P_711 | U% |
| --- | --- | --- | --- | --- | --- | --- | --- | --- | --- | --- | --- | --- | --- | --- | --- | --- | --- | --- | --- | --- | --- | --- | --- | --- | --- | --- | --- | --- | --- | --- | --- | --- | --- | --- | --- | --- | --- | --- | --- | --- | --- | --- | --- |
|  | 03 | **LV RM** |  | 2010-06-06 | 2011-10-31 |  |  |  |  |  |  |  |  |  |  |  |  |  |  |  |  |  |  |  |  |  |  |  |  |  |  |  |  |  |  |  |  |  |  |  |  |  |  |
| UP3LV26012C0 |  | CU-P3 ; Inst. Of Lighting Protection / Earthing Tape (LV RM) | 10d | 2010-06-06 A | 2011-06-22 A | UP3LV26011C0 | 100% |  | 2011-04-19 | 2011-05-01 |  |  | ELECTRICAL [5684.4 h]; Cost [387550 AED] | 387,550 | 387,550 | UP3LV26012C0 | 26062 | 95 | 22500.9 | UP | C | 26 | P3 | LV | ME | 260 | 12 | ETA | BILL 3 | B03 | MEL | R00 | ACF07 | MEP | 260 |  |  |  |  |  |  |  |  |
| UP3LV26008C0 |  | CU-P3 ; Inst. Of Trunking / Conduiting (LV RM) | 12d | 2011-04-05 A | 2011-10-01 | UP3LV27002C0 FF, UP3LV27002C0 SS+10d | 95% | 0.6d | 2011-05-21 | 2011-06-04 | -35.8d | 0d | ELECTRICAL [490.8 h]; Cost [6501.63 AED] | 6,501.63 | 6,176.55 | UP3LV26008C0 | 26020 | 10 | 21714.68 | UP | C | 26 | P3 | LV | ME | 260 | 08 | ETA | BILL 3 | B03 | MEL | R00 | ACF04 | MEP | 260 | 0 | 0 | 0 | 0 | 90 | 90 | 75 |  |
| UP3LV26003C0 |  | CU-P3 ; Inst. Of Smdb - 2 Nos. (LV RM) | 14d | 2011-04-12 A | 2011-06-29 A | UP3LV09901C0 | 100% |  | 2011-08-21 | 2011-09-08 |  |  | ELECTRICAL [1245.6 h]; Cost [84953.7 AED] | 84,953.72 | 84,953.72 | UP3LV26003C0 | 26015 | 80 | 19709.34 | UP | C | 26 | P3 | LV | ME | 260 | 03 | ETA | BILL 3 | B03 | MEL | R00 | ACF04 | MEP | 260 |  |  |  |  |  |  |  |  |
| UP3LV26014C0 |  | CU-P3 ; Inst. Of Back Boxes & Conduites On Wall (LV RM) | 8d | 2011-04-25 A | 2011-06-18 A | UP3S104003C0, UP3S104004C0 | 100% |  | 2011-04-30 | 2011-05-09 |  |  | ELECTRICAL [1300.8 h]; Cost [6501.63 AED] | 6,501.63 | 6,501.63 | UP3LV26014C0 |  | 40 | 50382.82 | UP | C | 26 | P3 | LV | ME | 260 | 14 | ETA | BILL 3 | B03 | MEL | R00 | ACF04 | MEP | 260 |  |  |  |  |  |  |  |  |
| UP3LV27002C0 |  | CU-P3 ; Trunking & Conduiting Works For ELV Systems (LV RM) | 12d | 2011-04-26 A | 2011-10-01 | UP3LV26014C0, UP3S104003C0, UP3S104004C0 | 95% | 0.6d | 2011-05-09 | 2011-05-23 | -40.8d | 0d | ELECTRICAL [52.8 h]; Cost [2874.8 AED] | 2,874.8 | 2,731.06 | UP3LV27002C0 | 27010 | 35 | 1492.13 | UP | C | 27 | P3 | LV | ME | 270 | 02 | ETA | BILL 3 | B03 | MELV | R00 | ACF04 | MEP | 270 | 0 | 0 | 0 | 0 | 90 | 85 | 60 |  |
| UP3LV26001C0 |  | CU-P3 ; Inst. Of Mbe - 6 Nos. (LV RM) | 21d | 2011-05-02 A | 2011-06-29 A | UP3LV09901C0 | 100% |  | 2011-08-21 | 2011-09-17 |  |  | ELECTRICAL [7251.6 h]; Cost [3959705 AED] | 3,959,704.84 | 3,959,704.84 | UP3LV26001C0 | 26011 | 80 | 918652.02 | UP | C | 26 | P3 | LV | ME | 260 | 01 | ETA | BILL 3 | B03 | MEL | R00 | ACF04 | MEP | 260 |  |  |  |  |  |  |  |  |
| UP3LV09901C0 |  | CU-P3 ; Wall Prime & 1st Coat (LV RM) | 8.03d | 2011-05-04 A | 2011-05-24 A | UP3LV23002C0, UP3LV26011C0, UP3LV27001C0, UP3LV27003C0 | 100% |  | 2011-08-11 | 2011-08-21 |  |  | WALL PAINT [323 h]; WALL PAINT [401 m2]; Cost |  |  | UP3LV09901C0 |  | 100 |  | UP | C | 09 | P3 | LV | PA | 099 | 01 | SIS | BILL 3 | B03 | 01 | R00 | ACF06 |  | 099 |  |  |  |  |  |  |  |  |
| UP3LV26002C0 |  | CU-P3 ; Inst. Of Sbe - 4 Nos. (LV RM) | 21d | 2011-05-10 A | 2011-06-30 A | UP2S104001C0, UP3LV09901C0 | 100% |  | 2011-08-21 | 2011-09-17 |  |  | ELECTRICAL [5851.2 h]; Cost [399355 AED] | 399,355.44 | 399,355.44 | UP3LV26002C0 | 26014 | 80 | 92649.89 | UP | C | 26 | P3 | LV | ME | 260 | 02 | ETA | BILL 3 | B03 | MEL | R00 | ACF04 | MEP | 260 |  |  |  |  |  |  |  |  |
| UP3LV09601C0 |  | CU-P3 ; Floor Finishing (LV RM) | 17d | 2011-05-15 A | 2011-07-31 A | UP3LV08101C0 | 100% |  | 2011-06-27 | 2011-07-17 |  |  | ASSORTED FLOOR FINISH [1064 h]; ASSORTED FLOOR FINISH [590 m2]; Cost |  |  | UP3LV09601C0 |  | 80 |  | UP | C | 09 | P3 | LV | FF | 096 | 01 | SIS | BILL 3 | B03 | 01 | R00 | ACF06 |  | FF |  |  |  |  |  |  |  |  |
| UP3LV26004C0 |  | CU-P3 ; Inst. Of Db - 5 Nos. (LV RM) | 10d | 2011-05-15 A | 2011-10-24 | UP3LV09901C0, UP3LV26003C0 FF | 52% | 4.79d | 2011-08-23 | 2011-09-06 | -35.99d | 0d | ELECTRICAL [876 h]; Cost [47842.8 AED] | 47,842.76 | 28,705.66 | UP3LV26004C0 | 26010 | 25 | 24973.72 | UP | C | 26 | P3 | LV | ME | 260 | 04 | ETA | BILL 3 | B03 | MEL | R00 | ACF04 | MEP | 260 |  |  |  |  | 75 | 60 | 20 |  |
| UP3LV26006C0 |  | CU-P3 ; Inst. Of Pfc'S - 6 Nos. (LV RM) | 10.03d | 2011-05-15 A | 2011-10-25 | UP3LV26004C0 | 95% | 0.5d | 2011-09-08 | 2011-09-20 | -35.99d | 0d | ELECTRICAL [1609.2 h]; Cost [762746 AED] | 762,746.24 | 724,608.93 | UP3LV26006C0 | 26013 | 75 | 102365.11 | UP | C | 26 | P3 | LV | ME | 260 | 06 | ETA | BILL 3 | B03 | MEL | R00 | ACF04 | MEP | 260 |  |  |  |  | 90 | 95 | 90 |  |
| UP3LV26009C0 |  | CU-P3 ; Inst. Of Cable Tray (LV RM) | 10d | 2011-05-15 A | 2011-10-01 | UP3LV26008C0 SS+6d | 95% | 0.5d | 2011-07-03 | 2011-07-14 | -35.8d | 0d | ELECTRICAL [703.2 h]; Cost [10561.5 AED] | 10,561.54 | 10,033.46 | UP3LV26009C0 | 26030 | 10 | 32197.82 | UP | C | 26 | P3 | LV | ME | 260 | 09 | ETA | BILL 3 | B03 | MEL | R00 | ACF04 | MEP | 260 | 0 | 0 | 0 | 0 | 90 | 80 | 75 |  |
| UP3LV26011C0 |  | CU-P3 ; Cable Pulling Works (LV RM) | 12d | 2011-05-15 A | 2011-10-04 | UP3LV27001C0 | 90% | 1.2d | 2011-07-26 | 2011-08-09 | -35.8d | 0d | ELECTRICAL [8728.8 h]; Cost [551876 AED] | 551,876.2 | 496,688.58 | UP3LV26011C0 | 26040 | 10 | 412110.01 | UP | C | 26 | P3 | LV | ME | 260 | 11 | ETA | BILL 3 | B03 | MEL | R00 | ACF07 | MEP | 260 | 0 | 0 | 0 | 0 | 75 | 70 | 30 |  |
| UP3LV27001C0 |  | CU-P3 ; Wiring Works For Lighting / Small Pwr / Emerg. (LV RM) | 10d | 2011-05-15 A | 2011-10-02 | UP3LV26009C0 | 85% | 1.5d | 2011-07-14 | 2011-07-26 | -35.8d | 0d | ELECTRICAL [740.4 h]; Cost [10136.5 AED] | 10,136.46 | 8,615.99 | UP3LV27001C0 | 27021 | 20 | 22998.44 | UP | C | 27 | P3 | LV | ME | 270 | 01 | ETA | BILL 3 | B03 | MELV | R00 | ACF07 | MEP | 270 | 0 | 0 | 0 | 0 | 75 | 70 | 50 |  |
| UP3LV27003C0 |  | CU-P3 ; Wiring Works For ELV Systems (LV RM) | 12d | 2011-06-14 A | 2011-10-18 | UP3FR22003C0 FF, UP3LV27002C0 | 25% | 9d | 2011-07-07 | 2011-07-21 | -47.2d | 0d | ELECTRICAL [46.8 h]; Cost [2549.35 AED] | 2,549.35 | 637.34 | UP3LV27003C0 | 27020 |  | 594.87 | UP | C | 27 | P3 | LV | ME | 270 | 03 | ETA | BILL 3 | B03 | MELV | R00 | ACF07 | MEP | 270 |  |  |  |  | 30 | 20 | 10 |  |
| UP3LV09902C0 |  | CU-P3 ; Wall 2nd Coat (LV RM) | 10d | 2011-07-05 A | 2011-10-31 | UP3LV09901C0, UP3LV09904C0 FF, UP3LV26010C0 | 95% | 0.5d | 2011-09-18 | 2011-09-28 | -35.99d | 47.01d | WALL PAINT [174 h]; WALL PAINT [216 m2]; Cost |  |  | UP3LV09902C0 |  |  |  | UP | C | 09 | P3 | LV | PA | 099 | 02 | SIS | BILL 3 | B03 | 02 | R00 | ACF06 |  | 099 |  |  |  |  |  |  |  |  |
| UP3LV09903C0 |  | CU-P3 ; Ceiling Prime & 1st Coat (LV RM) | 14d | 2011-07-05 A | 2011-07-20 A | UP3LV23003C0 | 100% |  | 2011-09-03 | 2011-09-18 |  |  | Cost |  |  | UP3LV09903C0 |  |  |  | UP | C | 09 | P3 | LV | PA | 099 | 03 | SIS | BILL 3 | B03 | 01 | R00 | ACF06 |  | 099 |  |  |  |  |  |  |  |  |
| UP3LV09904C0 |  | CU-P3 ; Ceiling Final Coat (LV RM) | 7d | 2011-07-05 A | 2011-07-20 A | UP3LV09903C0, UP3LV21103C0 | 100% |  | 2011-09-20 | 2011-09-27 |  |  | Cost |  |  | UP3LV09904C0 |  |  |  | UP | C | 09 | P3 | LV | PA | 099 | 04 | SIS | BILL 3 | B03 | 02 | R00 | ACF06 |  | 099 |  |  |  |  |  |  |  |  |
| UP3LV23001C0 |  | CU-P3 ; Inst. Of Duct Supp.s & Ducting (LV RM) | 10d | 2011-07-05 A | 2011-10-02 | UP3LV26008C0 | 90% | 1d | 2011-08-09 | 2011-08-21 | -35.4d | 0d | MECHANICAL [669.6 h]; Cost [37738.7 AED] | 37,738.68 | 33,964.82 | UP3LV23001C0 |  |  | 6369.54 | UP | C | 23 | P3 | LV | ME | 230 | 01 | ETA | BILL 3 | B03 | MHV | R00 | ACF04 | MEP | 230 | 0 | 0 | 0 | 0 | 35 | 80 | 50 |  |
| UP3LV26005C0 |  | CU-P3 ; Batt. Cabinets For Emerg. Lighting - 5 Nos. (LV RM) | 15d | 2011-07-07 A | 2011-10-04 | OGNMU00061S0, UP3LV26011C0 | 95% | 0.75d | 2011-08-23 | 2011-09-12 | -15.45d | 20.54d | ELECTRICAL [2406 h]; Cost [1372800 AED] | 1,372,800.26 | 1,304,160.25 | UP3LV26005C0 | 26077 |  |  | UP | C | 26 | P3 | LV | ME | 260 | 05 | ETA | BILL 3 | B03 | MEL | R00 | ACF04 | MEP | 260 |  |  |  |  |  | 95 | 80 |  |
| UP3LV21101C0 |  | CU-P3 ; Inst. Of Pipe - Fire Suppr. System (LV RM) | 14d | 2011-07-10 A | 2011-10-04 | UP3LV23001C0, UP3LV26011C0 SS+6d, UP3LV27001C0 | 90% | 1.4d | 2011-07-23 | 2011-08-08 | -35.8d | 0d | MECHANICAL [4234.8 h]; Cost [289004 AED] | 289,003.78 | 260,103.4 | UP3LV21101C0 | 21110 |  | 50286.65 | UP | C | 21 | P3 | LV | ME | 211 | 01 | ETA | BILL 3 | B03 | MFS | R00 | ACF04 | MEP | 211 |  |  |  |  | 50 | 90 | 75 |  |
| UP3LV21103C0 |  | CU-P3 ; Conn. Works To Cylinders (LV RM) | 8d | 2011-07-10 A | 2011-10-05 | UP3LV21102C0 | 90% | 0.8d | 2011-08-22 | 2011-09-03 | -35.8d | 0d | MECHANICAL [4234.8 h]; Cost [289004 AED] | 289,003.78 | 260,103.4 | UP3LV21103C0 | 21130 |  |  | UP | C | 21 | P3 | LV | ME | 211 | 03 | ETA | BILL 3 | B03 | MFS | R00 | ACF07 | MEP | 211 |  |  |  |  | 90 |  |  |  |
| UP3LV21102C0 |  | CU-P3 ; Inst. Of Cylinders For Fire Suppr. System - 6 Nos. (LV RM) | 12d | 2011-08-10 A | 2011-10-04 | UP3LV21101C0 | 95% | 0.6d | 2011-08-20 | 2011-09-04 | -35.8d | 0d | MECHANICAL [4234.8 h]; Cost [289004 AED] | 289,003.78 | 274,553.59 | UP3LV21102C0 | 21120 |  |  | UP | C | 21 | P3 | LV | ME | 211 | 02 | ETA | BILL 3 | B03 | MFS | R00 | ACF04 | MEP | 211 |  |  |  |  |  | 95 | 0 |  |
| UP3LV23002C0 |  | CU-P3 ; Inst. Of Vcd'S & Duct Conn. Works (LV RM) | 10d | 2011-08-10 A | 2011-10-05 | UP3LV23001C0 | 75% | 2.5d | 2011-08-15 | 2011-08-27 | -35.3d | 11.9d | MECHANICAL [87.6 h]; Cost [4756.4 AED] | 4,756.4 | 3,567.3 | UP3LV23002C0 | 23030 |  |  | UP | C | 23 | P3 | LV | ME | 230 | 02 | ETA | BILL 3 | B03 | MHV | R00 | ACF07 | MEP | 230 | 0 | 0 | 0 | 0 |  | 50 | 0 |  |
| UP3LV26007C0 |  | CU-P3 ; Inst. Of Lcp'S - 2 Nos. (LV RM) | 4d | 2011-08-10 A | 2011-10-25 | UP3LV26006C0 | 95% | 0.2d | 2011-09-19 | 2011-09-24 | -35.99d | 0d | ELECTRICAL [1338 h]; Cost [91337.6 AED] | 91,337.6 | 86,770.72 | UP3LV26007C0 | 26075 |  |  | UP | C | 26 | P3 | LV | ME | 260 | 07 | ETA | BILL 3 | B03 | MEL | R00 | ACF04 | MEP | 260 |  |  |  |  |  | 95 | 0 |  |
| UP3LV27005C0 |  | CU-P3 ; Inst. Of Fm 200 Control Panel (LV RM) | 8d | 2011-08-10 A | 2011-10-24 | UP3LV09901C0, UP3LV26004C0 FF, UP3LV26004C0 SS, UP3LV27003C0 | 94% | 0.45d | 2011-09-11 | 2011-09-19 | -35.34d | 0d | Labor General [1.2 h]; Cost |  |  | UP3LV27005C0 | 27031 |  |  | UP | C | 27 | P3 | LV | ME | 270 | 05 | ETA | BILL 3 | B03 | MELV | R00 | ACF07 | MEP | 270 |  |  |  |  |  | 95 | 0 |  |
| UP3LV08101C0 |  | CU-P3 ; Door Frames (LV RM) | 6d | 2011-09-05 A | 2011-10-01 | UP3S104001C0, A10280 FS+58d | 95% | 0.3d | 2011-09-17 | 2011-09-22 | -9.7d | 0d | ASSORTED DOORS [18 h]; Cost |  |  | UP3LV08101C0 |  |  |  | UP | C | 08 | P3 | LV | DO | 081 | 01 | SIS | BILL 3 | B03 | DF | R00 | ACF06 |  | 081 |  |  |  |  |  |  |  |  |
| UP3LV08102C0 |  | CU-P3 ; Doors (LV RM) | 8d | 2011-09-05 A | 2011-10-19 | UP3LV08101C0, UP3LV09901C0, UP3LV21104C0 | 95% | 0.4d | 2011-09-24 | 2011-10-02 | -25.4d | 10.09d | METAL DOORS [30 h]; METAL DOORS [3 no]; Cost |  |  | UP3LV08102C0 |  |  |  | UP | C | 08 | P3 | LV | DO | 081 | 02 | SIS | BILL 3 | B03 | DR | R00 | ACF06 |  | 081 |  |  |  |  |  |  |  |  |
| UP3LV23003C0 |  | CU-P3 ; Inst. Of Diffusers (LV RM) | 10d | 2011-09-05 A | 2011-10-22 | UP3LV09901C0, UP3LV23002C0 | 75% | 2.5d | 2011-09-20 | 2011-10-01 | -27.5d | 0d | MECHANICAL [156 h]; Cost [8501 AED] | 8,501 | 6,375.75 | UP3LV23003C0 | 23050 |  |  | UP | C | 23 | P3 | LV | ME | 230 | 03 | ETA | BILL 3 | B03 | MHV | R00 | ACF04 | MEP | 230 |  |  |  |  |  |  |  |  |
| UP3LV26010C0 |  | CU-P3 ; Termination Of Cables To Panels (LV RM) | 10d | 2011-09-05 A | 2011-10-31 | UP3LV26001C0 FF+2d, UP3LV26002C0 FF+2d, UP3LV26003C0 FF+2d, UP3LV26004C0 FF+2d, UP3LV26005C0 FF+2d, UP3LV26006C0 FF+2d, UP3LV26007C0 FF+5d, UP3LV26011C0 | 10% | 9d | 2011-09-20 | 2011-10-02 | -35.99d | 0d | ELECTRICAL [259.2 h]; Cost [18867.6 AED] | 18,867.56 | 1,886.76 | UP3LV26010C0 | 26051 |  |  | UP | C | 26 | P3 | LV | ME | 260 | 10 | ETA | BILL 3 | B03 | MEL | R00 | ACF07 | MEP | 260 |  |  |  |  |  |  |  | 10 |
| UP3LV26013C0 |  | CU-P3 ; Inst. Of Light Fittings / Sockets / Switches (LV RM) | 6d | 2011-09-05 A | 2011-10-24 | UP3LV26003C0, UP3LV26012C0 | 30% | 4.2d | 2011-09-20 | 2011-09-26 | -47.2d | 35.8d | ELECTRICAL [357.6 h]; Cost [19522.4 AED] | 19,522.4 | 5,856.72 | UP3LV26013C0 | 26061 |  |  | UP | C | 26 | P3 | LV | ME | 260 | 13 | ETA | BILL 3 | B03 | MEL | R00 | ACF07 | MEP | 260 |  |  |  |  |  |  |  | 30 |
| UP3LV27004C0 |  | CU-P3 ; ELV Devices - Smoke Detector / Pull Stn. / Spkrs (LV RM) | 12d | 2011-09-05 A | 2011-10-31 | UP3LV27003C0 | 15% | 10.2d | 2011-09-20 | 2011-10-03 | -28.2d | 54.8d | ELECTRICAL [153.6 h]; Cost [8391.32 AED] | 8,391.32 | 1,258.7 | UP3LV27004C0 | 27041 |  |  | UP | C | 27 | P3 | LV | ME | 270 | 04 | ETA | BILL 3 | B03 | MELV | R00 | ACF07 | MEP | 270 |  |  |  |  |  |  |  |  |
| UP3LV21104C0 |  | CU-P3 ; Inst. Of Fire Extinguisher / Fhc (LV RM) | 6d | 2011-10-05 | 2011-10-12 | UP3LV21103C0 |  |  |  |  | -35.8d | 0d | MECHANICAL [166.8 h]; Cost |  |  | UP3LV21104C0 | 21160 |  |  | UP | C | 21 | P3 | LV | ME | 211 | 04 | ETA | BILL 3 | B03 | MFS | R00 | ACF04 | MEP | 211 |  |  |  |  |  |  |  |  |
| UP3LV27006C0 |  | CU-P3 ; Dressing, Glanding & Termination Of Control Panels (LV RM) | 6d | 2011-10-24 | 2011-10-31 | UP3LV27005C0 SS+3d |  |  |  |  | -35.34d | 0.15d | ELECTRICAL [259.2 h]; Cost |  |  | UP3LV27006C0 | 27050 |  |  | UP | C | 27 | P3 | LV | ME | 270 | 06 | ETA | BILL 3 | B03 | MELV | R00 | ACF07 | MEP | 270 |  |  |  |  |  |  |  |  |

| ID | WBS | Activity | Duration | Start | Finish | Predecessors | Complete | Remaining | Planned start | Planned finish | Total float | Free float | Resources | Cost | Actual cost | change id | RENZ % COMPLETE | CCAD BUILDING(SET) | CCAD PHASE(SET) | CCAD DIVISION(SET) | CCAD FLOOR(SET) | CCAD ZONE(SET) | CCAD WORK(SET) | CCAD SECTION(SET) | CCAD SERIAL No.(SET) | CCAD RESPONSIBILITY(SET) | CCAD CBS(SET) | CCAD BILL(SET) | CCAD TAG(SET) | CCAD REV(SET) | CCADACF (SET) | CCAD SSCF | DIVISION FOR ACTIVITY ID | Claimed This Month | CCAD CSA | user_number8 | user_integer1 | user_integer2 | user_number7 | July2011 Target% Complete | P_811 | P_711 | U% |
| --- | --- | --- | --- | --- | --- | --- | --- | --- | --- | --- | --- | --- | --- | --- | --- | --- | --- | --- | --- | --- | --- | --- | --- | --- | --- | --- | --- | --- | --- | --- | --- | --- | --- | --- | --- | --- | --- | --- | --- | --- | --- | --- | --- |
|  | 04 | **BATTERY RM** |  | 2010-10-26 | 2011-11-05 |  |  |  |  |  |  |  |  |  |  |  |  |  |  |  |  |  |  |  |  |  |  |  |  |  |  |  |  |  |  |  |  |  |  |  |  |  |  |
| UP3BR03301C0 |  | CU-P3 ; Equipment Plinth (Battery RM) | 7d | 2010-10-26 A | 2010-11-01 A | UP3S104001C0 | 100% |  | 2011-03-09 | 2011-03-16 |  |  | Cost |  |  | UP3BR03301C0 | 100 | UP | C | 03 | P3 | BR | CT | 033 | 01 | SIS | BILL 3 | B03 | 10 | R00 | ACF03 | 033 |  |  |  |  |  |  |  |  |  |  |  |
| UP3BR27001C0 |  | CU-P3 ; Trunking & Conduiting Works For ELV Systems (Battery RM) | 10d | 2011-04-05 A | 2011-06-29 A | UP3BR26007C0 | 100% |  | 2011-04-23 | 2011-05-03 |  |  | ELECTRICAL [52.8 h]; Cost [2874.8 AED] | 2,874.8 | 2,874.8 | UP3BR27001C0 | 10 | UP | C | 27 | P3 | BR | ME | 270 | 01 | ETA | BILL 3 | B03 | MELV | R00 | ACF04 | 270 | 27010 | 2984.59 | MEP |  |  |  |  |  |  |  |  |
| UP3BR26007C0 |  | CU-P3 ; Inst. Of Back Boxes & Conduites On Wall (Battery RM) | 7.88d | 2011-04-12 A | 2011-06-20 A | UP2S104001C0 | 100% |  | 2011-04-13 | 2011-04-21 |  |  | ELECTRICAL [490.8 h]; Cost [6501.63 AED] | 6,501.63 | 6,501.63 | UP3BR26007C0 | 50 | UP | C | 26 | P3 | BR | ME | 260 | 07 | ETA | BILL 3 | B03 | MEL | R00 | ACF04 | 260 |  | 15510.66 | MEP |  |  |  |  |  |  |  |  |
| UP3BR09915C0 |  | CU-P3 ; Ceiling Prime & 1st Coat (Battery RM) | 10d | 2011-05-10 A | 2011-05-18 A | UP3BR23004C0, UP3BR23005C0 | 100% |  | 2011-09-05 | 2011-09-17 |  |  | Labor General [129 h]; Cost |  |  | UP3BR09915C0 | 100 | UP | C | 09 | P3 | BR | PA | 099 | 15 | SIS | BILL 3 | B03 | 01 | R00 | ACF06 | 099 |  |  |  |  |  |  |  |  |  |  |  |
| UP3BR09913C0 |  | CU-P3 ; Wall Prime & 1st Coat (Battery RM) | 12d | 2011-05-15 A | 2011-05-18 A | UP3BR26003C0, UP3BR27002C0 | 100% |  | 2011-08-29 | 2011-09-14 |  |  | WALL PAINT [108 h]; WALL PAINT [134 m2]; Cost |  |  | UP3BR09913C0 | 100 | UP | C | 09 | P3 | BR | PA | 099 | 13 | SIS | BILL 3 | B03 | 01 | R00 | ACF06 | 099 |  |  |  |  |  |  |  |  |  |  |  |
| UP3BR23004C0 |  | CU-P3 ; Inst. Of Ducts (Battery RM) | 21d | 2011-05-15 A | 2011-10-05 | UP3BR26004C0 | 95% | 1.05d | 2011-07-24 | 2011-08-17 | -24.78d | 0d | MECHANICAL [2658 h]; Cost [181396 AED] | 181,395.66 | 172,325.88 | UP3BR23004C0 | 30 | UP | C | 23 | P3 | BR | ME | 230 | 04 | ETA | BILL 3 | B03 | MHV | R00 | ACF04 | 230 | 23015 |  | MEP | 0 | 0 | 0 | 0 | 50 | 80 | 30 |  |
| UP3BR26004C0 |  | CU-P3 ; Trnk / Conduit For Pwr, Lighting & Emerg. (Battery RM) | 12d | 2011-05-15 A | 2011-10-04 | UP3BR27001C0 FF, UP3BR27001C0 SS+6d | 70% | 3.6d | 2011-07-10 | 2011-07-24 | -30.5d | 0d | ELECTRICAL [490.8 h]; Cost [6501.63 AED] | 6,501.63 | 4,551.14 | UP3BR26004C0 | 15 | UP | C | 26 | P3 | BR | ME | 260 | 04 | ETA | BILL 3 | B03 | MEL | R00 | ACF04 | 260 | 26020 | 3102.12 | MEP | 0 | 0 | 0 | 0 | 45 | 60 | 15 | 70 |
| UP3BR26001C0 |  | CU-P3 ; Inst. Of 125V DC Control Station Batteries (Battery RM) | 16d | 2011-06-23 A | 2011-06-30 A | UP3BR03301C0, UP3BR26003C0 | 100% |  | 2011-07-23 | 2011-08-10 |  |  | ELECTRICAL [5212.8 h]; Cost [1393600 AED] | 1,393,600.27 | 1,393,600.27 | UP3BR26001C0 |  | UP | C | 26 | P3 | BR | ME | 260 | 01 | ETA | BILL 3 | B03 | MEL | R00 | ACF04 | 260 | 26076 | 3330714.7 | MEP |  |  |  |  |  |  |  |  |
| UP3BR26002C0 |  | CU-P3 ; Inst. Of Copper Tape (Battery RM) | 14d | 2011-06-23 A | 2011-06-30 A | UP3BR26003C0 | 100% |  | 2011-07-23 | 2011-08-08 |  |  | ELECTRICAL [3754.8 h]; Cost [279946 AED] | 279,945.85 | 279,945.85 | UP3BR26002C0 |  | UP | C | 26 | P3 | BR | ME | 260 | 02 | ETA | BILL 3 | B03 | MEL | R00 | ACF04 | 260 | 26031 | 306980.55 | MEP |  |  |  |  |  |  |  |  |
| UP3BR09604C0 |  | CU-P3 ; Floor Finishing (Battery RM) | 11d | 2011-07-05 A | 2011-07-20 A | UP3BR08108C0 | 100% |  | 2011-08-23 | 2011-09-06 |  |  | ASSORTED FLOOR FINISH [360 h]; ASSORTED FLOOR FINISH [197 m2]; Cost |  |  | UP3BR09604C0 |  | UP | C | 09 | P3 | BR | FF | 096 | 04 | SIS | BILL 3 | B03 | 01 | R00 | ACF06 | FF |  |  |  |  |  |  |  |  |  |  |  |
| UP3BR09914C0 |  | CU-P3 ; Wall 2nd Coat (Battery RM) | 7.5d | 2011-07-05 A | 2011-07-20 A | UP3BR09913C0, UP3BR09916C0, UP3BR26005C0, UV10P103307R2 FF | 100% |  | 2011-09-05 | 2011-09-13 |  |  | WALL PAINT [58 h]; WALL PAINT [72 m2]; Cost |  |  | UP3BR09914C0 |  | UP | C | 09 | P3 | BR | PA | 099 | 14 | SIS | BILL 3 | B03 | 02 | R00 | ACF06 | 099 |  |  |  |  |  |  |  |  |  |  |  |
| UP3BR09916C0 |  | CU-P3 ; Ceiling Final Coat (Battery RM) | 8d | 2011-07-05 A | 2011-07-20 A | UP3BR09915C0, UP3BR27003C0 | 100% |  | 2011-08-24 | 2011-09-05 |  |  | Cost |  |  | UP3BR09916C0 |  | UP | C | 09 | P3 | BR | PA | 099 | 16 | SIS | BILL 3 | B03 | 02 | R00 | ACF06 | 099 |  |  |  |  |  |  |  |  |  |  |  |
| UP3BR26003C0 |  | CU-P3 ; Wiring / Cable Pulling Works (Battery RM) | 17d | 2011-07-10 A | 2011-10-15 | UP3BR26004C0 | 50% | 8.5d | 2011-07-14 | 2011-08-03 | -30.5d | 0d | ELECTRICAL [8728.8 h]; Cost [551876 AED] | 551,876.2 | 275,938.1 | UP3BR26003C0 |  | UP | C | 26 | P3 | BR | ME | 260 | 03 | ETA | BILL 3 | B03 | MEL | R00 | ACF07 | 260 | 26040 |  | MEP | 0 | 0 | 0 | 0 | 30 | 35 | 30 |  |
| UP3BR23005C0 |  | CU-P3 ; Inst. Of Vcd'S & Duct Conn. Works (Battery RM) | 15d | 2011-08-10 A | 2011-10-10 | UP3BR23004C0 | 76% | 3.53d | 2011-09-01 | 2011-09-19 | -24.78d | 0d | MECHANICAL [87.6 h]; Cost [4756.4 AED] | 4,756.4 | 3,567.3 | UP3BR23005C0 |  | UP | C | 23 | P3 | BR | ME | 230 | 05 | ETA | BILL 3 | B03 | MHV | R00 | ACF07 | 230 | 23030 |  | MEP | 0 | 0 | 0 | 0 | 50 | 30 | 0 |  |
| UP3BR23006C0 |  | CU-P3 ; Motorised Smk Fire Damper & Duct Conn. Works (Battery RM) | 12d | 2011-08-10 A | 2011-10-10 | UP3BR23005C0 | 95% | 0.6d | 2011-09-18 | 2011-10-02 | -24.78d | 58.22d | MECHANICAL [1863.6 h]; Cost [127190 AED] | 127,190 | 120,830.5 | UP3BR23006C0 |  | UP | C | 23 | P3 | BR | ME | 230 | 06 | ETA | BILL 3 | B03 | MHV | R00 | ACF04 | 230 | 23054 |  | MEP | 0 | 0 | 0 | 0 | 20 | 60 | 0 |  |
| UP3BR27002C0 |  | CU-P3 ; Wiring Works For ELV Systems (Battery RM) | 32d | 2011-08-10 A | 2011-10-27 | UP3BR27001C0 | 25% | 24d | 2011-08-02 | 2011-09-10 | -32.4d | 0d | ELECTRICAL [46.8 h]; Cost [2549.35 AED] | 2,549.35 | 637.34 | UP3BR27002C0 |  | UP | C | 27 | P3 | BR | ME | 270 | 02 | ETA | BILL 3 | B03 | MELV | R00 | ACF07 | 270 | 27020 | 297.43 | MEP |  |  |  |  | 30 | 25 | 0 |  |
| UP3BR08107C0 |  | CU-P3 ; Door Frames (Battery RM) | 18d | 2011-09-05 A | 2011-10-01 | UP3S104001C0 | 95% | 0.9d | 2011-09-01 | 2011-09-21 | -3.5d | 23.1d | ASSORTED DOORS [6 h]; Cost |  |  | UP3BR08107C0 |  | UP | C | 08 | P3 | BR | DO | 081 | 07 | SIS | BILL 3 | B03 | DF | R00 | ACF06 | 081 |  |  |  |  |  |  |  |  |  |  |  |
| UP3BR08108C0 |  | CU-P3 ; Doors (Battery RM) | 12d | 2011-09-05 A | 2011-10-29 | UP3BR08107C0, UP3BR09913C0 | 95% | 0.6d | 2011-09-29 | 2011-10-12 | -26.6d | 0d | METAL DOORS [10 h]; METAL DOORS [1 no]; Cost |  |  | UP3BR08108C0 |  | UP | C | 08 | P3 | BR | DO | 081 | 08 | SIS | BILL 3 | B03 | DR | R00 | ACF06 | 081 |  |  |  |  |  |  |  |  |  |  |  |
| UP3BR26005C0 |  | CU-P3 ; Inst. Of Light Fittings / Sockets / Switches (Battery RM) | 6d | 2011-09-05 A | 2011-10-29 | UP3BR26002C0, UP3BR26006C0 | 60% | 2.4d | 2011-10-01 | 2011-10-08 | -30.5d | 1.9d | ELECTRICAL [357.6 h]; Cost [19522.4 AED] | 19,522.4 | 11,713.44 | UP3BR26005C0 |  | UP | C | 26 | P3 | BR | ME | 260 | 05 | ETA | BILL 3 | B03 | MEL | R00 | ACF07 | 260 | 26061 |  | MEP |  |  |  |  |  |  |  | 60 |
| UP3BR27003C0 |  | CU-P3 ; ELV Devices - Sensors, Smoke Detector / Spkrs (Battery RM) | 8d | 2011-09-05 A | 2011-11-05 | UP3BR26005C0 FF, UP3BR26005C0 SS, UP3BR27002C0 | 20% | 6.4d | 2011-10-01 | 2011-10-10 | -32.4d | 0d | ELECTRICAL [153.6 h]; Cost [8391.32 AED] | 8,391.32 | 1,678.26 | UP3BR27003C0 |  | UP | C | 27 | P3 | BR | ME | 270 | 03 | ETA | BILL 3 | B03 | MELV | R00 | ACF07 | 270 | 27040 |  | MEP |  |  |  |  |  |  |  |  |
| UP3BR26006C0 |  | CU-P3 ; Glanding & Termination Works To Batteries (Battery RM) | 10d | 2011-10-15 | 2011-10-26 | UP3BR26001C0 |  |  |  |  | -30.5d | 0d | ELECTRICAL [259.2 h]; Cost |  |  | UP3BR26006C0 |  | UP | C | 26 | P3 | BR | ME | 260 | 06 | ETA | BILL 3 | B03 | MEL | R00 | ACF07 | 260 | 26050 |  | MEP |  |  |  |  | 20 |  |  |  |
|  | 05 | **HV RM** |  | 2010-06-06 | 2011-10-23 |  |  |  |  |  |  |  |  |  |  |  |  |  |  |  |  |  |  |  |  |  |  |  |  |  |  |  |  |  |  |  |  |  |  |  |  |  |  |
| UP3HV26006C0 |  | CU-P3 ; Inst. Of Lighting Protection / Earthing Tape (HV RM) | 10d | 2010-06-06 A | 2011-06-28 A | UP3HV26005C0 | 100% |  | 2011-07-03 | 2011-07-14 |  |  | ELECTRICAL [5684.4 h]; Cost [387550 AED] | 387,550 | 387,550 | UP3HV26006C0 | 95 | UP | C | 26 | P3 | HV | ME | 260 | 06 | ETA | BILL 3 | B03 | MEL | R00 | ACF07 | 260 | 26062 | 22500.9 | MEP |  |  |  |  |  |  |  |  |
| UP3HV26001C0 |  | CU-P3 ; Inst. Of 11KV Panels - 6 Nos. (HV RM) | 10.88d | 2011-04-23 A | 2011-05-24 A | UP3HV09901C0 | 100% |  | 2011-08-18 | 2011-09-01 |  |  | ELECTRICAL [19566 h]; Cost [10683592 AED] | 10,683,592 | 10,683,592 | UP3HV26001C0 | 100 | UP | C | 26 | P3 | HV | ME | 260 | 01 | ETA | BILL 3 | B03 | MEL | R00 | ACF04 | 260 | 26060 |  | MEP |  |  |  |  |  |  |  |  |
| UP3HV26008C0 |  | CU-P3 ; Inst. Of Back Boxes & Conduites On Wall (HV RM) | 8d | 2011-04-26 A | 2011-06-06 A | UP3S104003C0 | 100% |  | 2011-04-30 | 2011-05-09 |  |  | ELECTRICAL [490.8 h]; Cost [6501.63 AED] | 6,501.63 | 6,501.63 | UP3HV26008C0 | 35 | UP | C | 26 | P3 | HV | ME | 260 | 08 | ETA | BILL 3 | B03 | MEL | R00 | ACF04 | 260 |  | 20163.81 | MEP |  |  |  |  |  |  |  |  |
| UP3HV27002C0 |  | CU-P3 ; Trunking & Conduiting Works For ELV Systems (HV RM) | 18d | 2011-04-27 A | 2011-10-04 | UP3HV26008C0, UP3S104003C0, UP3S104004C0 | 80% | 3.6d | 2011-05-09 | 2011-05-30 | -31.9d | 0d | ELECTRICAL [52.8 h]; Cost [2874.8 AED] | 2,874.8 | 2,299.84 | UP3HV27002C0 | 25 | UP | C | 27 | P3 | HV | ME | 270 | 02 | ETA | BILL 3 | B03 | MELV | R00 | ACF04 | 270 | 27010 | 829 | MEP |  |  |  |  | 75 | 75 | 50 |  |
| UP3HV09901C0 |  | CU-P3 ; Wall Prime & 1st Coat (HV RM) | 10d | 2011-05-10 A | 2011-06-29 A | UP3HV23012C0, UP3HV27001C0, UP3HV27003C0 | 100% |  | 2011-08-07 | 2011-08-17 |  |  | WALL PAINT [215 h]; WALL PAINT [267 m2]; Cost |  |  | UP3HV09901C0 | 90 | UP | C | 09 | P3 | HV | PA | 099 | 01 | SIS | BILL 3 | B03 | 01 | R00 | ACF06 | 099 |  | 741.45 |  |  |  |  |  |  |  |  |  |
| UP3HV26002C0 |  | CU-P3 ; Inst. Of Trunking / Conduiting (HV RM) | 10d | 2011-05-15 A | 2011-06-28 A | UP3HV27002C0 FF, UP3HV27002C0 SS+14d | 100% |  | 2011-06-25 | 2011-07-06 |  |  | ELECTRICAL [490.8 h]; Cost [6501.63 AED] | 6,501.63 | 6,501.63 | UP3HV26002C0 | 35 | UP | C | 26 | P3 | HV | ME | 260 | 02 | ETA | BILL 3 | B03 | MEL | R00 | ACF04 | 260 | 26020 | 20163.75 | MEP |  |  |  |  |  |  |  |  |
| UP3HV26005C0 |  | CU-P3 ; Cable Pulling Works (HV RM) | 14d | 2011-06-25 A | 2011-10-13 | UP3HV27001C0 | 75% | 3.5d | 2011-07-25 | 2011-08-10 | -20.8d | 0d | ELECTRICAL [8728.8 h]; Cost [551876 AED] | 551,876.2 | 413,907.15 | UP3HV26005C0 |  | UP | C | 26 | P3 | HV | ME | 260 | 05 | ETA | BILL 3 | B03 | MEL | R00 | ACF07 | 260 | 26040 | 137370 | MEP | 0 | 0 | 0 | 0 | 35 | 50 | 40 |  |
| UP3HV26003C0 |  | CU-P3 ; Inst. Of Cable Tray (HV RM) | 9.5d | 2011-06-26 A | 2011-10-05 | UP3HV26002C0 | 90% | 0.95d | 2011-06-29 | 2011-07-10 | -20.8d | 0d | ELECTRICAL [703.2 h]; Cost [10561.5 AED] | 10,561.54 | 9,505.38 | UP3HV26003C0 |  | UP | C | 26 | P3 | HV | ME | 260 | 03 | ETA | BILL 3 | B03 | MEL | R00 | ACF04 | 260 | 26030 | 27598.13 | MEP | 0 | 0 | 0 | 0 | 75 | 80 | 60 |  |
| UP3HV27003C0 |  | CU-P3 ; Wiring Works For ELV Systems (HV RM) | 17.5d | 2011-06-28 A | 2011-10-15 | UP3HV27002C0 | 50% | 8.75d | 2011-06-29 | 2011-07-19 | -22.85d | 0d | ELECTRICAL [46.8 h]; Cost [2549.35 AED] | 2,549.35 | 1,274.68 | UP3HV27003C0 |  | UP | C | 27 | P3 | HV | ME | 270 | 03 | ETA | BILL 3 | B03 | MELV | R00 | ACF07 | 270 | 27020 | 594.87 | MEP |  |  |  |  | 50 | 50 | 20 |  |
| UP3HV09902C0 |  | CU-P3 ; Wall 2nd Coat (HV RM) | 10.07d | 2011-07-05 A | 2011-07-20 A | UP3HV09901C0, UP3HV26006C0, UP3HV26007C0 | 100% |  | 2011-09-08 | 2011-09-20 |  |  | WALL PAINT [116 h]; WALL PAINT [144 m2]; Cost |  |  | UP3HV09902C0 |  | UP | C | 09 | P3 | HV | PA | 099 | 02 | SIS | BILL 3 | B03 | 02 | R00 | ACF06 | 099 |  |  |  |  |  |  |  |  |  |  |  |
| UP3HV09903C0 |  | CU-P3 ; Ceiling Prime & 1st Coat (HV RM) | 15d | 2011-07-05 A | 2011-07-20 A | UP3HV21103C0, UP3HV23013C0 | 100% |  | 2011-09-06 | 2011-09-24 |  |  | Cost |  |  | UP3HV09903C0 |  | UP | C | 09 | P3 | HV | PA | 099 | 03 | SIS | BILL 3 | B03 | 01 | R00 | ACF06 | 099 |  |  |  |  |  |  |  |  |  |  |  |
| UP3HV09904C0 |  | CU-P3 ; Ceiling Final Coat (HV RM) | 6d | 2011-07-05 A | 2011-07-20 A | UP3HV09903C0, UP3HV27004C0 | 100% |  | 2011-09-24 | 2011-10-01 |  |  | Cost |  |  | UP3HV09904C0 |  | UP | C | 09 | P3 | HV | PA | 099 | 04 | SIS | BILL 3 | B03 | 02 | R00 | ACF06 | 099 |  |  |  |  |  |  |  |  |  |  |  |
| UP3HV21104C0 |  | CU-P3 ; Conn. Works To Cylinders (HV RM) | 8d | 2011-07-05 A | 2011-10-08 | UP3HV21103C0 | 95% | 0.4d | 2011-10-05 | 2011-10-15 | -31.9d | 3.9d | MECHANICAL [4234.8 h]; Cost [289004 AED] | 289,003.78 | 274,553.59 | UP3HV21104C0 |  | UP | C | 21 | P3 | HV | ME | 211 | 04 | ETA | BILL 3 | B03 | MFS | R00 | ACF07 | 211 | 21130 |  | MEP | 0 | 0 | 0 | 0 |  | 60 | 50 |  |
| UP3HV21102C0 |  | CU-P3 ; Inst. Of Pipe - Fire Suppr. System (HV RM) | 18d | 2011-07-06 A | 2011-10-06 | UP3HV23011C0 | 95% | 0.9d | 2011-08-29 | 2011-09-21 | -31.9d | 0d | MECHANICAL [4234.8 h]; Cost [289004 AED] | 289,003.78 | 274,553.59 | UP3HV21102C0 |  | UP | C | 21 | P3 | HV | ME | 211 | 02 | ETA | BILL 3 | B03 | MFS | R00 | ACF04 | 211 | 21110 | 33524.43 | MEP |  |  |  |  | 35 | 95 | 75 |  |
| UP3HV09601C0 |  | CU-P3 ; Floor Finishing (HV RM) | 10d | 2011-07-10 A | 2011-10-16 | UP3HV08102C0 | 90% | 1d | 2011-08-23 | 2011-09-06 | -22.85d | 60.15d | ASSORTED FLOOR FINISH [712 h]; ASSORTED FLOOR FINISH [394 m2]; Cost |  |  | UP3HV09601C0 |  | UP | C | 09 | P3 | HV | FF | 096 | 01 | SIS | BILL 3 | B03 | 01 | R00 | ACF06 | FF |  |  |  | 0 | 0 | 0 | 0 |  |  |  |  |
| UP3HV21103C0 |  | CU-P3 ; Inst. Of Cylinders For Fire Suppr. - 4 Nos. (HV RM) | 12d | 2011-08-10 A | 2011-10-08 | UP3HV21102C0, UP3LV21102C0 FF, UP3LV21102C0 SS+7d | 95% | 0.6d | 2011-09-06 | 2011-09-19 | -31.9d | 0d | MECHANICAL [4234.8 h]; Cost [289004 AED] | 289,003.78 | 274,553.59 | UP3HV21103C0 |  | UP | C | 21 | P3 | HV | ME | 211 | 03 | ETA | BILL 3 | B03 | MFS | R00 | ACF04 | 211 | 21120 |  | MEP |  |  |  |  |  | 95 | 0 |  |
| UP3HV23011C0 |  | CU-P3 ; Inst. Of Duct Supp.s & Ducting (HV RM) | 14d | 2011-08-10 A | 2011-10-05 | UP3HV26002C0 SS+12d | 90% | 1.4d | 2011-08-13 | 2011-08-29 | -31.9d | 0d | MECHANICAL [669.6 h]; Cost [37738.7 AED] | 37,738.68 | 33,964.82 | UP3HV23011C0 |  | UP | C | 23 | P3 | HV | ME | 230 | 11 | ETA | BILL 3 | B03 | MHV | R00 | ACF04 | 230 | 23015 | 2123.18 | MEP | 0 | 0 | 0 | 0 | 60 | 80 | 0 |  |
| UP3HV23012C0 |  | CU-P3 ; Inst. Of Vcd'S & Duct Conn. Works (HV RM) | 10d | 2011-08-10 A | 2011-10-09 | UP3HV23011C0 | 75% | 2.5d | 2011-08-29 | 2011-09-12 | -18d | 0d | MECHANICAL [87.6 h]; Cost [4756.4 AED] | 4,756.4 | 3,567.3 | UP3HV23012C0 |  | UP | C | 23 | P3 | HV | ME | 230 | 12 | ETA | BILL 3 | B03 | MHV | R00 | ACF07 | 230 | 23030 |  | MEP | 0 | 0 | 0 | 0 | 30 | 10 | 0 |  |
| UP3HV08101C0 |  | CU-P3 ; Door Frames (HV RM) | 18d | 2011-09-05 A | 2011-10-01 | UP3S104001C0, A10280 FS+58d | 95% | 0.9d | 2011-09-17 | 2011-10-06 | -11.4d | 11.45d | ASSORTED DOORS [12 h]; Cost |  |  | UP3HV08101C0 |  | UP | C | 08 | P3 | HV | DO | 081 | 01 | SIS | BILL 3 | B03 | DF | R00 | ACF06 | 081 |  |  |  |  |  |  |  |  |  |  |  |
| UP3HV08102C0 |  | CU-P3 ; Doors (HV RM) | 10d | 2011-09-05 A | 2011-10-15 | UP3HV08101C0, UP3HV09901C0 | 95% | 0.5d | 2011-10-08 | 2011-10-18 | -22.85d | 0d | METAL DOORS [20 h]; METAL DOORS [2 no]; Cost |  |  | UP3HV08102C0 |  | UP | C | 08 | P3 | HV | DO | 081 | 02 | SIS | BILL 3 | B03 | DR | R00 | ACF06 | 081 |  |  |  |  |  |  |  |  |  |  |  |
| UP3HV23013C0 |  | CU-P3 ; Inst. Of Diffusers (HV RM) | 10d | 2011-09-05 A | 2011-10-10 | UP3HV23012C0 | 90% | 1d | 2011-09-20 | 2011-10-02 | -10.5d | 0d | MECHANICAL [156 h]; Cost [8501 AED] | 8,501 | 7,650.9 | UP3HV23013C0 |  | UP | C | 23 | P3 | HV | ME | 230 | 13 | ETA | BILL 3 | B03 | MHV | R00 | ACF04 | 230 | 23050 |  | MEP |  |  |  |  |  |  |  |  |
| UP3HV26004C0 |  | CU-P3 ; Termination Of Cables To Panels (HV RM) | 10d | 2011-09-05 A | 2011-10-22 | UP3HV09901C0, UP3HV26001C0, UP3HV26005C0 | 35% | 6.5d | 2011-10-02 | 2011-10-13 | -21.85d | 0d | ELECTRICAL [259.2 h]; Cost [18867.6 AED] | 18,867.56 | 6,603.65 | UP3HV26004C0 |  | UP | C | 26 | P3 | HV | ME | 260 | 04 | ETA | BILL 3 | B03 | MEL | R00 | ACF07 | 260 | 26051 |  | MEP |  |  |  |  |  |  |  |  |
| UP3HV26007C0 |  | CU-P3 ; Inst. Of Light Fittings / Sockets / Switches (HV RM) | 6d | 2011-09-05 A | 2011-10-23 | UP3HV09901C0, UP3HV26004C0, UP3HV26006C0 | 83% | 1d | 2011-10-13 | 2011-10-20 | -21.85d | 0d | ELECTRICAL [357.6 h]; Cost [19522.4 AED] | 19,522.4 | 9,761.2 | UP3HV26007C0 |  | UP | C | 26 | P3 | HV | ME | 260 | 07 | ETA | BILL 3 | B03 | MEL | R00 | ACF07 | 260 | 26061 |  | MEP |  |  |  |  |  |  |  |  |
| UP3HV27001C0 |  | CU-P3 ; Wiring Works For Lighting / Small Pwr / Emerg. (HV RM) | 13d | 2011-09-05 A | 2011-10-09 | UP3HV26003C0 | 75% | 3.25d | 2011-09-08 | 2011-09-24 | -20.8d | 0d | ELECTRICAL [2290.8 h]; Cost [10136.5 AED] | 10,136.46 | 7,602.34 | UP3HV27001C0 |  | UP | C | 27 | P3 | HV | ME | 270 | 01 | ETA | BILL 3 | B03 | MELV | R00 | ACF07 | 270 | 27021 |  | MEP |  |  |  |  | 15 |  |  |  |
| UP3HV27004C0 |  | CU-P3 ; ELV Devices - Smoke Detector / Pull Stn. / Spkrs (HV RM) | 12d | 2011-09-05 A | 2011-10-23 | UP3HV26007C0 FF, UP3HV27003C0 | 50% | 6d | 2011-10-13 | 2011-10-27 | -21.85d | 0d | ELECTRICAL [153.6 h]; Cost [8391.32 AED] | 8,391.32 | 2,517.4 | UP3HV27004C0 |  | UP | C | 27 | P3 | HV | ME | 270 | 04 | ETA | BILL 3 | B03 | MELV | R00 | ACF07 | 270 | 27041 |  | MEP |  |  |  |  |  |  |  |  |
| UP3HV21105C0 |  | CU-P3 ; Inst. Of Fire Extinguisher / Fhc (HV RM) | 9d | 2011-10-12 | 2011-10-23 | UP3HV21104C0, UP3LV21104C0 |  |  |  |  | -35.8d | 6.69d | MECHANICAL [166.8 h]; Cost |  |  | UP3HV21105C0 |  | UP | C | 21 | P3 | HV | ME | 211 | 05 | ETA | BILL 3 | B03 | MFS | R00 | ACF04 | 211 | 21160 |  | MEP |  |  |  |  |  |  |  |  |

| ID | WBS | Activity | Duration | Start | Finish | Predecessors | Complete | Remaining | Planned start | Planned finish | Total float | Free float | Resources | Cost | Actual cost | change id | DIVISION FOR ACTIVITY ID | RENZ % COMPLETE | CCAD BUILDING(SET) | CCAD PHASE(SET) | CCAD DIVISION(SET) | CCAD FLOOR(SET) | CCAD ZONE(SET) | CCAD WORK(SET) | CCAD SECTION(SET) | CCAD SERIAL No.(SET) | CCAD RESPONSIBILITY(SET) | CCAD CBS(SET) | CCAD BILL(SET) | CCAD TAG(SET) | CCAD REV(SET) | CCADACF (SET) | CCAD CSA | CCAD SSCF | July2011 Target% Complete | Claimed This Month | P_811 | P_711 | user_number8 | user_integer1 | user_integer2 | user_number7 |
| --- | --- | --- | --- | --- | --- | --- | --- | --- | --- | --- | --- | --- | --- | --- | --- | --- | --- | --- | --- | --- | --- | --- | --- | --- | --- | --- | --- | --- | --- | --- | --- | --- | --- | --- | --- | --- | --- | --- | --- | --- | --- | --- |
|  | 06 | **TRANSF. RM** |  | 2011-04-24 | 2011-10-20 |  |  |  |  |  |  |  |  |  |  |  |  |  |  |  |  |  |  |  |  |  |  |  |  |  |  |  |  |  |  |  |  |  |  |  |  |  |
| UP3TA26001C0 |  | CU-P3 ; Inst. Of Transf.s - 6 Nos. (Transf. RM) | 18d | 2011-04-24 A | 2011-05-31 A | UP3TA26006C0 | 100% |  | 2011-05-31 | 2011-06-21 |  |  | ELECTRICAL [2820 h]; Cost [1539528 AED] | 1,539,528 | 1,539,528 | UP3TA26001C0 | 26016 | 100 | UP | C | 26 | P3 | TA | ME | 260 | 01 | ETA | BILL 3 | B03 | MEL | R00 | ACF04 | MEP | 260 |  |  |  |  |  |  |  |  |
| UP3TA27001C0 |  | CU-P3 ; Trunking & Conduiting Works For ELV Systems (Transf. RM) | 24d | 2011-04-25 A | 2011-10-03 | UP2S103301C0 | 90% | 2.4d | 2011-05-09 | 2011-06-06 | -36.4d | 0d | ELECTRICAL [52.8 h]; Cost [2874.8 AED] | 2,874.8 | 2,587.32 | UP3TA27001C0 | 27010 | 30 | UP | C | 27 | P3 | TA | ME | 270 | 01 | ETA | BILL 3 | B03 | MELV | R00 | ACF04 | MEP | 270 | 45 | 165.8 | 85 | 35 |  |  |  |  |
| UP3TA26006C0 |  | CU-P3 ; Inst. Of Back Boxes & Conduites On Wall (Transf. RM) | 8d | 2011-04-26 A | 2011-06-25 A | UP3S104003C0, UP3TA27001C0 | 100% |  | 2011-04-30 | 2011-05-09 |  |  | ELECTRICAL [490.8 h]; Cost [6501.63 AED] | 6,501.63 | 6,501.63 | UP3TA26006C0 |  | 35 | UP | C | 26 | P3 | TA | ME | 260 | 06 | ETA | BILL 3 | B03 | MEL | R00 | ACF04 | MEP | 260 |  | 20163.81 |  |  |  |  |  |  |
| UP3TA09905C0 |  | CU-P3 ; Wall Prime & 1st Coat (Transf. RM) | 12d | 2011-05-09 A | 2011-05-31 A | UP3TA26002C0, UP3TA26005C0, UP3TA27002C0 | 100% |  | 2011-08-10 | 2011-08-24 |  |  | WALL PAINT [161 h]; WALL PAINT [200 m2]; Cost |  |  | UP3TA09905C0 |  | 100 | UP | C | 09 | P3 | TA | PA | 099 | 05 | SIS | BILL 3 | B03 | 01 | R00 | ACF06 |  | 099 |  |  |  |  |  |  |  |  |
| UP3TA23010C0 |  | CU-P3 ; Inst. Of Duct Supp.s & Ducting (Transf. RM) | 14d | 2011-05-15 A | 2011-10-04 | UP3TA26004C0 | 95% | 0.7d | 2011-06-22 | 2011-07-10 | -29d | 0d | MECHANICAL [1729.2 h]; Cost [37738.7 AED] | 37,738.68 | 35,851.75 | UP3TA23010C0 | 23015 | 10 | UP | C | 23 | P3 | TA | ME | 230 | 10 | ETA | BILL 3 | B03 | MHV | R00 | ACF04 | MEP | 230 | 60 |  | 70 | 10 | 0 | 0 | 0 | 0 |
| UP3TA26004C0 |  | CU-P3 ; Trnk & Conduits For Lighting / Pwr / Emerg. (Transf. RM) | 12d | 2011-06-05 A | 2011-10-03 | UP3TA27001C0 FF, UP3TA27001C0 SS+14d | 80% | 2.4d | 2011-06-05 | 2011-06-19 | -30.18d | 0d | ELECTRICAL [490.8 h]; Cost [6501.63 AED] | 6,501.63 | 5,201.3 | UP3TA26004C0 | 26020 |  | UP | C | 26 | P3 | TA | ME | 260 | 04 | ETA | BILL 3 | B03 | MEL | R00 | ACF04 | MEP | 260 | 45 | 9306.35 | 70 | 20 | 0 | 0 | 0 | 0 |
| UP3TA26002C0 |  | CU-P3 ; Inst. Of Busbar (Transf. RM) | 20d | 2011-06-19 A | 2011-06-26 A | UP3TA26001C0 | 100% |  | 2011-06-26 | 2011-07-19 |  |  | ELECTRICAL [2347.2 h]; Cost [1249613 AED] | 1,249,613.35 | 1,249,613.35 | UP3TA26002C0 | 26063 |  | UP | C | 26 | P3 | TA | ME | 260 | 02 | ETA | BILL 3 | B03 | MEL | R00 | ACF04 | MEP | 260 |  | 1473506.64 |  |  |  |  |  |  |
| UP3TA26005C0 |  | CU-P3 ; Wiring Works For For Lighting / Pwr / Emerg. (Transf. RM) | 9d | 2011-06-19 A | 2011-10-05 | UP3TA26004C0 | 80% | 1.77d | 2011-06-19 | 2011-06-30 | -30.18d | 0d | ELECTRICAL [740.4 h]; Cost [10136.5 AED] | 10,136.46 | 8,109.17 | UP3TA26005C0 | 26041 |  | UP | C | 26 | P3 | TA | ME | 260 | 05 | ETA | BILL 3 | B03 | MEL | R00 | ACF07 | MEP | 260 | 35 | 9199.38 | 30 | 10 | 0 | 0 | 0 | 0 |
| UP3TA27002C0 |  | CU-P3 ; Wiring Works For ELV Systems (Transf. RM) | 19d | 2011-06-19 A | 2011-10-11 | UP3TA27001C0 | 65% | 6.65d | 2011-06-19 | 2011-07-12 | -35.05d | 0d | ELECTRICAL [46.8 h]; Cost [2549.35 AED] | 2,549.35 | 1,657.08 | UP3TA27002C0 | 27020 |  | UP | C | 27 | P3 | TA | ME | 270 | 02 | ETA | BILL 3 | B03 | MELV | R00 | ACF07 | MEP | 270 | 35 | 594.87 | 65 | 10 |  |  |  |  |
| UP3TA09906C0 |  | CU-P3 ; Wall 2nd Coat (Transf. RM) | 8d | 2011-07-05 A | 2011-10-13 | UP3TA09905C0, UP3TA09908C0 | 95% | 0.4d | 2011-10-09 | 2011-10-18 | -27.5d | 55.5d | WALL PAINT [87 h]; WALL PAINT [108 m2]; Cost |  |  | UP3TA09906C0 |  |  | UP | C | 09 | P3 | TA | PA | 099 | 06 | SIS | BILL 3 | B03 | 02 | R00 | ACF06 |  | 099 |  |  |  |  |  |  |  |  |
| UP3TA09907C0 |  | CU-P3 ; Ceiling Prime & 1st Coat (Transf. RM) | 12d | 2011-07-05 A | 2011-07-20 A | UP3TA21106C0, UP3TA21107C0, UP3TA21108C0, UP3TA23011C0, UP3TA23012C0 | 100% |  | 2011-09-19 | 2011-10-03 |  |  | Cost |  |  | UP3TA09907C0 |  |  | UP | C | 09 | P3 | TA | PA | 099 | 07 | SIS | BILL 3 | B03 | 01 | R00 | ACF06 |  | 099 |  |  |  |  |  |  |  |  |
| UP3TA09908C0 |  | CU-P3 ; Ceiling Final Coat (Transf. RM) | 5d | 2011-07-05 A | 2011-07-20 A | UP3TA09907C0 | 100% |  | 2011-10-03 | 2011-10-09 |  |  | Cost |  |  | UP3TA09908C0 |  |  | UP | C | 09 | P3 | TA | PA | 099 | 08 | SIS | BILL 3 | B03 | 02 | R00 | ACF06 |  | 099 |  |  |  |  |  |  |  |  |
| UP3TA09602C0 |  | CU-P3 ; Floor Finishing (Transf. RM) | 12d | 2011-07-10 A | 2011-07-31 A | UP3TA08104C0 | 100% |  | 2011-08-22 | 2011-09-07 |  |  | ASSORTED FLOOR FINISH [536 h]; ASSORTED FLOOR FINISH [295 m2]; Cost |  |  | UP3TA09602C0 |  |  | UP | C | 09 | P3 | TA | FF | 096 | 02 | SIS | BILL 3 | B03 | 01 | R00 | ACF06 |  | FF |  |  |  |  |  |  |  |  |
| UP3TA21106C0 |  | CU-P3 ; Inst. Of Pipe - Fire Suppr. System (Transf. RM) | 18d | 2011-07-10 A | 2011-07-31 A | UP3TA23010C0 | 100% |  | 2011-08-03 | 2011-08-24 |  |  | MECHANICAL [4234.8 h]; Cost [289004 AED] | 289,003.78 | 289,003.78 | UP3TA21106C0 | 21110 |  | UP | C | 21 | P3 | TA | ME | 211 | 06 | ETA | BILL 3 | B03 | MFS | R00 | ACF04 | MEP | 211 | 35 |  |  |  |  |  |  |  |
| UP3TA21107C0 |  | CU-P3 ; Inst. Of Cylinders For Fire Suppr. - 2 Nos. (Transf. RM) | 8d | 2011-08-10 A | 2011-10-04 | UP3TA21106C0 | 95% | 0.4d | 2011-09-05 | 2011-09-14 | -29d | 0d | MECHANICAL [4234.8 h]; Cost [289004 AED] | 289,003.78 | 274,553.59 | UP3TA21107C0 | 21120 |  | UP | C | 21 | P3 | TA | ME | 211 | 07 | ETA | BILL 3 | B03 | MFS | R00 | ACF04 | MEP | 211 | 25 |  | 95 | 0 |  |  |  |  |
| UP3TA23011C0 |  | CU-P3 ; Inst. Of Vcd'S & Duct Conn. Works (Transf. RM) | 12d | 2011-08-10 A | 2011-10-08 | UP3TA23010C0 | 75% | 3d | 2011-09-05 | 2011-09-19 | -27.5d | 0d | MECHANICAL [87.6 h]; Cost [4756.4 AED] | 4,756.4 | 3,567.3 | UP3TA23011C0 | 23030 |  | UP | C | 23 | P3 | TA | ME | 230 | 11 | ETA | BILL 3 | B03 | MHV | R00 | ACF07 | MEP | 230 | 50 |  | 40 | 0 | 0 | 0 | 0 | 0 |
| UP3TA26003C0 |  | CU-P3 ; Termination Works To Transf.s (Transf. RM) | 14d | 2011-08-10 A | 2011-10-12 | UP3TA26002C0 | 40% | 8.4d | 2011-08-17 | 2011-09-05 | -33.8d | 49.2d | ELECTRICAL [259.2 h]; Cost [18867.6 AED] | 18,867.56 | 7,547.02 | UP3TA26003C0 | 26052 |  | UP | C | 26 | P3 | TA | ME | 260 | 03 | ETA | BILL 3 | B03 | MEL | R00 | ACF07 | MEP | 260 | 25 | 3398.14 | 30 | 0 | 0 | 0 | 0 | 0 |
| UP3TA27004C0 |  | CU-P3 ; Inst. Of Favp / Facp / FDCp Panels (Transf. RM) | 16d | 2011-08-10 A | 2011-10-12 | UP3TA26001C0 | 50% | 8d | 2011-09-10 | 2011-09-28 | -36.4d | 0d | Labor General [1.2 h]; Cost |  |  | UP3TA27004C0 | 27032 |  | UP | C | 27 | P3 | TA | ME | 270 | 04 | ETA | BILL 3 | B03 | MELV | R00 | ACF07 | MEP | 270 | 35 |  | 50 | 0 |  |  |  |  |
| UP3TA08103C0 |  | CU-P3 ; Door Frames (Transf. RM) | 18d | 2011-09-05 A | 2011-10-01 | UP3S104001C0, UP3S104002C0, A10280 FS+58d | 95% | 0.9d | 2011-09-17 | 2011-10-06 | -3.5d | 8.15d | ASSORTED DOORS [9 h]; Cost |  |  | UP3TA08103C0 |  |  | UP | C | 08 | P3 | TA | DO | 081 | 03 | SIS | BILL 3 | B03 | DF | R00 | ACF06 |  | 081 |  |  |  |  |  |  |  |  |
| UP3TA08104C0 |  | CU-P3 ; Doors (Transf. RM) | 12d | 2011-09-05 A | 2011-10-11 | UP3TA08103C0, UP3TA09905C0 | 95% | 0.6d | 2011-10-08 | 2011-10-20 | -11.65d | 0d | METAL DOORS [20 h]; METAL DOORS [2 no]; Cost |  |  | UP3TA08104C0 |  |  | UP | C | 08 | P3 | TA | DO | 081 | 04 | SIS | BILL 3 | B03 | DR | R00 | ACF06 |  | 081 |  |  |  |  |  |  |  |  |
| UP3TA21108C0 |  | CU-P3 ; Conn. Works To Cylinders (Transf. RM) | 12d | 2011-09-05 A | 2011-10-05 | UP3TA21107C0 | 95% | 0.6d | 2011-09-11 | 2011-09-25 | -26.1d | 0d | MECHANICAL [4234.8 h]; Cost [289004 AED] | 289,003.78 | 274,553.59 | UP3TA21108C0 | 21130 |  | UP | C | 21 | P3 | TA | ME | 211 | 08 | ETA | BILL 3 | B03 | MFS | R00 | ACF07 | MEP | 211 |  |  |  |  |  |  |  |  |
| UP3TA27003C0 |  | CU-P3 ; ELV Devices - Smk Detector / Pull Stn. / Spkrs (Transf. RM) | 12d | 2011-09-05 A | 2011-10-19 | UP3TA27002C0, UP3TA27005C0 SS | 50% | 6d | 2011-10-03 | 2011-10-17 | -36.4d | 46.6d | ELECTRICAL [153.6 h]; Cost [8391.32 AED] | 8,391.32 | 2,097.83 | UP3TA27003C0 | 27041 |  | UP | C | 27 | P3 | TA | ME | 270 | 03 | ETA | BILL 3 | B03 | MELV | R00 | ACF07 | MEP | 270 |  |  |  |  |  |  |  |  |
| UP3TA23012C0 |  | CU-P3 ; Inst. Of Diffusers (Transf. RM) | 10d | 2011-09-10 A | 2011-10-13 | UP3TA23011C0 | 50% | 5d | 2011-09-19 | 2011-09-29 | -27.5d | 0d | MECHANICAL [156 h]; Cost [8501 AED] | 8,501 | 4,250.5 | UP3TA23012C0 | 23050 |  | UP | C | 23 | P3 | TA | ME | 230 | 12 | ETA | BILL 3 | B03 | MHV | R00 | ACF04 | MEP | 230 |  |  |  |  |  |  |  |  |
| UP3TA21109C0 |  | CU-P3 ; Inst. Of Fire Extinguisher / Fhc (Transf. RM) | 6d | 2011-10-05 | 2011-10-12 | UP3TA21108C0 |  |  |  |  | -26.1d | 16.39d | MECHANICAL [166.8 h]; Cost |  |  | UP3TA21109C0 | 21160 |  | UP | C | 21 | P3 | TA | ME | 211 | 09 | ETA | BILL 3 | B03 | MFS | R00 | ACF04 | MEP | 211 |  |  |  |  |  |  |  |  |
| UP3TA27005C0 |  | CU-P3 ; Dressing, Glanding & Termin. Of Ctrl Pnl (Transf. RM) | 7d | 2011-10-12 | 2011-10-20 | UP3TA27004C0 |  |  |  |  | -36.4d | 0d | ELECTRICAL [259.2 h]; Cost |  |  | UP3TA27005C0 | 27050 |  | UP | C | 27 | P3 | TA | ME | 270 | 05 | ETA | BILL 3 | B03 | MELV | R00 | ACF07 | MEP | 270 |  |  |  |  |  |  |  |  |

| ID | WBS | Activity | Duration | Start | Finish | Predecessors | Complete | Remaining | Planned start | Planned finish | Total float | Free float | Resources | Cost | Actual cost | change id | DIVISION FOR ACTIVITY ID | RENZ % COMPLETE | July2011 Target% Complete | P_811 | P_711 | CCAD BUILDING(SET) | CCAD PHASE(SET) | CCAD DIVISION(SET) | CCAD FLOOR(SET) | CCAD ZONE(SET) | CCAD WORK(SET) | CCAD SECTION(SET) | CCAD SERIAL No.(SET) | CCAD RESPONSIBILITY(SET) | CCAD CBS(SET) | CCAD BILL(SET) | CCAD TAG(SET) | CCAD REV(SET) | CCADACF (SET) | CCAD CSA | CCAD SSCF | Claimed This Month | user_number8 | user_integer1 | user_integer2 | user_number7 |
| --- | --- | --- | --- | --- | --- | --- | --- | --- | --- | --- | --- | --- | --- | --- | --- | --- | --- | --- | --- | --- | --- | --- | --- | --- | --- | --- | --- | --- | --- | --- | --- | --- | --- | --- | --- | --- | --- | --- | --- | --- | --- | --- |
|  | 07 | **MAIN TRANSF. RM** |  | 2011-04-06 | 2011-10-26 |  |  |  |  |  |  |  |  |  |  |  |  |  |  |  |  |  |  |  |  |  |  |  |  |  |  |  |  |  |  |  |  |  |  |  |  |  |
| UP3MT27002C0 |  | CU-P3 ; Trunking & Conduiting Works For ELV Syss (Main Transf. RM) | 23d | 2011-04-06 A | 2011-10-13 | UP2S204003C0 FF | 50% | 11.5d | 2011-06-06 | 2011-07-03 | -38.5d | 0d | ELECTRICAL [52.8 h]; Cost [2874.8 AED] | 2,874.8 | 1,437.4 | UP3MT27002C0 | 27010 | 35 | 45 | 45 | 35 | UP | C | 27 | P3 | MT | ME | 270 | 02 | ETA | BILL 3 | B03 | MELV | R00 | ACF04 | MEP | 270 |  |  |  |  |  |
| UP3MT22001C0 |  | CU-P3 ; Oil Water Separator Outide Building (Main Transf. RM) | 12d | 2011-04-11 A | 2011-05-01 A | UP3MT26002C0 | 100% |  | 2011-07-21 | 2011-08-03 |  |  | Labor General [9.6 h]; Cost |  |  | UP3MT22001C0 | 22080 | 100 |  |  |  | UP | C | 22 | P3 | MT | ME | 220 | 01 | ETA | BILL 3 | B03 | MPL | R00 | ACF04 | MEP | 220 |  |  |  |  |  |
| UP3MT26005C0 |  | CU-P3 ; Inst. Of Back Boxes & Conduites On Wall (Main Transf. RM) | 8d | 2011-05-15 A | 2011-06-29 A | UP2S204002C0 FF, UP3MT27002C0 | 100% |  | 2011-07-21 | 2011-07-30 |  |  | ELECTRICAL [490.8 h]; Cost [6501.63 AED] | 6,501.63 | 6,501.63 | UP3MT26005C0 |  | 35 |  |  |  | UP | C | 26 | P3 | MT | ME | 260 | 05 | ETA | BILL 3 | B03 | MEL | R00 | ACF04 | MEP | 260 | 20163.75 |  |  |  |  |
| UP3MT09601C0 |  | CU-P3 ; Floor Finishing (Main Transf. RM) | 12d | 2011-06-01 A | 2011-06-28 A | UP3MT08102C0 | 100% |  | 2011-08-01 | 2011-08-15 |  |  | ASSORTED FLOOR FINISH [712 h]; ASSORTED FLOOR FINISH [394 m2]; Cost |  |  | UP3MT09601C0 |  |  |  |  |  | UP | C | 09 | P3 | MT | FF | 096 | 01 | SIS | BILL 3 | B03 | 01 | R00 | ACF06 |  | FF | 10319.03 |  |  |  |  |
| UP3MT09901C0 |  | CU-P3 ; Wall Prime & 1st Coat (Main Transf. RM) | 12d | 2011-06-11 A | 2011-10-01 | UP2S204003C0 | 95% | 0.6d | 2011-07-11 | 2011-07-25 | -15.9d | 0.3d | WALL PAINT [215 h]; WALL PAINT [267 m2]; Cost |  |  | UP3MT09901C0 |  |  |  |  |  | UP | C | 09 | P3 | MT | PA | 099 | 01 | SIS | BILL 3 | B03 | 01 | R00 | ACF06 |  | 099 | 7944.14 |  |  |  |  |
| UP3MT26001C0 |  | CU-P3 ; Inst. Of Transf.s - 3 Nos. (Main Transf. RM) | 24d | 2011-06-11 A | 2011-09-29 A | UP3MT26005C0, UP2S204003C0 | 100% |  | 2011-07-11 | 2011-08-08 |  |  | ELECTRICAL [9705.6 h]; Cost [5299200 AED] | 5,299,200 | 5,299,200 | UP3MT26001C0 | 26016 |  |  | 95 | 75 | UP | C | 26 | P3 | MT | ME | 260 | 01 | ETA | BILL 3 | B03 | MEL | R00 | ACF04 | MEP | 260 | 6147072 |  |  |  |  |
| UP3MT22002C0 |  | CU-P3 ; Ready - Storm/W Conn. - Main Net. Outside (Main Transf. RM) | 28d | 2011-06-14 A | 2011-06-30 A | UP3CS22001C0, UP3MT22001C0 | 100% |  | 2011-07-14 | 2011-08-16 |  |  | PLUMBING [709.2 h]; Cost [38735.7 AED] | 38,735.68 | 38,735.68 | UP3MT22002C0 | 22090 |  |  |  |  | UP | C | 22 | P3 | MT | ME | 220 | 02 | ETA | BILL 3 | B03 | MPL | R00 | ACF07 | MEP | 220 | 44932.8 |  |  |  |  |
| UP3MT26004C0 |  | CU-P3 ; Inst. Of Busbar & Conn. Works To Transf.s (Main Transf. RM) | 12d | 2011-07-04 A | 2011-07-26 A | UP3MT26001C0 SS, UP3MT26001C0 FF | 100% |  | 2011-08-03 | 2011-08-17 |  |  | ELECTRICAL [2347.2 h]; Cost [1249613 AED] | 1,249,613.35 | 1,249,613.35 | UP3MT26004C0 | 26063 |  | 30 |  |  | UP | C | 26 | P3 | MT | ME | 260 | 04 | ETA | BILL 3 | B03 | MEL | R00 | ACF04 | MEP | 260 |  |  |  |  |  |
| UP3MT09903C0 |  | CU-P3 ; Ceiling Prime & 1st Coat (Main Transf. RM) | 12d | 2011-07-10 A | 2011-07-31 A | UP3MT26004C0 | 100% |  | 2011-08-17 | 2011-09-03 |  |  | Cost |  |  | UP3MT09903C0 |  |  |  |  |  | UP | C | 09 | P3 | MT | PA | 099 | 03 | SIS | BILL 3 | B03 | 01 | R00 | ACF06 |  | 099 |  |  |  |  |  |
| UP3MT09904C0 |  | CU-P3 ; Ceiling Final Coat (Main Transf. RM) | 7d | 2011-07-10 A | 2011-07-31 A | UP3MT09903C0, UP3MT27004C0 | 100% |  | 2011-09-03 | 2011-09-11 |  |  | Cost |  |  | UP3MT09904C0 |  |  |  |  |  | UP | C | 09 | P3 | MT | PA | 099 | 04 | SIS | BILL 3 | B03 | 02 | R00 | ACF06 |  | 099 |  |  |  |  |  |
| UP3MT26002C0 |  | CU-P3 ; Trnk & Cnduit - Lighting, Pwr & Emerg. (Main Transf. RM) | 14d | 2011-08-10 A | 2011-10-13 | UP3MT27002C0 FF, UP3MT27002C0 SS+6d | 95% | 0.7d | 2011-08-01 | 2011-08-17 | -38.5d | 0d | ELECTRICAL [490.8 h]; Cost [6501.63 AED] | 6,501.63 | 6,176.55 | UP3MT26002C0 | 26020 |  | 45 | 75 | 0 | UP | C | 26 | P3 | MT | ME | 260 | 02 | ETA | BILL 3 | B03 | MEL | R00 | ACF04 | MEP | 260 | 3102.12 | 0 | 0 | 0 | 0 |
| UP3MT27003C0 |  | CU-P3 ; Wiring Works For ELV Systems (Main Transf. RM) | 20d | 2011-08-10 A | 2011-10-17 | UP3MT27002C0 SS+18d | 25% | 15d | 2011-07-31 | 2011-08-22 | -17d | 0.4d | ELECTRICAL [46.8 h]; Cost [2549.35 AED] | 2,549.35 | 637.34 | UP3MT27003C0 | 27020 |  | 35 | 20 | 0 | UP | C | 27 | P3 | MT | ME | 270 | 03 | ETA | BILL 3 | B03 | MELV | R00 | ACF07 | MEP | 270 |  |  |  |  |  |
| UP3MT08101C0 |  | CU-P3 ; Door Frames (Main Transf. RM) | 18d | 2011-09-05 A | 2011-10-01 | UP2S204002C0, A10280 FS+58d | 95% | 0.9d | 2011-09-17 | 2011-10-06 | -16.2d | 0d | ASSORTED DOORS [12 h]; Cost |  |  | UP3MT08101C0 |  |  |  |  |  | UP | C | 08 | P3 | MT | DO | 081 | 01 | SIS | BILL 3 | B03 | DF | R00 | ACF06 |  | 081 |  |  |  |  |  |
| UP3MT08102C0 |  | CU-P3 ; Doors (Main Transf. RM) | 6d | 2011-09-05 A | 2011-10-02 | UP3MT08101C0, UP3MT09901C0 | 95% | 0.3d | 2011-10-08 | 2011-10-13 | -16.2d | 0d | METAL DOORS [20 h]; METAL DOORS [2 no]; Cost |  |  | UP3MT08102C0 |  |  |  |  |  | UP | C | 08 | P3 | MT | DO | 081 | 02 | SIS | BILL 3 | B03 | DR | R00 | ACF06 |  | 081 |  |  |  |  |  |
| UP3MT26003C0 |  | CU-P3 ; Light Fittings / Switches / Sockets (Main Transf. RM) | 8d | 2011-09-05 A | 2011-10-18 | UP3MT26004C0, UP3MT27001C0 | 60% | 3.2d | 2011-10-02 | 2011-10-11 | -30.4d | 0d | ELECTRICAL [357.6 h]; Cost [19522.4 AED] | 19,522.4 | 11,713.44 | UP3MT26003C0 | 26061 |  |  |  |  | UP | C | 26 | P3 | MT | ME | 260 | 03 | ETA | BILL 3 | B03 | MEL | R00 | ACF07 | MEP | 260 |  |  |  |  |  |
| UP3MT27001C0 |  | CU-P3 ; Wiring Works For Lighting, Pwr & Emerg. (Main Transf. RM) | 14d | 2011-09-05 A | 2011-10-15 | UP3MT26002C0 | 95% | 0.7d | 2011-09-15 | 2011-10-02 | -30.4d | 0d | ELECTRICAL [740.4 h]; Cost [10136.5 AED] | 10,136.46 | 9,629.64 | UP3MT27001C0 | 27021 |  | 20 |  |  | UP | C | 27 | P3 | MT | ME | 270 | 01 | ETA | BILL 3 | B03 | MELV | R00 | ACF07 | MEP | 270 | 4599.69 |  |  |  |  |
| UP3MT27004C0 |  | CU-P3 ; ELV Dev.- Sensors, Smoke Detector / Spkrs (Main Transf. RM) | 7d | 2011-09-05 A | 2011-10-18 | UP3MT26003C0 FF, UP3MT26003C0 SS, UP3MT27003C0 FF | 57% | 3d | 2011-10-02 | 2011-10-10 | -17.4d | 0d | ELECTRICAL [153.6 h]; Cost [8391.32 AED] | 8,391.32 | 2,097.83 | UP3MT27004C0 | 27040 |  |  |  |  | UP | C | 27 | P3 | MT | ME | 270 | 04 | ETA | BILL 3 | B03 | MELV | R00 | ACF07 | MEP | 270 |  |  |  |  |  |
| UP3MT21101C0 |  | CU-P3 ; Inst. Of Fire Extinguishers / Fhc (Main Transf. RM) | 11d | 2011-10-13 | 2011-10-26 | UP3MT22002C0 FS+2d |  |  |  |  | -38.5d | 0.9d | MECHANICAL [166.8 h]; Cost |  |  | UP3MT21101C0 | 21160 |  |  |  |  | UP | C | 21 | P3 | MT | ME | 211 | 01 | ETA | BILL 3 | B03 | MFS | R00 | ACF04 | MEP | 211 |  |  |  |  |  |
| UP3MT09902C0 |  | CU-P3 ; Wall 2nd Coat (Main Transf. RM) | 6d | 2011-10-18 | 2011-10-25 | UP3MT09601C0, UP3MT09601C0 FF, UP3MT09901C0, UP3MT21101C0 SS+3d, UP3MT26003C0 |  |  |  |  | -30.4d | 52.6d | WALL PAINT [116 h]; WALL PAINT [144 m2]; Cost |  |  | UP3MT09902C0 |  |  |  |  |  | UP | C | 09 | P3 | MT | PA | 099 | 02 | SIS | BILL 3 | B03 | 02 | R00 | ACF06 |  | 099 |  |  |  |  |  |
|  | 08 | **MAIN HV ELEC. RM** |  | 2011-04-25 | 2011-11-01 |  |  |  |  |  |  |  |  |  |  |  |  |  |  |  |  |  |  |  |  |  |  |  |  |  |  |  |  |  |  |  |  |  |  |  |  |  |
| UP3ME27001C0 |  | CU-P3 ; Trunking & Conduiting Works For ELV Syss (Main HV Elec. Rm) | 31d | 2011-04-25 A | 2011-10-02 | UP3ME26007C0, UP3S104003C0 | 95% | 1.55d | 2011-05-28 | 2011-07-03 | -31.35d | 0d | ELECTRICAL [52.8 h]; Cost [2874.8 AED] | 2,874.8 | 2,731.06 | UP3ME27001C0 | 27010 | 25 | 50 |  |  | UP | C | 27 | P3 | ME | ME | 270 | 01 | ETA | BILL 3 | B03 | MELV | R00 | ACF04 | MEP | 270 | 663.2 |  |  |  |  |
| UP3ME26007C0 |  | CU-P3 ; Inst. Of Back Boxes & Conduites On Wall (Main HV Elec. Rm) | 8d | 2011-04-26 A | 2011-06-06 A | UP3S104003C0 | 100% |  | 2011-04-30 | 2011-05-09 |  |  | ELECTRICAL [490.8 h]; Cost [6501.63 AED] | 6,501.63 | 6,501.63 | UP3ME26007C0 |  | 35 |  |  |  | UP | C | 26 | P3 | ME | ME | 260 | 07 | ETA | BILL 3 | B03 | MEL | R00 | ACF04 | MEP | 260 | 20163.81 |  |  |  |  |
| UP3ME26005C0 |  | CU-P3 ; Trnk & Conduits For Light / Pwr / Emerg. (Main HV Elec. Rm) | 23d | 2011-05-15 A | 2011-10-06 | UP3ME27001C0 SS+14d | 75% | 5.75d | 2011-06-13 | 2011-07-11 | -31.35d | 0d | ELECTRICAL [490.8 h]; Cost [6501.63 AED] | 6,501.63 | 4,876.22 | UP3ME26005C0 | 26020 | 25 | 40 | 65 | 60 | UP | C | 26 | P3 | ME | ME | 260 | 05 | ETA | BILL 3 | B03 | MEL | R00 | ACF04 | MEP | 260 | 1551.06 | 0 | 0 | 0 | 0 |
| UP3ME26001C0 |  | CU-P3 ; ATS Pnls & Buscouplers (MVSN Pnl - 3 No) (Main HV Elec. Rm) | 12d | 2011-05-17 A | 2011-10-03 | UP3ME26006C0 | 95% | 0.6d | 2011-07-10 | 2011-07-24 | -20.6d | 2.6d | ELECTRICAL [13566 h]; Cost [7407426 AED] | 7,407,426 | 7,037,054.7 | UP3ME26001C0 | 26060 | 75 | 95 | 95 | 80 | UP | C | 26 | P3 | ME | ME | 260 | 01 | ETA | BILL 3 | B03 | MEL | R00 | ACF04 | MEP | 260 | 429630.71 |  |  |  |  |
| UP3ME09911C0 |  | CU-P3 ; Ceiling Prime & 1st Coat (Main HV Elec. Rm) | 12d | 2011-06-10 A | 2011-07-20 A | UP3ME23014C0, UP3ME23015C0 | 100% |  | 2011-08-23 | 2011-09-08 |  |  | Cost |  |  | UP3ME09911C0 |  |  |  |  |  | UP | C | 09 | P3 | ME | PA | 099 | 11 | SIS | BILL 3 | B03 | 01 | R00 | ACF06 |  | 099 |  |  |  |  |  |
| UP3ME09603C0 |  | CU-P3 ; Floor Finishing (Main HV Elec. Rm) | 12d | 2011-06-14 A | 2011-06-29 A | UP3ME08106C0 | 100% |  | 2011-08-28 | 2011-09-13 |  |  | ASSORTED FLOOR FINISH [888 h]; ASSORTED FLOOR FINISH [492 m2]; Cost |  |  | UP3ME09603C0 |  |  |  |  |  | UP | C | 09 | P3 | ME | FF | 096 | 03 | SIS | BILL 3 | B03 | 01 | R00 | ACF06 |  | FF | 12424.95 |  |  |  |  |
| UP3ME23013C0 |  | CU-P3 ; Inst. Of Duct Supp.s & Ducting (Main HV Elec. Rm) | 22d | 2011-07-04 A | 2011-10-06 | UP3ME26005C0 SS+12d, UP3ME26005C0 FF | 95% | 1.1d | 2011-07-31 | 2011-08-24 | -31.35d | 0d | MECHANICAL [1245.6 h]; Cost [37738.7 AED] | 37,738.68 | 35,851.75 | UP3ME23013C0 | 23015 |  | 30 | 60 | 50 | UP | C | 23 | P3 | ME | ME | 230 | 13 | ETA | BILL 3 | B03 | MHV | R00 | ACF04 | MEP | 230 |  | 0 | 0 | 0 | 0 |
| UP3ME09909C0 |  | CU-P3 ; Wall Prime & 1st Coat (Main HV Elec. Rm) | 8d | 2011-07-05 A | 2011-07-20 A | UP3ME21110C0, UP3ME26002C0, UP3ME26006C0, UP3ME27002C0 | 100% |  | 2011-09-06 | 2011-09-15 |  |  | WALL PAINT [268 h]; WALL PAINT [334 m2]; Cost |  |  | UP3ME09909C0 |  |  |  |  |  | UP | C | 09 | P3 | ME | PA | 099 | 09 | SIS | BILL 3 | B03 | 01 | R00 | ACF06 |  | 099 |  |  |  |  |  |
| UP3ME09910C0 |  | CU-P3 ; Wall 2nd Coat (Main HV Elec. Rm) | 8d | 2011-07-05 A | 2011-07-20 A | UP3ME09603C0, UP3ME09909C0, UP3ME09912C0, UP3ME21113C0, UP3ME26003C0, UP3ME26004C0 | 100% |  | 2011-10-02 | 2011-10-11 |  |  | WALL PAINT [145 h]; WALL PAINT [180 m2]; Cost |  |  | UP3ME09910C0 |  |  |  |  |  | UP | C | 09 | P3 | ME | PA | 099 | 10 | SIS | BILL 3 | B03 | 02 | R00 | ACF06 |  | 099 |  |  |  |  |  |
| UP3ME09912C0 |  | CU-P3 ; Ceiling Final Coat (Main HV Elec. Rm) | 5d | 2011-07-05 A | 2011-07-20 A | UP3ME09911C0, UP3ME21111C0, UP3ME21112C0, UP3ME27003C0 | 100% |  | 2011-09-26 | 2011-10-02 |  |  | Cost |  |  | UP3ME09912C0 |  |  |  |  |  | UP | C | 09 | P3 | ME | PA | 099 | 12 | SIS | BILL 3 | B03 | 02 | R00 | ACF06 |  | 099 |  |  |  |  |  |
| UP3ME21110C0 |  | CU-P3 ; Inst. Of Pipe - Fire Suppr. System (Main HV Elec. Rm) | 24d | 2011-07-10 A | 2011-10-06 | UP3ME23013C0 SS+12d | 95% | 1.2d | 2011-07-14 | 2011-08-11 | -31.35d | 0d | MECHANICAL [4234.8 h]; Cost [289004 AED] | 289,003.78 | 274,553.59 | UP3ME21110C0 | 21110 |  | 45 | 95 | 45 | UP | C | 21 | P3 | ME | ME | 211 | 10 | ETA | BILL 3 | B03 | MFS | R00 | ACF04 | MEP | 211 | 16762.22 |  |  |  |  |
| UP3ME26002C0 |  | CU-P3 ; Cable Pulling Works (Main HV Elec. Rm) | 16d | 2011-07-10 A | 2011-10-06 | UP3ME26006C0 | 80% | 3.2d | 2011-07-12 | 2011-07-31 | -23.2d | 0d | ELECTRICAL [8728.8 h]; Cost [551876 AED] | 551,876.2 | 441,500.96 | UP3ME26002C0 | 26040 |  | 20 |  |  | UP | C | 26 | P3 | ME | ME | 260 | 02 | ETA | BILL 3 | B03 | MEL | R00 | ACF07 | MEP | 260 |  | 0 | 0 | 0 | 0 |
| UP3ME21111C0 |  | CU-P3 ; Cylinders For Fire Suppr. - 4 Nos. (Main HV Elec. Rm) | 10d | 2011-08-10 A | 2011-10-08 | UP3ME21110C0, UP3TA21107C0 | 95% | 0.5d | 2011-09-14 | 2011-09-26 | -31.35d | 0d | MECHANICAL [4234.8 h]; Cost [289004 AED] | 289,003.78 | 274,553.59 | UP3ME21111C0 | 21120 |  |  | 95 | 0 | UP | C | 21 | P3 | ME | ME | 211 | 11 | ETA | BILL 3 | B03 | MFS | R00 | ACF04 | MEP | 211 |  |  |  |  |  |
| UP3ME23014C0 |  | CU-P3 ; Inst. Of Vcd'S & Duct Conn. Works (Main HV Elec. Rm) | 24d | 2011-08-10 A | 2011-10-06 | UP3ME23013C0 SS+12d, UP3ME23013C0 FF, UP3GN03300R02 FF | 95% | 1.2d | 2011-08-08 | 2011-09-06 | -8.85d | 0d | MECHANICAL [87.6 h]; Cost [4756.4 AED] | 4,756.4 | 4,518.58 | UP3ME23014C0 | 23030 |  | 30 | 25 | 0 | UP | C | 23 | P3 | ME | ME | 230 | 14 | ETA | BILL 3 | B03 | MHV | R00 | ACF07 | MEP | 230 |  | 0 | 0 | 0 | 0 |
| UP3ME26006C0 |  | CU-P3 ; Wiring For Lighting / Pwr / Emerg. (Main HV Elec. Rm) | 10d | 2011-08-10 A | 2011-10-02 | UP3ME26005C0 SS+12d | 80% | 2d | 2011-07-31 | 2011-08-10 | -23.2d | 0d | ELECTRICAL [1822.8 h]; Cost [10136.5 AED] | 10,136.46 | 8,109.17 | UP3ME26006C0 | 26041 |  | 20 | 10 | 0 | UP | C | 26 | P3 | ME | ME | 260 | 06 | ETA | BILL 3 | B03 | MEL | R00 | ACF07 | MEP | 260 |  | 0 | 0 | 0 | 0 |
| UP3ME27002C0 |  | CU-P3 ; Wiring Works For ELV Systems (Main HV Elec. Rm) | 32d | 2011-08-10 A | 2011-10-27 | UP3ME27001C0 | 30% | 22.4d | 2011-08-28 | 2011-10-05 | -29.95d | 0d | ELECTRICAL [46.8 h]; Cost [2549.35 AED] | 2,549.35 | 764.81 | UP3ME27002C0 | 27020 |  | 20 | 10 | 0 | UP | C | 27 | P3 | ME | ME | 270 | 02 | ETA | BILL 3 | B03 | MELV | R00 | ACF07 | MEP | 270 |  | 0 | 0 | 0 | 0 |
| UP3ME08105C0 |  | CU-P3 ; Door Frames (Main HV Elec. Rm) | 18d | 2011-09-05 A | 2011-10-01 | UP3S104001C0, A10280 FS+58d | 95% | 0.9d | 2011-09-17 | 2011-10-06 | -3.15d | 23.05d | ASSORTED DOORS [15 h]; Cost |  |  | UP3ME08105C0 |  |  |  |  |  | UP | C | 08 | P3 | ME | DO | 081 | 05 | SIS | BILL 3 | B03 | DF | R00 | ACF06 |  | 081 |  |  |  |  |  |
| UP3ME08106C0 |  | CU-P3 ; Doors (Main HV Elec. Rm) | 5d | 2011-09-05 A | 2011-10-29 | UP3ME08105C0, UP3ME09909C0 SS+10d | 95% | 0.25d | 2011-10-08 | 2011-10-13 | -26.2d | 0d | METAL DOORS [30 h]; METAL DOORS [3 no]; Cost |  |  | UP3ME08106C0 |  |  |  |  |  | UP | C | 08 | P3 | ME | DO | 081 | 06 | SIS | BILL 3 | B03 | DR | R00 | ACF06 |  | 081 |  |  |  |  |  |
| UP3ME21112C0 |  | CU-P3 ; Conn. Works To Cylinders (Main HV Elec. Rm) | 8d | 2011-09-05 A | 2011-10-08 | UP3ME21111C0 | 95% | 0.4d | 2011-09-11 | 2011-09-20 | -31.35d | 0d | MECHANICAL [4234.8 h]; Cost [289004 AED] | 289,003.78 | 274,553.59 | UP3ME21112C0 | 21130 |  |  |  |  | UP | C | 21 | P3 | ME | ME | 211 | 12 | ETA | BILL 3 | B03 | MFS | R00 | ACF07 | MEP | 211 |  |  |  |  |  |
| UP3ME23015C0 |  | CU-P3 ; Inst. Of Diffusers (Main HV Elec. Rm) | 10d | 2011-09-05 A | 2011-10-08 | UP3ME23014C0 | 90% | 1d | 2011-09-22 | 2011-10-03 | -8.85d | 0d | MECHANICAL [156 h]; Cost [8501 AED] | 8,501 | 7,650.9 | UP3ME23015C0 | 23050 |  |  |  |  | UP | C | 23 | P3 | ME | ME | 230 | 15 | ETA | BILL 3 | B03 | MHV | R00 | ACF04 | MEP | 230 |  |  |  |  |  |
| UP3ME26004C0 |  | CU-P3 ; Light Fittings / Sockets / Switches (Main HV Elec. Rm) | 10d | 2011-09-05 A | 2011-10-25 | UP3ME26003C0, UP3ME26006C0 | 80% | 2d | 2011-10-02 | 2011-10-13 | -23.2d | 6.75d | ELECTRICAL [357.6 h]; Cost [19522.4 AED] | 19,522.4 | 15,617.92 | UP3ME26004C0 | 26061 |  |  |  |  | UP | C | 26 | P3 | ME | ME | 260 | 04 | ETA | BILL 3 | B03 | MEL | R00 | ACF07 | MEP | 260 |  |  |  |  |  |
| UP3ME27003C0 |  | CU-P3 ; ELV Dev.- Smk Detector / Pull Stn./ Spkrs (Main HV Elec. Rm) | 12d | 2011-09-05 A | 2011-11-01 | UP3ME27002C0 | 67% | 4d | 2011-10-08 | 2011-10-22 | -29.95d | 0d | ELECTRICAL [153.6 h]; Cost [8391.32 AED] | 8,391.32 | 2,097.83 | UP3ME27003C0 | 27041 |  |  |  |  | UP | C | 27 | P3 | ME | ME | 270 | 03 | ETA | BILL 3 | B03 | MELV | R00 | ACF07 | MEP | 270 |  |  |  |  |  |
| UP3ME26003C0 |  | CU-P3 ; Glanding & Termination Works To Panels (Main HV Elec. Rm) | 14d | 2011-10-06 | 2011-10-23 | UP3ME26001C0, UP3ME26002C0 |  |  |  |  | -23.2d | 0d | ELECTRICAL [259.2 h]; Cost |  |  | UP3ME26003C0 | 26051 |  |  |  |  | UP | C | 26 | P3 | ME | ME | 260 | 03 | ETA | BILL 3 | B03 | MEL | R00 | ACF07 | MEP | 260 |  |  |  |  |  |
| UP3ME21113C0 |  | CU-P3 ; Inst. Of Fire Extinguisher / Fhc (Main HV Elec. Rm) | 9d | 2011-10-08 | 2011-10-18 | UP3ME21112C0 SS |  |  |  |  | -31.35d | 11.14d | MECHANICAL [166.8 h]; Cost |  |  | UP3ME21113C0 | 21160 |  |  |  |  | UP | C | 21 | P3 | ME | ME | 211 | 13 | ETA | BILL 3 | B03 | MFS | R00 | ACF04 | MEP | 211 |  |  |  |  |  |

| ID | WBS | Activity | Duration | Start | Finish | Predecessors | Complete | Remaining | Planned start | Planned finish | Total float | Free float | Resources | Cost | Actual cost | user_number8 | user_integer1 | user_integer2 | user_number7 | change id | RENZ % COMPLETE | July2011 Target% Complete | Claimed This Month | CCAD BUILDING(SET) | CCAD PHASE(SET) | CCAD DIVISION(SET) | CCAD FLOOR(SET) | CCAD ZONE(SET) | CCAD WORK(SET) | CCAD SECTION(SET) | CCAD SERIAL No.(SET) | CCAD RESPONSIBILITY(SET) | CCAD CBS(SET) | CCAD BILL(SET) | CCAD TAG(SET) | CCAD REV(SET) | CCADACF (SET) | CCAD CSA | CCAD SSCF | DIVISION FOR ACTIVITY ID | P_811 | P_711 |
| --- | --- | --- | --- | --- | --- | --- | --- | --- | --- | --- | --- | --- | --- | --- | --- | --- | --- | --- | --- | --- | --- | --- | --- | --- | --- | --- | --- | --- | --- | --- | --- | --- | --- | --- | --- | --- | --- | --- | --- | --- | --- | --- |
|  | 09 | **HV SWITCH GEAR RM** |  | 2011-05-15 | 2011-11-15 |  |  |  |  |  |  |  |  |  |  |  |  |  |  |  |  |  |  |  |  |  |  |  |  |  |  |  |  |  |  |  |  |  |  |  |  |  |
| UP3SG26008C0 |  | CU-P3 ; Inst. Of Back Boxes & Conduites On Wall (HV Switch Gear RM) | 8d | 2011-05-15 A | 2011-10-01 | UGLS203301C0 FS+18d, UGLS203302C0, UP3S204003C0 | 90% | 0.8d | 2011-07-16 | 2011-07-24 | -40.73d | 0d | ELECTRICAL [2090.4 h]; Cost [6501.63 AED] | 6,501.63 | 5,851.47 | 0 | 0 | 0 | 0 | UP3SG26008C0 | 35 | 95 | 76449.22 | UP | C | 26 | P3 | SG | ME | 260 | 08 | ETA | BILL 3 | B03 | MEL | R00 | ACF04 | MEP | 260 |  |  |  |
| UP3SG09901C0 |  | CU-P3 ; Wall Prime & 1st Coat (HV Switch Gear RM) | 12d | 2011-06-09 A | 2011-07-20 A | UP3SG27001C0, UP3SG27003C0 | 100% |  | 2011-08-09 | 2011-08-22 |  |  | WALL PAINT [161 h]; WALL PAINT [200 m2]; Cost |  |  |  |  |  |  | UP3SG09901C0 |  |  | 6002.24 | UP | C | 09 | P3 | SG | PA | 099 | 01 | SIS | BILL 3 | B03 | 01 | R00 | ACF06 |  | 099 |  |  |  |
| UP3SG26002C0 |  | CU-P3 ; Inst. Of 22 KV Panels - 13 Nos.(3 Sets) (HV Switch Gear RM) | 19.88d | 2011-06-14 A | 2011-10-01 | UGLS203301C0 FS+18d, UGLS203302C0, UP3S204003C0 | 95% | 0.99d | 2011-06-21 | 2011-07-14 | -37.49d | 0d | ELECTRICAL [7474.8 h]; Cost [4081240 AED] | 4,081,239.6 | 3,877,177.62 |  |  |  |  | UP3SG26002C0 |  |  | 4734239.04 | UP | C | 26 | P3 | SG | ME | 260 | 02 | ETA | BILL 3 | B03 | MEL | R00 | ACF04 | MEP | 260 | 26060 |  |  |
| UP3SG26005C0 |  | CU-P3 ; Inst. Of Busbar & Conn. Works To Panels (HV Switch Gear RM) | 23.88d | 2011-06-14 A | 2011-06-30 A | UP3SG26002C0 | 100% |  | 2011-07-16 | 2011-08-11 |  |  | ELECTRICAL [2347.2 h]; Cost [1249613 AED] | 1,249,613.35 | 1,249,613.35 |  |  |  |  | UP3SG26005C0 |  |  | 1473506.64 | UP | C | 26 | P3 | SG | ME | 260 | 05 | ETA | BILL 3 | B03 | MEL | R00 | ACF04 | MEP | 260 | 26063 |  |  |
| UP3SG26006C0 |  | CU-P3 ; Inst. Of Copper Tape (HV Switch Gear RM) | 9.88d | 2011-06-21 A | 2011-10-22 | UP3SG27001C0 | 50% | 4.94d | 2011-08-01 | 2011-08-11 | -33.67d | 3.83d | ELECTRICAL [3754.8 h]; Cost [279946 AED] | 279,945.85 | 139,972.92 | 0 | 0 | 0 | 0 | UP3SG26006C0 |  | 25 | 61396.11 | UP | C | 26 | P3 | SG | ME | 260 | 06 | ETA | BILL 3 | B03 | MEL | R00 | ACF04 | MEP | 260 | 26031 | 35 | 20 |
| UP3SG27001C0 |  | CU-P3 ; Wiring Works For Lighting, Pwr & Emerg. (HV Switch Gear RM) | 14d | 2011-06-21 A | 2011-10-16 | UP3SG26003C0 | 80% | 2.8d | 2011-07-16 | 2011-07-31 | -33.67d | 0d | ELECTRICAL [740.4 h]; Cost [10136.5 AED] | 10,136.46 | 8,109.17 | 0 | 0 | 0 | 0 | UP3SG27001C0 |  | 50 | 22998.45 | UP | C | 27 | P3 | SG | ME | 270 | 01 | ETA | BILL 3 | B03 | MELV | R00 | ACF07 | MEP | 270 | 27021 |  |  |
| UP3SG27002C0 |  | CU-P3 ; Trnk & Conduiting Works For ELV Syss (HV Switch Gear RM) | 19.88d | 2011-06-21 A | 2011-10-12 | UP3SG26008C0 SS | 45% | 10.93d | 2011-06-21 | 2011-07-14 | -40.73d | 0d | ELECTRICAL [52.8 h]; Cost [2874.8 AED] | 2,874.8 | 1,293.66 | 0 | 0 | 0 | 0 | UP3SG27002C0 |  | 25 | 497.43 | UP | C | 27 | P3 | SG | ME | 270 | 02 | ETA | BILL 3 | B03 | MELV | R00 | ACF04 | MEP | 270 | 27010 | 30 | 15 |
| UP3SG26003C0 |  | CU-P3 ; Trnk & Cnduit - Lighting, Pwr & Emerg. (HV Switch Gear RM) | 16.88d | 2011-06-25 A | 2011-10-12 | UP3SG27002C0 FF, UP3SG27002C0 SS | 80% | 3.38d | 2011-06-25 | 2011-07-14 | -40.73d | 0d | ELECTRICAL [490.8 h]; Cost [6501.63 AED] | 6,501.63 | 5,201.3 | 0 | 0 | 0 | 0 | UP3SG26003C0 |  | 60 | 15510.58 | UP | C | 26 | P3 | SG | ME | 260 | 03 | ETA | BILL 3 | B03 | MEL | R00 | ACF04 | MEP | 260 | 26020 |  |  |
| UP3SG09902C0 |  | CU-P3 ; Wall 2nd Coat (HV Switch Gear RM) | 12d | 2011-07-05 A | 2011-07-20 A | UP3SG09901C0, UP3SG26004C0 | 100% |  | 2011-08-27 | 2011-09-12 |  |  | WALL PAINT [87 h]; WALL PAINT [108 m2]; Cost |  |  |  |  |  |  | UP3SG09902C0 |  |  |  | UP | C | 09 | P3 | SG | PA | 099 | 02 | SIS | BILL 3 | B03 | 02 | R00 | ACF06 |  | 099 |  |  |  |
| UP3SG09903C0 |  | CU-P3 ; Ceiling Prime & 1st Coat (HV Switch Gear RM) | 15d | 2011-07-05 A | 2011-07-20 A | UP3SG21102C0, UP3SG21103C0 | 100% |  | 2011-09-10 | 2011-09-27 |  |  | Cost |  |  |  |  |  |  | UP3SG09903C0 |  |  |  | UP | C | 09 | P3 | SG | PA | 099 | 03 | SIS | BILL 3 | B03 | 01 | R00 | ACF06 |  | 099 |  |  |  |
| UP3SG09904C0 |  | CU-P3 ; Ceiling Final Coat (HV Switch Gear RM) | 7d | 2011-07-05 A | 2011-07-20 A | UP3SG09903C0, UP3SG27004C0 | 100% |  | 2011-09-27 | 2011-10-05 |  |  | Cost |  |  |  |  |  |  | UP3SG09904C0 |  |  |  | UP | C | 09 | P3 | SG | PA | 099 | 04 | SIS | BILL 3 | B03 | 02 | R00 | ACF06 |  | 099 |  |  |  |
| UP3SG09601C0 |  | CU-P3 ; Floor Finishing (HV Switch Gear RM) | 10d | 2011-07-12 A | 2011-10-29 | UP3SG09902C0 | 95% | 0.49d | 2011-09-25 | 2011-10-06 | -33.99d | 1.5d | ASSORTED FLOOR FINISH [536 h]; ASSORTED FLOOR FINISH [295 m2]; Cost |  |  |  |  |  |  | UP3SG09601C0 |  |  |  | UP | C | 09 | P3 | SG | FF | 096 | 01 | SIS | BILL 3 | B03 | 01 | R00 | ACF06 |  | FF |  | 95 | 50 |
| UP3SG21101C0 |  | CU-P3 ; Inst. Of Pipe - Fire Suppression System (HV Switch Gear RM) | 21d | 2011-08-10 A | 2011-10-16 | UP3SG26003C0 | 90% | 2.1d | 2011-08-22 | 2011-09-18 | -40.73d | 0d | MECHANICAL [4234.8 h]; Cost [289004 AED] | 289,003.78 | 260,103.4 | 0 | 0 | 0 | 0 | UP3SG21101C0 |  | 30 | 16762.22 | UP | C | 21 | P3 | SG | ME | 211 | 01 | ETA | BILL 3 | B03 | MFS | R00 | ACF04 | MEP | 211 | 21110 | 75 | 0 |
| UP3SG21102C0 |  | CU-P3 ; Cylinders - Fire Suppr. System - 2 Nos. (HV Switch Gear RM) | 7d | 2011-08-10 A | 2011-10-16 | UP3SG21101C0 | 95% | 0.35d | 2011-09-18 | 2011-09-26 | -40.73d | 0d | MECHANICAL [4234.8 h]; Cost [289004 AED] | 289,003.78 | 274,553.59 |  |  |  |  | UP3SG21102C0 |  |  |  | UP | C | 21 | P3 | SG | ME | 211 | 02 | ETA | BILL 3 | B03 | MFS | R00 | ACF04 | MEP | 211 | 21120 | 95 | 0 |
| UP3SG08101C0 |  | CU-P3 ; Door Frames (HV Switch Gear RM) | 6d | 2011-09-05 A | 2011-10-01 | UGLS203301C0 FS+18d, UGLS203302C0, UP3S204003C0, A10280 FS+58d | 95% | 0.3d | 2011-09-17 | 2011-09-22 | -15.6d | 22.63d | ASSORTED DOORS [9 h]; Cost |  |  |  |  |  |  | UP3SG08101C0 |  |  |  | UP | C | 08 | P3 | SG | DO | 081 | 01 | SIS | BILL 3 | B03 | DF | R00 | ACF06 |  | 081 |  |  |  |
| UP3SG08102C0 |  | CU-P3 ; Doors (HV Switch Gear RM) | 6d | 2011-09-05 A | 2011-10-27 | UP3SG08101C0, UP3SG09901C0 | 95% | 0.3d | 2011-10-01 | 2011-10-08 | -38.23d | 0d | METAL DOORS [20 h]; METAL DOORS [2 no]; Cost |  |  |  |  |  |  | UP3SG08102C0 |  |  |  | UP | C | 08 | P3 | SG | DO | 081 | 02 | SIS | BILL 3 | B03 | DR | R00 | ACF06 |  | 081 |  |  |  |
| UP3SG21103C0 |  | CU-P3 ; Conn. Works To Cylinders (HV Switch Gear RM) | 7d | 2011-09-05 A | 2011-10-16 | UP3SG21102C0 | 95% | 0.35d | 2011-09-24 | 2011-10-02 | -40.73d | 0d | MECHANICAL [4234.8 h]; Cost [289004 AED] | 289,003.78 | 274,553.59 |  |  |  |  | UP3SG21103C0 |  |  |  | UP | C | 21 | P3 | SG | ME | 211 | 03 | ETA | BILL 3 | B03 | MFS | R00 | ACF07 | MEP | 211 | 21130 |  |  |
| UP3SG26001C0 |  | CU-P3 ; 125V DC Ctrl Stn Batteries - 3 No (HV Switch Gear RM) | 10d | 2011-09-05 A | 2011-10-10 | UP3SG26002C0 | 25% | 7.5d | 2011-09-03 | 2011-09-13 | -37.49d | 0d | Labor General [1.2 h]; Cost [1393600 AED] | 1,393,600.27 | 348,400.07 |  |  |  |  | UP3SG26001C0 |  | 35 |  | UP | C | 26 | P3 | SG | ME | 260 | 01 | ETA | BILL 3 | B03 | MEL | R00 | ACF04 | MEP | 260 | 26076 |  |  |
| UP3SG26004C0 |  | CU-P3 ; Light Fittings / Switches / Sockets (HV Switch Gear RM) | 10d | 2011-09-05 A | 2011-10-29 | UP3SG26001C0, UP3SG26006C0, UP3SG26007C0 | 80% | 2d | 2011-10-03 | 2011-10-15 | -37.49d | 0d | ELECTRICAL [357.6 h]; Cost [19522.4 AED] | 19,522.4 | 15,617.92 |  |  |  |  | UP3SG26004C0 |  |  |  | UP | C | 26 | P3 | SG | ME | 260 | 04 | ETA | BILL 3 | B03 | MEL | R00 | ACF07 | MEP | 260 | 26061 |  |  |
| UP3SG27004C0 |  | CU-P3 ; ELV Dev.- Sensors, Smk Detector / Spkrs (HV Switch Gear RM) | 12d | 2011-09-05 A | 2011-11-15 | UP3SG26004C0 FF, UP3SG26004C0 SS, UP3SG26005C0, UP3SG27003C0, UP3SG08102C0 |  | 13d | 2011-10-08 | 2011-10-22 | -38.23d | 0d | ELECTRICAL [153.6 h]; Cost [8391.32 AED] | 8,391.32 | 1,678.26 |  |  |  |  | UP3SG27004C0 |  |  |  | UP | C | 27 | P3 | SG | ME | 270 | 04 | ETA | BILL 3 | B03 | MELV | R00 | ACF07 | MEP | 270 | 27040 |  |  |
| UP3SG26007C0 |  | CU-P3 ; Gland. & Termin. Works To Batteries (HV Switch Gear RM) | 14d | 2011-10-10 | 2011-10-26 | UP3SG26001C0 |  |  |  |  | -37.49d | 0d | ELECTRICAL [259.2 h]; Cost |  |  |  |  |  |  | UP3SG26007C0 |  |  |  | UP | C | 26 | P3 | SG | ME | 260 | 07 | ETA | BILL 3 | B03 | MEL | R00 | ACF07 | MEP | 260 | 26050 |  |  |
| UP3SG27003C0 |  | CU-P3 ; Wiring Works For ELV Systems (HV Switch Gear RM) | 12d | 2011-10-12 | 2011-10-26 | UP3SG27002C0 |  |  |  |  | -38.23d | 0d | ELECTRICAL [46.8 h]; Cost |  |  |  |  |  |  | UP3SG27003C0 |  | 10 |  | UP | C | 27 | P3 | SG | ME | 270 | 03 | ETA | BILL 3 | B03 | MELV | R00 | ACF07 | MEP | 270 | 27020 |  |  |
| UP3SG21104C0 |  | CU-P3 ; Inst. Of Fire Extinguisher / Fhc (HV Switch Gear RM) | 11d | 2011-10-16 | 2011-10-29 | UP3SG21103C0, UGLCO21101R02 FF |  |  |  |  | -40.73d | 1.76d | MECHANICAL [166.8 h]; Cost |  |  |  |  |  |  | UP3SG21104C0 |  |  |  | UP | C | 21 | P3 | SG | ME | 211 | 04 | ETA | BILL 3 | B03 | MFS | R00 | ACF04 | MEP | 211 | 21160 |  |  |

| ID | WBS | Activity | Duration | Start | Finish | Predecessors | Complete | Remaining | Planned start | Planned finish | Total float | Free float | Resources | Cost | Actual cost | change id | RENZ % COMPLETE | July2011 Target% Complete | Claimed This Month | CCAD BUILDING(SET) | CCAD PHASE(SET) | CCAD DIVISION(SET) | CCAD FLOOR(SET) | CCAD ZONE(SET) | CCAD WORK(SET) | CCAD SECTION(SET) | CCAD SERIAL No.(SET) | CCAD RESPONSIBILITY(SET) | CCAD CBS(SET) | CCAD BILL(SET) | CCAD TAG(SET) | CCAD REV(SET) | CCADACF (SET) | CCAD CSA | CCAD SSCF | DIVISION FOR ACTIVITY ID | P_811 | P_711 | user_number8 | user_integer1 | user_integer2 | user_number7 |
| --- | --- | --- | --- | --- | --- | --- | --- | --- | --- | --- | --- | --- | --- | --- | --- | --- | --- | --- | --- | --- | --- | --- | --- | --- | --- | --- | --- | --- | --- | --- | --- | --- | --- | --- | --- | --- | --- | --- | --- | --- | --- | --- |
|  | 10 | **LOADING DOCK** |  | 2011-04-05 | 2011-11-28 |  |  |  |  |  |  |  |  |  |  |  |  |  |  |  |  |  |  |  |  |  |  |  |  |  |  |  |  |  |  |  |  |  |  |  |  |  |
| UP3DO26004C0 |  | CU-P3 ; Inst. Of Back Boxes & Conduites On Wall (Loading Dock) | 6d | 2011-04-05 A | 2011-10-01 | UP2S204001C0 | 90% | 0.6d | 2011-06-06 | 2011-06-12 | -62.8d | 0d | ELECTRICAL [490.8 h]; Cost [6501.63 AED] | 6,501.63 | 5,851.47 | UP3DO26004C0 | 35 | 95 | 17061.55 | UP | C | 26 | P3 | DO | ME | 260 | 04 | ETA | BILL 3 | B03 | MEL | R00 | ACF04 | MEP | 260 |  |  |  |  |  |  |  |
| UP3DO27002C0 |  | CU-P3 ; Trunking & Conduiting Works For ELV Systems (Loading Dock) | 9.88d | 2011-04-10 A | 2011-10-09 | UP2S204003C0, UP2S204004C0, UP3DO26004C0 | 30% | 6.91d | 2011-06-13 | 2011-06-23 | -62.8d | 0d | ELECTRICAL [52.8 h]; Cost [2874.8 AED] | 2,874.8 | 862.44 | UP3DO27002C0 | 15 | 35 |  | UP | C | 27 | P3 | DO | ME | 270 | 02 | ETA | BILL 3 | B03 | MELV | R00 | ACF04 | MEP | 270 | 27010 |  |  |  |  |  |  |
| UP3DO22001C0 |  | CU-P3 ; Inst. Of Water Supply Pipe (Loading Dock) | 12d | 2011-08-10 A | 2011-10-12 | UP3DO26001C0 SS | 15% | 10.2d | 2011-08-20 | 2011-09-05 | -43.8d | 0d | PLUMBING [649.2 h]; Cost [35447.7 AED] | 35,447.7 | 5,317.16 | UP3DO22001C0 |  | 45 |  | UP | C | 22 | P3 | DO | ME | 220 | 01 | ETA | BILL 3 | B03 | MPL | R00 | ACF04 | MEP | 220 | 22021 | 15 | 0 |  |  |  |  |
| UP3DO26001C0 |  | CU-P3 ; Trnk & Cnduit For Lighting / Pwr / Emerg. (Loading Dock) | 14d | 2011-08-10 A | 2011-10-13 | UP3DO27002C0 FF, UP3DO27002C0 SS | 20% | 11.2d | 2011-08-03 | 2011-08-20 | -62.8d | 0d | ELECTRICAL [490.8 h]; Cost [6501.63 AED] | 6,501.63 | 1,300.33 | UP3DO26001C0 |  | 35 |  | UP | C | 26 | P3 | DO | ME | 260 | 01 | ETA | BILL 3 | B03 | MEL | R00 | ACF04 | MEP | 260 | 26020 | 15 | 0 | 0 | 0 | 0 | 0 |
| UP3DO09601C0 |  | CU-P3 ; Floor Finishing (Loading Dock) | 6d | 2011-09-05 A | 2011-11-12 | UP3DO09901C0 | 10% | 5.4d | 2011-09-29 | 2011-10-06 | -49.2d | 33.8d | ASSORTED FLOOR FINISH [536 h]; ASSORTED FLOOR FINISH [295 m2]; Cost |  |  | UP3DO09601C0 |  |  |  | UP | C | 09 | P3 | DO | FF | 096 | 01 | SIS | BILL 3 | B03 | 01 | R00 | ACF06 |  | FF |  |  |  |  |  |  |  |
| UP3DO08101C0 |  | CU-P3 ; Door Frames (Loading Dock) | 6d | 2011-10-01 | 2011-10-06 | UP2S204001C0 |  |  |  |  | -31d | 21.8d | ASSORTED DOORS [9 h]; Cost |  |  | UP3DO08101C0 |  |  |  | UP | C | 08 | P3 | DO | DO | 081 | 01 | SIS | BILL 3 | B03 | DF | R00 | ACF06 |  | 081 |  |  |  |  |  |  |  |
| UP3DO27003C0 |  | CU-P3 ; Wiring Works For ELV Systems (Loading Dock) | 6d | 2011-10-09 | 2011-10-16 | UP3DO27002C0 |  |  |  |  | -44.51d | 8.29d | ELECTRICAL [46.8 h]; Cost |  |  | UP3DO27003C0 |  | 10 |  | UP | C | 27 | P3 | DO | ME | 270 | 03 | ETA | BILL 3 | B03 | MELV | R00 | ACF07 | MEP | 270 | 27020 |  |  |  |  |  |  |
| UP3DO22003C0 |  | CU-P3 ; Inst. Of Muw Pipe (Loading Dock) | 6d | 2011-10-12 | 2011-10-19 | UP3DO22001C0 |  |  |  |  | -43.8d | 0d | Labor General [1.2 h]; Cost |  |  | UP3DO22003C0 |  | 25 |  | UP | C | 22 | P3 | DO | ME | 220 | 03 | ETA | BILL 3 | B03 | MPL | R00 | ACF04 | MEP | 220 | 22023 |  |  |  |  |  |  |
| UP3DO27001C0 |  | CU-P3 ; Wiring Works To Lighting / Pwr / Emergency (Loading Dock) | 10d | 2011-10-13 | 2011-10-25 | UP3DO26001C0 |  |  |  |  | -62.8d | 0d | ELECTRICAL [740.4 h]; Cost |  |  | UP3DO27001C0 |  | 10 |  | UP | C | 27 | P3 | DO | ME | 270 | 01 | ETA | BILL 3 | B03 | MELV | R00 | ACF07 | MEP | 270 | 27021 |  |  |  |  |  |  |
| UP3DO09903C0 |  | CU-P3 ; Ceiling Prime & 1st Coat (Loading Dock) | 0d | 2011-10-19 | 2011-10-19 | UP3DO22003C0 |  |  |  |  | -32.8d | 30d | Cost |  |  | UP3DO09903C0 |  |  |  | UP | C | 09 | P3 | DO | PA | 099 | 03 | SIS | BILL 3 | B03 | 01 | R00 | ACF06 |  | 099 |  |  |  |  |  |  |  |
| UP3DO22002C0 |  | CU-P3 ; Inst. Of Hose Bib (Loading Dock) | 5d | 2011-10-19 | 2011-10-25 | UP3DO22003C0 |  |  |  |  | -43.8d | 0d | PLUMBING [148.8 h]; Cost |  |  | UP3DO22002C0 |  |  |  | UP | C | 22 | P3 | DO | ME | 220 | 02 | ETA | BILL 3 | B03 | MPL | R00 | ACF04 | MEP | 220 | 22075 |  |  |  |  |  |  |
| UP3DO09901C0 |  | CU-P3 ; Wall Prime & 1st Coat (Loading Dock) | 6d | 2011-10-25 | 2011-11-01 | UP3DO27001C0, UP3DO27003C0 |  |  |  |  | -52.8d | 0d | WALL PAINT [161 h]; WALL PAINT [200 m2]; Cost |  |  | UP3DO09901C0 |  |  |  | UP | C | 09 | P3 | DO | PA | 099 | 01 | SIS | BILL 3 | B03 | 01 | R00 | ACF06 |  | 099 |  |  |  |  |  |  |  |
| UP3DO21101C0 |  | CU-P3 ; Inst. Of Fire Extinguishers / Fhc (Loading Dock) | 6d | 2011-10-25 | 2011-11-01 | UP3DO22002C0 |  |  |  |  | -43.8d | 39.2d | MECHANICAL [166.8 h]; Cost |  |  | UP3DO21101C0 |  |  |  | UP | C | 21 | P3 | DO | ME | 211 | 01 | ETA | BILL 3 | B03 | MFS | R00 | ACF04 | MEP | 211 | 21160 |  |  |  |  |  |  |
| UP3DO26002C0 |  | CU-P3 ; Inst. Of Isolators For Roller Shutter (Loading Dock) | 8d | 2011-10-25 | 2011-11-03 | UP3DO27001C0 |  |  |  |  | 448.2d | 51.2d | ELECTRICAL [270 h]; Cost |  |  | UP3DO26002C0 |  | 25 |  | UP | C | 26 | P3 | DO | ME | 260 | 02 | ETA | BILL 3 | B03 | MEL | R00 | ACF04 | MEP | 260 | 26074 |  |  |  |  |  |  |
| UP3DO26003C0 |  | CU-P3 ; Inst. Of Lights / Switches / Sockets (Loading Dock) | 10d | 2011-10-25 | 2011-11-09 | UP3DO27001C0 |  |  |  |  | -62.8d | 0d | ELECTRICAL [357.6 h]; Cost |  |  | UP3DO26003C0 |  |  |  | UP | C | 26 | P3 | DO | ME | 260 | 03 | ETA | BILL 3 | B03 | MEL | R00 | ACF07 | MEP | 260 | 26061 |  |  |  |  |  |  |
| UP3DO08102C0 |  | CU-P3 ; Doors (Loading Dock) | 5d | 2011-11-01 | 2011-11-10 | UP3DO08101C0, UP3DO09901C0, UV10AF08106R2 FF |  |  |  |  | -52.8d | 30.2d | METAL DOORS [20 h]; METAL DOORS [2 no]; Cost |  |  | UP3DO08102C0 |  |  |  | UP | C | 08 | P3 | DO | DO | 081 | 02 | SIS | BILL 3 | B03 | DR | R00 | ACF06 |  | 081 |  |  |  |  |  |  |  |
| UP3DO09902C0 |  | CU-P3 ; Wall 2nd Coat (Loading Dock) | 7d | 2011-11-09 | 2011-11-17 | UP3DO09901C0, UP3DO26003C0 |  |  |  |  | -54.8d | 28.2d | WALL PAINT [87 h]; WALL PAINT [108 m2]; Cost |  |  | UP3DO09902C0 |  |  |  | UP | C | 09 | P3 | DO | PA | 099 | 02 | SIS | BILL 3 | B03 | 02 | R00 | ACF06 |  | 099 |  |  |  |  |  |  |  |
| UP3DO27004C0 |  | CU-P3 ; ELV Dev. - Sensors, Smoke Detector / Spkrs (Loading Dock) | 10d | 2011-11-09 | 2011-11-21 | UP3DO26003C0 FF, UP3DO26003C0, UP3DO27003C0 |  |  |  |  | -62.8d | 0d | ELECTRICAL [153.6 h]; Cost |  |  | UP3DO27004C0 |  |  |  | UP | C | 27 | P3 | DO | ME | 270 | 04 | ETA | BILL 3 | B03 | MELV | R00 | ACF07 | MEP | 270 | 27040 |  |  |  |  |  |  |
| UP3DO09904C0 |  | CU-P3 ; Ceiling Final Coat (Loading Dock) | 0d | 2011-11-28 | 2011-11-28 | UP3DO09903C0, UP3DO27004C0 FS+5d |  |  |  |  | -62.8d | 20.2d | Cost |  |  | UP3DO09904C0 |  |  |  | UP | C | 09 | P3 | DO | PA | 099 | 04 | SIS | BILL 3 | B03 | 02 | R00 | ACF06 |  | 099 |  |  |  |  |  |  |  |
|  | 11 | **B/F PREVENTION RM** |  | 2011-08-02 | 2011-10-30 |  |  |  |  |  |  |  |  |  |  |  |  |  |  |  |  |  |  |  |  |  |  |  |  |  |  |  |  |  |  |  |  |  |  |  |  |  |
| UP3FP09901C0 |  | CU-P3 ; Wall Prime & 1st Coat (B/F Prevention RM) | 8d | 2011-08-02 A | 2011-08-30 A | UP3S203301C0 | 100% |  | 2011-09-26 | 2011-10-05 |  |  | WALL PAINT [55 h]; WALL PAINT [67 m2]; Cost |  |  | UP2FP09901C0 |  |  |  | UP | C | 09 | P3 | FP | PA | 099 | 01 | SIS | BILL 3 | B03 | 01 | R00 | ACF06 |  | 099 |  | 100 | 0 |  |  |  |  |
| UP3FP09902C0 |  | CU-P3 ; Wall 2nd Coat (B/F Prevention RM) | 7d | 2011-08-02 A | 2011-08-30 A | UP3FP09901C0, UP3FP09904C0 | 100% |  | 2011-10-19 | 2011-10-27 |  |  | WALL PAINT [29 h]; WALL PAINT [36 m2]; Cost |  |  | UP2FP09902C0 |  |  |  | UP | C | 09 | P3 | FP | PA | 099 | 02 | SIS | BILL 3 | B03 | 02 | R00 | ACF06 |  | 099 |  | 100 | 0 |  |  |  |  |
| UP3FP09903C0 |  | CU-P3 ; Ceiling Prime & 1st Coat (B/F Prevention RM) | 6d | 2011-08-02 A | 2011-08-30 A | UP3FP09901C0 | 100% |  | 2011-10-05 | 2011-10-12 |  |  | Cost |  |  | UP2FP09903C0 |  |  |  | UP | C | 09 | P3 | FP | PA | 099 | 03 | SIS | BILL 3 | B03 | 01 | R00 | ACF06 |  | 099 |  | 100 | 0 |  |  |  |  |
| UP3FP09904C0 |  | CU-P3 ; Ceiling Final Coat (B/F Prevention RM) | 6d | 2011-08-02 A | 2011-08-30 A | UP3FP09903C0 | 100% |  | 2011-10-12 | 2011-10-19 |  |  | Cost |  |  | UP2FP09904C0 |  |  |  | UP | C | 09 | P3 | FP | PA | 099 | 04 | SIS | BILL 3 | B03 | 02 | R00 | ACF06 |  | 099 |  | 100 | 0 |  |  |  |  |
| UP3FP08101C0 |  | CU-P3 ; Door Frames (B/F Prevention RM) | 6d | 2011-09-05 A | 2011-10-02 | UP2S204001C0, UP2S204002C0 | 75% | 1.5d | 2011-09-01 | 2011-09-07 | -29.5d | 0d | ASSORTED DOORS [3 h]; Cost |  |  | UP2FP08101C0 |  |  |  | UP | C | 08 | P3 | FP | DO | 081 | 01 | SIS | BILL 3 | B03 | DF | R00 | ACF06 |  | 081 |  |  |  |  |  |  |  |
| UP3FP22001C0 |  | CU-P3 ; Portable Water Back Flow Preventer (B/F Prevention RM) | 6d | 2011-09-05 A | 2011-10-30 | UP3FP22003C0 FS+6d | 17% | 5d | 2011-09-22 | 2011-09-28 | -51.5d | 31.5d | PLUMBING [649.2 h]; Cost [35447.7 AED] | 35,447.7 | 26,585.78 | UP3FP22001C0 |  |  |  | UP | C | 22 | P3 | FP | ME | 220 | 01 | ETA | BILL 3 | B03 | MPL | R00 | ACF04 | MEP | 220 | 22030 |  |  |  |  |  |  |
| UP3FP22002C0 |  | CU-P3 ; Inst. Of Water Meter (B/F Prevention RM) | 6d | 2011-09-05 A | 2011-10-02 | UP3FP09904C0 SS | 75% | 1.5d | 2011-09-01 | 2011-09-07 | -51.5d | 0d | PLUMBING [649.2 h]; Cost [35447.7 AED] | 35,447.7 | 26,585.78 | UP3FP22002C0 |  |  |  | UP | C | 22 | P3 | FP | ME | 220 | 02 | ETA | BILL 3 | B03 | MPL | R00 | ACF04 | MEP | 220 | 22082 |  |  |  |  |  |  |
| UP3FP22003C0 |  | CU-P3 ; Inst. Of Portable Water Supply Pipe (B/F Prevention RM) | 6d | 2011-09-05 A | 2011-10-17 | UP3FP22002C0 FS+3d |  | 10d | 2011-09-08 | 2011-09-14 | -51.5d | 0d | PLUMBING [649.2 h]; Cost [35447.7 AED] | 35,447.7 | 26,585.78 | UP3FP22003C0 |  |  |  | UP | C | 22 | P3 | FP | ME | 220 | 03 | ETA | BILL 3 | B03 | MPL | R00 | ACF04 | MEP | 220 | 22021 |  |  |  |  |  |  |
| UP3FP09601C0 |  | CU-P3 ; Floor Finishing (B/F Prevention RM) | 10d | 2011-10-01 | 2011-10-11 | UP3FP09902C0 SS |  |  |  |  | -30d | 53d | ASSORTED FLOOR FINISH [184 h]; ASSORTED FLOOR FINISH [98 m2]; Cost |  |  | UP2FP09601C0 |  |  |  | UP | C | 09 | P3 | FP | FF | 096 | 01 | SIS | BILL 3 | B03 | 01 | R00 | ACF06 |  | FF |  |  |  |  |  |  |  |
| UP3FP08102C0 |  | CU-P3 ; Doors (B/F Prevention RM) | 8d | 2011-10-02 | 2011-10-11 | UP3FP08101C0, UP3FP09901C0 |  |  |  |  | -29.5d | 53.5d | METAL DOORS [10 h]; METAL DOORS [1 no]; Cost |  |  | UP2FP08102C0 |  |  |  | UP | C | 08 | P3 | FP | DO | 081 | 02 | SIS | BILL 3 | B03 | DR | R00 | ACF06 |  | 081 |  |  |  |  |  |  |  |

| ID | WBS | Activity | Duration | Start | Finish | Predecessors | Complete | Remaining | Planned start | Planned finish | Total float | Free float | Resources | Cost | Actual cost | change id | DIVISION FOR ACTIVITY ID | RENZ % COMPLETE | July2011 Target% Complete | P_811 | P_711 | CCAD BUILDING(SET) | CCAD PHASE(SET) | CCAD DIVISION(SET) | CCAD FLOOR(SET) | CCAD ZONE(SET) | CCAD WORK(SET) | CCAD SECTION(SET) | CCAD SERIAL No.(SET) | CCAD RESPONSIBILITY(SET) | CCAD CBS(SET) | CCAD BILL(SET) | CCAD TAG(SET) | CCAD REV(SET) | CCADACF (SET) | CCAD CSA | CCAD SSCF | Claimed This Month | user_number8 | user_integer1 | user_integer2 | user_number7 |
| --- | --- | --- | --- | --- | --- | --- | --- | --- | --- | --- | --- | --- | --- | --- | --- | --- | --- | --- | --- | --- | --- | --- | --- | --- | --- | --- | --- | --- | --- | --- | --- | --- | --- | --- | --- | --- | --- | --- | --- | --- | --- | --- |
|  | 12 | **C/W PUMP & GENER. RM** |  | 2010-10-16 | 2011-12-10 |  |  |  |  |  |  |  |  |  |  |  |  |  |  |  |  |  |  |  |  |  |  |  |  |  |  |  |  |  |  |  |  |  |  |  |  |  |
| UP3CW22005C0 |  | CU-P3 ; Inst. Of Storm Water Drainage Pipe (Gener. RM) | 14d | 2010-10-16 A | 2011-10-01 | UFNS303303C0 SS | 95% | 0.7d | 2011-05-31 | 2011-06-16 | -75.7d | 0d | PLUMBING [7581.6 h]; Cost [517466 AED] | 517,466.42 | 491,593.1 | UP3CW22005C0 | 22020 | 90 | 95 | 95 | 90 | UP | C | 22 | P3 | CW | ME | 220 | 05 | ETA | BILL 3 | B03 | MPL | R00 | ACF04 | MEP | 220 |  |  |  |  |  |
| UP3CW03302C0 |  | CU-P3 ; Equipment Plinth (Pump & Gener. RM) | 15d | 2011-02-16 A | 2011-05-16 A | UP3S204002C0, UP3S204004C0 | 100% |  | 2011-04-14 | 2011-05-02 |  |  | Labor General [16 h]; Cost |  |  | UP3CW03302C0 |  | 100 |  |  |  | UP | C | 03 | P3 | CW | CT | 033 | 02 | SIS | BILL 3 | B03 | 10 | R00 | ACF03 |  | 033 |  |  |  |  |  |
| UP3CW03301C0 |  | CU-P3 ; Equipment Plinth (Gener. RM) | 15d | 2011-02-22 A | 2011-03-17 A | UP3S304002C0 | 100% |  | 2011-04-14 | 2011-05-02 |  |  | Cost |  |  | UP3CW03301C0 |  | 100 |  |  |  | UP | C | 03 | P3 | CW | CT | 033 | 01 | SIS | BILL 3 | B03 | 10 | R00 | ACF03 |  | 033 |  |  |  |  |  |
| UP3CW26001C0 |  | CU-P3 ; Inst. Of Generator - 12 Nos. (Gener. RM) | 23d | 2011-03-28 A | 2011-07-06 A | UP3CW03301C0 | 100% |  | 2011-06-08 | 2011-07-06 |  |  | ELECTRICAL [30523.2 h]; Cost [33332520 AED] | 33,332,520 | 33,332,520 | UP3CW26001C0 | 26070 | 66 | 98 |  |  | UP | C | 26 | P3 | CW | ME | 260 | 01 | ETA | BILL 3 | B03 | MEL | R00 | ACF04 | MEP | 260 | 9279773.52 |  |  |  |  |
| UP3CW26008C0 |  | CU-P3 ; Back Boxes & Conduites On Wall (Gener. RM) | 8d | 2011-04-11 A | 2011-10-02 | UP2S204002C0 FF | 80% | 1.6d | 2011-05-07 | 2011-05-15 | -78.4d | 0d | ELECTRICAL [490.8 h]; Cost [6501.63 AED] | 6,501.63 | 5,201.3 | UP3CW26008C0 |  | 35 | 90 | 80 | 50 | UP | C | 26 | P3 | CW | ME | 260 | 08 | ETA | BILL 3 | B03 | MEL | R00 | ACF04 | MEP | 260 | 13959.45 |  |  |  |  |
| UP3CW26007C0 |  | CU-P3 ; Inst. Of Back Boxes & Conduites On Wall (Gener. RM) | 5d | 2011-05-10 A | 2011-10-01 | UP3CW26008C0 SS | 85% | 0.75d | 2011-07-07 | 2011-07-13 | -57.35d | 0d | ELECTRICAL [490.8 h]; Cost [6501.63 AED] | 6,501.63 | 5,526.38 | UP3CW26007C0 |  | 20 | 90 | 80 | 50 | UP | C | 26 | P3 | CW | ME | 260 | 07 | ETA | BILL 3 | B03 | MEL | R00 | ACF04 | MEP | 260 | 18612.7 | 0 | 0 | 0 | 0 |
| UP3CW27002C0 |  | CU-P3 ; Trunking & Conduiting Works For ELV Systems (Gener. RM) | 12d | 2011-05-15 A | 2011-10-09 | UP3CW26007C0 | 45% | 6.6d | 2011-07-13 | 2011-07-27 | -57.35d | 0d | ELECTRICAL [52.8 h]; Cost [2874.8 AED] | 2,874.8 | 1,293.66 | UP3CW27002C0 | 27010 | 35 | 50 |  |  | UP | C | 27 | P3 | CW | ME | 270 | 02 | ETA | BILL 3 | B03 | MELV | R00 | ACF04 | MEP | 270 | -331.62 |  |  |  |  |
| UP3CW27010C0 |  | CU-P3 ; Trnk & Conduiting Works For ELV Syss (Pump & Gener. RM) | 21d | 2011-05-15 A | 2011-10-17 | UP3CW26008C0 | 40% | 12.6d | 2011-07-13 | 2011-08-07 | -78.4d | 0d | ELECTRICAL [52.8 h]; Cost [2874.8 AED] | 2,874.8 | 1,149.92 | UP3CW27010C0 | 27010 | 25 | 90 |  |  | UP | C | 27 | P3 | CW | ME | 270 | 01 | ETA | BILL 3 | B03 | MELV | R00 | ACF04 | MEP | 270 | 331.62 | 0 | 0 | 0 | 0 |
| UP3CW23001C0 |  | CU-P3 ; Inst. Of Duct Supp.s & Ducting (Gener. RM) | 14d | 2011-05-30 A | 2011-10-20 | UP3CW26004C0 | 25% | 10.5d | 2011-08-02 | 2011-08-18 | -49.95d | 0d | MECHANICAL [669.6 h]; Cost [37738.7 AED] | 37,738.68 | 9,434.67 | UP3CW23001C0 | 23015 | 25 | 45 |  |  | UP | C | 23 | P3 | CW | ME | 230 | 01 | ETA | BILL 3 | B03 | MHV | R00 | ACF04 | MEP | 230 |  |  |  |  |  |
| UP3CW26004C0 |  | CU-P3 ; Trnk / Conduit For Pwr, Lighting & Emerg. (Gener. RM) | 12d | 2011-06-22 A | 2011-10-09 | UP3CW27002C0 FF, UP3CW27002C0 SS+6d | 50% | 6d | 2011-05-25 | 2011-06-08 | -57.35d | 0d | ELECTRICAL [490.8 h]; Cost [6501.63 AED] | 6,501.63 | 3,250.81 | UP3CW26004C0 | 26020 | 35 | 45 | 40 | 35 | UP | C | 26 | P3 | CW | ME | 260 | 04 | ETA | BILL 3 | B03 | MEL | R00 | ACF04 | MEP | 260 |  | 0 | 0 | 0 | 0 |
| UP3CW26006C0 |  | CU-P3 ; Conn. Works To Generators (Elec. & Mech.) (Gener. RM) | 15d | 2011-07-10 A | 2011-10-17 | UP3CW26001C0 | 5% | 14.25d | 2011-08-21 | 2011-09-10 | -43.25d | 14.1d | ELECTRICAL [3492 h]; Cost [283013 AED] | 283,013.44 | 14,150.67 | UP3CW26006C0 | 26080 |  |  |  |  | UP | C | 26 | P3 | CW | ME | 260 | 06 | ETA | BILL 3 | B03 | MEL | R00 | ACF07 | MEP | 260 |  |  |  |  |  |
| UP3CW09601C0 |  | CU-P3 ; Floor Finishing (Pump & Gener. RM) | 18d | 2011-08-02 A | 2011-10-10 | UP3CW08103C0 | 50% | 9d | 2011-08-03 | 2011-08-23 | -25d | 58d | ASSORTED FLOOR FINISH [2304 h]; ASSORTED FLOOR FINISH [1279 m2]; Cost |  |  | UP3CW09601C0 |  |  |  | 25 | 0 | UP | C | 09 | P3 | CW | FF | 096 | 01 | SIS | BILL 3 | B03 | 01 | R00 | ACF06 |  | FF | 6865.31 | 0 | 0 | 0 | 0 |
| UP3CW09602C0 |  | CU-P3 ; Floor Finishing (Gener. RM) | 15d | 2011-08-02 A | 2011-10-16 | UP3CW09901C0 | 50% | 7.5d | 2011-09-01 | 2011-09-18 | -30d | 53d | Labor General [1 h]; Cost |  |  | UP3CW09602C0 |  |  |  | 25 | 0 | UP | C | 09 | P3 | CW | FF | 096 | 02 | SIS | BILL 3 | B03 | 01 | R00 | ACF06 |  | FF |  |  |  |  |  |
| UP3CW09901C0 |  | CU-P3 ; Wall Prime & 1st Coat (Pump & Gener. RM) | 10d | 2011-08-02 A | 2011-10-08 | UP2S304002C0 | 35% | 6.5d | 2011-09-18 | 2011-09-29 | -57d | 0d | WALL PAINT [697 h]; WALL PAINT [869 m2]; Cost |  |  | UP3CW09901C0 |  |  |  | 10 | 0 | UP | C | 09 | P3 | CW | PA | 099 | 01 | SIS | BILL 3 | B03 | 01 | R00 | ACF06 |  | 099 |  | 0 | 0 | 0 | 0 |
| UP3CW09902C0 |  | CU-P3 ; Wall 2nd Coat (Pump & Gener. RM) | 10d | 2011-08-02 A | 2011-10-15 | UP3CW09901C0 | 35% | 6.5d | 2011-10-12 | 2011-10-24 | -29d | 54d | WALL PAINT [375 h]; WALL PAINT [468 m2]; Cost |  |  | UP3CW09902C0 |  |  |  | 10 | 0 | UP | C | 09 | P3 | CW | PA | 099 | 02 | SIS | BILL 3 | B03 | 02 | R00 | ACF06 |  | 099 |  | 0 | 0 | 0 | 0 |
| UP3CW09903C0 |  | CU-P3 ; Ceiling Prime & 1st Coat (Gener. RM) | 12d | 2011-08-02 A | 2011-08-30 A | UP3CW21101C0, UP3CW23002C0, UP3CW26001C0 | 100% |  | 2011-09-05 | 2011-09-19 |  |  | Cost |  |  | UP3CW09903C0 |  |  |  | 100 | 0 | UP | C | 09 | P3 | CW | PA | 099 | 03 | SIS | BILL 3 | B03 | 01 | R00 | ACF06 |  | 099 |  |  |  |  |  |
| UP3CW09904C0 |  | CU-P3 ; Ceiling Final Coat (Pump & Gener. RM) | 8d | 2011-08-02 A | 2011-10-23 | UP3CW08104C0, UP3CW09903C0 | 100% | 0d | 2011-10-12 | 2011-10-22 | -49.95d | 28.45d | Cost |  |  | UP3CW09904C0 |  |  |  | 95 | 0 | UP | C | 09 | P3 | CW | PA | 099 | 04 | SIS | BILL 3 | B03 | 02 | R00 | ACF06 |  | 099 |  |  |  |  |  |
| UP3CW09905C0 |  | CU-P3 ; Wall Prime & 1st Coat (Gener. RM) | 10d | 2011-08-02 A | 2011-10-08 | UP2S304002C0 | 35% | 6.5d | 2011-09-24 | 2011-10-05 | -50d | 0d | Labor General [2 h]; Cost |  |  | UP3CW09905C0 |  |  |  | 10 | 0 | UP | C | 09 | P3 | CW | PA | 099 | 05 | SIS | BILL 3 | B03 | 01 | R00 | ACF06 |  | 099 |  |  |  |  |  |
| UP3CW09906C0 |  | CU-P3 ; Wall 2nd Coat (Gener. RM) | 9d | 2011-08-02 A | 2011-10-15 | UP3CW09905C0 | 35% | 5.85d | 2011-10-13 | 2011-10-23 | -21.35d | 61.65d | Labor General [2 h]; Cost |  |  | UP3CW09906C0 |  |  |  | 10 | 0 | UP | C | 09 | P3 | CW | PA | 099 | 06 | SIS | BILL 3 | B03 | 02 | R00 | ACF06 |  | 099 |  |  |  |  |  |
| UP3CW09907C0 |  | CU-P3 ; Ceiling Prime & 1st Coat (Pump & Gener. RM) | 10d | 2011-08-02 A | 2011-10-01 | UP3CW03301C0 | 94% | 0.55d | 2011-08-27 | 2011-09-10 | -47.95d | 0d | Labor General [2 h]; Cost |  |  | UP3CW09907C0 |  |  |  | 75 | 0 | UP | C | 09 | P3 | CW | PA | 099 | 07 | SIS | BILL 3 | B03 | 01 | R00 | ACF06 |  | 099 |  |  |  |  |  |
| UP3CW09908C0 |  | CU-P3 ; Ceiling Final Coat (Gener. RM) | 8d | 2011-08-02 A | 2011-10-01 | UP3CW09907C0 | 95% | 0.4d | 2011-10-13 | 2011-10-22 | -47.95d | 30.45d | Labor General [2 h]; Cost |  |  | UP3CW09908C0 |  |  |  | 75 | 0 | UP | C | 09 | P3 | CW | PA | 099 | 08 | SIS | BILL 3 | B03 | 02 | R00 | ACF06 |  | 099 |  |  |  |  |  |
| UP3CW21101C0 |  | CU-P3 ; Inst. Of Pipe - For Foam Deluge System (Gener. RM) | 12d | 2011-08-10 A | 2011-10-23 | UP3CW22001C0 FF, UP3CW22001C0 SS+7d | 95% | 0.6d | 2011-08-20 | 2011-09-05 | -49.35d | 0d | MECHANICAL [1389.6 h]; Cost [94855.2 AED] | 94,855.22 | 90,112.46 | UP3CW21101C0 | 21141 |  | 35 | 95 | 0 | UP | C | 21 | P3 | CW | ME | 211 | 01 | ETA | BILL 3 | B03 | MFS | R00 | ACF04 | MEP | 211 |  |  |  |  |  |
| UP3CW22004C0 |  | CU-P3 ; Cooling Radiator System - 6 Nos. (Gener. RM) | 10d | 2011-08-10 A | 2011-10-02 | UP3CW03302C0 SS, UP3CW03302C0 FF | 80% | 2d | 2011-08-21 | 2011-09-04 | -55d | 0d | Labor General [1.2 h]; Cost |  |  | UP3CW22004C0 | 22073 |  | 90 | 25 | 0 | UP | C | 22 | P3 | CW | ME | 220 | 04 | ETA | BILL 3 | B03 | MPL | R00 | ACF04 | MEP | 220 |  |  |  |  |  |
| UP3CW22006C0 |  | CU-P3 ; Drain. Conn.& Grat. Inst. To Manhole (Gener. RM) | 12d | 2011-08-10 A | 2011-10-03 | UP3CW22004C0 SS, UP3CW22005C0 SS, UP3CW22004C0 FF, UP3CW22005C0 FF | 80% | 2.4d | 2011-09-10 | 2011-09-24 | -18.4d | 64.6d | PLUMBING [298.8 h]; Cost [16284.7 AED] | 16,284.74 | 13,027.79 | UP3CW22006C0 | 22020 |  | 35 | 80 | 0 | UP | C | 22 | P3 | CW | ME | 220 | 06 | ETA | BILL 3 | B03 | MPL | R00 | ACF04 | MEP | 220 |  |  |  |  |  |
| UP3CW23002C0 |  | CU-P3 ; Inst. Of Vcd'S & Duct Conn. Works (Gener. RM) | 14d | 2011-08-10 A | 2011-10-23 | UP3CW23001C0 SS | 10% | 12.6d | 2011-08-11 | 2011-08-28 | -49.95d | 0d | MECHANICAL [87.6 h]; Cost [4756.4 AED] | 4,756.4 | 475.64 | UP3CW23002C0 | 23030 |  | 30 | 10 | 0 | UP | C | 23 | P3 | CW | ME | 230 | 02 | ETA | BILL 3 | B03 | MHV | R00 | ACF07 | MEP | 230 |  |  |  |  |  |
| UP3CW26002C0 |  | CU-P3 ; Inst. Of Cable Tray / Lader (Gener. RM) | 12d | 2011-08-10 A | 2011-10-08 | UP3CW26004C0 SS+6d | 60% | 4.8d | 2011-08-02 | 2011-08-16 | -57.35d | 0d | ELECTRICAL [703.2 h]; Cost [10561.5 AED] | 10,561.54 | 6,336.92 | UP3CW26002C0 | 26030 |  | 75 | 50 | 0 | UP | C | 26 | P3 | CW | ME | 260 | 02 | ETA | BILL 3 | B03 | MEL | R00 | ACF04 | MEP | 260 |  | 0 | 0 | 0 | 0 |
| UP3CW26012C0 |  | CU-P3 ; Inst. Of Cable Tray (Gener. RM) | 12d | 2011-08-10 A | 2011-10-18 | UP3CW26013C0 SS, UP3CW26013C0 FF | 25% | 9d | 2011-08-22 | 2011-09-07 | -78.4d | 0d | ELECTRICAL [703.2 h]; Cost [10561.5 AED] | 10,561.54 | 2,640.38 | UP3CW26012C0 | 26030 |  | 45 | 15 | 0 | UP | C | 26 | P3 | CW | ME | 260 | 12 | ETA | BILL 3 | B03 | MEL | R00 | ACF04 | MEP | 260 | 9199.38 | 0 | 0 | 0 | 0 |
| UP3CW26013C0 |  | CU-P3 ; Trnk & Cnduit For Pwr,Light & Emerg. (Pump & Gener. RM) | 12d | 2011-08-10 A | 2011-10-17 | UP3CW27010C0 FF, UP3CW27010C0 SS+10d | 35% | 7.8d | 2011-08-08 | 2011-08-22 | -78.4d | 0d | ELECTRICAL [490.8 h]; Cost [6501.63 AED] | 6,501.63 | 2,275.57 | UP3CW26013C0 | 26020 |  | 45 | 15 | 0 | UP | C | 26 | P3 | CW | ME | 260 | 13 | ETA | BILL 3 | B03 | MEL | R00 | ACF04 | MEP | 260 |  | 0 | 0 | 0 | 0 |
| UP3CW27001C0 |  | CU-P3 ; Wiring Works For Pwr, Lighting & Emerg. (Gener. RM) | 12d | 2011-08-10 A | 2011-10-18 | UP3CW26002C0 | 20% | 9.6d | 2011-08-16 | 2011-09-01 | -57.35d | 0d | ELECTRICAL [740.4 h]; Cost [10136.5 AED] | 10,136.46 | 2,027.29 | UP3CW27001C0 | 27021 |  | 35 | 15 | 0 | UP | C | 27 | P3 | CW | ME | 270 | 01 | ETA | BILL 3 | B03 | MELV | R00 | ACF07 | MEP | 270 |  | 0 | 0 | 0 | 0 |
| UP3CW27005C0 |  | CU-P3 ; Inst. Of DDC Panel (Gener. RM) | 10d | 2011-08-10 A | 2011-10-08 | UP3CW09905C0 | 95% | 0.5d | 2011-09-07 | 2011-09-19 | -50d | 0d | ELECTRICAL [4558.8 h]; Cost [308717 AED] | 308,716.73 | 293,280.9 | UP3CW27005C0 | 27030 |  |  | 95 | 0 | UP | C | 27 | P3 | CW | ME | 270 | 05 | ETA | BILL 3 | B03 | MELV | R00 | ACF07 | MEP | 270 |  |  |  |  |  |
| UP3CW27014C0 |  | CU-P3 ; Inst. Of DDC Panel (Pump & Gener. RM) | 10d | 2011-08-10 A | 2011-10-08 | UP3CW09901C0 | 95% | 0.5d | 2011-08-29 | 2011-09-11 | -57d | 0d | ELECTRICAL [4558.8 h]; Cost [308717 AED] | 308,716.73 | 293,280.9 | UP3CW27014C0 | 27030 |  |  | 95 | 0 | UP | C | 27 | P3 | CW | ME | 270 | 14 | ETA | BILL 3 | B03 | MELV | R00 | ACF07 | MEP | 270 |  |  |  |  |  |
| UP3CW26003C0 |  | CU-P3 ; Cable Pulling Works (Gener. RM) | 14d | 2011-09-05 A | 2011-11-02 | UP3CW27001C0 | 10% | 12.6d | 2011-09-21 | 2011-10-08 | -57.35d | 0d | ELECTRICAL [8728.8 h]; Cost [551876 AED] | 551,876.2 | 55,187.62 | UP3CW26003C0 | 26040 |  | 20 |  |  | UP | C | 26 | P3 | CW | ME | 260 | 03 | ETA | BILL 3 | B03 | MEL | R00 | ACF07 | MEP | 260 |  |  |  |  |  |
| UP3CW26022C0 |  | CU-P3 ; Wiring / Cable Pulling Works (Gener. RM) | 10d | 2011-09-05 A | 2011-10-30 | UP3CW26012C0 |  | 10d | 2011-09-21 | 2011-10-03 | -78.4d | 0d | ELECTRICAL [10428 h]; Cost [551876 AED] | 551,876.2 | 55,187.62 | UP3CW26022C0 | 26040 |  |  |  |  | UP | C | 26 | P3 | CW | ME | 260 | 22 | ETA | BILL 3 | B03 | MEL | R00 | ACF07 | MEP | 260 |  |  |  |  |  |
| UP3CW27003C0 |  | CU-P3 ; Wiring Works For ELV Systems (Gener. RM) | 21d | 2011-09-05 A | 2011-10-30 | UP3CW27002C0 | 15% | 17.85d | 2011-09-11 | 2011-10-05 | -54.2d | 3.15d | ELECTRICAL [46.8 h]; Cost [2549.35 AED] | 2,549.35 | 382.4 | UP3CW27003C0 | 27020 |  | 25 |  |  | UP | C | 27 | P3 | CW | ME | 270 | 03 | ETA | BILL 3 | B03 | MELV | R00 | ACF07 | MEP | 270 |  |  |  |  |  |
| UP3CW08101C0 |  | CU-P3 ; Door Frames (Gener. RM) | 18d | 2011-10-01 | 2011-10-20 | UP2S304002C0 |  |  |  |  | -32d | 0d | ASSORTED DOORS [40 h]; Cost |  |  | UP3CW08101C0 |  |  |  |  |  | UP | C | 08 | P3 | CW | DO | 081 | 01 | SIS | BILL 3 | B03 | DF | R00 | ACF06 |  | 081 |  |  |  |  |  |
| UP3CW08103C0 |  | CU-P3 ; Door Frames (Pump & Gener. RM) | 0d | 2011-10-01 | 2011-10-01 | UP2S204002C0 |  |  |  |  | -30d | 0d | Cost |  |  | UP3CW08103C0 |  |  |  |  |  | UP | C | 08 | P3 | CW | DO | 081 | 03 | SIS | BILL 3 | B03 | DF | R00 | ACF06 |  | 081 |  |  |  |  |  |
| UP3CW22002C0 |  | CU-P3 ; Inst. Of Cold Water Pipes (Gener. RM) | 22d | 2011-10-01 | 2011-10-26 | UP3CW22005C0 |  |  |  |  | -75.7d | 0d | PLUMBING [1862.4 h]; Cost |  |  | UP3CW22002C0 | 22021 |  | 40 |  |  | UP | C | 22 | P3 | CW | ME | 220 | 02 | ETA | BILL 3 | B03 | MPL | R00 | ACF04 | MEP | 220 |  |  |  |  |  |
| UP3CW27012C0 |  | CU-P3 ; Wiring Works For ELV Systems (Pump & Gener. RM) | 21d | 2011-10-02 | 2011-10-26 | UP3CW27010C0 SS+15d |  |  |  |  | -52.6d | 25.8d | ELECTRICAL [46.8 h]; Cost |  |  | UP3CW27012C0 | 27020 |  | 25 |  |  | UP | C | 27 | P3 | CW | ME | 270 | 12 | ETA | BILL 3 | B03 | MELV | R00 | ACF07 | MEP | 270 |  |  |  |  |  |
| UP3CW08104C0 |  | CU-P3 ; Doors (Gener. RM) | 0d | 2011-10-08 | 2011-10-08 | UP3CW08103C0, UP3CW09905C0 |  |  |  |  | -36.5d | 13.45d | Cost |  |  | UP3CW08104C0 |  |  |  |  |  | UP | C | 08 | P3 | CW | DO | 081 | 04 | SIS | BILL 3 | B03 | DR | R00 | ACF06 |  | 081 |  |  |  |  |  |
| UP3CW27006C0 |  | CU-P3 ; Dressing, Glanding & Termination Of DDC Panels (Gener. RM) | 12d | 2011-10-09 | 2011-10-22 | UP3CW27005C0 |  |  |  |  | -50d | 0d | ELECTRICAL [259.2 h]; Cost |  |  | UP3CW27006C0 | 27051 |  |  |  |  | UP | C | 27 | P3 | CW | ME | 270 | 06 | ETA | BILL 3 | B03 | MELV | R00 | ACF07 | MEP | 270 |  |  |  |  |  |
| UP3CW27015C0 |  | CU-P3 ; Dress., Gland. & Termin. Of DDC Pnls (Pump & Gener. RM) | 18d | 2011-10-09 | 2011-10-29 | UP3CW27014C0 |  |  |  |  | -57d | 0d | ELECTRICAL [259.2 h]; Cost |  |  | UP3CW27015C0 | 27051 |  |  |  |  | UP | C | 27 | P3 | CW | ME | 270 | 15 | ETA | BILL 3 | B03 | MELV | R00 | ACF07 | MEP | 270 |  |  |  |  |  |
| UP3CW22001C0 |  | CU-P3 ; Inst. Of Supply & Return Pipe For Generator (Gener. RM) | 12d | 2011-10-09 | 2011-10-23 | UP3CW23001C0 SS+12d |  |  |  |  | -49.35d | 0d | Labor General [1.2 h]; Cost |  |  | UP3CW22001C0 | 22026 |  | 30 |  |  | UP | C | 22 | P3 | CW | ME | 220 | 01 | ETA | BILL 3 | B03 | MPL | R00 | ACF04 | MEP | 220 |  |  |  |  |  |
| UP3CW27007C0 |  | CU-P3 ; Bms Conn. Works To Equipments (Gener. RM) | 12d | 2011-10-11 | 2011-10-24 | UP3CW27006C0 FF+2d |  |  |  |  | -50d | 7.35d | ELECTRICAL [54 h]; Cost |  |  | UP3CW27007C0 | 27060 |  |  |  |  | UP | C | 27 | P3 | CW | ME | 270 | 07 | ETA | BILL 3 | B03 | MELV | R00 | ACF07 | MEP | 270 |  |  |  |  |  |
| UP3CW27016C0 |  | CU-P3 ; Bms Conn. Works To Equipments (Pump & Gener. RM) | 12d | 2011-10-18 | 2011-10-31 | UP3CW27015C0 FF+2d |  |  |  |  | -57d | 21.4d | ELECTRICAL [54 h]; Cost |  |  | UP3CW27016C0 | 27060 |  |  |  |  | UP | C | 27 | P3 | CW | ME | 270 | 16 | ETA | BILL 3 | B03 | MELV | R00 | ACF07 | MEP | 270 |  |  |  |  |  |
| UP3CW08102C0 |  | CU-P3 ; Doors (Pump & Gener. RM) | 12d | 2011-10-22 | 2011-11-03 | UP3CW08101C0, UP3CW09901C0 |  |  |  |  | -32d | 51d | METAL DOORS [70 h]; METAL DOORS [7 no]; Cost |  |  | UP3CW08102C0 |  |  |  |  |  | UP | C | 08 | P3 | CW | DO | 081 | 02 | SIS | BILL 3 | B03 | DR | R00 | ACF06 |  | 081 |  |  |  |  |  |
| UP3CW21102C0 |  | CU-P3 ; Inst. Of Final Devices - For Foam Deluge System (Gener. RM) | 6d | 2011-10-23 | 2011-10-30 | UP3CW21101C0 |  |  |  |  | -46.35d | 0d | MECHANICAL [1389.6 h]; Cost |  |  | UP3CW21102C0 | 21172 |  |  |  |  | UP | C | 21 | P3 | CW | ME | 211 | 02 | ETA | BILL 3 | B03 | MFS | R00 | ACF04 | MEP | 211 |  |  |  |  |  |
| UP3CW22003C0 |  | CU-P3 ; Inst. Of Deareators (Gener. RM) | 5d | 2011-10-26 | 2011-11-01 | UP3CW22002C0 FF+5d |  |  |  |  | -43.7d | 39.3d | Labor General [1.2 h]; Cost |  |  | UP3CW22003C0 | 22074 |  | 50 |  |  | UP | C | 22 | P3 | CW | ME | 220 | 03 | ETA | BILL 3 | B03 | MPL | R00 | ACF04 | MEP | 220 |  |  |  |  |  |
| UP3CW22011C0 |  | CU-P3 ; Inst. Of Cold Water Pumps - 6 Nos. (Gener. RM) | 10d | 2011-10-26 | 2011-11-10 | UP3CW03302C0, UP3CW22002C0 |  |  |  |  | -75.7d | 2.7d | Labor General [1.2 h]; Cost |  |  | UP3CW22011C0 | 22050 |  | 90 |  |  | UP | C | 22 | P3 | CW | ME | 220 | 11 | ETA | BILL 3 | B03 | MPL | R00 | ACF04 | MEP | 220 |  |  |  |  |  |
| UP3CW21103C0 |  | CU-P3 ; Inst. Of Foam Bladder Tank (Gener. RM) | 6d | 2011-10-30 | 2011-11-09 | UP3CW21102C0 |  |  |  |  | -46.35d | 0d | MECHANICAL [1467.6 h]; Cost |  |  | UP3CW21103C0 | 21170 |  |  |  |  | UP | C | 21 | P3 | CW | ME | 211 | 03 | ETA | BILL 3 | B03 | MFS | R00 | ACF04 | MEP | 211 |  |  |  |  |  |
| UP3S223001C0 |  | CU-P3 ; Isolators - C/W Pumps & Radiator Sys (Gener. RM) | 6d | 2011-10-30 | 2011-11-09 | UP3CW22004C0, UP3CW22011C0 SS, UP3CW26022C0 |  |  |  |  | -78.4d | 0d | MECHANICAL [270 h]; Cost |  |  | UP3CW23001C0 | 23061 |  |  |  |  | UP | C | 23 | P3 | CW | ME | 230 | 01 | ETA | BILL 3 | B03 | MHV | R00 | ACF04 | MEP | 230 |  |  |  |  |  |
| UP3CW26005C0 |  | CU-P3 ; Inst. Of Light Fittings / Sockets / Switches (Gener. RM) | 6d | 2011-11-02 | 2011-11-13 | UP3CW26003C0, UP3CW26006C0 |  |  |  |  | -57.35d | 0d | ELECTRICAL [357.6 h]; Cost |  |  | UP3CW26005C0 | 26061 |  |  |  |  | UP | C | 26 | P3 | CW | ME | 260 | 05 | ETA | BILL 3 | B03 | MEL | R00 | ACF07 | MEP | 260 |  |  |  |  |  |
| UP3CW27004C0 |  | CU-P3 ; ELV Devices - Sensors, Smoke Detector / Spkrs (Pump & Gener. RM) | 6d | 2011-11-02 | 2011-11-13 | UP3CW26005C0 SS, UP3CW27003C0, UP3CW27007C0 |  |  |  |  | -57.35d | 25.65d | ELECTRICAL [153.6 h]; Cost |  |  | UP3CW27004C0 | 27040 |  |  |  |  | UP | C | 27 | P3 | CW | ME | 270 | 04 | ETA | BILL 3 | B03 | MELV | R00 | ACF07 | MEP | 270 |  |  |  |  |  |
| UP3CW26014C0 |  | CU-P3 ; Light Fittings / Sockets / Switches (Gener. RM) | 10d | 2011-11-09 | 2011-11-21 | UP3CW26022C0, UP3S223001C0, UP3CW09908C0 |  |  |  |  | -78.4d | 0d | ELECTRICAL [357.6 h]; Cost |  |  | UP3CW26014C0 | 26061 |  |  |  |  | UP | C | 26 | P3 | CW | ME | 260 | 14 | ETA | BILL 3 | B03 | MEL | R00 | ACF07 | MEP | 260 |  |  |  |  |  |
| UP3CW27013C0 |  | CU-P3 ; ELV Dev.- Snsr, Smk Detector / Spkrs (Gener. RM) | 7d | 2011-11-30 | 2011-12-10 | UP3CW26014C0 FS+7d, UP3CW27012C0, UP3CW27016C0 FF+7d, UP3CW09904C0 |  |  |  |  | -78.4d | 4.6d | ELECTRICAL [153.6 h]; Cost |  |  | UP3CW27013C0 | 27040 |  |  |  |  | UP | C | 27 | P3 | CW | ME | 270 | 13 | ETA | BILL 3 | B03 | MELV | R00 | ACF07 | MEP | 270 |  |  |  |  |  |

| ID | WBS | Activity | Duration | Start | Finish | Predecessors | Complete | Remaining | Planned start | Planned finish | Total float | Free float | Resources | Cost | Actual cost | change id | RENZ % COMPLETE | Claimed This Month | CCAD BUILDING(SET) | CCAD PHASE(SET) | CCAD DIVISION(SET) | CCAD FLOOR(SET) | CCAD ZONE(SET) | CCAD WORK(SET) | CCAD SECTION(SET) | CCAD SERIAL No.(SET) | CCAD RESPONSIBILITY(SET) | CCAD CBS(SET) | CCAD BILL(SET) | CCAD TAG(SET) | CCAD REV(SET) | CCADACF (SET) | CCAD CSA | CCAD SSCF | DIVISION FOR ACTIVITY ID | July2011 Target% Complete | P_811 | P_711 | user_number8 | user_integer1 | user_integer2 | user_number7 | ACCESS DATES |
| --- | --- | --- | --- | --- | --- | --- | --- | --- | --- | --- | --- | --- | --- | --- | --- | --- | --- | --- | --- | --- | --- | --- | --- | --- | --- | --- | --- | --- | --- | --- | --- | --- | --- | --- | --- | --- | --- | --- | --- | --- | --- | --- | --- |
|  | 13 | **MED. GAS PLANT RM** |  | 2011-04-11 | 2011-12-01 |  |  |  |  |  |  |  |  |  |  |  |  |  |  |  |  |  |  |  |  |  |  |  |  |  |  |  |  |  |  |  |  |  |  |  |  |  |  |
| UP3MG26001C0 |  | CU-P3 ; Inst. Of Back Boxes & Conduites On Wall (MED. Gas Plant RM) | 8d | 2011-04-11 A | 2011-06-14 A | UP3S203302C0 | 100% |  | 2011-05-07 | 2011-05-15 |  |  | ELECTRICAL [490.8 h]; Cost [6501.63 AED] | 6,501.63 | 6,501.63 | UP3MG26001C0 | 35 | 20163.81 | UP | C | 26 | P3 | MG | ME | 260 | 01 | ETA | BILL 3 | B03 | MEL | R00 | ACF04 | MEP | 260 |  |  |  |  |  |  |  |  |  |
| UP3MG27001C0 |  | CU-P3 ; Trnk & Conduiting Works For ELV Syss (MED. Gas Plant RM) | 18d | 2011-04-14 A | 2011-10-17 | UP3MG26001C0 | 17% | 15d | 2011-05-16 | 2011-06-05 | -70d | 0d | ELECTRICAL [52.8 h]; Cost [2874.8 AED] | 2,874.8 | 718.7 | UP3MG27001C0 | 25 |  | UP | C | 27 | P3 | MG | ME | 270 | 01 | ETA | BILL 3 | B03 | MELV | R00 | ACF04 | MEP | 270 | 27010 | 45 |  |  |  |  |  |  |  |
| UP3MG22002C0 |  | CU-P3 ; Inst. Of Liquid Oxygen Tank (MED. Gas Plant RM) | 12d | 2011-06-28 A | 2011-06-30 A | UP3S203302C0 | 100% |  | 2011-07-23 | 2011-08-06 |  |  | Labor General [1.2 h]; Cost |  |  | UP3MG22002C0 |  |  | UP | C | 22 | P3 | MG | ME | 220 | 02 | ETA | BILL 3 | B03 | MPL | R00 | ACF04 | MEP | 220 | 22043 | 100 |  |  |  |  |  |  |  |
| UP3MG09901C0 |  | CU-P3 ; Wall Prime & 1st Coat (MED. Gas Plant RM) | 10d | 2011-07-06 A | 2011-10-05 | UP3MG09903C0 | 50% | 5d | 2011-10-08 | 2011-10-19 | -60d | 0d | WALL PAINT [590 h]; WALL PAINT [735 m2]; Cost |  |  | UP3MG09901C0 |  |  | UP | C | 09 | P3 | MG | PA | 099 | 01 | SIS | BILL 3 | B03 | 01 | R00 | ACF06 |  | 099 |  |  |  |  |  |  |  |  |  |
| UP3MG09903C0 |  | CU-P3 ; Ceiling Prime & 1st Coat (MED. Gas Plant RM) | 15d | 2011-07-14 A | 2011-08-30 A | UP3S203302C0 | 100% |  | 2011-09-28 | 2011-10-16 |  |  | Cost |  |  | UP3MG09903C0 |  |  | UP | C | 09 | P3 | MG | PA | 099 | 03 | SIS | BILL 3 | B03 | 01 | R00 | ACF06 |  | 099 |  |  | 100 | 50 |  |  |  |  |  |
| UP3MG09601C0 |  | CU-P3 ; Floor Finishing (MED. Gas Plant RM) | 10d | 2011-08-02 A | 2011-10-01 | UP3MG09903C0 | 95% | 0.5d | 2011-10-27 | 2011-11-12 | -9.5d | 73.5d | ASSORTED FLOOR FINISH [1952 h]; ASSORTED FLOOR FINISH [1082 m2]; Cost |  |  | UP3MG09601C0 |  |  | UP | C | 09 | P3 | MG | FF | 096 | 01 | SIS | BILL 3 | B03 | 01 | R00 | ACF06 |  | FF |  |  | 95 | 0 |  |  |  |  |  |
| UP3MG22003C0 |  | CU-P3 ; Inst. Of Vaporisers (MED. Gas Plant RM) | 12d | 2011-08-10 A | 2011-10-01 | UP3MG22002C0 FF, UP3MG22002C0 SS+7d | 95% | 0.6d | 2011-09-10 | 2011-09-24 | -30.6d | 2.4d | Labor General [1.2 h]; Cost |  |  | UP3MG22003C0 |  |  | UP | C | 22 | P3 | MG | ME | 220 | 03 | ETA | BILL 3 | B03 | MPL | R00 | ACF04 | MEP | 220 | 22081 | 100 | 95 | 0 |  |  |  |  |  |
| UP3MG26004C0 |  | CU-P3 ; Trnk / Conduit For Pwr, Light & Emerg. (MED. Gas Plant RM) | 20d | 2011-08-10 A | 2011-10-17 | UP3MG27001C0 FF, UP3MG27001C0 SS+14d | 25% | 15d | 2011-08-06 | 2011-08-29 | -70d | 0d | ELECTRICAL [490.8 h]; Cost [6501.63 AED] | 6,501.63 | 1,625.41 | UP3MG26004C0 |  | 7755.29 | UP | C | 26 | P3 | MG | ME | 260 | 04 | ETA | BILL 3 | B03 | MEL | R00 | ACF04 | MEP | 260 | 26020 | 45 | 25 | 0 |  |  |  |  |  |
| UP3MG22001C0 |  | CU-P3 ; Inst. Of Ox Pipe (MED. Gas Plant RM) | 6d | 2011-09-05 A | 2011-10-17 | UP3MG26004C0 FF, UP3MG26004C0 SS+10d |  | 10d | 2011-09-12 | 2011-09-18 | -70d | 0d | Labor General [1.2 h]; Cost |  |  | UP3MG22001C0 |  |  | UP | C | 22 | P3 | MG | ME | 220 | 01 | ETA | BILL 3 | B03 | MPL | R00 | ACF04 | MEP | 220 | 22024 | 25 |  |  |  |  |  |  |  |
| UP3MG26002C0 |  | CU-P3 ; Inst. Of Copper Tape (MED. Gas Plant RM) | 10d | 2011-09-05 A | 2011-10-05 | MGNMI00101M0 | 50% | 5d | 2011-09-01 | 2011-09-12 | -28d | 55d | ELECTRICAL [3754.8 h]; Cost [279946 AED] | 279,945.85 | 139,972.92 | UP3MG26002C0 |  |  | UP | C | 26 | P3 | MG | ME | 260 | 02 | ETA | BILL 3 | B03 | MEL | R00 | ACF04 | MEP | 260 | 26031 | 30 |  |  |  |  |  |  |  |
| UP3MG08101C0 |  | CU-P3 ; Door Frames (MED. Gas Plant RM) | 6d | 2011-10-01 | 2011-10-06 | UP2S204002C0 |  |  |  |  | -61d | 9d | ASSORTED DOORS [34 h]; Cost |  |  | UP3MG08101C0 |  |  | UP | C | 08 | P3 | MG | DO | 081 | 01 | SIS | BILL 3 | B03 | DF | R00 | ACF06 |  | 081 |  |  |  |  |  |  |  |  |  |
| UP3MG22004C0 |  | CU-P3 ; Inst. Of Control Mainfold (MED. Gas Plant RM) | 7d | 2011-10-01 | 2011-10-08 | UP3MG22002C0 FF+4d, UP3MG22003C0 FF+4d |  |  |  |  | -33d | 0d | Labor General [1.2 h]; Cost |  |  | UP3MG22004C0 |  |  | UP | C | 22 | P3 | MG | ME | 220 | 04 | ETA | BILL 3 | B03 | MPL | R00 | ACF04 | MEP | 220 | 22072 |  |  |  |  |  |  |  |  |
| UP3MG09902C0 |  | CU-P3 ; Wall 2nd Coat (MED. Gas Plant RM) | 6d | 2011-10-06 | 2011-10-12 | UP3MG09901C0 |  |  |  |  | -20d | 63d | WALL PAINT [318 h]; WALL PAINT [396 m2]; Cost |  |  | UP3MG09902C0 |  |  | UP | C | 09 | P3 | MG | PA | 099 | 02 | SIS | BILL 3 | B03 | 02 | R00 | ACF06 |  | 099 |  |  |  |  |  |  |  |  |  |
| UP3MG22005C0 |  | CU-P3 ; Valves / Pipe Conn. Works To Tanks (MED. Gas Plant RM) | 6d | 2011-10-09 | 2011-10-15 | UP3MG22004C0 |  |  |  |  | -33d | 0d | Labor General [1.2 h]; Cost |  |  | UP3MG22005C0 |  |  | UP | C | 22 | P3 | MG | ME | 220 | 05 | ETA | BILL 3 | B03 | MPL | R00 | ACF04 | MEP | 220 | 22062 |  |  |  |  |  |  |  |  |
| UP3MG09904C0 |  | CU-P3 ; Ceiling Final Coat (MED. Gas Plant RM) | 0d | 2011-10-16 | 2011-10-16 | UP3MG09903C0, UP3MG22005C0 |  |  |  |  | -33d | 50d | Cost |  |  | UP3MG09904C0 |  |  | UP | C | 09 | P3 | MG | PA | 099 | 04 | SIS | BILL 3 | B03 | 02 | R00 | ACF06 |  | 099 |  |  |  |  |  |  |  |  |  |
| UP3MG08102C0 |  | CU-P3 ; Doors (MED. Gas Plant RM) | 10d | 2011-10-18 | 2011-10-29 | UP3MG08101C0, UP3MG09901C0, UP3MG22001C0 |  |  |  |  | -70d | 0d | METAL DOORS [60 h]; METAL DOORS [6 no]; Cost |  |  | UP3MG08102C0 |  |  | UP | C | 08 | P3 | MG | DO | 081 | 02 | SIS | BILL 3 | B03 | DR | R00 | ACF06 |  | 081 |  |  |  |  |  |  |  |  |  |
| UP3MG26003C0 |  | CU-P3 ; Wiring / Cable Pulling Works (MED. Gas Plant RM) | 6d | 2011-10-18 | 2011-10-24 | UP3MG26004C0 |  |  |  |  | -47d | 0d | ELECTRICAL [8728.8 h]; Cost |  |  | UP3MG26003C0 |  |  | UP | C | 26 | P3 | MG | ME | 260 | 03 | ETA | BILL 3 | B03 | MEL | R00 | ACF07 | MEP | 260 | 26040 | 20 |  |  |  |  |  |  |  |
| UP3MG27002C0 |  | CU-P3 ; Wiring Works For ELV Systems (MED. Gas Plant RM) | 6d | 2011-10-18 | 2011-10-24 | UP3MG27001C0 |  |  |  |  | -53d | 17d | ELECTRICAL [46.8 h]; Cost |  |  | UP3MG27002C0 |  |  | UP | C | 27 | P3 | MG | ME | 270 | 02 | ETA | BILL 3 | B03 | MELV | R00 | ACF07 | MEP | 270 | 27020 | 20 |  |  |  |  |  |  |  |
| UP3MG26005C0 |  | CU-P3 ; Light Fittings / Sockets / Switches (MED. Gas Plant RM) | 6d | 2011-10-25 | 2011-10-31 | UP3MG26003C0 |  |  |  |  | -47d | 36d | ELECTRICAL [357.6 h]; Cost |  |  | UP3MG26005C0 |  |  | UP | C | 26 | P3 | MG | ME | 260 | 05 | ETA | BILL 3 | B03 | MEL | R00 | ACF07 | MEP | 260 | 26061 |  |  |  |  |  |  |  |  |
| UP3MG27003C0 |  | CU-P3 ; ELV Dev.- Sensors, Smk Detector / Spkrs (MED. Gas Plant RM) | 12d | 2011-11-17 | 2011-12-01 | UP3MG27002C0, UP3MG08102C0 FS+13d |  |  |  |  | -70d | 13d | ELECTRICAL [153.6 h]; Cost |  |  | UP3MG27003C0 |  |  | UP | C | 27 | P3 | MG | ME | 270 | 03 | ETA | BILL 3 | B03 | MELV | R00 | ACF07 | MEP | 270 | 27040 |  |  |  |  |  |  |  |  |
|  | 14 | **U/G FUEL OIL SYS** |  | 2011-04-11 | 2011-11-23 |  |  |  |  |  |  |  |  |  |  |  |  |  |  |  |  |  |  |  |  |  |  |  |  |  |  |  |  |  |  |  |  |  |  |  |  |  |  |
| UP3GF22009C0 |  | CU-P3 ; Plinths & Access Clearence From Ssjv (U/G Fuel Oil Sys) | 15.88d | 2011-04-11 A | 2011-05-31 A | UP3S403301C0 FS+18d, UP3S403301C0 FF | 100% |  | 2011-02-28 | 2011-03-17 |  |  | Labor General [9.6 h]; Cost |  |  | UP3GF22009C0 | 100 |  | UP | C | 22 | P3 | GF | ME | 220 | 09 | ETA | BILL 3 | B03 | MPL | R00 | ACF04 | MEP | 220 | 22077 |  |  |  |  |  |  |  |  |
| UP3GF22001C0 |  | CU-P3 ; Fuel Oil Pipe - Fuel Tanks To Boilers (U/G Fuel Oil Sys) | 24d | 2011-05-15 A | 2011-10-08 | UP3GF22003C0, UP3GF22004C0 | 75% | 6d | 2011-07-28 | 2011-08-25 | -27.88d | 0d | PLUMBING [4606.8 h]; Cost [2515549 AED] | 2,515,549.38 | 1,886,662.03 | UP3GF22001C0 | 20 |  | UP | C | 22 | P3 | GF | ME | 220 | 01 | ETA | BILL 3 | B03 | MPL | R00 | ACF04 | MEP | 220 | 22022 | 50 | 50 | 20 | 0 | 0 | 0 | 0 |  |
| UP3GF22003C0 |  | CU-P3 ; Inst. Of Fuel Oil Tanks - 7 Nos. (U/G Fuel Oil Sys) | 23d | 2011-05-15 A | 2011-05-24 A | UP3GF22009C0 | 100% |  | 2011-06-01 | 2011-06-29 |  |  | PLUMBING [10400.4 h]; Cost [5597577 AED] | 5,597,577.16 | 5,597,577.16 | UP3GF22003C0 | 100 |  | UP | C | 22 | P3 | GF | ME | 220 | 03 | ETA | BILL 3 | B03 | MPL | R00 | ACF04 | MEP | 220 | 22042 |  |  |  |  |  |  |  | ACCESS |
| UP3GF26001C0 |  | CU-P3 ; Inst. Of Trunking - Fuel Oil Pump Room (U/G Fuel Oil Sys) | 23d | 2011-05-15 A | 2011-06-13 A | UP3GF22009C0 | 100% |  | 2011-06-01 | 2011-06-29 |  |  | ELECTRICAL [490.8 h]; Cost [6501.63 AED] | 6,501.63 | 6,501.63 | UP3GF26001C0 | 50 | 15510.58 | UP | C | 26 | P3 | GF | ME | 260 | 01 | ETA | BILL 3 | B03 | MEL | R00 | ACF04 | MEP | 260 | 26020 | 90 |  |  |  |  |  |  |  |
| UP3GF27001C0 |  | CU-P3 ; Trunking & Conduiting Works For ELV Syss (U/G Fuel Oil Sys) | 18d | 2011-05-15 A | 2011-10-17 | UP3GF26001C0 | 17% | 15d | 2011-06-30 | 2011-07-21 | -67d | 0d | ELECTRICAL [52.8 h]; Cost [2874.8 AED] | 2,874.8 | 2,443.58 | UP3GF27001C0 | 50 | 994.86 | UP | C | 27 | P3 | GF | ME | 270 | 01 | ETA | BILL 3 | B03 | MELV | R00 | ACF04 | MEP | 270 | 27010 | 90 | 80 | 60 |  |  |  |  |  |
| UP3GF22004C0 |  | CU-P3 ; Piping Works To Fuel Tanks (U/G Fuel Oil Sys) | 24d | 2011-06-02 A | 2011-10-01 | UP3GF22003C0 | 98% | 0.48d | 2011-05-31 | 2011-06-27 | -27.88d | 0d | PLUMBING [4606.8 h]; Cost [2515549 AED] | 2,515,549.38 | 2,465,238.39 | UP3GF22004C0 |  |  | UP | C | 22 | P3 | GF | ME | 220 | 04 | ETA | BILL 3 | B03 | MPL | R00 | ACF04 | MEP | 220 | 22022 | 45 | 95 | 20 | 0 | 0 | 0 | 0 |  |
| UP3GF22008C0 |  | CU-P3 ; Pipe Conn. From Pumps To Fuel Day Tanks (U/G Fuel Oil Sys) | 24d | 2011-06-28 A | 2011-10-04 | UP3GF22007C0 | 85% | 3.6d | 2011-07-02 | 2011-07-30 | -19.96d | 63.04d | PLUMBING [4606.8 h]; Cost [2515549 AED] | 2,515,549.38 | 2,138,216.97 | UP3GF22008C0 |  | 291811.69 | UP | C | 22 | P3 | GF | ME | 220 | 08 | ETA | BILL 3 | B03 | MPL | R00 | ACF04 | MEP | 220 | 22025 | 35 | 40 | 15 | 0 | 0 | 0 | 0 |  |
| UP3GF22002C0 |  | CU-P3 ; Fuel Oil Pipe - Day Tanks To Gener. (U/G Fuel Oil Sys) | 18d | 2011-07-10 A | 2011-10-08 | UP3GF22001C0 FF, UP3GF22001C0 SS+14d | 70% | 5.4d | 2011-07-26 | 2011-08-16 | -27.88d | 0d | PLUMBING [4606.8 h]; Cost [2515549 AED] | 2,515,549.38 | 1,760,884.56 | UP3GF22002C0 |  |  | UP | C | 22 | P3 | GF | ME | 220 | 02 | ETA | BILL 3 | B03 | MPL | R00 | ACF04 | MEP | 220 | 22022 |  | 50 | 40 | 0 | 0 | 0 | 0 |  |
| UP3GF22006C0 |  | CU-P3 ; Clearence For Back Filling (U/G Fuel Oil Sys) | 6d | 2011-07-13 A | 2011-10-13 | UP3GF22005C0, UP3GF22010C0 | 40% | 3.6d | 2011-09-25 | 2011-10-02 | -27.88d | 55.12d | Labor General [1.2 h]; Cost |  |  | UP3GF22006C0 |  |  | UP | C | 22 | P3 | GF | ME | 220 | 06 | ETA | BILL 3 | B03 | MPL | R00 | ACF07 | MEP | 220 | 22010 |  |  |  |  |  |  |  |  |
| UP3GF21101C0 |  | CU-P3 ; Fire Fighting Pipes - Fuel Oil Pump Room (U/G Fuel Oil Sys) | 12d | 2011-08-10 A | 2011-10-29 | UP3GF27001C0 | 17% | 10d | 2011-08-08 | 2011-08-22 | -67d | 0d | MECHANICAL [487.2 h]; Cost [26612.8 AED] | 26,612.84 | 25,282.2 | UP3GF21101C0 |  | 3086.53 | UP | C | 21 | P3 | GF | ME | 211 | 01 | ETA | BILL 3 | B03 | MFS | R00 | ACF04 | MEP | 211 | 21140 | 60 | 95 | 0 |  |  |  |  |  |
| UP3GF22005C0 |  | CU-P3 ; Fuel Oil Pipe - Fuel Tanks To Day Tanks (U/G Fuel Oil Sys) | 24d | 2011-08-10 A | 2011-10-10 | UP3GF22002C0 FF, UP3GF22002C0 SS+16d | 70% | 7.2d | 2011-09-06 | 2011-10-03 | -27.88d | 0d | PLUMBING [4606.8 h]; Cost [2515549 AED] | 2,515,549.38 | 1,760,884.56 | UP3GF22005C0 |  |  | UP | C | 22 | P3 | GF | ME | 220 | 05 | ETA | BILL 3 | B03 | MPL | R00 | ACF04 | MEP | 220 | 22022 | 25 | 40 | 0 | 0 | 0 | 0 | 0 |  |
| UP3GF22007C0 |  | CU-P3 ; Fuel Oil Pumps - 7 No - Fuel Oil Pump Room (U/G Fuel Oil Sys) | 18d | 2011-08-10 A | 2011-10-01 | UP3GF22003C0 | 98% | 0.36d | 2011-08-11 | 2011-09-04 | -34.36d | 0d | PLUMBING [2862 h]; Cost [1562936 AED] | 1,562,935.56 | 1,531,676.85 | UP3GF22007C0 |  | 181300.54 | UP | C | 22 | P3 | GF | ME | 220 | 07 | ETA | BILL 3 | B03 | MPL | R00 | ACF04 | MEP | 220 | 22051 | 70 | 95 | 0 | 0 | 0 | 0 | 0 |  |
| UP3GF27002C0 |  | CU-P3 ; Wiring Works For ELV Systems (U/G Fuel Oil Sys) | 16d | 2011-08-10 A | 2011-10-13 | UP3GF27001C0 SS | 30% | 11.2d | 2011-08-08 | 2011-08-27 | -33.2d | 0d | ELECTRICAL [46.8 h]; Cost [2549.35 AED] | 2,549.35 | 764.81 | UP3GF27002C0 |  | 743.58 | UP | C | 27 | P3 | GF | ME | 270 | 02 | ETA | BILL 3 | B03 | MELV | R00 | ACF07 | MEP | 270 | 27020 | 75 | 25 | 0 |  |  |  |  |  |
| UP3GF27005C0 |  | CU-P3 ; Inst. Of DDC Panel (U/G Fuel Oil Sys) | 12d | 2011-08-10 A | 2011-10-01 | UP3GF27002C0 SS | 95% | 0.6d | 2011-08-27 | 2011-09-12 | -30.6d | 0d | ELECTRICAL [4558.8 h]; Cost [308717 AED] | 308,716.73 | 293,280.9 | UP3GF27005C0 |  |  | UP | C | 27 | P3 | GF | ME | 270 | 05 | ETA | BILL 3 | B03 | MELV | R00 | ACF07 | MEP | 270 | 27030 |  | 95 | 0 |  |  |  |  |  |
| UP3GF21103C0 |  | CU-P3 ; Sprinkler Droppers - Fuel Oil Pump Room (U/G Fuel Oil Sys) | 6d | 2011-09-05 A | 2011-11-23 | UP3GF21102C0 FS+2d |  | 10d | 2011-09-13 | 2011-09-20 | -67d | 16d | MECHANICAL [1309.2 h]; Cost [89258.4 AED] | 89,258.4 | 44,629.2 | UP3GF21103C0 |  |  | UP | C | 21 | P3 | GF | ME | 211 | 03 | ETA | BILL 3 | B03 | MFS | R00 | ACF07 | MEP | 211 | 21145 |  |  |  |  |  |  |  |  |
| UP3GF22010C0 |  | CU-P3 ; Lpg Gas Conn. To Boilers - By Others (U/G Fuel Oil Sys) | 6d | 2011-09-05 A | 2011-09-29 A | UP3GF22005C0 FF | 100% |  | 2011-09-15 | 2011-09-22 |  |  | Labor General [1.2 h]; Cost |  |  | UP3GF22010C0 |  |  | UP | C | 22 | P3 | GF | ME | 220 | 10 | ETA | BILL 3 | B03 | MPL | R00 | ACF04 | MEP | 220 | 22083 | 10 |  |  |  |  |  |  |  |
| UP3GF27004C0 |  | CU-P3 ; Wiring For Light, Pwr & Emerg. - Pump Room (U/G Fuel Oil Sys) | 6d | 2011-10-01 | 2011-10-06 | UP3GF26001C0 |  |  |  |  | -40d | 0d | ELECTRICAL [740.4 h]; Cost |  |  | UP3GF27004C0 |  |  | UP | C | 27 | P3 | GF | ME | 270 | 04 | ETA | BILL 3 | B03 | MELV | R00 | ACF07 | MEP | 270 | 27022 | 10 |  |  |  |  |  |  |  |
| UP3GF27006C0 |  | CU-P3 ; Dressing, Glanding & Termin. Of DDC Pnls (U/G Fuel Oil Sys) | 6d | 2011-10-01 | 2011-10-08 | UP3GF27005C0 |  |  |  |  | -30.6d | 0d | ELECTRICAL [259.2 h]; Cost |  |  | UP3GF27006C0 |  |  | UP | C | 27 | P3 | GF | ME | 270 | 06 | ETA | BILL 3 | B03 | MELV | R00 | ACF07 | MEP | 270 | 27051 |  |  |  |  |  |  |  |  |
| UP3GF27007C0 |  | CU-P3 ; Bms Conn. Works To Equipments (U/G Fuel Oil Sys) | 6d | 2011-10-03 | 2011-10-10 | UP3GF27006C0 FF+2d |  |  |  |  | -30.6d | 2.6d | ELECTRICAL [54 h]; Cost |  |  | UP3GF27007C0 |  |  | UP | C | 27 | P3 | GF | ME | 270 | 07 | ETA | BILL 3 | B03 | MELV | R00 | ACF07 | MEP | 270 | 27060 |  |  |  |  |  |  |  |  |
| UP3GF26002C0 |  | CU-P3 ; Isolators & Elec. Conn. To Pumps-Pump Room (U/G Fuel Oil Sys) | 6d | 2011-10-08 | 2011-10-13 | UP3GF22007C0, UP3GF27004C0 |  |  |  |  | -40d | 0d | ELECTRICAL [270 h]; Cost |  |  | UP3GF26002C0 |  |  | UP | C | 26 | P3 | GF | ME | 260 | 02 | ETA | BILL 3 | B03 | MEL | R00 | ACF04 | MEP | 260 | 26073 | 45 |  |  |  |  |  |  |  |
| UP3GF27003C0 |  | CU-P3 ; ELV Dev.- Sensors, Smk Detector / Spkrs (U/G Fuel Oil Sys) | 6d | 2011-10-13 | 2011-10-20 | UP3GF27002C0, UP3GF27007C0 |  |  |  |  | -33.2d | 49.8d | ELECTRICAL [153.6 h]; Cost |  |  | UP3GF27003C0 |  |  | UP | C | 27 | P3 | GF | ME | 270 | 03 | ETA | BILL 3 | B03 | MELV | R00 | ACF07 | MEP | 270 | 27040 |  |  |  |  |  |  |  |  |
| UP3GF26003C0 |  | CU-P3 ; Inst. Of Lights / Switches / Sockets (U/G Fuel Oil Sys) | 12d | 2011-10-15 | 2011-10-27 | UP3GF26002C0 |  |  |  |  | -40d | 43d | ELECTRICAL [357.6 h]; Cost |  |  | UP3GF26003C0 |  |  | UP | C | 26 | P3 | GF | ME | 260 | 03 | ETA | BILL 3 | B03 | MEL | R00 | ACF07 | MEP | 260 | 26061 |  |  |  |  |  |  |  |  |
| UP3GF21102C0 |  | CU-P3 ; Press. Tst Fire Fight. Pipe - Pump Room (U/G Fuel Oil Sys) | 7d | 2011-10-30 | 2011-11-09 | UP3GF21101C0 |  |  |  |  | -67d | 0d | MECHANICAL [487.2 h]; Cost |  |  | UP3GF21102C0 |  |  | UP | C | 21 | P3 | GF | ME | 211 | 02 | ETA | BILL 3 | B03 | MFS | R00 | ACF07 | MEP | 211 | 21180 | 25 |  |  |  |  |  |  |  |

| ID | WBS | Activity | Duration | Start | Finish | Predecessors | Complete | Remaining | Planned start | Planned finish | Total float | Free float | Resources | Cost | Actual cost | user_number8 | user_integer1 | user_integer2 | user_number7 | change id | RENZ % COMPLETE | July2011 Target% Complete | Claimed This Month | CCAD BUILDING(SET) | CCAD PHASE(SET) | CCAD DIVISION(SET) | CCAD FLOOR(SET) | CCAD ZONE(SET) | CCAD WORK(SET) | CCAD SECTION(SET) | CCAD SERIAL No.(SET) | CCAD RESPONSIBILITY(SET) | CCAD CBS(SET) | CCAD BILL(SET) | CCAD TAG(SET) | CCAD REV(SET) | CCADACF (SET) | CCAD CSA | CCAD SSCF | DIVISION FOR ACTIVITY ID | P_811 | P_711 |
| --- | --- | --- | --- | --- | --- | --- | --- | --- | --- | --- | --- | --- | --- | --- | --- | --- | --- | --- | --- | --- | --- | --- | --- | --- | --- | --- | --- | --- | --- | --- | --- | --- | --- | --- | --- | --- | --- | --- | --- | --- | --- | --- |
|  | 15 | **CORR & STR CASE** |  | 2011-04-21 | 2011-12-14 |  |  |  |  |  |  |  |  |  |  |  |  |  |  |  |  |  |  |  |  |  |  |  |  |  |  |  |  |  |  |  |  |  |  |  |  |  |
| UP3CS26004C0 |  | CU-P3 ; Inst. Of Back Boxes & Conduites On Wall (Public Area) | 8d | 2011-04-21 A | 2011-10-02 | UP2S304002C0 | 85% | 1.2d | 2011-05-09 | 2011-05-18 | -79.6d | 0d | ELECTRICAL [2090.4 h]; Cost [6501.63 AED] | 6,501.63 | 5,526.38 | 0 | 0 | 0 | 0 | UP3CS26004C0 | 45 | 75 | 42471.75 | UP | C | 26 | P3 | CS | ME | 260 | 04 | ETA | BILL 3 | B03 | MEL | R00 | ACF04 | MEP | 260 |  |  |  |
| UP3CS21101C0 |  | CU-P3 ; Inst. Of Fire Fighting Pipe (Public Area) | 16d | 2011-05-15 A | 2011-10-17 | UP3CS23004C0 | 50% | 8d | 2011-08-23 | 2011-09-13 | -38.6d | 0d | MECHANICAL [487.2 h]; Cost [26612.8 AED] | 26,612.84 | 13,306.42 | 0 | 0 | 0 | 0 | UP3CS21101C0 | 25 |  |  | UP | C | 21 | P3 | CS | ME | 211 | 01 | ETA | BILL 3 | B03 | MFS | R00 | ACF04 | MEP | 211 | 21140 |  |  |
| UP3CS22001C0 |  | CU-P3 ; Drain. Pipe H/L (Storm / Rain Water Pipe) (Public Area) | 12d | 2011-05-15 A | 2011-10-03 | UP3CS26004C0 | 85% | 1.8d | 2011-07-19 | 2011-08-02 | -79.6d | 0d | PLUMBING [7581.6 h]; Cost [517466 AED] | 517,466.42 | 439,846.46 | 0 | 0 | 0 | 0 | UP3CS22001C0 | 35 | 50 |  | UP | C | 22 | P3 | CS | ME | 220 | 01 | ETA | BILL 3 | B03 | MPL | R00 | ACF04 | MEP | 220 | 22020 | 75 | 35 |
| UP3CS23001C0 |  | CU-P3 ; Duct Supp. & Ducting (Supply/Rtrn&Fire R) (Public Area) | 18d | 2011-05-15 A | 2011-10-13 | UP3CS23004C0 SS+10d | 50% | 8.96d | 2011-08-16 | 2011-09-08 | -40.98d | 0d | MECHANICAL [669.6 h]; Cost [37738.7 AED] | 37,738.68 | 18,869.34 | 0 | 0 | 0 | 0 | UP3CS23001C0 | 25 |  |  | UP | C | 23 | P3 | CS | ME | 230 | 01 | ETA | BILL 3 | B03 | MHV | R00 | ACF04 | MEP | 230 | 23015 | 35 | 25 |
| UP3CS23004C0 |  | CU-P3 ; Inst. Of CHW Pipe Supp.s & Piping Works (Public Area) | 16.07d | 2011-05-15 A | 2011-10-08 | UP3CS26001C0 FF, UP3CS26001C0 SS+4d | 75% | 4.02d | 2011-08-04 | 2011-08-23 | -40.98d | 0d | MECHANICAL [669.6 h]; Cost [37738.7 AED] | 37,738.68 | 28,304.01 |  |  |  |  | UP3CS23004C0 | 25 |  |  | UP | C | 23 | P3 | CS | ME | 230 | 04 | ETA | BILL 3 | B03 | MHV | R00 | ACF04 | MEP | 230 | 23010 | 75 | 25 |
| UP3CS26001C0 |  | CU-P3 ; Inst. Of Trunking & Conduiting (Public Area) | 18d | 2011-05-15 A | 2011-10-08 | UP3CS27002C0 FF, UP3CS27002C0 SS+6d | 70% | 5.4d | 2011-07-31 | 2011-08-21 | -45.4d | 0d | ELECTRICAL [490.8 h]; Cost [6501.63 AED] | 6,501.63 | 4,551.14 | 0 | 0 | 0 | 0 | UP3CS26001C0 | 45 |  | 3102.12 | UP | C | 26 | P3 | CS | ME | 260 | 01 | ETA | BILL 3 | B03 | MEL | R00 | ACF04 | MEP | 260 | 26020 | 60 | 45 |
| UP3CS26002C0 |  | CU-P3 ; Inst. Of Cable Tray (Public Area) | 24d | 2011-05-15 A | 2011-10-10 | UP3CS26001C0 SS | 70% | 7.2d | 2011-07-31 | 2011-08-28 | -45.4d | 0d | ELECTRICAL [703.2 h]; Cost [10561.5 AED] | 10,561.54 | 7,393.07 | 0 | 0 | 0 | 0 | UP3CS26002C0 | 10 |  | 9199.38 | UP | C | 26 | P3 | CS | ME | 260 | 02 | ETA | BILL 3 | B03 | MEL | R00 | ACF04 | MEP | 260 | 26030 | 65 | 50 |
| UP3CS27002C0 |  | CU-P3 ; Trunking & Conduiting Works For ELV Syss (Public Area) | 12d | 2011-05-15 A | 2011-10-05 | UP3CS22001C0 FF, UP3CS22001C0 SS+4d | 70% | 3.6d | 2011-07-24 | 2011-08-07 | -79.6d | 0d | ELECTRICAL [52.8 h]; Cost [2874.8 AED] | 2,874.8 | 2,012.36 | 0 | 0 | 0 | 0 | UP3CS27002C0 | 45 |  | 663.25 | UP | C | 27 | P3 | CS | ME | 270 | 02 | ETA | BILL 3 | B03 | MELV | R00 | ACF04 | MEP | 270 | 27010 | 60 | 45 |
| UP3CS09901C0 |  | CU-P3 ; Wall Prime & 1st Coat (Public Area) | 10d | 2011-06-22 A | 2011-10-05 | UP2S304002C0 | 50% | 5d | 2011-08-03 | 2011-08-15 | -31d | 0d | WALL PAINT [590 h]; WALL PAINT [735 m2]; Cost |  |  | 0 | 0 | 0 | 0 | UP3CS09901C0 |  |  | 22470.68 | UP | C | 09 | P3 | CS | PA | 099 | 01 | SIS | BILL 3 | B03 | 01 | R00 | ACF06 |  | 099 |  |  |  |
| UP3CS09902C0 |  | CU-P3 ; Wall 2nd Coat (Public Area) | 7d | 2011-07-10 A | 2011-10-12 | UP3CS09901C0 | 25% | 5.25d | 2011-10-01 | 2011-10-09 | -19.25d | 63.75d | WALL PAINT [318 h]; WALL PAINT [396 m2]; Cost |  |  | 0 | 0 | 0 | 0 | UP3CS09902C0 |  |  |  | UP | C | 09 | P3 | CS | PA | 099 | 02 | SIS | BILL 3 | B03 | 02 | R00 | ACF06 |  | 099 |  |  |  |
| UP3CS09903C0 |  | CU-P3 ; Ceiling Prime & 1st Coat (Public Area) | 8d | 2011-07-10 A | 2011-10-08 | UP3CS21101C0 SS | 100% | 0d | 2011-09-07 | 2011-09-17 | -26.6d | 0d | Cost |  |  |  |  |  |  | UP3CS09903C0 |  |  |  | UP | C | 09 | P3 | CS | PA | 099 | 03 | SIS | BILL 3 | B03 | 01 | R00 | ACF06 |  | 099 |  |  |  |
| UP3CS09904C0 |  | CU-P3 ; Ceiling Final Coat (Public Area) | 8d | 2011-07-10 A | 2011-10-08 | UP3CS09903C0 | 100% | 0d | 2011-09-21 | 2011-10-01 | -26.6d | 56.4d | Cost |  |  |  |  |  |  | UP3CS09904C0 |  |  |  | UP | C | 09 | P3 | CS | PA | 099 | 04 | SIS | BILL 3 | B03 | 02 | R00 | ACF06 |  | 099 |  |  |  |
| UP3CS23007C0 |  | CU-P3 ; Press. Tst CHW Pipe & Insp. By Cnslt (Public Area) | 7d | 2011-07-10 A | 2011-10-02 | MGNMI00101M0 | 75% | 1.75d | 2011-09-07 | 2011-09-15 | -23.75d | 0d | MECHANICAL [2419.2 h]; Cost [1321086 AED] | 1,321,085.76 | 990,814.32 | 0 | 0 | 0 | 0 | UP3CS23007C0 |  |  |  | UP | C | 23 | P3 | CS | ME | 230 | 07 | ETA | BILL 3 | B03 | MHV | R00 | ACF07 | MEP | 230 | 23090 |  |  |
| UP3CS21102C0 |  | CU-P3 ; Press. Tst Fire Fight Pipe & Insp.By Cnslt (Public Area) | 5d | 2011-08-10 A | 2011-10-22 | UP3CS21101C0 | 20% | 4d | 2011-09-13 | 2011-09-19 | -38.6d | 44.4d | MECHANICAL [487.2 h]; Cost [26612.8 AED] | 26,612.84 | 5,322.57 |  |  |  |  | UP3CS21102C0 |  |  |  | UP | C | 21 | P3 | CS | ME | 211 | 02 | ETA | BILL 3 | B03 | MFS | R00 | ACF07 | MEP | 211 | 21180 | 20 | 0 |
| UP3CS23002C0 |  | CU-P3 ; Inst. Of Vcd'S / Fire Dampers (Public Area) | 20d | 2011-08-10 A | 2011-10-18 | UP3CS23001C0 SS | 35% | 13d | 2011-08-14 | 2011-09-08 | -40.98d | 0d | MECHANICAL [87.6 h]; Cost [4756.4 AED] | 4,756.4 | 1,664.74 |  |  |  |  | UP3CS23002C0 |  |  | 551.74 | UP | C | 23 | P3 | CS | ME | 230 | 02 | ETA | BILL 3 | B03 | MHV | R00 | ACF04 | MEP | 230 | 23070 | 35 | 0 |
| UP3CS27001C0 |  | CU-P3 ; Wiring For Small Pwr / Lighting & Emerg. (Public Area) | 21d | 2011-08-10 A | 2011-10-19 | UP3CS26002C0 SS+12d | 25% | 15.75d | 2011-08-14 | 2011-09-10 | -42.95d | 0d | ELECTRICAL [740.4 h]; Cost [10136.5 AED] | 10,136.46 | 2,534.11 |  |  |  |  | UP3CS27001C0 |  |  |  | UP | C | 27 | P3 | CS | ME | 270 | 01 | ETA | BILL 3 | B03 | MELV | R00 | ACF07 | MEP | 270 | 27021 | 25 | 0 |
| UP3CS27003C0 |  | CU-P3 ; Wiring Works For ELV Systems (Public Area) | 12d | 2011-08-10 A | 2011-10-13 | UP3CS27002C0 | 40% | 7.2d | 2011-08-22 | 2011-09-06 | -79.6d | 0d | ELECTRICAL [46.8 h]; Cost [2549.35 AED] | 2,549.35 | 1,019.74 |  |  |  |  | UP3CS27003C0 |  |  | 594.87 | UP | C | 27 | P3 | CS | ME | 270 | 03 | ETA | BILL 3 | B03 | MELV | R00 | ACF07 | MEP | 270 | 27020 | 35 | 0 |
| UP3CS27005C0 |  | CU-P3 ; Inst. Of Fm 200 Control Panel (Public Area) | 7d | 2011-08-10 A | 2011-10-13 | UP3CS27003C0 FF | 80% | 1.4d | 2011-08-28 | 2011-09-06 | -79.6d | 0d | Labor General [1.2 h]; Cost |  |  |  |  |  |  | UP3CS27005C0 |  |  |  | UP | C | 27 | P3 | CS | ME | 270 | 05 | ETA | BILL 3 | B03 | MELV | R00 | ACF07 | MEP | 270 | 27031 | 80 | 0 |
| UP3CS27006C0 |  | CU-P3 ; Inst. Of Foam Control Panel (Public Area) | 7d | 2011-08-10 A | 2011-10-26 | UP3CS27005C0 SS+7d |  | 12d | 2011-09-03 | 2011-09-10 | -79.6d | 0d | Labor General [1.2 h]; Cost |  |  |  |  |  |  | UP3CS27006C0 |  |  |  | UP | C | 27 | P3 | CS | ME | 270 | 06 | ETA | BILL 3 | B03 | MELV | R00 | ACF07 | MEP | 270 | 27031 | 25 | 0 |
| UP3CS27007C0 |  | CU-P3 ; Dressing, Glanding & Termmin. Of Ctrl Pnl (Public Area) | 11.88d | 2011-08-10 A | 2011-11-22 | UP3CS26002C0 FF, UP3CS27006C0 FF, UP3CS27006C0 SS |  | 32d | 2011-09-03 | 2011-09-15 | -79.6d | 0d | ELECTRICAL [259.2 h]; Cost [18867.6 AED] | 18,867.56 | 3,773.51 |  |  |  |  | UP3CS27007C0 |  |  |  | UP | C | 27 | P3 | CS | ME | 270 | 07 | ETA | BILL 3 | B03 | MELV | R00 | ACF07 | MEP | 270 | 27050 | 20 | 0 |
| UP3CS08101C0 |  | CU-P3 ; Door Frames (Public Area) | 6d | 2011-09-05 A | 2011-10-06 | UP3S304002C0, UP3S304004C0 | 10% | 5.4d | 2011-09-01 | 2011-09-07 | -31.4d | 0d | ASSORTED DOORS [34 h]; Cost |  |  |  |  |  |  | UP3CS08101C0 |  |  |  | UP | C | 08 | P3 | CS | DO | 081 | 01 | SIS | BILL 3 | B03 | DF | R00 | ACF06 |  | 081 |  |  |  |
| UP3CS23003C0 |  | CU-P3 ; Inst. Of Diffusers (Public Area) | 6d | 2011-09-05 A | 2011-10-24 | UP3CS23002C0 | 10% | 5.4d | 2011-09-22 | 2011-09-29 | -40.98d | 42.02d | MECHANICAL [1317.6 h]; Cost [8501 AED] | 8,501 | 850.1 |  |  |  |  | UP3CS23003C0 |  |  |  | UP | C | 23 | P3 | CS | ME | 230 | 03 | ETA | BILL 3 | B03 | MHV | R00 | ACF04 | MEP | 230 | 23050 |  |  |
| UP3CS23008C0 |  | CU-P3 ; Insul. Of CHW Pipe & Insp. By Consultant (Public Area) | 6d | 2011-10-02 | 2011-10-09 | UP3CS23007C0 |  |  |  |  | -23.75d | 59.25d | MECHANICAL [903.6 h]; Cost |  |  |  |  |  |  | UP3CS23008C0 |  |  |  | UP | C | 23 | P3 | CS | ME | 230 | 08 | ETA | BILL 3 | B03 | MHV | R00 | ACF04 | MEP | 230 | 23080 |  |  |
| UP3CS08102C0 |  | CU-P3 ; Doors (Public Area) | 6d | 2011-10-06 | 2011-10-13 | UP3CS08101C0, UP3CS09901C0 |  |  |  |  | -31.4d | 51.6d | METAL DOORS [60 h]; METAL DOORS [6 no]; Cost |  |  |  |  |  |  | UP3CS08102C0 |  |  |  | UP | C | 08 | P3 | CS | DO | 081 | 02 | SIS | BILL 3 | B03 | DR | R00 | ACF06 |  | 081 |  |  |  |
| UP3CS09601C0 |  | CU-P3 ; Floor Finishing (Public Area) | 6d | 2011-10-06 | 2011-10-13 | UP3CS08101C0 |  |  |  |  | -20.4d | 62.6d | ASSORTED FLOOR FINISH [1952 h]; ASSORTED FLOOR FINISH [1082 m2]; Cost |  |  |  |  |  |  | UP3CS09601C0 |  |  | 31313.1 | UP | C | 09 | P3 | CS | FF | 096 | 01 | SIS | BILL 3 | B03 | 01 | R00 | ACF06 |  | FF |  |  |  |
| UP3CS21103C0 |  | CU-P3 ; Inst. Of Sprinkler Heads (Public Area) | 6d | 2011-10-06 | 2011-10-13 | UP3CS08101C0 |  |  |  |  | -31.4d | 51.6d | MECHANICAL [70.8 h]; Cost |  |  |  |  |  |  | UP3CS21103C0 |  |  |  | UP | C | 21 | P3 | CS | ME | 211 | 03 | ETA | BILL 3 | B03 | MFS | R00 | ACF04 | MEP | 211 | 21150 |  |  |
| UP3CS21104C0 |  | CU-P3 ; Inst. Of Fire Extinguishers / Fhc (Public Area) | 6d | 2011-10-06 | 2011-10-13 | UP3CS08101C0 |  |  |  |  | -27.4d | 55.6d | MECHANICAL [166.8 h]; Cost |  |  |  |  |  |  | UP3CS21104C0 |  |  |  | UP | C | 21 | P3 | CS | ME | 211 | 04 | ETA | BILL 3 | B03 | MFS | R00 | ACF04 | MEP | 211 | 21160 |  |  |
| UP3CS23005C0 |  | CU-P3 ; Inst. Of Valves / Pipe Conn. Works (Public Area) | 6d | 2011-10-08 | 2011-10-15 | UP3CS23004C0 |  |  |  |  | -32.6d | 50.4d | Labor General [1.2 h]; Cost |  |  |  |  |  |  | UP3CS23005C0 |  |  |  | UP | C | 23 | P3 | CS | ME | 230 | 05 | ETA | BILL 3 | B03 | MHV | R00 | ACF04 | MEP | 230 | 23053 |  |  |
| UP3CS23006C0 |  | CU-P3 ; Inst. Of Fcu'S (Public Area) | 6d | 2011-10-08 | 2011-10-15 | UP3CS23004C0 |  |  |  |  | -32.6d | 50.4d | MECHANICAL [951.6 h]; Cost |  |  |  |  |  |  | UP3CS23006C0 |  |  |  | UP | C | 23 | P3 | CS | ME | 230 | 06 | ETA | BILL 3 | B03 | MHV | R00 | ACF04 | MEP | 230 | 23052 |  |  |
| UP3CS26003C0 |  | CU-P3 ; Light Fittings / Sockets / Switches (Public Area) | 6d | 2011-10-19 | 2011-10-26 | UP3CS27001C0 |  |  |  |  | -42.95d | 40.05d | ELECTRICAL [357.6 h]; Cost |  |  |  |  |  |  | UP3CS26003C0 |  |  |  | UP | C | 26 | P3 | CS | ME | 260 | 03 | ETA | BILL 3 | B03 | MEL | R00 | ACF07 | MEP | 260 | 26061 |  |  |
| UP3CS27004C0 |  | CU-P3 ; ELV Dev.- Smk Detector / Pull Stn./ Spkrs (Public Area) | 12d | 2011-11-29 | 2011-12-14 | UP3CS27003C0, UP3CS27007C0 FS+5d |  |  |  |  | -79.6d | 3.4d | ELECTRICAL [153.6 h]; Cost |  |  |  |  |  |  | UP3CS27004C0 |  |  |  | UP | C | 27 | P3 | CS | ME | 270 | 04 | ETA | BILL 3 | B03 | MELV | R00 | ACF07 | MEP | 270 | 27041 |  |  |

| ID | WBS | Activity | Duration | Start | Finish | Predecessors | Complete | Remaining | Planned start | Planned finish | Total float | Free float | Resources | Cost | Actual cost | change id | RENZ % COMPLETE | Claimed This Month | P_811 | P_711 | CCAD BUILDING(SET) | CCAD PHASE(SET) | CCAD DIVISION(SET) | CCAD FLOOR(SET) | CCAD ZONE(SET) | CCAD WORK(SET) | CCAD SECTION(SET) | CCAD SERIAL No.(SET) | CCAD RESPONSIBILITY(SET) | CCAD CBS(SET) | CCAD BILL(SET) | CCAD TAG(SET) | CCAD REV(SET) | CCADACF (SET) | CCAD CSA | CCAD SSCF | DIVISION FOR ACTIVITY ID | user_number8 | user_integer1 | user_integer2 | user_number7 |
| --- | --- | --- | --- | --- | --- | --- | --- | --- | --- | --- | --- | --- | --- | --- | --- | --- | --- | --- | --- | --- | --- | --- | --- | --- | --- | --- | --- | --- | --- | --- | --- | --- | --- | --- | --- | --- | --- | --- | --- | --- | --- |
|  | 16 | **BOILER & H/W PUMP RM** |  | 2011-04-18 | 2011-12-22 |  |  |  |  |  |  |  |  |  |  |  |  |  |  |  |  |  |  |  |  |  |  |  |  |  |  |  |  |  |  |  |  |  |  |  |  |
| UP3BH26006C0 |  | CU-P3 ; Back Boxes & Conduites On Wall (Boiler & Pump RM) | 7.88d | 2011-04-18 A | 2011-10-02 | UP2S304001C0 FF, UP3S304001C0, UP3S304003C0 | 85% | 1.18d | 2011-06-08 | 2011-06-16 | -49.6d | 0d | ELECTRICAL [490.8 h]; Cost [6501.63 AED] | 6,501.63 | 5,526.38 | UP3BH26006C0 | 35 | 4653.15 | 85 | 35 | UP | C | 26 | P3 | BH | ME | 260 | 06 | ETA | BILL 3 | B03 | MEL | R00 | ACF04 | MEP | 260 |  |  |  |  |  |
| UP3BH03301C0 |  | CU-P3 ; Equipment Plinth. (Boiler & Pump RM) | 14d | 2011-05-15 A | 2011-07-31 A | UP3S304001C0 | 100% |  | 2011-06-16 | 2011-07-04 |  |  | Labor General [16 h]; Cost |  |  | UP3BH03301C0 | 90 |  |  |  | UP | C | 03 | P3 | BH | CT | 033 | 01 | SIS | BILL 3 | B03 | 10 | R00 | ACF03 |  | 033 |  |  |  |  |  |
| UP3BH22014C0 |  | CU-P3 ; Inst. Of Drainage Pipe (Boiler & Pump RM) | 10d | 2011-05-15 A | 2011-10-02 | UP3BH26006C0 SS | 85% | 1.5d | 2011-07-13 | 2011-07-25 | -49.6d | 0d | PLUMBING [298.8 h]; Cost [16284.7 AED] | 16,284.74 | 13,842.03 | UP3BH22014C0 | 75 | 944.52 | 85 | 75 | UP | C | 22 | P3 | BH | ME | 220 | 14 | ETA | BILL 3 | B03 | MPL | R00 | ACF04 | MEP | 220 | 22020 |  |  |  |  |
| UP3BH26002C0 |  | CU-P3 ; Inst. Of Trunking & Conduiting (Boiler & Pump RM) | 14d | 2011-05-15 A | 2011-10-15 | UP3BH27002C0 FF, UP3BH27002C0 SS+8d | 40% | 8.4d | 2011-07-28 | 2011-08-14 | -49.6d | 0d | ELECTRICAL [490.8 h]; Cost [6501.63 AED] | 6,501.63 | 2,600.65 | UP3BH26002C0 | 35 |  |  |  | UP | C | 26 | P3 | BH | ME | 260 | 02 | ETA | BILL 3 | B03 | MEL | R00 | ACF04 | MEP | 260 | 26020 | 0 | 0 | 0 | 0 |
| UP3BH27002C0 |  | CU-P3 ; Trnk & Conduiting Works For ELV Syss (Boiler & Pump RM) | 18d | 2011-05-15 A | 2011-10-15 | UP3BH22014C0 SS+5d | 30% | 12.6d | 2011-07-19 | 2011-08-09 | -49.6d | 0d | ELECTRICAL [52.8 h]; Cost [2874.8 AED] | 2,874.8 | 862.44 | UP3BH27002C0 | 25 |  |  |  | UP | C | 27 | P3 | BH | ME | 270 | 02 | ETA | BILL 3 | B03 | MELV | R00 | ACF04 | MEP | 270 | 27010 |  |  |  |  |
| UP3BH22001C0 |  | CU-P3 ; Boilers (6 Nos, 3 Nos. Stand By) (Boiler & Pump RM) | 27d | 2011-06-08 A | 2011-07-13 A | UP3BH03301C0 | 100% |  | 2011-06-08 | 2011-07-11 |  |  | PLUMBING [7608 h]; Cost [4154010 AED] | 4,154,009.76 | 4,154,009.76 | UP3BH22001C0 |  | 9249640.93 |  |  | UP | C | 22 | P3 | BH | ME | 220 | 01 | ETA | BILL 3 | B03 | MPL | R00 | ACF04 | MEP | 220 | 22040 |  |  |  |  |
| UP3BH22005C0 |  | CU-P3 ; Primary Hot Water Pumps (6 Nos.) (Boiler & Pump RM) | 18d | 2011-07-05 A | 2011-07-26 A | UP3BH03301C0 | 100% |  | 2011-08-23 | 2011-09-15 |  |  | PLUMBING [1467.6 h]; Cost [801121 AED] | 801,121.41 | 801,121.41 | UP3BH22005C0 |  |  |  |  | UP | C | 22 | P3 | BH | ME | 220 | 05 | ETA | BILL 3 | B03 | MPL | R00 | ACF04 | MEP | 220 | 22050 |  |  |  |  |
| UP3BH09903C0 |  | CU-P3 ; Ceiling Prime & 1st Coat (Boiler & Pump RM) | 9d | 2011-07-10 A | 2011-10-01 | UP3BH03301C0 | 100% | 0d | 2011-08-10 | 2011-08-20 | -28d | 0d | Cost |  |  | UP3BH09903C0 |  |  | 75 | 50 | UP | C | 09 | P3 | BH | PA | 099 | 03 | SIS | BILL 3 | B03 | 01 | R00 | ACF06 |  | 099 |  |  |  |  |  |
| UP3BH09904C0 |  | CU-P3 ; Ceiling Final Coat (Boiler & Pump RM) | 6d | 2011-07-10 A | 2011-10-01 | UP3BH09903C0 | 100% | 0d | 2011-09-14 | 2011-09-21 | -28d | 8d | Cost |  |  | UP3BH09904C0 |  |  | 75 | 50 | UP | C | 09 | P3 | BH | PA | 099 | 04 | SIS | BILL 3 | B03 | 02 | R00 | ACF06 |  | 099 |  |  |  |  |  |
| UP3BH23004C0 |  | CU-P3 ; Press. Tst CHW Pipe & Insp. By Cnslt (Boiler & Pump RM) | 7d | 2011-07-10 A | 2011-10-12 | UP3BH23003C0 SS | 50% | 3.5d | 2011-08-15 | 2011-08-23 | -38.7d | 0d | MECHANICAL [2419.2 h]; Cost [1321086 AED] | 1,321,085.76 | 660,542.88 | UP3BH23004C0 |  |  |  |  | UP | C | 23 | P3 | BH | ME | 230 | 04 | ETA | BILL 3 | B03 | MHV | R00 | ACF07 | MEP | 230 | 23090 |  |  |  |  |
| UP3BH23001C0 |  | CU-P3 ; CHW Pipe Supp.s & Piping Works (Boiler & Pump RM) | 24d | 2011-07-13 A | 2011-10-19 | UP3BH26002C0 FF, UP3BH26002C0 SS+6d | 50% | 12d | 2011-08-14 | 2011-09-13 | -38.7d | 0d | MECHANICAL [669.6 h]; Cost [37738.7 AED] | 37,738.68 | 18,869.34 | UP3BH23001C0 |  |  |  |  | UP | C | 23 | P3 | BH | ME | 230 | 01 | ETA | BILL 3 | B03 | MHV | R00 | ACF04 | MEP | 230 | 23010 | 0 | 0 | 0 | 0 |
| UP3BH21111C0 |  | CU-P3 ; Pipe For - Foam Deluge System (Boiler & Pump RM) | 18d | 2011-08-10 A | 2011-10-19 | UP3BH23001C0 FF, UP3BH23001C0 SS+7d | 80% | 3.6d | 2011-08-14 | 2011-09-06 | -32.2d | 0d | MECHANICAL [2942.4 h]; Cost [94855.2 AED] | 94,855.22 | 75,884.18 | UP3BH21111C0 |  |  | 75 | 0 | UP | C | 21 | P3 | BH | ME | 211 | 11 | ETA | BILL 3 | B03 | MFS | R00 | ACF04 | MEP | 211 | 21141 | 0 | 0 | 0 | 0 |
| UP3BH22003C0 |  | CU-P3 ; Inst. Of Main Header Hot Water Pipe (Boiler & Pump RM) | 21d | 2011-08-10 A | 2011-10-23 | UP3BH22014C0, UP3BH23001C0 FF, UP3BH23001C0 SS+7d | 25% | 15.75d | 2011-08-14 | 2011-09-10 | -35.51d | 0d | PLUMBING [126 h]; Cost [6875.16 AED] | 6,875.16 | 1,718.79 | UP3BH22003C0 |  |  | 25 | 0 | UP | C | 22 | P3 | BH | ME | 220 | 03 | ETA | BILL 3 | B03 | MPL | R00 | ACF04 | MEP | 220 | 22021 |  |  |  |  |
| UP3BH22006C0 |  | CU-P3 ; Secondary Hot Water Pumps (3 Nos.) (Boiler & Pump RM) | 13d | 2011-08-10 A | 2011-10-01 | UP3BH03301C0, UP3BH22005C0 FF+6d | 95% | 0.61d | 2011-08-18 | 2011-09-05 | -31.92d | 3.59d | PLUMBING [1467.6 h]; Cost [801121 AED] | 801,121.41 | 761,065.34 | UP3BH22006C0 |  |  | 95 | 0 | UP | C | 22 | P3 | BH | ME | 220 | 06 | ETA | BILL 3 | B03 | MPL | R00 | ACF04 | MEP | 220 | 22050 |  |  |  |  |
| UP3BH22007C0 |  | CU-P3 ; Pipe Conn.-Boilers & Hot Water Pumps (Boiler & Pump RM) | 14d | 2011-08-10 A | 2011-10-11 | UP3BH22001C0 SS+12d | 35% | 9.1d | 2011-09-06 | 2011-09-21 | -25.1d | 57.9d | PLUMBING [1467.6 h]; Cost [801121 AED] | 801,121.41 | 280,392.49 | UP3BH22007C0 |  |  | 35 | 0 | UP | C | 22 | P3 | BH | ME | 220 | 07 | ETA | BILL 3 | B03 | MPL | R00 | ACF04 | MEP | 220 | 22021 |  |  |  |  |
| UP3BH26003C0 |  | CU-P3 ; Inst. Of Cable Tray (Boiler & Pump RM) | 8d | 2011-08-10 A | 2011-10-22 | UP3BH26002C0 | 30% | 5.6d | 2011-08-25 | 2011-09-06 | -49.6d | 0d | ELECTRICAL [703.2 h]; Cost [10561.5 AED] | 10,561.54 | 3,168.46 | UP3BH26003C0 |  |  | 15 | 0 | UP | C | 26 | P3 | BH | ME | 260 | 03 | ETA | BILL 3 | B03 | MEL | R00 | ACF04 | MEP | 260 | 26030 | 0 | 0 | 0 | 0 |
| UP3BH27003C0 |  | CU-P3 ; Wiring Works For ELV Systems (Boiler & Pump RM) | 18d | 2011-08-10 A | 2011-10-15 | UP3BH27002C0 SS | 30% | 12.6d | 2011-08-25 | 2011-09-18 | -42.6d | 0d | ELECTRICAL [46.8 h]; Cost [2549.35 AED] | 2,549.35 | 764.81 | UP3BH27003C0 |  |  | 25 | 0 | UP | C | 27 | P3 | BH | ME | 270 | 03 | ETA | BILL 3 | B03 | MELV | R00 | ACF07 | MEP | 270 | 27020 |  |  |  |  |
| UP3BH27005C0 |  | CU-P3 ; Inst. Of DDC Panel (Boiler & Pump RM) | 8d | 2011-08-10 A | 2011-10-15 | UP3BH27003C0 FF, UP3BH27003C0 SS+8d | 95% | 0.4d | 2011-09-08 | 2011-09-18 | -42.6d | 0d | ELECTRICAL [4558.8 h]; Cost [308717 AED] | 308,716.73 | 293,280.9 | UP3BH27005C0 |  |  | 95 | 0 | UP | C | 27 | P3 | BH | ME | 270 | 05 | ETA | BILL 3 | B03 | MELV | R00 | ACF07 | MEP | 270 | 27030 |  |  |  |  |
| UP3BH22002C0 |  | CU-P3 ; Inst. Of Steam Dearators (Boiler & Pump RM) | 10d | 2011-09-05 A | 2011-10-05 | UP3BH22001C0 FF, UP3BH22001C0 SS+7d | 50% | 5d | 2011-09-01 | 2011-09-12 | -43d | 0d | Labor General [1.2 h]; Cost |  |  | UP3BH22002C0 |  |  |  |  | UP | C | 22 | P3 | BH | ME | 220 | 02 | ETA | BILL 3 | B03 | MPL | R00 | ACF04 | MEP | 220 | 22079 |  |  |  |  |
| UP3BH22004C0 |  | CU-P3 ; Inst. Of Hot Water Supply Pipe (Boiler & Pump RM) | 8.12d | 2011-09-05 A | 2011-10-13 | UP3BH22003C0 SS+14d, UP3BH22006C0 | 10% | 7.31d | 2011-09-07 | 2011-09-17 | -35.51d | 0d | PLUMBING [126 h]; Cost [6875.16 AED] | 6,875.16 | 687.52 | UP3BH22004C0 |  |  |  |  | UP | C | 22 | P3 | BH | ME | 220 | 04 | ETA | BILL 3 | B03 | MPL | R00 | ACF04 | MEP | 220 | 22021 |  |  |  |  |
| UP3BH22013C0 |  | CU-P3 ; Inst. Of Oil Interceptors (Boiler & Pump RM) | 10d | 2011-09-05 A | 2011-10-09 | UP3BH22014C0 | 40% | 6d | 2011-09-04 | 2011-09-15 | -9.5d | 73.5d | Labor General [1.2 h]; Cost |  |  | UP3BH22013C0 |  |  |  |  | UP | C | 22 | P3 | BH | ME | 220 | 13 | ETA | BILL 3 | B03 | MPL | R00 | ACF04 | MEP | 220 | 22076 |  |  |  |  |
| UP3BH22015C0 |  | CU-P3 ; Floor Clean Outs & Floor Drains (Boiler & Pump RM) | 8.12d | 2011-09-05 A | 2011-10-30 | UP3BH22012C0 | 10% | 7.31d | 2011-09-22 | 2011-10-02 | -41.31d | 41.69d | PLUMBING [225.6 h]; Cost [12289.4 AED] | 12,289.36 | 1,228.94 | UP3BH22015C0 |  |  |  |  | UP | C | 22 | P3 | BH | ME | 220 | 15 | ETA | BILL 3 | B03 | MPL | R00 | ACF04 | MEP | 220 | 22070 |  |  |  |  |
| UP3BH27001C0 |  | CU-P3 ; Wiring - Small Pwr/Lighting & Emerg. (Boiler & Pump RM) | 6d | 2011-09-10 A | 2011-10-27 | UP3BH26003C0 | 10% | 5.4d | 2011-09-26 | 2011-10-03 | -49.6d | 0d | ELECTRICAL [740.4 h]; Cost [10136.5 AED] | 10,136.46 | 1,013.65 | UP3BH27001C0 |  |  |  |  | UP | C | 27 | P3 | BH | ME | 270 | 01 | ETA | BILL 3 | B03 | MELV | R00 | ACF07 | MEP | 270 | 27021 |  |  |  |  |
| UP3BH08101C0 |  | CU-P3 ; Door Frames (Boiler & Pump RM) | 18d | 2011-10-01 | 2011-10-20 | UP3S304001C0 |  |  |  |  | -83d | 0d | ASSORTED DOORS [43 h]; Cost |  |  | UP3BH08101C0 |  |  |  |  | UP | C | 08 | P3 | BH | DO | 081 | 01 | SIS | BILL 3 | B03 | DF | R00 | ACF06 |  | 081 |  |  |  |  |  |
| UP3BH09901C0 |  | CU-P3 ; Wall Prime & 1st Coat (Boiler & Pump RM) | 8d | 2011-10-01 | 2011-10-09 | UP3BH03301C0 |  |  |  |  | -36d | 0d | WALL PAINT [750 h]; WALL PAINT [935 m2]; Cost |  |  | UP3BH09901C0 |  |  |  |  | UP | C | 09 | P3 | BH | PA | 099 | 01 | SIS | BILL 3 | B03 | 01 | R00 | ACF06 |  | 099 |  |  |  |  |  |
| UP3BH22008C0 |  | CU-P3 ; Inst. Of Muw Pipe (Boiler & Pump RM) | 12d | 2011-10-01 | 2011-10-13 | MGNMI00101M0 |  |  |  |  | -50d | 0d | Labor General [1.2 h]; Cost |  |  | UP3BH22008C0 |  |  |  |  | UP | C | 22 | P3 | BH | ME | 220 | 08 | ETA | BILL 3 | B03 | MPL | R00 | ACF04 | MEP | 220 | 22023 |  |  |  |  |
| UP3BH23002C0 |  | CU-P3 ; Inst. Of FCU-Boiler & H/W PUMP Room (Boiler & Pump RM) | 3d | 2011-10-05 | 2011-10-09 | UP3BH23001C0 SS+7d |  |  |  |  | -38.7d | 0d | MECHANICAL [951.6 h]; Cost |  |  | UP3BH23002C0 |  |  |  |  | UP | C | 23 | P3 | BH | ME | 230 | 02 | ETA | BILL 3 | B03 | MHV | R00 | ACF04 | MEP | 230 | 23052 |  |  |  |  |
| UP3BH22010C0 |  | CU-P3 ; Inst. Of Back Flow Preventer (Boiler & Pump RM) | 9d | 2011-10-06 | 2011-10-16 | UP3BH22002C0 |  |  |  |  | -43d | 0d | Labor General [1.2 h]; Cost |  |  | UP3BH22010C0 |  |  |  |  | UP | C | 22 | P3 | BH | ME | 220 | 10 | ETA | BILL 3 | B03 | MPL | R00 | ACF04 | MEP | 220 | 22030 |  |  |  |  |
| UP3BH23003C0 |  | CU-P3 ; Inst. Of Valve Package For Fcu'S (Boiler & Pump RM) | 4d | 2011-10-09 | 2011-10-13 | UP3BH23002C0 |  |  |  |  | -38.7d | 0d | Labor General [1.2 h]; Cost |  |  | UP3BH23003C0 |  |  |  |  | UP | C | 23 | P3 | BH | ME | 230 | 03 | ETA | BILL 3 | B03 | MHV | R00 | ACF04 | MEP | 230 | 23053 |  |  |  |  |
| UP3BH09902C0 |  | CU-P3 ; Wall 2nd Coat (Boiler & Pump RM) | 8d | 2011-10-10 | 2011-10-18 | UP3BH09901C0, UP3BH09904C0 |  |  |  |  | -36d | 47d | WALL PAINT [404 h]; WALL PAINT [504 m2]; Cost |  |  | UP3BH09902C0 |  |  |  |  | UP | C | 09 | P3 | BH | PA | 099 | 02 | SIS | BILL 3 | B03 | 02 | R00 | ACF06 |  | 099 |  |  |  |  |  |
| UP3BH23005C0 |  | CU-P3 ; Insul. Of CHW Pipe & Insp. By Cnslt (Boiler & Pump RM) | 12d | 2011-10-12 | 2011-10-26 | UP3BH23004C0 |  |  |  |  | -38.7d | 44.3d | MECHANICAL [903.6 h]; Cost |  |  | UP3BH23005C0 |  |  |  |  | UP | C | 23 | P3 | BH | ME | 230 | 05 | ETA | BILL 3 | B03 | MHV | R00 | ACF04 | MEP | 230 | 23080 |  |  |  |  |
| UP3BH22009C0 |  | CU-P3 ; Inst. Of Press. Redusing Valves (Boiler & Pump RM) | 8d | 2011-10-13 | 2011-10-23 | UP3BH22004C0 |  |  |  |  | -35.51d | 47.49d | Labor General [1.2 h]; Cost |  |  | UP3BH22009C0 |  |  |  |  | UP | C | 22 | P3 | BH | ME | 220 | 09 | ETA | BILL 3 | B03 | MPL | R00 | ACF04 | MEP | 220 | 22063 |  |  |  |  |
| UP3BH22012C0 |  | CU-P3 ; Inst. Of Hose Bib (Boiler & Pump RM) | 6d | 2011-10-15 | 2011-10-20 | UP3BH22008C0 |  |  |  |  | -41.31d | 0d | PLUMBING [148.8 h]; Cost |  |  | UP3BH22012C0 |  |  |  |  | UP | C | 22 | P3 | BH | ME | 220 | 12 | ETA | BILL 3 | B03 | MPL | R00 | ACF04 | MEP | 220 | 22075 |  |  |  |  |
| UP3BH26005C0 |  | CU-P3 ; Isolator For Boilers & Pumps (Boiler & Pump RM) | 6d | 2011-10-15 | 2011-10-20 | UP3BH22008C0 |  |  |  |  | -50d | 0d | ELECTRICAL [270 h]; Cost |  |  | UP3BH26005C0 |  |  |  |  | UP | C | 26 | P3 | BH | ME | 260 | 05 | ETA | BILL 3 | B03 | MEL | R00 | ACF04 | MEP | 260 | 26072 |  |  |  |  |
| UP3BH27006C0 |  | CU-P3 ; Dress., Gland. & Termin. Of DDC Pnls (Boiler & Pump RM) | 12d | 2011-10-15 | 2011-10-29 | UP3BH27005C0 |  |  |  |  | -42.6d | 0d | ELECTRICAL [259.2 h]; Cost |  |  | UP3BH27006C0 |  |  |  |  | UP | C | 27 | P3 | BH | ME | 270 | 06 | ETA | BILL 3 | B03 | MELV | R00 | ACF07 | MEP | 270 | 27051 |  |  |  |  |
| UP3BH22011C0 |  | CU-P3 ; Inst. Of Water Hammer Arrester (Boiler & Pump RM) | 6d | 2011-10-17 | 2011-10-23 | UP3BH22010C0 |  |  |  |  | -43d | 40d | Labor General [1.2 h]; Cost |  |  | UP3BH22011C0 |  |  |  |  | UP | C | 22 | P3 | BH | ME | 220 | 11 | ETA | BILL 3 | B03 | MPL | R00 | ACF04 | MEP | 220 | 22082 |  |  |  |  |
| UP3BH27004C0 |  | CU-P3 ; ELV Dev.- Snsr, Smk Detector / Spkrs (Boiler & Pump RM) | 8d | 2011-10-17 | 2011-10-26 | UP3BH27003C0, UP3BH27007C0 SS |  |  |  |  | -42.6d | 40.4d | ELECTRICAL [153.6 h]; Cost |  |  | UP3BH27004C0 |  |  |  |  | UP | C | 27 | P3 | BH | ME | 270 | 04 | ETA | BILL 3 | B03 | MELV | R00 | ACF07 | MEP | 270 | 27040 |  |  |  |  |
| UP3BH27007C0 |  | CU-P3 ; Bms Conn. Works To Equipments (Boiler & Pump RM) | 12d | 2011-10-17 | 2011-10-31 | UP3BH27006C0 FF+2d |  |  |  |  | -42.6d | 0d | ELECTRICAL [54 h]; Cost |  |  | UP3BH27007C0 |  |  |  |  | UP | C | 27 | P3 | BH | ME | 270 | 07 | ETA | BILL 3 | B03 | MELV | R00 | ACF07 | MEP | 270 | 27060 |  |  |  |  |
| UP3BH21101C0 |  | CU-P3 ; Inst. Of Sprinkler Heads (Boiler & Pump RM) | 6d | 2011-10-18 | 2011-10-24 | UP3OS21104C0 |  |  |  |  | -41d | 42d | MECHANICAL [70.8 h]; Cost |  |  | UP3BH21101C0 |  |  |  |  | UP | C | 21 | P3 | BH | ME | 211 | 01 | ETA | BILL 3 | B03 | MFS | R00 | ACF04 | MEP | 211 | 21150 |  |  |  |  |
| UP3BH21103C0 |  | CU-P3 ; Testing Of Foam Deluge System (Boiler & Pump RM) | 0d | 2011-10-19 | 2011-10-19 | UP3BH21111C0 |  |  |  |  | -32.2d | 50.8d | Cost |  |  | UP3BH21103C0 |  |  |  |  | UP | C | 21 | P3 | BH | ME | 211 | 03 | ETA | BILL 3 | B03 | MFS | R00 | ACF07 | MEP | 211 | 21190 |  |  |  |  |
| UP3BH08102C0 |  | CU-P3 ; Doors (Boiler & Pump RM) | 6d | 2011-10-22 | 2011-10-27 | UP3BH08101C0 |  |  |  |  | -44d | 39d | METAL DOORS [70 h]; METAL DOORS [7 no]; Cost |  |  | UP3BH08102C0 |  |  |  |  | UP | C | 08 | P3 | BH | DO | 081 | 02 | SIS | BILL 3 | B03 | DR | R00 | ACF06 |  | 081 |  |  |  |  |  |
| UP3BH26001C0 |  | CU-P3 ; Elec. Conn. Works To Boilers & Pumps (Boiler & Pump RM) | 9d | 2011-10-22 | 2011-10-31 | UP3BH26005C0 |  |  |  |  | -50d | 33d | ELECTRICAL [1309.2 h]; Cost |  |  | UP3BH26001C0 |  |  |  |  | UP | C | 26 | P3 | BH | ME | 260 | 01 | ETA | BILL 3 | B03 | MEL | R00 | ACF07 | MEP | 260 | 26082 |  |  |  |  |
| UP3BH26004C0 |  | CU-P3 ; Light Fittings / Sockets / Switches (Boiler & Pump RM) | 6d | 2011-10-27 | 2011-11-03 | UP3BH27001C0 |  |  |  |  | -49.6d | 33.4d | ELECTRICAL [357.6 h]; Cost |  |  | UP3BH26004C0 |  |  |  |  | UP | C | 26 | P3 | BH | ME | 260 | 04 | ETA | BILL 3 | B03 | MEL | R00 | ACF07 | MEP | 260 | 26061 |  |  |  |  |
| UP3BH09601C0 |  | CU-P3 ; Floor Finishing (Boiler & Pump RM) | 15d | 2011-10-30 | 2011-11-19 | UP3BH08101C0 FS+7d |  |  |  |  | -83d | 0d | ASSORTED FLOOR FINISH [2488 h]; ASSORTED FLOOR FINISH [1378 m2]; Cost |  |  | UP3BH09601C0 |  |  |  |  | UP | C | 09 | P3 | BH | FF | 096 | 01 | SIS | BILL 3 | B03 | 01 | R00 | ACF06 |  | FF |  |  |  |  |  |
| UP3BH21102C0 |  | CU-P3 ; Inst. Of Fire Extinguishers / Fhc (Boiler & Pump RM) | 12d | 2011-12-10 | 2011-12-22 | UP3BH09601C0 FS+15d |  |  |  |  | -83d | 0d | MECHANICAL [166.8 h]; Cost |  |  | UP3BH21102C0 |  |  |  |  | UP | C | 21 | P3 | BH | ME | 211 | 02 | ETA | BILL 3 | B03 | MFS | R00 | ACF04 | MEP | 211 | 21160 |  |  |  |  |

| ID | WBS | Activity | Duration | Start | Finish | Predecessors | Complete | Remaining | Planned start | Planned finish | Total float | Free float | Resources | Cost | Actual cost | change id | RENZ % COMPLETE | CCAD BUILDING(SET) | CCAD PHASE(SET) | CCAD FLOOR(SET) | CCAD ZONE(SET) | CCAD WORK(SET) | CCAD SECTION(SET) | CCAD SERIAL No.(SET) | CCAD RESPONSIBILITY(SET) | CCAD CBS(SET) | CCAD BILL(SET) | CCAD TAG(SET) | CCAD REV(SET) | CCADACF (SET) | CCAD SSCF | DIVISION FOR ACTIVITY ID | CCAD DIVISION(SET) | CCAD CSA | user_number8 | user_integer1 | user_integer2 | user_number7 | Claimed This Month | P_811 | P_711 |
| --- | --- | --- | --- | --- | --- | --- | --- | --- | --- | --- | --- | --- | --- | --- | --- | --- | --- | --- | --- | --- | --- | --- | --- | --- | --- | --- | --- | --- | --- | --- | --- | --- | --- | --- | --- | --- | --- | --- | --- | --- | --- |
|  | 17 | **FAN RM** |  | 2011-02-06 | 2011-12-19 |  |  |  |  |  |  |  |  |  |  |  |  |  |  |  |  |  |  |  |  |  |  |  |  |  |  |  |  |  |  |  |  |  |  |  |  |
| UP3FR03301C0 |  | CU-P3 ; Equipment Plinth (FAN RM) | 10d | 2011-02-06 A | 2011-05-24 A | UP3S304001C0, UP3S304002C0 | 100% |  | 2011-04-14 | 2011-04-26 |  |  | Cost |  |  | UP3FR03301C0 | 100 | UP | C | P3 | FR | CT | 033 | 01 | SIS | BILL 3 | B03 | 10 | R00 | ACF03 | 033 |  |  |  |  |  |  |  |  |  |  |
| UP3FR23001C0 |  | CU-P3 ; Inst. Of AHU'S - 4 Nos. (FAN RM) | 24d | 2011-04-24 A | 2011-04-30 A | UP3FR03301C0 | 100% |  | 2011-07-11 | 2011-08-08 |  |  | MECHANICAL [8775.6 h]; Cost [4791754 AED] | 4,791,753.76 | 4,791,753.76 | UP3FR23001C0 | 100 | UP | C | P3 | FR | ME | 230 | 01 | ETA | BILL 3 | B03 | MHV | R00 | ACF04 | 230 | 23040 | 23 | MEP |  |  |  |  |  |  |  |
| UP3FR26002C0 |  | CU-P3 ; Inst. Of Trunking & Conduiting (FAN RM) | 12d | 2011-05-15 A | 2011-10-13 | UP3FR27002C0 FF, UP3FR27002C0 SS+8d | 40% | 7.2d | 2011-08-01 | 2011-08-15 | -79.2d | 0d | ELECTRICAL [490.8 h]; Cost [6501.63 AED] | 6,501.63 | 2,600.65 | UP3FR26002C0 | 35 | UP | C | P3 | FR | ME | 260 | 02 | ETA | BILL 3 | B03 | MEL | R00 | ACF04 | 260 | 26020 | 26 | MEP | 0 | 0 | 0 | 0 | 4653.17 |  |  |
| UP3FR26003C0 |  | CU-P3 ; Inst. Of Cable Tray (FAN RM) | 12d | 2011-05-15 A | 2011-10-17 | UP3FR26002C0 SS | 10% | 10.8d | 2011-08-01 | 2011-08-15 | -45d | 0d | ELECTRICAL [703.2 h]; Cost [10561.5 AED] | 10,561.54 | 1,056.15 | UP3FR26003C0 | 10 | UP | C | P3 | FR | ME | 260 | 03 | ETA | BILL 3 | B03 | MEL | R00 | ACF04 | 260 | 26030 | 26 | MEP |  |  |  |  |  |  |  |
| UP3FR26006C0 |  | CU-P3 ; Inst. Of Back Boxes & Conduites On Wall (FAN RM) | 8d | 2011-05-15 A | 2011-10-04 | UP2S304002C0 SS | 50% | 4d | 2011-07-05 | 2011-07-14 | -79.2d | 0d | ELECTRICAL [490.8 h]; Cost [6501.63 AED] | 6,501.63 | 3,250.81 | UP3FR26006C0 | 35 | UP | C | P3 | FR | ME | 260 | 06 | ETA | BILL 3 | B03 | MEL | R00 | ACF04 | 260 |  | 26 | MEP |  |  |  |  | 4653.17 | 50 | 35 |
| UP3FR27002C0 |  | CU-P3 ; Trunking & Conduiting Works For ELV Systems (FAN RM) | 12d | 2011-05-15 A | 2011-10-09 | UP3FR22001C0 | 70% | 3.6d | 2011-07-23 | 2011-08-06 | -79.2d | 0d | ELECTRICAL [52.8 h]; Cost [2874.8 AED] | 2,874.8 | 2,012.36 | UP3FR27002C0 | 50 | UP | C | P3 | FR | ME | 270 | 02 | ETA | BILL 3 | B03 | MELV | R00 | ACF04 | 270 | 27010 | 27 | MEP | 0 | 0 | 0 | 0 | 331.62 | 60 | 50 |
| UP3FR09901C0 |  | CU-P3 ; Wall Prime & 1st Coat (FAN RM) | 8d | 2011-07-10 A | 2011-10-05 | UP3FR27001C0 SS | 95% | 0.4d | 2011-09-05 | 2011-09-13 | -27.1d | 0d | WALL PAINT [215 h]; WALL PAINT [267 m2]; Cost |  |  | UP3FR09901C0 |  | UP | C | P3 | FR | PA | 099 | 01 | SIS | BILL 3 | B03 | 01 | R00 | ACF06 | 099 |  | 09 |  |  |  |  |  |  | 95 | 50 |
| UP3FR09902C0 |  | CU-P3 ; Wall 2nd Coat (FAN RM) | 8d | 2011-07-10 A | 2011-10-10 | UP3FR09901C0 | 50% | 4d | 2011-10-08 | 2011-10-17 | -24.4d | 58.6d | WALL PAINT [116 h]; WALL PAINT [144 m2]; Cost |  |  | UP3FR09902C0 |  | UP | C | P3 | FR | PA | 099 | 02 | SIS | BILL 3 | B03 | 02 | R00 | ACF06 | 099 |  | 09 |  |  |  |  |  |  |  |  |
| UP3FR09903C0 |  | CU-P3 ; Ceiling Prime & 1st Coat (FAN RM) | 12d | 2011-08-02 A | 2011-10-08 | UP3FR21101C0 | 100% | 0d | 2011-09-21 | 2011-10-05 | -30.4d | 0d | Cost |  |  | UP3FR09903C0 |  | UP | C | P3 | FR | PA | 099 | 03 | SIS | BILL 3 | B03 | 01 | R00 | ACF06 | 099 |  | 09 |  |  |  |  |  |  | 50 | 0 |
| UP3FR09904C0 |  | CU-P3 ; Ceiling Final Coat (FAN RM) | 6d | 2011-08-02 A | 2011-10-08 | UP3FR09903C0 SS | 100% | 0d | 2011-10-18 | 2011-10-24 | -26d | 57d | Cost |  |  | UP3FR09904C0 |  | UP | C | P3 | FR | PA | 099 | 04 | SIS | BILL 3 | B03 | 02 | R00 | ACF06 | 099 |  | 09 |  |  |  |  |  |  | 50 | 0 |
| UP3FR22001C0 |  | CU-P3 ; Inst. Of Water Supply Pipe (FAN RM) | 15d | 2011-08-10 A | 2011-10-04 | UP3FR26006C0 FF, UP3FR26006C0 SS | 85% | 2.25d | 2011-08-08 | 2011-08-24 | -79.2d | 0d | PLUMBING [750 h]; Cost [35447.7 AED] | 35,447.7 | 30,130.55 | UP3FR22001C0 |  | UP | C | P3 | FR | ME | 220 | 01 | ETA | BILL 3 | B03 | MPL | R00 | ACF04 | 220 | 22021 | 22 | MEP |  |  |  |  |  | 85 | 0 |
| UP3FR27001C0 |  | CU-P3 ; Wiring Works For Small Pwr / Lighting & Emerg. (FAN RM) | 12d | 2011-08-10 A | 2011-10-15 | UP3FR26003C0 SS | 25% | 9d | 2011-09-08 | 2011-09-22 | -45d | 0d | ELECTRICAL [740.4 h]; Cost [10136.5 AED] | 10,136.46 | 2,534.11 | UP3FR27001C0 |  | UP | C | P3 | FR | ME | 270 | 01 | ETA | BILL 3 | B03 | MELV | R00 | ACF07 | 270 | 27021 | 27 | MEP |  |  |  |  |  | 25 | 0 |
| UP3FR27005C0 |  | CU-P3 ; Inst. Of DDC Panel (FAN RM) | 15d | 2011-08-10 A | 2011-08-30 A | UP3FR27003C0 SS | 100% |  | 2011-09-04 | 2011-09-20 |  |  | ELECTRICAL [4558.8 h]; Cost [308717 AED] | 308,716.73 | 308,716.73 | UP3FR27005C0 |  | UP | C | P3 | FR | ME | 270 | 05 | ETA | BILL 3 | B03 | MELV | R00 | ACF07 | 270 | 27030 | 27 | MEP |  |  |  |  |  | 100 | 0 |
| UP3FR08101C0 |  | CU-P3 ; Door Frames (FAN RM) | 3d | 2011-09-01 A | 2011-10-03 | UP2S304002C0 | 10% | 2.7d | 2011-09-01 | 2011-09-04 | -25.4d | 1.7d | ASSORTED DOORS [12 h]; Cost |  |  | UP3FR08101C0 |  | UP | C | P3 | FR | DO | 081 | 01 | SIS | BILL 3 | B03 | DF | R00 | ACF06 | 081 |  | 08 |  |  |  |  |  |  |  |  |
| UP3FR08102C0 |  | CU-P3 ; Doors (FAN RM) | 3d | 2011-09-05 A | 2011-10-09 | UP3FR08101C0, UP3FR09901C0 | 10% | 2.7d | 2011-09-06 | 2011-09-10 | -27.1d | 55.9d | METAL DOORS [20 h]; METAL DOORS [2 no]; Cost |  |  | UP3FR08102C0 |  | UP | C | P3 | FR | DO | 081 | 02 | SIS | BILL 3 | B03 | DR | R00 | ACF06 | 081 |  | 08 |  |  |  |  |  |  |  |  |
| UP3FR23004C0 |  | CU-P3 ; Motorised Smoke Fire Damper & Duct Conn. Works (FAN RM) | 6d | 2011-09-05 A | 2011-10-16 | UP3FR23003C0 | 25% | 4.5d | 2011-09-14 | 2011-09-20 | -44.5d | 0d | MECHANICAL [1863.6 h]; Cost [127190 AED] | 127,190 | 31,797.5 | UP3FR23004C0 |  | UP | C | P3 | FR | ME | 230 | 04 | ETA | BILL 3 | B03 | MHV | R00 | ACF07 | 230 | 23054 | 23 | MEP |  |  |  |  |  |  |  |
| UP3FR23008C0 |  | CU-P3 ; Pipe Conn. Works To AHU'S (FAN RM) | 10d | 2011-09-05 A | 2011-10-31 | UP3FR23001C0, UP3FR23002C0 |  | 15d | 2011-09-14 | 2011-09-26 | -79.2d | 0d | Labor General [1.2 h]; Cost |  |  | UP3FR23008C0 |  | UP | C | P3 | FR | ME | 230 | 08 | ETA | BILL 3 | B03 | MHV | R00 | ACF07 | 230 | 23026 | 23 | MEP |  |  |  |  |  |  |  |
| UP3FR09601C0 |  | CU-P3 ; Floor Finishing (FAN RM) | 6d | 2011-09-10 A | 2011-10-13 | UP3FR09903C0 | 10% | 5.4d | 2011-09-18 | 2011-09-24 | -30.4d | 0d | ASSORTED FLOOR FINISH [712 h]; ASSORTED FLOOR FINISH [394 m2]; Cost |  |  | UP3FR09601C0 |  | UP | C | P3 | FR | FF | 096 | 01 | SIS | BILL 3 | B03 | 01 | R00 | ACF06 | FF |  | 09 |  |  |  |  |  |  |  |  |
| UP3FR21101C0 |  | CU-P3 ; Inst. Of Fire Fighting Pipe (FAN RM) | 6d | 2011-10-01 | 2011-10-06 | UP2S304003C0, UP2S304004C0 |  |  |  |  | -35d | 0d | MECHANICAL [487.2 h]; Cost |  |  | UP3FR21101C0 |  | UP | C | P3 | FR | ME | 211 | 01 | ETA | BILL 3 | B03 | MFS | R00 | ACF04 | 211 | 21140 | 21 | MEP |  |  |  |  |  |  |  |
| UP3FR23003C0 |  | CU-P3 ; Inst. Of Duct Supp.s & Ducting (FAN RM) | 9d | 2011-10-01 | 2011-10-10 | UP2S304003C0, UP2S304004C0 |  |  |  |  | -47d | 0d | MECHANICAL [669.6 h]; Cost |  |  | UP3FR23003C0 |  | UP | C | P3 | FR | ME | 230 | 03 | ETA | BILL 3 | B03 | MHV | R00 | ACF04 | 230 | 23015 | 23 | MEP |  |  |  |  |  |  |  |
| UP3FR23005C0 |  | CU-P3 ; Inst. Of Vent Fans - 3 Nos. (FAN RM) | 6d | 2011-10-01 | 2011-10-06 | UP2S304003C0, UP2S304004C0, UP3FR03301C0 |  |  |  |  | -44d | 3d | Labor General [1.2 h]; Cost |  |  | UP3FR23005C0 |  | UP | C | P3 | FR | ME | 230 | 05 | ETA | BILL 3 | B03 | MHV | R00 | ACF04 | 230 | 23062 | 23 | MEP |  |  |  |  |  |  |  |
| UP3FR22002C0 |  | CU-P3 ; Inst. Of Hose Bib (FAN RM) | 6d | 2011-10-05 | 2011-10-11 | UP3FR22001C0 |  |  |  |  | -47.2d | 0d | PLUMBING [148.8 h]; Cost |  |  | UP3FR22002C0 |  | UP | C | P3 | FR | ME | 220 | 02 | ETA | BILL 3 | B03 | MPL | R00 | ACF04 | 220 | 22075 | 22 | MEP |  |  |  |  |  |  |  |
| UP3FR23002C0 |  | CU-P3 ; Inst. Of CHW Pipe Supp.s & Piping Works (FAN RM) | 6d | 2011-10-06 | 2011-10-13 | UP3FR26002C0 FF, UP3FR26002C0 SS+5d |  |  |  |  | -79.2d | 0d | MECHANICAL [669.6 h]; Cost |  |  | UP3FR23002C0 |  | UP | C | P3 | FR | ME | 230 | 02 | ETA | BILL 3 | B03 | MHV | R00 | ACF04 | 230 | 23010 | 23 | MEP |  |  |  |  |  |  |  |
| UP3FR21102C0 |  | CU-P3 ; Press. Test For Ff Pipe (FAN RM) | 0d | 2011-10-08 | 2011-10-08 | UP3FR21101C0 |  |  |  |  | -35d | 0d | Cost |  |  | UP3FR21102C0 |  | UP | C | P3 | FR | ME | 211 | 02 | ETA | BILL 3 | B03 | MFS | R00 | ACF07 | 211 | 21180 | 21 | MEP |  |  |  |  |  |  |  |
| UP3FR21103C0 |  | CU-P3 ; Inst. Of Sprinkler Heads (FAN RM) | 9d | 2011-10-08 | 2011-10-17 | UP3FR21102C0 |  |  |  |  | -35d | 48d | MECHANICAL [70.8 h]; Cost |  |  | UP3FR21103C0 |  | UP | C | P3 | FR | ME | 211 | 03 | ETA | BILL 3 | B03 | MFS | R00 | ACF04 | 211 | 21150 | 21 | MEP |  |  |  |  |  |  |  |
| UP3FR27003C0 |  | CU-P3 ; Wiring Works For ELV Systems (FAN RM) | 6d | 2011-10-09 | 2011-10-16 | UP3FR27002C0 |  |  |  |  | -41.6d | 0d | ELECTRICAL [46.8 h]; Cost |  |  | UP3FR27003C0 |  | UP | C | P3 | FR | ME | 270 | 03 | ETA | BILL 3 | B03 | MELV | R00 | ACF07 | 270 | 27020 | 27 | MEP |  |  |  |  |  |  |  |
| UP3FR27006C0 |  | CU-P3 ; Dressing, Glanding & Termination Of DDC Panels (FAN RM) | 6d | 2011-10-09 | 2011-10-16 | UP3FR27005C0 |  |  |  |  | -41.6d | 0d | ELECTRICAL [259.2 h]; Cost |  |  | UP3FR27006C0 |  | UP | C | P3 | FR | ME | 270 | 06 | ETA | BILL 3 | B03 | MELV | R00 | ACF07 | 270 | 27051 | 27 | MEP |  |  |  |  |  |  |  |
| UP3FR23009C0 |  | CU-P3 ; Duct Conn. Works To Fans (FAN RM) | 6d | 2011-10-11 | 2011-10-17 | UP3FR23003C0, UP3FR23005C0 |  |  |  |  | -47d | 0d | MECHANICAL [2658 h]; Cost |  |  | UP3FR23009C0 |  | UP | C | P3 | FR | ME | 230 | 09 | ETA | BILL 3 | B03 | MHV | R00 | ACF07 | 230 | 23031 | 23 | MEP |  |  |  |  |  |  |  |
| UP3FR27007C0 |  | CU-P3 ; Bms Conn. Works To Equipments (FAN RM) | 6d | 2011-10-11 | 2011-10-18 | UP3FR27006C0 FF+2d |  |  |  |  | -41.6d | 0d | ELECTRICAL [54 h]; Cost |  |  | UP3FR27007C0 |  | UP | C | P3 | FR | ME | 270 | 07 | ETA | BILL 3 | B03 | MELV | R00 | ACF07 | 270 | 27060 | 27 | MEP |  |  |  |  |  |  |  |
| UP3FR22003C0 |  | CU-P3 ; Inst. Of Water Hammer Arrester (FAN RM) | 6d | 2011-10-12 | 2011-10-18 | UP3DO26004C0, UP3FR22002C0 |  |  |  |  | -47.2d | 0d | Labor General [1.2 h]; Cost |  |  | UP3FR22003C0 |  | UP | C | P3 | FR | ME | 220 | 03 | ETA | BILL 3 | B03 | MPL | R00 | ACF04 | 220 | 22082 | 22 | MEP |  |  |  |  |  |  |  |
| UP3FR21104C0 |  | CU-P3 ; Inst. Of Fire Extinguisher / Fhc (FAN RM) | 3d | 2011-10-13 | 2011-10-17 | UP3FR09601C0 |  |  |  |  | -30.4d | 52.6d | MECHANICAL [166.8 h]; Cost |  |  | UP3FR21104C0 |  | UP | C | P3 | FR | ME | 211 | 04 | ETA | BILL 3 | B03 | MFS | R00 | ACF04 | 211 | 21160 | 21 | MEP |  |  |  |  |  |  |  |
| UP3FR26004C0 |  | CU-P3 ; Inst. Of Light Fittings / Sockets / Switches (FAN RM) | 6d | 2011-10-16 | 2011-10-22 | UP3FR27001C0 |  |  |  |  | -39d | 44d | ELECTRICAL [357.6 h]; Cost |  |  | UP3FR26004C0 |  | UP | C | P3 | FR | ME | 260 | 04 | ETA | BILL 3 | B03 | MEL | R00 | ACF07 | 260 | 26061 | 26 | MEP |  |  |  |  |  |  |  |
| UP3FR23007C0 |  | CU-P3 ; Inst. Of Supply Air Plenum (FAN RM) | 9d | 2011-10-16 | 2011-10-26 | UP3FR23004C0 |  |  |  |  | -44.5d | 0d | Labor General [1.2 h]; Cost |  |  | UP3FR23007C0 |  | UP | C | P3 | FR | ME | 230 | 07 | ETA | BILL 3 | B03 | MHV | R00 | ACF04 | 230 | 23055 | 23 | MEP |  |  |  |  |  |  |  |
| UP3FR26005C0 |  | CU-P3 ; Inst. Of Isolator For AHU'S & Fans (FAN RM) | 6d | 2011-10-18 | 2011-10-24 | UP3FR23009C0, UP3FR27001C0 |  |  |  |  | -47d | 0d | ELECTRICAL [270 h]; Cost |  |  | UP3FR26005C0 |  | UP | C | P3 | FR | ME | 260 | 05 | ETA | BILL 3 | B03 | MEL | R00 | ACF04 | 260 | 26071 | 26 | MEP |  |  |  |  |  |  |  |
| UP3FR27004C0 |  | CU-P3 ; ELV Devices - Sensors, Smoke Detector / Spkrs (FAN RM) | 6d | 2011-10-18 | 2011-10-25 | UP3FR27003C0, UP3FR27007C0 |  |  |  |  | -41.6d | 41.4d | ELECTRICAL [153.6 h]; Cost |  |  | UP3FR27004C0 |  | UP | C | P3 | FR | ME | 270 | 04 | ETA | BILL 3 | B03 | MELV | R00 | ACF07 | 270 | 27040 | 27 | MEP |  |  |  |  |  |  |  |
| UP3FR26001C0 |  | CU-P3 ; Elec. Conn. Works To AHU'S & Fans (FAN RM) | 3d | 2011-10-25 | 2011-10-27 | UP3FR23009C0, UP3FR26005C0 |  |  |  |  | -47d | 36d | ELECTRICAL [1309.2 h]; Cost |  |  | UP3FR26001C0 |  | UP | C | P3 | FR | ME | 260 | 01 | ETA | BILL 3 | B03 | MEL | R00 | ACF07 | 260 | 26081 | 26 | MEP |  |  |  |  |  |  |  |
| UP3FR23006C0 |  | CU-P3 ; Inst. Of Intake & Exhaust Louvers (FAN RM) | 6d | 2011-10-26 | 2011-11-02 | UP3FR23007C0 |  |  |  |  | -44.5d | 38.5d | Labor General [1.2 h]; Cost |  |  | UP3FR23006C0 |  | UP | C | P3 | FR | ME | 230 | 06 | ETA | BILL 3 | B03 | MHV | R00 | ACF04 | 230 | 23073 | 23 | MEP |  |  |  |  |  |  |  |
| UP3FR23010C0 |  | CU-P3 ; Press. Test For CHW Pipe & Insp. Works By Cnslt (FAN RM) | 0d | 2011-11-15 | 2011-11-15 | UP3FR23002C0, UP3FR23008C0 FS+10d |  |  |  |  | -79.2d | 0d | Cost |  |  | UP3FR23010C0 |  | UP | C | P3 | FR | ME | 230 | 10 | ETA | BILL 3 | B03 | MHV | R00 | ACF07 | 230 | 23090 | 23 | MEP |  |  |  |  |  |  |  |
| UP3FR23011C0 |  | CU-P3 ; Insulation Of CHW Pipe & Insp. Works By Consultant (FAN RM) | 10d | 2011-12-07 | 2011-12-19 | UP3FR23010C0 FS+17d |  |  |  |  | -79.2d | 3.8d | MECHANICAL [903.6 h]; Cost |  |  | UP3FR23011C0 |  | UP | C | P3 | FR | ME | 230 | 11 | ETA | BILL 3 | B03 | MHV | R00 | ACF04 | 230 | 23080 | 23 | MEP |  |  |  |  |  |  |  |

| ID | WBS | Activity | Duration | Start | Finish | Predecessors | Complete | Planned start | Planned finish | Total float | Free float | Resources | change id | CCAD BUILDING(SET) | CCAD PHASE(SET) | CCAD FLOOR(SET) | CCAD ZONE(SET) | CCAD WORK(SET) | CCAD SECTION(SET) | CCAD SERIAL No.(SET) | CCAD CBS(SET) | CCAD BILL(SET) | CCAD TAG(SET) | CCAD REV(SET) | CCADACF (SET) | CCAD SSCF | RENZ % COMPLETE | CCAD DIVISION(SET) | CCAD RESPONSIBILITY(SET) | CCAD CUP CODE(SET) | CCAD CSA | Claimed This Month | P_811 | P_711 |
| --- | --- | --- | --- | --- | --- | --- | --- | --- | --- | --- | --- | --- | --- | --- | --- | --- | --- | --- | --- | --- | --- | --- | --- | --- | --- | --- | --- | --- | --- | --- | --- | --- | --- | --- |
|  | 1 | **Precommissioning Tesing & snagging** |  | 2011-12-15 | 2012-01-15 |  |  |  |  |  |  |  |  |  |  |  |  |  |  |  |  |  |  |  |  |  |  |  |  |  |  |  |  |  |
| UP3TS01801C0 |  | UP-P3 ; Systems testing per Floor | 21d | 2011-12-15 | 2012-01-09 | UP3BH21102C0 FF+14d, UP3BH21103C0 FF+14d, UP3BH22007C0 FF+14d, UP3BH22009C0 FF+14d, UP3BH22013C0 FF, UP3BH23005C0 FF+14d, UP3BR23006C0 FF+14d, UP3CS21104C0 FF+14d, UP3CS23008C0 FF+14d, UP3CW22003C0 FF+14d, UP3CW22006C0 FF+14d, UP3DO21101C0 FF+14d, UP3FP22002C0 FF+14d, UP3FR21102C0 FF+14d, UP3FR21104C0 FF+14d, UP3FR22003C0, UP3FR23006C0 FF+14d, UP3FR23010C0 FF+14d, UP3FR23011C0 FF+14d, UP3GF21103C0, UP3GF22008C0 FF+14d, UP3GF22010C0 FF+14d, UP3HE21104C0 FF+14d, UP3HE22005C0 FF+14d, UP3HE22009C0 FF+14d, UP3HE23013C0 FF+14d, UP3HE26007C0 FF+14d, UP3HV21105C0 FF+14d, UP3LV27004C0 FF, UP3ME21113C0 FF+14d, UP3MT21101C0 FF+14d, UP3OS22005C0 FF+14d, UP3SG26008C0 FF+14d, UP3TA21109C0 FF+14d, UP3CW27013C0, UP3CW27004C0, UP3HE23011C0, UP3HE26009C0, UP3HE22007C0, UP3OS22004C0, UP3OS21105C0, UP3TA26003C0, UP3FP22001C0 FS+3d, UP3MG26002C0, UP3BH22011C0, UP3BH26001C0, UP3FR26001C0 |  |  |  | -83d | 0d | TESTING & COMMISSIONING [1785 h]; Cost | UP3TS01801C0 | UP | C | P3 | TS | SC | 018 | 01 | BILL 3 | B03 | 01 | R00 | ACF07 | 018 |  |  |  |  |  |  |  |  |
| UP3TS01813C0 |  | UP-P3 ; Touch-up & Clean / JV inspection /CIR /De-snag | 18d | 2011-12-19 | 2012-01-09 | UP3BH09601C0 FF+14d, UP3BH09902C0, UP3BH21101C0, UP3BH22015C0 FF+14d, UP3BR09604C0 FF+14d, UP3BR09914C0 FF+14d, UP3CS09601C0 FF+7d, UP3CS09902C0 FF+7d, UP3CW08102C0 FF, UP3CW09601C0 FF+14d, UP3CW09602C0 FF+14d, UP3CW09902C0 FF+14d, UP3CW09906C0 FF+7d, UP3DO09601C0 FF+14d, UP3DO09902C0 FF+14d, UP3DO09904C0 FF+14d, UP3FR09601C0 FF+14d, UP3FR09902C0 FF+14d, UP3GF22006C0 FF+14d, UP3GF26003C0 FF+14d, UP3GF27003C0 FF+14d, UP3HE09601C0 FF+14d, UP3HE09902C0 FF+14d, UP3HE09904C0 FF+7d, UP3HV09601C0 FF+7d, UP3HV09902C0 FF+7d, UP3HV09904C0 FF+7d, UP3LV08102C0 FF+7d, UP3LV09601C0 FF+7d, UP3LV09902C0 FF+7d, UP3LV26013C0 FS+7d, UP3LV27006C0 FF+7d, UP3ME09603C0 FF+7d, UP3ME09910C0 FF+7d, UP3MG09601C0 FF+7d, UP3MG09902C0 FF+7d, UP3MT09601C0 FF+7d, UP3MT09902C0 FF+7d, UP3MT09904C0 FF+7d, UP3OS09601C0 FF+14d, UP3OS09902C0 FF+14d, UP3SG09601C0 FF+7d, UP3SG09902C0 FF+7d, UP3SG09904C0 FF+7d, UP3SG21104C0 FF+14d, UP3TA09602C0 FF+14d, UP3TA09906C0 FF+14d, UP3DO08102C0, UP3TS01801C0 FF, UP3HE27004C0, UP3HE26004C0, UP3OS22009C0, UP3OS23003C0, UP3OS26003C0, UP3OS27004C0, UP3OS09502C0, UP3TA27003C0, UP3FP09601C0, UP3FP08102C0, UP3MG09904C0, UP3MG27003C0, UP3MG26005C0, UP3CS27004C0, UP3CS08102C0, UP3CS23003C0, UP3CS26003C0, UP3CS21103C0, UP3CS23006C0, UP3CS23005C0, UP3CS21102C0, UP3CS09904C0, UP3BH08102C0, UP3BH26004C0, UP3BH27004C0, UP3FR08102C0, UP3FR21103C0, UP3FR26004C0, UP3FR27004C0, UP3FR09904C0, UP3OS26005C0, UP3OS09670C1 |  |  |  | -83d | 0d | TESTING & COMMISSIONING [128 h]; Cost | UP3TS01802C0 | UP | C | P3 | TS | SC | 018 | 02 | BILL 3 | B03 | 02 | R00 | ACF07 | 018 |  |  |  |  |  |  |  |  |
| UP3TS01803C0 |  | UP-P3 ; Minor snags | 5d | 2012-01-10 | 2012-01-15 | UP3TS01801C0, UP3TS01813C0, UP3DO26002C0 |  |  |  | 397d | 394.12d | Labor General [1 h]; Cost | UP3TS01803C0 | UP | C | P3 | TS | SC | 018 | 03 | BILL 3 | B03 | 03 | R00 | ACF07 | 018 |  |  |  |  |  |  |  |  |
|  | P2 | **Podium 2** |  | 2010-08-28 | 2012-01-10 |  |  |  |  |  |  |  |  |  |  |  |  |  |  |  |  |  |  |  |  |  |  |  |  |  |  |  |  |  |
|  | S1 | **Zone S1** |  | 2010-08-28 | 2011-08-30 |  |  |  |  |  |  |  |  |  |  |  |  |  |  |  |  |  |  |  |  |  |  |  |  |  |  |  |  |  |
| UP2S103303C0 |  | CU-P2 ; Walls & Columns P2 to GL (Zone S1-1) | 8d | 2010-08-28 A | 2011-02-28 A | UP3S103311C0 | 100% | 2011-03-07 | 2011-03-15 |  |  | CONCRETE [17448 h]; CONCRETE [439 m3]; Cost | UP2S103303C0 | UP | C | P2 | S1 | CT | 033 | 03 | BILL 3 | B03 | 05 | R00 | ACF03 | 033 | 100 | 03 | SIS | 1 |  |  |  |  |
| UP2S103301C0 |  | CU-P2 ; PT Slab (Zone S1-2) | 20d | 2010-11-01 A | 2011-01-11 A | UP3S103302C0 | 100% | 2010-11-24 | 2010-12-19 |  |  | CONCRETE [20272 h]; CONCRETE [510 m3]; Cost | UP2S103301C0 | UP | C | P2 | S1 | CT | 033 | 01 | BILL 3 | B03 | 07 | R00 | ACF03 | 033 | 100 | 03 | SIS | 2 | PT |  |  |  |
| UP2S103302C0 |  | CU-P2 ; PT Slab (Zone S1-3) | 20d | 2010-11-03 A | 2011-05-23 A | UP3S103303C0 | 100% | 2010-12-09 | 2011-01-03 |  |  | CONCRETE [5760 h]; CONCRETE [145 m3]; Cost | UP2S103302C0 | UP | C | P2 | S1 | CT | 033 | 02 | BILL 3 | B03 | 07 | R00 | ACF03 | 033 | 100 | 03 | SIS | 3 | PT |  |  |  |
| UP2S103305C0 |  | CU-P2 ; Walls & Columns P2 to GL (Zone S1-3) | 8d | 2011-01-03 A | 2011-05-30 A | UP2S103302C0 | 100% | 2011-02-10 | 2011-02-19 |  |  | CONCRETE [8992 h]; CONCRETE [226 m3]; Cost | UP2S103305C0 | UP | C | P2 | S1 | CT | 033 | 05 | BILL 3 | B03 | 05 | R00 | ACF03 | 033 | 100 | 03 | SIS | 3 |  |  |  |  |
| UP2S103304C0 |  | CU-P2 ; Walls & Columns P2 to GL (Zone S1-2) | 8d | 2011-01-15 A | 2011-02-17 A | UP2S103301C0 | 100% | 2011-01-30 | 2011-02-07 |  |  | CONCRETE [5416 h]; CONCRETE [136 m3]; Cost | UP2S103304C0 | UP | C | P2 | S1 | CT | 033 | 04 | BILL 3 | B03 | 05 | R00 | ACF03 | 033 | 100 | 03 | SIS | 2 |  |  |  |  |
| UP2S104001C0 |  | CU-P2 ; Block Wall P2 to GL (Zone S1-2) | 9d | 2011-05-15 A | 2011-08-15 A | UGLS103302C0 FS+14d | 100% | 2011-06-19 | 2011-06-29 |  |  | BLOCKWORKS [1869 h]; BLOCKWORKS [534 m2]; Cost | UP2S104001C0 | UP | C | P2 | S1 | BL | 040 | 01 | BILL 3 | B03 | BL | R00 | ACF06 | 040 | 40 | 04 | SIS | 2 |  | 97380.07 | 100 | 90 |
| UP2S104003C0 |  | CU-P2 ; Plaster for Block Wall P2 to GL (Zone S1-2) | 9d | 2011-05-19 A | 2011-08-15 A | UP2S104001C0 FF, UP2S104001C0 SS | 100% | 2011-06-19 | 2011-06-29 |  |  | BLOCKWORKS [69 h]; Cost | UP2S104003C0 | UP | C | P2 | S1 | BL | 040 | 03 | BILL 3 | B03 | BL | R00 | ACF06 | 040 | 40 | 04 | SIS | 2 |  | 17184.72 | 100 | 90 |
| UP2S104002C0 |  | CU-P2 ; Block Wall P2 to GL (Zone S1-3) | 11d | 2011-06-23 A | 2011-08-30 A | UGLS103303C0 FS+18d | 100% | 2011-06-23 | 2011-07-06 |  |  | BLOCKWORKS [3269 h]; BLOCKWORKS [934 m2]; Cost | UP2S104002C0 | UP | C | P2 | S1 | BL | 040 | 02 | BILL 3 | B03 | BL | R00 | ACF06 | 040 |  | 04 | SIS | 3 |  | 142012.59 | 100 | 80 |
| UP2S104004C0 |  | CU-P2 ; Plaster for Block Wall P2 to GL (Zone S1-3) | 11d | 2011-06-23 A | 2011-08-15 A | UP2S104002C0 FF, UP2S104002C0 SS | 100% | 2011-06-23 | 2011-07-06 |  |  | BLOCKWORKS [120 h]; Cost | UP2S104004C0 | UP | C | P2 | S1 | BL | 040 | 04 | BILL 3 | B03 | BL | R00 | ACF06 | 040 |  | 04 | SIS | 3 |  | 25061.04 | 100 | 80 |
|  | S2 | **Zone S2** |  | 2010-12-26 | 2011-08-15 |  |  |  |  |  |  |  |  |  |  |  |  |  |  |  |  |  |  |  |  |  |  |  |  |  |  |  |  |  |
| UP2S203302C0 |  | CU-P2 ; Walls & Columns P2 to GL (Zone S2-2) | 12d | 2010-12-26 A | 2011-05-30 A | UP3S203302C0 SS | 100% | 2011-01-19 | 2011-02-02 |  |  | CONCRETE [6328 h]; CONCRETE [159 m3]; Cost | UP2S203302C0 | UP | C | P2 | S2 | CT | 033 | 02 | BILL 3 | B03 | 05 | R00 | ACF03 | 033 | 100 | 03 | SIS | 2 |  |  |  |  |
| UP2S203301C0 |  | CU-P2 ; Walls & Columns P2 to GL (Zone S2-1) | 10d | 2010-12-29 A | 2011-05-30 A | UP3S203301C0 | 100% | 2011-01-30 | 2011-02-10 |  |  | CONCRETE [7392 h]; CONCRETE [186 m3]; Cost | UP2S203301C0 | UP | C | P2 | S2 | CT | 033 | 01 | BILL 3 | B03 | 05 | R00 | ACF03 | 033 | 100 | 03 | SIS | 1 |  |  |  |  |
| UP2S204002C0 |  | CU-P2 ; Block Wall P2 to GL (Zone S2-2) | 5d | 2011-05-10 A | 2011-07-20 A | UP3S204002C0 | 100% | 2011-07-07 | 2011-07-13 |  |  | BLOCKWORKS [2958 h]; BLOCKWORKS [845 m2]; Cost | UP2S204002C0 | UP | C | P2 | S2 | BL | 040 | 02 | BILL 3 | B03 | BL | R00 | ACF06 | 040 | 80 | 04 | SIS | 2 |  |  |  |  |
| UP2S204001C0 |  | CU-P2 ; Block Wall P2 to GL (Zone S2-1) | 5d | 2011-05-17 A | 2011-08-15 A | UP3S204001C0 | 100% | 2011-07-16 | 2011-07-20 |  |  | BLOCKWORKS [1712 h]; BLOCKWORKS [489 m2]; Cost | UP2S204001C0 | UP | C | P2 | S2 | BL | 040 | 01 | BILL 3 | B03 | BL | R00 | ACF06 | 040 | 10 | 04 | SIS | 1 |  | 59510.04 | 100 | 80 |
| UP2S204003C0 |  | CU-P2 ; Plaster for Block Wall P2 to GL (Zone S2-1) | 5d | 2011-05-17 A | 2011-08-15 A | UP2S204001C0 FF, UP2S204001C0 SS | 100% | 2011-07-16 | 2011-07-20 |  |  | BLOCKWORKS [63 h]; Cost | UP2S204003C0 | UP | C | P2 | S2 | BL | 040 | 03 | BILL 3 | B03 | BL | R00 | ACF06 | 040 | 10 | 04 | SIS | 1 |  | 10501.78 | 100 | 80 |
| UP2S204004C0 |  | CU-P2 ; Plaster for Block Wall P2 to GL (Zone S2-2) | 5d | 2011-05-17 A | 2011-07-20 A | UP2S204002C0 FF, UP2S204002C0 SS | 100% | 2011-07-07 | 2011-07-13 |  |  | BLOCKWORKS [109 h]; Cost | UP2S204004C0 | UP | C | P2 | S2 | BL | 040 | 04 | BILL 3 | B03 | BL | R00 | ACF06 | 040 | 80 | 04 | SIS | 2 |  |  |  |  |
|  | S3 | **Zone S3** |  | 2010-11-13 | 2011-08-15 |  |  |  |  |  |  |  |  |  |  |  |  |  |  |  |  |  |  |  |  |  |  |  |  |  |  |  |  |  |
| UP2S303303C0 |  | CU-P2 ; PT Slab (Zone S3-1) | 14d | 2010-11-13 A | 2011-01-18 A | UP3S303301C0 | 100% | 2010-11-29 | 2010-12-16 |  |  | CONCRETE [5088 h]; CONCRETE [128 m3]; Cost | UP2S303303C0 | UP | C | P2 | S3 | CT | 033 | 03 | BILL 3 | B03 | 07 | R00 | ACF03 | 033 | 100 | 03 | SIS | 1 | PT |  |  |  |
| UP2S303301C0 |  | CU-P2 ; Walls & Columns P2 to GL (Zone S3-1) | 12d | 2010-12-01 A | 2011-04-26 A | UP2S303303C0 FF | 100% | 2011-01-11 | 2011-01-25 |  |  | CONCRETE [5568 h]; CONCRETE [140 m3]; Cost | UP2S303301C0 | UP | C | P2 | S3 | CT | 033 | 01 | BILL 3 | B03 | 05 | R00 | ACF03 | 033 | 100 | 03 | SIS | 1 |  |  |  |  |
| UP2S303302C0 |  | CU-P2 ; Walls & Columns P2 to GL (Zone S3-2) | 12d | 2010-12-06 A | 2011-04-21 A | UP3S303302C0 | 100% | 2011-01-04 | 2011-01-18 |  |  | CONCRETE [5608 h]; CONCRETE [141 m3]; Cost | UP2S303302C0 | UP | C | P2 | S3 | CT | 033 | 02 | BILL 3 | B03 | 05 | R00 | ACF03 | 033 | 100 | 03 | SIS | 2 |  |  |  |  |
| UP2S304001C0 |  | CU-P2 ; Block Wall P2 to GL (Zone S3-1) | 5d | 2011-06-26 A | 2011-08-15 A | UGLS303301C0 FS+18d | 100% | 2011-07-05 | 2011-07-10 |  |  | BLOCKWORKS [2804 h]; BLOCKWORKS [801 m2]; Cost | UP2S304001C0 | UP | C | P2 | S3 | BL | 040 | 01 | BILL 3 | B03 | BL | R00 | ACF06 | 040 |  | 04 | SIS | 1 |  | 19476.01 | 100 | 70 |
| UP2S304003C0 |  | CU-P2 ; Plaster for Block Wall P2 to GL (Zone S3-1) | 5d | 2011-06-29 A | 2011-08-15 A | UP2S304001C0 FF, UP2S304001C0 SS | 100% | 2011-07-05 | 2011-07-10 |  |  | BLOCKWORKS [103 h]; Cost | UP2S304003C0 | UP | C | P2 | S3 | BL | 040 | 03 | BILL 3 | B03 | BL | R00 | ACF06 | 040 |  | 04 | SIS | 1 |  | 4296.18 | 100 | 70 |
| UP2S304002C0 |  | CU-P2 ; Block Wall P2 to GL (Zone S3-2) | 5d | 2011-07-10 A | 2011-08-15 A | UP3S304002C0 FF, UP3S304002C0 SS | 100% | 2011-07-19 | 2011-07-24 |  |  | BLOCKWORKS [2958 h]; BLOCKWORKS [845 m2]; Cost | UP2S304002C0 | UP | C | P2 | S3 | BL | 040 | 02 | BILL 3 | B03 | BL | R00 | ACF06 | 040 |  | 04 | SIS | 2 |  | 25697.52 | 100 | 80 |
| UP2S304004C0 |  | CU-P2 ; Plaster for Block Wall P2 to GL (Zone S3-2) | 5d | 2011-07-10 A | 2011-08-15 A | UP2S304002C0 FF, UP2S304002C0 SS | 100% | 2011-07-19 | 2011-07-24 |  |  | BLOCKWORKS [109 h]; Cost | UP2S304004C0 | UP | C | P2 | S3 | BL | 040 | 04 | BILL 3 | B03 | BL | R00 | ACF06 | 040 |  | 04 | SIS | 2 |  |  | 100 | 80 |

| ID | WBS | Activity | Duration | Start | Finish | Predecessors | Complete | Remaining | Planned start | Planned finish | Total float | Free float | Resources | Cost | Actual cost | change id | RENZ % COMPLETE | CCAD BUILDING(SET) | CCAD PHASE(SET) | CCAD DIVISION(SET) | CCAD FLOOR(SET) | CCAD ZONE(SET) | CCAD WORK(SET) | CCAD SECTION(SET) | CCAD SERIAL No.(SET) | CCAD RESPONSIBILITY(SET) | CCAD CUP CODE(SET) | CCAD CBS(SET) | CCAD BILL(SET) | CCAD TAG(SET) | CCAD REV(SET) | CCADACF (SET) | CCAD SSCF | P_811 | P_711 | DIVISION FOR ACTIVITY ID | Claimed This Month | CCAD CSA | user_number8 | user_integer1 | user_integer2 | user_number7 |
| --- | --- | --- | --- | --- | --- | --- | --- | --- | --- | --- | --- | --- | --- | --- | --- | --- | --- | --- | --- | --- | --- | --- | --- | --- | --- | --- | --- | --- | --- | --- | --- | --- | --- | --- | --- | --- | --- | --- | --- | --- | --- | --- |
|  | S4 | **Zone S4** |  | 2010-09-08 | 2011-08-30 |  |  |  |  |  |  |  |  |  |  |  |  |  |  |  |  |  |  |  |  |  |  |  |  |  |  |  |  |  |  |  |  |  |  |  |  |  |
| UP2S403301C0 |  | CU-P2 ; Walls at P3 (2 Concrete _ upto GL) (Zone S4-0) | 19.88d | 2010-09-08 A | 2011-01-30 A | UFNS431202C0 | 100% |  | 2011-05-25 | 2011-06-16 |  |  | CONCRETE [22864 h]; CONCRETE [575 m3]; Cost |  |  | UP2S403301C0 | 100 | UP | C | 03 | P2 | S4 | CT | 033 | 01 | SIS | 0 | BILL 3 | B03 | 10 | R00 | ACF03 | 033 |  |  |  |  |  |  |  |  |  |
| UP2S431202C0 |  | CU-P2 ; Tank Installation (Zone S4-0) | 18d | 2011-05-16 A | 2011-05-17 A | UFNS431202C0 | 100% |  | 2011-06-01 | 2011-06-22 |  |  | Labor General [1 h]; Cost |  |  | UP2S431202C0 | 100 | UP | C | 31 | P2 | S4 | EQ | 220 | 02 | SIS | 0 | BILL 3 | B03 | 10 | R00 | ACF04 | 220 |  |  |  |  |  |  |  |  |  |
| UP2S431201C0 |  | CU-P2 ; 2nd Back Filling Upto GL (Zone S4-0) | 18d | 2011-07-10 A | 2011-08-30 A | UP2S403301C0 FF, UP2S403301C0 SS+10d | 100% |  | 2011-07-02 | 2011-07-23 |  |  | Cost |  |  | UP2S431201C0 |  | UP | C | 31 | P2 | S4 | EK | 312 | 01 | SIS | 0 | BILL 3 | B03 | 03 | R00 | ACF02 | 312 | 100 | 30 |  |  |  |  |  |  |  |
|  | 01 | **MEZZ. LVL WORKS** |  | 2011-04-11 | 2011-12-17 |  |  |  |  |  |  |  |  |  |  |  |  |  |  |  |  |  |  |  |  |  |  |  |  |  |  |  |  |  |  |  |  |  |  |  |  |  |
| UP2ML23001C0 |  | CU-P2 ; Inst. Of AHU - 1 Nos. (Mezz. Lvl) | 5d | 2011-04-11 A | 2011-06-29 A | UP2ML23004C0 FF | 100% |  | 2011-08-20 | 2011-08-25 |  |  | MECHANICAL [2212.8 h]; Cost [1413785 AED] | 1,413,785.16 | 1,413,785.16 | UP2ML23001C0 | 75 | UP | C | 23 | P2 | ML | ME | 230 | 01 | ETA |  | BILL 3 | B03 | MHV | R00 | ACF04 | 230 |  |  | 23040 | 420845.85 | MEP |  |  |  |  |
| UP2ML22001C0 |  | CU-P2 ; Inst. Of Cold Water Pipe (Mezz. Lvl) | 12d | 2011-05-15 A | 2011-10-20 | UP2ML23004C0 FF, UP2ML23004C0 SS+6d | 30% | 8.4d | 2011-08-14 | 2011-08-28 | -50d | 0d | PLUMBING [943.2 h]; Cost [35447.7 AED] | 35,447.7 | 10,634.31 | UP2ML22001C0 | 30 | UP | C | 22 | P2 | ML | ME | 220 | 01 | ETA |  | BILL 3 | B03 | MPL | R00 | ACF04 | 220 |  |  | 22021 |  | MEP |  |  |  |  |
| UP2ML23003C0 |  | CU-P2 ; Inst. Of Duct Supp.s & Ducting (Mezz. Lvl) | 18d | 2011-05-15 A | 2011-10-24 | UP2ML23004C0 FF, UP2ML23004C0 SS+6d | 25% | 13.5d | 2011-08-14 | 2011-09-06 | -47.3d | 0d | MECHANICAL [1333.2 h]; Cost [37738.7 AED] | 37,738.68 | 9,434.67 | UP2ML23003C0 | 15 | UP | C | 23 | P2 | ML | ME | 230 | 03 | ETA |  | BILL 3 | B03 | MHV | R00 | ACF04 | 230 |  |  | 23015 |  | MEP |  |  |  |  |
| UP2ML23004C0 |  | CU-P2 ; Inst. Of CHW Pipe Supp.s & Piping Works (Mezz. Lvl) | 16d | 2011-05-15 A | 2011-10-20 | UP2ML26001C0 FF, UP2ML26001C0 SS | 30% | 11.2d | 2011-08-07 | 2011-08-25 | -58.9d | 0d | MECHANICAL [1184.4 h]; Cost [37738.7 AED] | 37,738.68 | 11,321.61 | UP2ML23004C0 | 30 | UP | C | 23 | P2 | ML | ME | 230 | 04 | ETA |  | BILL 3 | B03 | MHV | R00 | ACF04 | 230 |  |  | 23010 |  | MEP |  |  |  |  |
| UP2ML26001C0 |  | CU-P2 ; Trnk & Cnduit For Lighting / Pwr / Emerg. (Mezz. Lvl) | 10d | 2011-05-15 A | 2011-10-16 | UP2ML27001C0 | 35% | 6.5d | 2011-08-07 | 2011-08-18 | -58.9d | 0d | ELECTRICAL [1506 h]; Cost [6501.63 AED] | 6,501.63 | 2,275.57 | UP2ML26001C0 | 35 | UP | C | 26 | P2 | ML | ME | 260 | 01 | ETA |  | BILL 3 | B03 | MEL | R00 | ACF04 | 260 |  |  | 26020 |  | MEP |  |  |  |  |
| UP2ML26007C0 |  | CU-P2 ; Inst. Of Back Boxes & Conduites On Wall (Mezz. Lvl) | 8d | 2011-05-15 A | 2011-10-05 | UP2S104003C0, UP2S304001C0 | 45% | 4.4d | 2011-07-21 | 2011-07-31 | -58.9d | 0d | ELECTRICAL [1807.2 h]; Cost [6501.63 AED] | 6,501.63 | 2,925.73 | UP2ML26007C0 | 35 | UP | C | 26 | P2 | ML | ME | 260 | 07 | ETA |  | BILL 3 | B03 | MEL | R00 | ACF04 | 260 | 45 | 35 |  | 14669.36 | MEP |  |  |  |  |
| UP2ML27001C0 |  | CU-P2 ; Trunking & Conduiting Works For ELV Syss (Mezz. Lvl) | 6d | 2011-05-15 A | 2011-10-08 | UP2ML26007C0, UP2S104003C0 | 60% | 2.4d | 2011-07-31 | 2011-08-07 | -58.9d | 0d | ELECTRICAL [52.8 h]; Cost [2874.8 AED] | 2,874.8 | 1,724.88 | UP2ML27001C0 | 35 | UP | C | 27 | P2 | ML | ME | 270 | 01 | ETA |  | BILL 3 | B03 | MELV | R00 | ACF04 | 270 | 55 | 35 | 27010 | 663.25 | MEP | 0 | 0 | 0 | 0 |
| UP2ML27002C0 |  | CU-P2 ; Wiring Works For ELV Systems (Mezz. Lvl) | 16d | 2011-05-15 A | 2011-10-22 | UP2ML27001C0, UP2S104003C0 | 25% | 12d | 2011-08-07 | 2011-08-25 | -50.8d | 0d | ELECTRICAL [247.2 h]; Cost [2549.35 AED] | 2,549.35 | 637.34 | UP2ML27002C0 | 25 | UP | C | 27 | P2 | ML | ME | 270 | 02 | ETA |  | BILL 3 | B03 | MELV | R00 | ACF07 | 270 |  |  | 27020 |  | MEP | 0 | 0 | 0 | 0 |
| UP2ML21103C0 |  | CU-P2 ; Inst. Of Foam Bladder Tank - 1 Nos. (Mezz. Lvl) | 12d | 2011-08-10 A | 2011-08-30 A | UP2ML21101C0, UP3CW21103C0 FF, UP3CW21103C0 SS+5d | 100% |  | 2011-10-02 | 2011-10-16 |  |  | MECHANICAL [1467.6 h]; Cost [801121 AED] | 801,121.41 | 801,121.41 | UP2ML21103C0 |  | UP | C | 21 | P2 | ML | ME | 211 | 03 | ETA |  | BILL 3 | B03 | MFS | R00 | ACF04 | 211 | 100 | 0 | 21170 |  | MEP |  |  |  |  |
| UP2ML27005C0 |  | CU-P2 ; Inst. Of DDC Panel (Mezz. Lvl) | 16d | 2011-08-10 A | 2011-10-23 | UP2ML27002C0 | 95% | 0.79d | 2011-09-11 | 2011-09-29 | -50.8d | 0d | ELECTRICAL [4250.4 h]; Cost [308717 AED] | 308,716.73 | 293,280.9 | UP2ML27005C0 |  | UP | C | 27 | P2 | ML | ME | 270 | 05 | ETA |  | BILL 3 | B03 | MELV | R00 | ACF04 | 270 | 95 | 0 | 27030 |  | MEP |  |  |  |  |
| UP2ML08101C0 |  | CU-P2 ; Door Frames (Mezz. Lvl) | 2d | 2011-09-05 A | 2011-10-01 | UP2S304001C0 | 50% | 1d | 2011-09-04 | 2011-09-05 | -4d | 28.5d | ASSORTED DOORS [14 h]; Cost |  |  | UP2ML08101C0 |  | UP | C | 08 | P2 | ML | DO | 081 | 01 | SIS |  | BILL 3 | B03 | DF | R00 | ACF06 | 081 |  |  |  |  |  |  |  |  |  |
| UP2ML08102C0 |  | CU-P2 ; Doors (Mezz. Lvl) | 2d | 2011-09-05 A | 2011-11-05 | UP2ML08101C0, UP2ML09901C0 | 50% | 1d | 2011-10-22 | 2011-10-24 | -32.5d | 0d | ASSORTED DOORS [26 h]; Cost |  |  | UP2ML08102C0 |  | UP | C | 08 | P2 | ML | DO | 081 | 02 | SIS |  | BILL 3 | B03 | DR | R00 | ACF06 | 081 |  |  |  |  |  |  |  |  |  |
| UP2ML21101C0 |  | CU-P2 ; Inst. Of Pipe - Fire Suppression System (Mezz. Lvl) | 18d | 2011-09-05 A | 2011-10-26 | UP2ML22001C0 | 75% | 4.5d | 2011-09-25 | 2011-10-16 | -37.5d | 0d | MECHANICAL [4234.8 h]; Cost [289004 AED] | 289,003.78 | 216,752.84 | UP2ML21101C0 |  | UP | C | 21 | P2 | ML | ME | 211 | 01 | ETA |  | BILL 3 | B03 | MFS | R00 | ACF04 | 211 |  |  | 21110 |  | MEP |  |  |  |  |
| UP2ML23005C0 |  | CU-P2 ; Press. Tst CHW Piping & Insp. By Cnslt (Mezz. Lvl) | 7d | 2011-09-05 A | 2011-11-22 | UP2ML23004C0, UP2ML23013C0 | 30% | 4.9d | 2011-10-18 | 2011-10-26 | -58.9d | 0d | MECHANICAL [2485.2 h]; Cost [1321086 AED] | 1,321,085.76 | 396,325.73 | UP2ML23005C0 |  | UP | C | 23 | P2 | ML | ME | 230 | 05 | ETA |  | BILL 3 | B03 | MHV | R00 | ACF07 | 230 |  |  | 23090 |  | MEP |  |  |  |  |
| UP2ML09901C0 |  | CU-P2 ; Wall Prime & 1st Coat (Mezz. Lvl) | 10d | 2011-09-10 A | 2011-11-03 | UP2ML26002C0, UP2ML27002C0 | 100% | 0d | 2011-10-10 | 2011-10-22 | -32.5d | 0d | Cost |  |  | UP2ML09901C0 |  | UP | C | 09 | P2 | ML | PA | 099 | 01 | SIS |  | BILL 3 | B03 | 01 | R00 | ACF06 | 099 |  |  |  |  |  |  |  |  |  |
| UP2ML26002C0 |  | CU-P2 ; Wiring To Lighting / Pwr / Emergency (Mezz. Lvl) | 18d | 2011-09-10 A | 2011-11-03 | UP2ML26001C0 | 10% | 16.2d | 2011-09-19 | 2011-10-10 | -56.5d | 0d | ELECTRICAL [2007.6 h]; Cost [10136.5 AED] | 10,136.46 | 1,013.65 | UP2ML26002C0 |  | UP | C | 26 | P2 | ML | ME | 260 | 02 | ETA |  | BILL 3 | B03 | MEL | R00 | ACF07 | 260 |  |  | 26041 |  | MEP |  |  |  |  |
| UP2ML26003C0 |  | CU-P2 ; Inst. Of Lights / Switches / Sockets (Mezz. Lvl) | 10d | 2011-09-10 A | 2011-12-06 | UP2ML26002C0, UP2ML26005C0 FF+6d | 10% | 9d | 2011-10-24 | 2011-11-05 | -58d | 0d | ELECTRICAL [1701.6 h]; Cost [19522.4 AED] | 19,522.4 | 1,952.24 | UP2ML26003C0 |  | UP | C | 26 | P2 | ML | ME | 260 | 03 | ETA |  | BILL 3 | B03 | MEL | R00 | ACF04 | 260 |  |  | 26061 |  | MEP |  |  |  |  |
| UP2ML22002C0 |  | CU-P2 ; Inst. Of Expansion Tank (Mezz. Lvl) | 12d | 2011-10-22 | 2011-11-03 | UP2ML22001C0 |  |  |  |  | -50d | 0d | PLUMBING [294 h]; Cost |  |  | UP2ML22002C0 |  | UP | C | 22 | P2 | ML | ME | 220 | 02 | ETA |  | BILL 3 | B03 | MPL | R00 | ACF04 | 220 |  |  | 22041 |  | MEP |  |  |  |  |
| UP2ML23002C0 |  | CU-P2 ; Inst. Of Extract Fan - 1 Nos. (Mezz. Lvl) | 3d | 2011-10-22 | 2011-10-24 | UP2ML23001C0 |  |  |  |  | -58d | 0d | Labor General [1.2 h]; Cost |  |  | UP2ML23002C0 |  | UP | C | 23 | P2 | ML | ME | 230 | 02 | ETA |  | BILL 3 | B03 | MHV | R00 | ACF04 | 230 |  |  | 23051 |  | MEP |  |  |  |  |
| UP2ML23011C0 |  | CU-P2 ; Inst. Of Valves (Mezz. Lvl) | 12d | 2011-10-22 | 2011-11-03 | UP2ML23001C0 |  |  |  |  | -58.9d | 0d | Labor General [1.2 h]; Cost |  |  | UP2ML23011C0 |  | UP | C | 23 | P2 | ML | ME | 230 | 11 | ETA |  | BILL 3 | B03 | MHV | R00 | ACF04 | 230 |  |  | 53053 |  | MEP |  |  |  |  |
| UP2ML27007C0 |  | CU-P2 ; Dressing, Glanding & Termin. Of DDC Pnls (Mezz. Lvl) | 9d | 2011-10-22 | 2011-11-01 | UP2ML27005C0 SS+12d |  |  |  |  | -50.8d | 0d | ELECTRICAL [1622.4 h]; Cost |  |  | UP2ML27007C0 |  | UP | C | 27 | P2 | ML | ME | 270 | 07 | ETA |  | BILL 3 | B03 | MELV | R00 | ACF07 | 270 |  |  | 27051 |  | MEP |  |  |  |  |
| UP2ML23009C0 |  | CU-P2 ; Inst. Of Diffusers (Mezz. Lvl) | 12d | 2011-10-24 | 2011-11-10 | UP2ML23003C0 |  |  |  |  | 420.7d | 19.7d | MECHANICAL [819.6 h]; Cost |  |  | UP2ML23009C0 |  | UP | C | 23 | P2 | ML | ME | 230 | 09 | ETA |  | BILL 3 | B03 | MHV | R00 | ACF04 | 230 |  |  | 23050 |  | MEP |  |  |  |  |
| UP2ML23012C0 |  | CU-P2 ; Duct Conn. Works To Fan (Mezz. Lvl) | 16d | 2011-10-25 | 2011-11-15 | UP2ML23002C0, UP2ML23003C0 FF+6d |  |  |  |  | -58d | 0d | MECHANICAL [2834.4 h]; Cost |  |  | UP2ML23012C0 |  | UP | C | 23 | P2 | ML | ME | 230 | 12 | ETA |  | BILL 3 | B03 | MHV | R00 | ACF07 | 230 |  |  | 23031 |  | MEP |  |  |  |  |
| UP2ML09903C0 |  | CU-P2 ; Ceiling Prime & 1st Coat (Mezz. Lvl) | 0d | 2011-10-26 | 2011-10-26 | UP2ML21101C0 |  |  |  |  | 430.5d | 29.5d | Cost |  |  | UP2ML09903C0 |  | UP | C | 09 | P2 | ML | PA | 099 | 03 | SIS |  | BILL 3 | B03 | 01 | R00 | ACF06 | 099 |  |  |  |  |  |  |  |  |  |
| UP2ML27009C0 |  | CU-P2 ; Bms Conn. Works To Equipments (Mezz. Lvl) | 9d | 2011-11-01 | 2011-11-15 | UP2ML27007C0 SS+9d |  |  |  |  | -50.8d | 7.2d | ELECTRICAL [130.8 h]; Cost |  |  | UP2ML27009C0 |  | UP | C | 27 | P2 | ML | ME | 270 | 09 | ETA |  | BILL 3 | B03 | MELV | R00 | ACF07 | 270 |  |  | 27060 |  | MEP |  |  |  |  |
| UP2ML22003C0 |  | CU-P2 ; Isolation Valve & Conn.To Expansion Tank (Mezz. Lvl) | 18d | 2011-11-05 | 2011-11-29 | UP2ML22002C0, UV10AF26006R2 FF |  |  |  |  | -50d | 11d | PLUMBING [294 h]; Cost |  |  | UP2ML22003C0 |  | UP | C | 22 | P2 | ML | ME | 220 | 03 | ETA |  | BILL 3 | B03 | MPL | R00 | ACF04 | 220 |  |  | 22060 |  | MEP |  |  |  |  |
| UP2ML23013C0 |  | CU-P2 ; CHW Pipe Conn. Works To AHU (Mezz. Lvl) | 8d | 2011-11-05 | 2011-11-16 | UP2ML23001C0, UP2ML23011C0 |  |  |  |  | -58.9d | 0d | Labor General [1.2 h]; Cost |  |  | UP2ML23013C0 |  | UP | C | 23 | P2 | ML | ME | 230 | 13 | ETA |  | BILL 3 | B03 | MHV | R00 | ACF07 | 230 |  |  | 23026 |  | MEP |  |  |  |  |
| UP2ML09601C0 |  | CU-P2 ; Floor Finishing (Mezz. Lvl) | 0d | 2011-11-05 | 2011-11-05 | UP2ML08102C0 |  |  |  |  | -32.5d | 28.5d | Cost |  |  | UP2ML09601C0 |  | UP | C | 09 | P2 | ML | FF | 096 | 01 | SIS |  | BILL 3 | B03 | 01 | R00 | ACF06 | FF |  |  |  |  |  |  |  |  |  |
| UP2ML26004C0 |  | CU-P2 ; Inst. Of Isolator For Equipments (Mezz. Lvl) | 6d | 2011-11-09 | 2011-11-15 | UP2ML23012C0 SS+10d, UP2ML26002C0 |  |  |  |  | -58d | 0d | ELECTRICAL [483.6 h]; Cost |  |  | UP2ML26004C0 |  | UP | C | 26 | P2 | ML | ME | 260 | 04 | ETA |  | BILL 3 | B03 | MEL | R00 | ACF04 | 260 |  |  | 26073 |  | MEP |  |  |  |  |
| UP2ML21104C0 |  | CU-P2 ; Final Conn. Works To Bladder Tank (Mezz. Lvl) | 10d | 2011-11-09 | 2011-11-21 | UP2ML21103C0 |  |  |  |  | -46.35d | 0d | MECHANICAL [1467.6 h]; Cost |  |  | UP2ML21104C0 |  | UP | C | 21 | P2 | ML | ME | 211 | 04 | ETA |  | BILL 3 | B03 | MFS | R00 | ACF04 | 211 |  |  | 21171 |  | MEP |  |  |  |  |
| UP2ML26005C0 |  | CU-P2 ; Elec. Conn. Works To Equipments (Mezz. Lvl) | 10d | 2011-11-16 | 2011-11-28 | UP2ML26004C0 |  |  |  |  | -58d | 0d | ELECTRICAL [673.2 h]; Cost |  |  | UP2ML26005C0 |  | UP | C | 26 | P2 | ML | ME | 260 | 05 | ETA |  | BILL 3 | B03 | MEL | R00 | ACF07 | 260 |  |  | 26083 |  | MEP |  |  |  |  |
| UP2ML21102C0 |  | CU-P2 ; Inst. Of Fire Extinguisher / Fhc (Mezz. Lvl) | 3d | 2011-11-21 | 2011-11-24 | UP2ML21104C0 |  |  |  |  | -46.35d | 14.65d | MECHANICAL [166.8 h]; Cost |  |  | UP2ML21102C0 |  | UP | C | 21 | P2 | ML | ME | 211 | 02 | ETA |  | BILL 3 | B03 | MFS | R00 | ACF04 | 211 |  |  | 21160 |  | MEP |  |  |  |  |
| UP2ML23007C0 |  | CU-P2 ; Insulation Of CHW Piping (Mezz. Lvl) | 14d | 2011-11-22 | 2011-12-11 | UP2ML23005C0 |  |  |  |  | -58.9d | 2.1d | MECHANICAL [1254 h]; Cost |  |  | UP2ML23007C0 |  | UP | C | 23 | P2 | ML | ME | 230 | 07 | ETA |  | BILL 3 | B03 | MHV | R00 | ACF04 | 230 |  |  | 23028 |  | MEP |  |  |  |  |
| UP2ML27003C0 |  | CU-P2 ; ELV Dev.- Sensors, Smoke Detector / Spkrs (Mezz. Lvl) | 8d | 2011-11-24 | 2011-12-05 | UP2ML26003C0 SS, UP2ML27002C0, UP2ML27009C0 |  |  |  |  | -58d | 0d | ELECTRICAL [153.6 h]; Cost |  |  | UP2ML27003C0 |  | UP | C | 27 | P2 | ML | ME | 270 | 03 | ETA |  | BILL 3 | B03 | MELV | R00 | ACF07 | 270 |  |  | 27040 |  | MEP |  |  |  |  |
| UP2ML09904C0 |  | CU-P2 ; Ceiling Final Coat (Mezz. Lvl) | 0d | 2011-12-06 | 2011-12-06 | UP2ML09903C0, UP2ML23009C0, UP2ML23012C0 FF, UP2ML27003C0 |  |  |  |  | 401d | 0d | Cost |  |  | UP2ML09904C0 |  | UP | C | 09 | P2 | ML | PA | 099 | 04 | SIS |  | BILL 3 | B03 | 02 | R00 | ACF06 | 099 |  |  |  |  |  |  |  |  |  |
| UP2ML27004C0 |  | CU-P2 ; Batt. Offline Readers & Telecom Outlets (Mezz. Lvl) | 4d | 2011-12-06 | 2011-12-10 | UP2ML27003C0, UP2GN03300R02 FF |  |  |  |  | -58d | 3d | Labor General [1.2 h]; Cost |  |  | UP2ML27004C0 |  | UP | C | 27 | P2 | ML | ME | 270 | 04 | ETA |  | BILL 3 | B03 | MELV | R00 | ACF07 | 270 |  |  | 27070 |  | MEP |  |  |  |  |
| UP2ML09902C0 |  | CU-P2 ; Wall 2nd Coat (Mezz. Lvl) | 0d | 2011-12-17 | 2011-12-17 | UP2ML09901C0, UP2ML09904C0 SS+9d, UP2ML26003C0 |  |  |  |  | 401d | 0d | Cost |  |  | UP2ML09902C0 |  | UP | C | 09 | P2 | ML | PA | 099 | 02 | SIS |  | BILL 3 | B03 | 02 | R00 | ACF06 | 099 |  |  |  |  |  |  |  |  |  |

| ID | WBS | Activity | Duration | Start | Finish | Predecessors | Complete | Remaining | Planned start | Planned finish | Total float | Free float | Resources | Cost | Actual cost | user_number8 | user_integer1 | user_integer2 | user_number7 | change id | DIVISION FOR ACTIVITY ID | RENZ % COMPLETE | CCAD BUILDING(SET) | CCAD PHASE(SET) | CCAD DIVISION(SET) | CCAD FLOOR(SET) | CCAD ZONE(SET) | CCAD WORK(SET) | CCAD SECTION(SET) | CCAD SERIAL No.(SET) | CCAD RESPONSIBILITY(SET) | CCAD CBS(SET) | CCAD BILL(SET) | CCAD TAG(SET) | CCAD REV(SET) | CCADACF (SET) | CCAD CSA | CCAD SSCF | Claimed This Month | P_811 | P_711 |
| --- | --- | --- | --- | --- | --- | --- | --- | --- | --- | --- | --- | --- | --- | --- | --- | --- | --- | --- | --- | --- | --- | --- | --- | --- | --- | --- | --- | --- | --- | --- | --- | --- | --- | --- | --- | --- | --- | --- | --- | --- | --- |
|  | 02 | **TR RM** |  | 2011-04-04 | 2011-12-12 |  |  |  |  |  |  |  |  |  |  |  |  |  |  |  |  |  |  |  |  |  |  |  |  |  |  |  |  |  |  |  |  |  |  |  |  |
| UP2TA27001C0 |  | CU-P2 ; Trunking & Conduiting Works For ELV Systems (Transf. RM) | 24d | 2011-04-04 A | 2011-10-13 | UP2S104003C0 | 50% | 12d | 2011-05-28 | 2011-06-25 | -59.4d | 0d | ELECTRICAL [52.8 h]; Cost [2874.8 AED] | 2,874.8 | 1,437.4 | 0 | 0 | 0 | 0 | UP2TA27001C0 | 27010 | 35 | UP | C | 27 | P2 | TA | ME | 270 | 01 | ETA | BILL 3 | B03 | MELV | R00 | ACF04 | MEP | 270 |  |  |  |
| UP2TA26004C0 |  | CU-P2 ; Inst. Of Back Boxes & Conduites On Wall (Transf. RM) | 8d | 2011-04-27 A | 2011-10-20 | UP2S104002C0, UP2S104003C0, UP2TA27001C0 | 35% | 5.2d | 2011-05-18 | 2011-05-28 | -23.9d | 15.2d | ELECTRICAL [1807.2 h]; Cost [6501.63 AED] | 6,501.63 | 2,275.57 |  |  |  |  | UP2TA26004C0 |  | 35 | UP | C | 26 | P2 | TA | ME | 260 | 04 | ETA | BILL 3 | B03 | MEL | R00 | ACF04 | MEP | 260 | 44008.2 |  |  |
| UP2TA26001C0 |  | CU-P2 ; Trnk & Cnduit For Lighting / Pwr / Emerg. (Transf. RM) | 15d | 2011-05-15 A | 2011-10-13 | UP2TA27001C0 FF, UP2TA27001C0 SS+14d | 85% | 2.25d | 2011-07-06 | 2011-07-24 | -33.05d | 0d | ELECTRICAL [1807.2 h]; Cost [6501.63 AED] | 6,501.63 | 5,526.38 | 0 | 0 | 0 | 0 | UP2TA26001C0 | 26020 | 35 | UP | C | 26 | P2 | TA | ME | 260 | 01 | ETA | BILL 3 | B03 | MEL | R00 | ACF04 | MEP | 260 |  |  |  |
| UP2TA21101C0 |  | CU-P2 ; Inst. Of Pipe - Fire Suppression System (Transf. RM) | 21d | 2011-07-10 A | 2011-10-16 | UP2TA26001C0 | 95% | 1.05d | 2011-07-20 | 2011-08-14 | -33.05d | 0d | MECHANICAL [4504.8 h]; Cost [289004 AED] | 289,003.78 | 274,553.59 |  |  |  |  | UP2TA21101C0 | 21110 |  | UP | C | 21 | P2 | TA | ME | 211 | 01 | ETA | BILL 3 | B03 | MFS | R00 | ACF04 | MEP | 211 |  | 95 | 5 |
| UP2TA09901C0 |  | CU-P2 ; Wall Prime & 1st Coat (Transf. RM) | 10d | 2011-08-02 A | 2011-11-10 | UP2TA26002C0, UP2TA27002C0, UP2TA26004C0 | 95% | 0.5d | 2011-09-19 | 2011-10-01 | -39.1d | 0d | WALL PAINT [592 h]; WALL PAINT [738 m2]; Cost |  |  | 0 | 0 | 0 | 0 | UP2TA09901C0 |  |  | UP | C | 09 | P2 | TA | PA | 099 | 01 | SIS | BILL 3 | B03 | 01 | R00 | ACF06 |  | 099 |  | 50 | 0 |
| UP2TA09902C0 |  | CU-P2 ; Wall 2nd Coat (Transf. RM) | 8d | 2011-08-02 A | 2011-12-08 | UP2TA09901C0, UP2TA09904C0, UP2TA26003C0 | 95% | 0.4d | 2011-10-22 | 2011-10-31 | 407.2d | 6.2d | WALL PAINT [319 h]; WALL PAINT [397 m2]; Cost |  |  |  |  |  |  | UP2TA09902C0 |  |  | UP | C | 09 | P2 | TA | PA | 099 | 02 | SIS | BILL 3 | B03 | 02 | R00 | ACF06 |  | 099 |  | 95 | 0 |
| UP2TA09903C0 |  | CU-P2 ; Ceiling Prime & 1st Coat (Transf. RM) | 6d | 2011-08-02 A | 2011-10-16 | UP2TA21102C0 | 100% | 0d | 2011-09-28 | 2011-10-05 | 448.55d | 41.35d | Cost |  |  |  |  |  |  | UP2TA09903C0 |  |  | UP | C | 09 | P2 | TA | PA | 099 | 03 | SIS | BILL 3 | B03 | 01 | R00 | ACF06 |  | 099 |  | 50 | 0 |
| UP2TA09904C0 |  | CU-P2 ; Ceiling Final Coat (Transf. RM) | 6d | 2011-08-02 A | 2011-12-08 | UP2TA09903C0, UP2TA27003C0 | 100% | 0d | 2011-10-15 | 2011-10-22 | 407.2d | 0d | Cost |  |  |  |  |  |  | UP2TA09904C0 |  |  | UP | C | 09 | P2 | TA | PA | 099 | 04 | SIS | BILL 3 | B03 | 02 | R00 | ACF06 |  | 099 |  | 50 | 0 |
| UP2TA21102C0 |  | CU-P2 ; Inst. Of Cylinders - Fire Suppr. System (Transf. RM) | 12d | 2011-08-10 A | 2011-08-30 A | UP2TA21101C0 | 100% |  | 2011-09-14 | 2011-09-28 |  |  | MECHANICAL [4504.8 h]; Cost [289004 AED] | 289,003.78 | 289,003.78 |  |  |  |  | UP2TA21102C0 | 21120 |  | UP | C | 21 | P2 | TA | ME | 211 | 02 | ETA | BILL 3 | B03 | MFS | R00 | ACF04 | MEP | 211 |  | 100 | 0 |
| UP2TA08101C0 |  | CU-P2 ; Door Frames (Transf. RM) | 17.88d | 2011-09-05 A | 2011-10-02 | UP2S104002C0 | 90% | 1.79d | 2011-09-01 | 2011-09-21 | -7.99d | 31.11d | ASSORTED DOORS [8 h]; Cost |  |  |  |  |  |  | UP2TA08101C0 |  |  | UP | C | 08 | P2 | TA | DO | 081 | 01 | SIS | BILL 3 | B03 | DF | R00 | ACF06 |  | 081 |  |  |  |
| UP2TA08102C0 |  | CU-P2 ; Doors (Transf. RM) | 12d | 2011-09-05 A | 2011-11-13 | UP2TA08101C0, UP2TA09901C0 | 90% | 1.2d | 2011-10-23 | 2011-11-09 | -39.1d | 0d | METAL DOORS [10 h]; METAL DOORS [1 no]; Cost |  |  |  |  |  |  | UP2TA08102C0 |  |  | UP | C | 08 | P2 | TA | DO | 081 | 02 | SIS | BILL 3 | B03 | DR | R00 | ACF06 |  | 081 |  |  |  |
| UP2TA09601C0 |  | CU-P2 ; Floor Finishing (Transf. RM) | 12d | 2011-09-05 A | 2011-11-16 | UP2TA08102C0 | 75% | 3d | 2011-11-09 | 2011-11-23 | -39.1d | 21.9d | ASSORTED FLOOR FINISH [480 h]; ASSORTED FLOOR FINISH [262 m2]; Cost |  |  |  |  |  |  | UP2TA09601C0 |  |  | UP | C | 09 | P2 | TA | FF | 096 | 01 | SIS | BILL 3 | B03 | 01 | R00 | ACF06 |  | FF |  |  |  |
| UP2TA26002C0 |  | CU-P2 ; Wiring Works To Lighting / Pwr / Emergency (Transf. RM) | 12d | 2011-09-05 A | 2011-10-16 | UP2TA26001C0 | 85% | 1.8d | 2011-09-19 | 2011-10-03 | -28.8d | 0d | ELECTRICAL [2007.6 h]; Cost [10136.5 AED] | 10,136.46 | 8,615.99 |  |  |  |  | UP2TA26002C0 | 26041 |  | UP | C | 26 | P2 | TA | ME | 260 | 02 | ETA | BILL 3 | B03 | MEL | R00 | ACF07 | MEP | 260 |  |  |  |
| UP2TA27002C0 |  | CU-P2 ; Wiring Works For ELV Systems (Transf. RM) | 24d | 2011-09-05 A | 2011-11-10 | UP2S104003C0, UP2TA27001C0 | 15% | 20.4d | 2011-09-19 | 2011-10-17 | -59.4d | 0d | ELECTRICAL [46.8 h]; Cost [2549.35 AED] | 2,549.35 | 382.4 |  |  |  |  | UP2TA27002C0 | 27020 |  | UP | C | 27 | P2 | TA | ME | 270 | 02 | ETA | BILL 3 | B03 | MELV | R00 | ACF07 | MEP | 270 |  |  |  |
| UP2TA21103C0 |  | CU-P2 ; Conn. Works To Cylinders (Transf. RM) | 7d | 2011-10-16 | 2011-10-24 | UP2TA21102C0 |  |  |  |  | -33.05d | 0d | MECHANICAL [4234.8 h]; Cost |  |  |  |  |  |  | UP2TA21103C0 | 21130 |  | UP | C | 21 | P2 | TA | ME | 211 | 03 | ETA | BILL 3 | B03 | MFS | R00 | ACF07 | MEP | 211 |  |  |  |
| UP2TA26003C0 |  | CU-P2 ; Inst. Of Lights / Switches / Sockets (Transf. RM) | 10d | 2011-10-16 | 2011-10-27 | UP2TA26002C0 |  |  |  |  | -28.8d | 30.6d | ELECTRICAL [1701.6 h]; Cost |  |  |  |  |  |  | UP2TA26003C0 | 26061 |  | UP | C | 26 | P2 | TA | ME | 260 | 03 | ETA | BILL 3 | B03 | MEL | R00 | ACF04 | MEP | 260 |  |  |  |
| UP2TA21104C0 |  | CU-P2 ; Inst. Of Fire Extinguisher / Fhc (Transf. RM) | 11d | 2011-10-24 | 2011-11-09 | UP2TA21103C0 |  |  |  |  | -33.05d | 27.95d | MECHANICAL [166.8 h]; Cost |  |  |  |  |  |  | UP2TA21104C0 | 21160 |  | UP | C | 21 | P2 | TA | ME | 211 | 04 | ETA | BILL 3 | B03 | MFS | R00 | ACF04 | MEP | 211 |  |  |  |
| UP2TA27005C0 |  | CU-P2 ; Inst. Of FDCp / Fatc / Faps Panels (Transf. RM) | 12d | 2011-10-24 | 2011-11-10 | UP2TA27002C0 FF |  |  |  |  | -59.4d | 0d | Labor General [1.2 h]; Cost |  |  |  |  |  |  | UP2TA27005C0 | 27033 |  | UP | C | 27 | P2 | TA | ME | 270 | 05 | ETA | BILL 3 | B03 | MELV | R00 | ACF04 | MEP | 270 |  |  |  |
| UP2TA27007C0 |  | CU-P2 ; Dressing, Glanding & Termin. Of Ctrl Pnls (Transf. RM) | 12d | 2011-11-10 | 2011-11-24 | UP2TA27005C0 |  |  |  |  | -59.4d | 0d | ELECTRICAL [1622.4 h]; Cost |  |  |  |  |  |  | UP2TA27007C0 | 27050 |  | UP | C | 27 | P2 | TA | ME | 270 | 07 | ETA | BILL 3 | B03 | MELV | R00 | ACF07 | MEP | 270 |  |  |  |
| UP2TA27003C0 |  | CU-P2 ; ELV Devices - Sensors, Smoke Detector / Spkrs (Transf. RM) | 10d | 2011-11-24 | 2011-12-08 | UP2TA26003C0 FF, UP2TA26003C0 SS, UP2TA27002C0, UP2TA27007C0 |  |  |  |  | -59.4d | 0d | ELECTRICAL [153.6 h]; Cost |  |  |  |  |  |  | UP2TA27003C0 | 27040 |  | UP | C | 27 | P2 | TA | ME | 270 | 03 | ETA | BILL 3 | B03 | MELV | R00 | ACF07 | MEP | 270 |  |  |  |
| UP2TA27004C0 |  | CU-P2 ; Batt. Offline Readers & Telecom Data Outlets (Transf. RM) | 6d | 2011-12-05 | 2011-12-12 | UP2TA27003C0 SS+7d |  |  |  |  | -59.4d | 1.6d | ELECTRICAL [98.4 h]; Cost |  |  |  |  |  |  | UP2TA27004C0 | 27070 |  | UP | C | 27 | P2 | TA | ME | 270 | 04 | ETA | BILL 3 | B03 | MELV | R00 | ACF07 | MEP | 270 |  |  |  |
|  | 03 | **MECH. FAN RM** |  | 2011-01-15 | 2011-12-07 |  |  |  |  |  |  |  |  |  |  |  |  |  |  |  |  |  |  |  |  |  |  |  |  |  |  |  |  |  |  |  |  |  |  |  |  |
| UP2MF03301C0 |  | CU-P2 ; Equipment Plinth (Fan RM) | 12d | 2011-01-15 A | 2011-05-24 A | UP2S104001C0 | 100% |  | 2011-04-04 | 2011-04-18 |  |  | Cost |  |  |  |  |  |  | UP2MF03301C0 |  | 100 | UP | C | 03 | P2 | MF | CT | 033 | 01 | SIS | BILL 3 | B03 | 10 | R00 | ACF03 |  | 033 |  |  |  |
| UP2MF23001C0 |  | CU-P2 ; Inst. Of AHU'S - 6 Nos. (Fan RM) | 24d | 2011-04-24 A | 2011-05-18 A | UP2MF03301C0, UP2MF23012C0 | 100% |  | 2011-05-24 | 2011-06-20 |  |  | MECHANICAL [4856.4 h]; Cost [2615754 AED] | 2,615,754.12 | 2,615,754.12 |  |  |  |  | UP2MF23001C0 | 23040 | 100 | UP | C | 23 | P2 | MF | ME | 230 | 01 | ETA | BILL 3 | B03 | MHV | R00 | ACF04 | MEP | 230 |  |  |  |
| UP2MF26001C0 |  | CU-P2 ; Trnk & Cnduit For Lighting / Pwr / Emerg. (Fan RM) | 15.88d | 2011-05-15 A | 2011-10-09 | UP2MF27001C0 FF, UP2MF27001C0 SS+6d | 75% | 3.97d | 2011-07-18 | 2011-08-04 | -55.83d | 0d | ELECTRICAL [1807.2 h]; Cost [6501.63 AED] | 6,501.63 | 4,876.22 | 0 | 0 | 0 | 0 | UP2MF26001C0 | 26020 | 25 | UP | C | 26 | P2 | MF | ME | 260 | 01 | ETA | BILL 3 | B03 | MEL | R00 | ACF04 | MEP | 260 | 14669.36 |  |  |
| UP2MF26002C0 |  | CU-P2 ; Wiring Works To Lighting / Pwr / Emerg. (Fan RM) | 16d | 2011-05-15 A | 2011-10-13 | UP2MF26001C0 | 75% | 4d | 2011-08-06 | 2011-08-23 | -40.2d | 0d | ELECTRICAL [2007.6 h]; Cost [10136.5 AED] | 10,136.46 | 7,602.34 | 0 | 0 | 0 | 0 | UP2MF26002C0 | 26041 | 25 | UP | C | 26 | P2 | MF | ME | 260 | 02 | ETA | BILL 3 | B03 | MEL | R00 | ACF07 | MEP | 260 |  |  |  |
| UP2MF26007C0 |  | CU-P2 ; Inst. Of Back Boxes & Conduites On Wall (Fan RM) | 8d | 2011-05-15 A | 2011-10-02 | UP2S104001C0, UP2S104003C0 | 85% | 1.2d | 2011-07-02 | 2011-07-10 | -55.83d | 0d | ELECTRICAL [1807.2 h]; Cost [6501.63 AED] | 6,501.63 | 5,526.38 |  |  |  |  | UP2MF26007C0 |  | 35 | UP | C | 26 | P2 | MF | ME | 260 | 07 | ETA | BILL 3 | B03 | MEL | R00 | ACF04 | MEP | 260 | 73346.79 |  |  |
| UP2MF27001C0 |  | CU-P2 ; Trunking & Conduiting Works For ELV Systems (Fan RM) | 12d | 2011-05-15 A | 2011-10-09 | UP2MF26007C0, UP2S104003C0 | 50% | 6d | 2011-07-11 | 2011-07-24 | -55.83d | 0d | ELECTRICAL [52.8 h]; Cost [2874.8 AED] | 2,874.8 | 1,437.4 | 0 | 0 | 0 | 0 | UP2MF27001C0 | 27010 | 35 | UP | C | 27 | P2 | MF | ME | 270 | 01 | ETA | BILL 3 | B03 | MELV | R00 | ACF04 | MEP | 270 | 497.44 |  |  |
| UP2MF27002C0 |  | CU-P2 ; Wiring Works For ELV Systems (Fan RM) | 12d | 2011-05-15 A | 2011-10-09 | UP2MF27001C0 SS+6d, UP2S104003C0 | 50% | 6d | 2011-07-18 | 2011-07-31 | -43.82d | 0d | ELECTRICAL [46.8 h]; Cost [2549.35 AED] | 2,549.35 | 1,274.68 | 0 | 0 | 0 | 0 | UP2MF27002C0 | 27020 | 20 | UP | C | 27 | P2 | MF | ME | 270 | 02 | ETA | BILL 3 | B03 | MELV | R00 | ACF07 | MEP | 270 |  | 25 | 20 |
| UP2MF09901C0 |  | CU-P2 ; Wall Prime & 1st Coat (Fan RM) | 15d | 2011-06-20 A | 2011-10-15 | UP2MF26002C0, UP2MF27002C0 | 90% | 1.5d | 2011-07-20 | 2011-08-07 | -29.5d | 17.13d | WALL PAINT [1258 h]; WALL PAINT [1569 m2]; Cost |  |  | 0 | 0 | 0 | 0 | UP2MF09901C0 |  |  | UP | C | 09 | P2 | MF | PA | 099 | 01 | SIS | BILL 3 | B03 | 01 | R00 | ACF06 |  | 099 | 1368.63 | 75 | 20 |
| UP2MF09902C0 |  | CU-P2 ; Wall 2nd Coat (Fan RM) | 8d | 2011-07-10 A | 2011-11-28 | UP2MF09901C0, UP2MF09904C0, UP2MF26003C0 | 90% | 0.8d | 2011-10-04 | 2011-10-13 | 415.37d | 14.37d | WALL PAINT [678 h]; WALL PAINT [845 m2]; Cost |  |  | 0 | 0 | 0 | 0 | UP2MF09902C0 |  |  | UP | C | 09 | P2 | MF | PA | 099 | 02 | SIS | BILL 3 | B03 | 02 | R00 | ACF06 |  | 099 |  | 25 | 20 |
| UP2MF08101C0 |  | CU-P2 ; Door Frames (Fan RM) | 18d | 2011-08-02 A | 2011-10-05 | UP2S104001C0 | 75% | 4.5d | 2011-08-02 | 2011-08-22 | -21.3d | 25.33d | ASSORTED DOORS [17 h]; Cost |  |  |  |  |  |  | UP2MF08101C0 |  |  | UP | C | 08 | P2 | MF | DO | 081 | 01 | SIS | BILL 3 | B03 | DF | R00 | ACF06 |  | 081 |  | 25 | 0 |
| UP2MF08102C0 |  | CU-P2 ; Doors (Fan RM) | 12d | 2011-08-02 A | 2011-11-14 | UP2MF08101C0, UP2MF09901C0, UP2MF26004C0 FF | 50% | 6d | 2011-09-21 | 2011-10-05 | -46.63d | 0d | METAL DOORS [30 h]; METAL DOORS [3 no]; Cost |  |  |  |  |  |  | UP2MF08102C0 |  |  | UP | C | 08 | P2 | MF | DO | 081 | 02 | SIS | BILL 3 | B03 | DR | R00 | ACF06 |  | 081 |  | 25 | 0 |
| UP2MF09601C0 |  | CU-P2 ; Floor Finishing (Fan RM) | 18d | 2011-08-02 A | 2011-11-16 | UP2MF08102C0 | 90% | 1.8d | 2011-10-05 | 2011-10-26 | -46.63d | 14.37d | ASSORTED FLOOR FINISH [1008 h]; ASSORTED FLOOR FINISH [558 m2]; Cost |  |  | 0 | 0 | 0 | 0 | UP2MF09601C0 |  |  | UP | C | 09 | P2 | MF | FF | 096 | 01 | SIS | BILL 3 | B03 | 01 | R00 | ACF06 |  | FF |  | 75 | 0 |
| UP2MF09903C0 |  | CU-P2 ; Ceiling Prime & 1st Coat (Fan RM) | 13d | 2011-08-02 A | 2011-10-27 | UP2MF23003C0 | 100% | 0d | 2011-09-21 | 2011-10-06 | 437.37d | 22d | Cost |  |  |  |  |  |  | UP2MF09903C0 |  |  | UP | C | 09 | P2 | MF | PA | 099 | 03 | SIS | BILL 3 | B03 | 01 | R00 | ACF06 |  | 099 |  | 50 | 0 |
| UP2MF09904C0 |  | CU-P2 ; Ceiling Final Coat (Fan RM) | 8d | 2011-08-02 A | 2011-11-27 | UP2MF09903C0, UP2MF21103C0, UP2MF27003C0 | 100% | 0d | 2011-10-25 | 2011-11-03 | 415.37d | 0d | Cost |  |  |  |  |  |  | UP2MF09904C0 |  |  | UP | C | 09 | P2 | MF | PA | 099 | 04 | SIS | BILL 3 | B03 | 02 | R00 | ACF06 |  | 099 |  | 50 | 0 |
| UP2MF21101C0 |  | CU-P2 ; Inst. Of Fire Fighting Pipe (Fan RM) | 21d | 2011-08-10 A | 2011-10-22 | UP2MF22001C0 | 85% | 3.15d | 2011-08-28 | 2011-09-24 | -53.98d | 0d | MECHANICAL [487.2 h]; Cost [26612.8 AED] | 26,612.84 | 22,620.91 | 0 | 0 | 0 | 0 | UP2MF21101C0 | 21140 |  | UP | C | 21 | P2 | MF | ME | 211 | 01 | ETA | BILL 3 | B03 | MFS | R00 | ACF04 | MEP | 211 |  | 50 | 0 |
| UP2MF23002C0 |  | CU-P2 ; Inst. Of Ducting & Duct Riser Works (Fan RM) | 18d | 2011-08-10 A | 2011-10-18 | UP2MF23012C0 FF, UP2MF23012C0 SS+14d | 30% | 12.6d | 2011-08-20 | 2011-09-12 | -55.83d | 0d | MECHANICAL [3189.6 h]; Cost [181396 AED] | 181,395.66 | 54,418.7 |  |  |  |  | UP2MF23002C0 | 23020 |  | UP | C | 23 | P2 | MF | ME | 230 | 02 | ETA | BILL 3 | B03 | MHV | R00 | ACF04 | MEP | 230 |  | 30 | 0 |
| UP2MF23012C0 |  | CU-P2 ; Inst. Of CHW Pipe Supp.s & Piping Works (Fan RM) | 21d | 2011-08-10 A | 2011-10-10 | UP2MF26001C0 FF, UP2MF26001C0 SS | 75% | 5.25d | 2011-08-03 | 2011-08-28 | -55.83d | 0d | MECHANICAL [1333.2 h]; Cost [37738.7 AED] | 37,738.68 | 28,304.01 |  |  |  |  | UP2MF23012C0 | 23010 |  | UP | C | 23 | P2 | MF | ME | 230 | 12 | ETA | BILL 3 | B03 | MHV | R00 | ACF04 | MEP | 230 |  | 20 | 0 |
| UP2MF27005C0 |  | CU-P2 ; Inst. Of DDC Panel (Fan RM) | 10d | 2011-08-10 A | 2011-10-09 | UP2MF27002C0 | 95% | 0.49d | 2011-08-14 | 2011-08-25 | -43.82d | 0d | ELECTRICAL [4782 h]; Cost [308717 AED] | 308,716.73 | 293,280.9 |  |  |  |  | UP2MF27005C0 | 27030 |  | UP | C | 27 | P2 | MF | ME | 270 | 05 | ETA | BILL 3 | B03 | MELV | R00 | ACF04 | MEP | 270 |  | 95 | 0 |
| UP2MF22001C0 |  | CU-P2 ; Inst. Of Cold Water Supply Pipe (Fan RM) | 14d | 2011-09-05 A | 2011-10-18 | UP2MF23012C0 FF, UP2MF23012C0 SS+7d | 10% | 12.6d | 2011-09-06 | 2011-09-21 | -53.98d | 0d | PLUMBING [943.2 h]; Cost [35447.7 AED] | 35,447.7 | 3,544.77 |  |  |  |  | UP2MF22001C0 | 22021 |  | UP | C | 22 | P2 | MF | ME | 220 | 01 | ETA | BILL 3 | B03 | MPL | R00 | ACF04 | MEP | 220 |  |  |  |
| UP2MF23010C0 |  | CU-P2 ; Inst. Of Extract Fans - 9 Nos. (Fan RM) | 10d | 2011-10-06 | 2011-10-18 | UP2MF23002C0 FF, UP2MF23002C0 SS+3d, UP2MF26007C0 |  |  |  |  | -55.83d | 0d | Labor General [1.2 h]; Cost |  |  |  |  |  |  | UP2MF23010C0 | 23051 |  | UP | C | 23 | P2 | MF | ME | 230 | 10 | ETA | BILL 3 | B03 | MHV | R00 | ACF04 | MEP | 230 |  |  |  |
| UP2MF27007C0 |  | CU-P2 ; Dressing, Glanding & Termin. Of DDC Pnls (Fan RM) | 15.12d | 2011-10-09 | 2011-10-26 | UP2MF27005C0 |  |  |  |  | -43.82d | 0d | ELECTRICAL [1622.4 h]; Cost |  |  |  |  |  |  | UP2MF27007C0 | 27051 |  | UP | C | 27 | P2 | MF | ME | 270 | 07 | ETA | BILL 3 | B03 | MELV | R00 | ACF07 | MEP | 270 |  |  |  |
| UP2MF23004C0 |  | CU-P2 ; Inst. Of FCU (Fan RM) | 6d | 2011-10-10 | 2011-10-17 | UP2MF23012C0 |  |  |  |  | -54.48d | 0d | MECHANICAL [1292.4 h]; Cost |  |  |  |  |  |  | UP2MF23004C0 | 23052 |  | UP | C | 23 | P2 | MF | ME | 230 | 04 | ETA | BILL 3 | B03 | MHV | R00 | ACF04 | MEP | 230 |  |  |  |
| UP2MF23013C0 |  | CU-P2 ; CHW Pipe Conn. Works To AHU'S (Fan RM) | 16d | 2011-10-10 | 2011-10-29 | UP2MF23001C0 |  |  |  |  | -54.48d | 0d | Labor General [1.2 h]; Cost |  |  |  |  |  |  | UP2MF23013C0 | 23026 |  | UP | C | 23 | P2 | MF | ME | 230 | 13 | ETA | BILL 3 | B03 | MHV | R00 | ACF07 | MEP | 230 |  |  |  |
| UP2MF23005C0 |  | CU-P2 ; Inst. Of Valve Package For FCU (Fan RM) | 10d | 2011-10-17 | 2011-10-29 | UP2MF23004C0 |  |  |  |  | -54.48d | 0d | Labor General [1.2 h]; Cost |  |  |  |  |  |  | UP2MF23005C0 | 23053 |  | UP | C | 23 | P2 | MF | ME | 230 | 05 | ETA | BILL 3 | B03 | MHV | R00 | ACF04 | MEP | 230 |  |  |  |
| UP2MF22003C0 |  | CU-P2 ; Inst. Of Valves / Pipe Conn. Works (Fan RM) | 10d | 2011-10-18 | 2011-10-30 | UP2MF22001C0 |  |  |  |  | -39.83d | 0d | PLUMBING [294 h]; Cost |  |  |  |  |  |  | UP2MF22003C0 | 22061 |  | UP | C | 22 | P2 | MF | ME | 220 | 03 | ETA | BILL 3 | B03 | MPL | R00 | ACF04 | MEP | 220 |  |  |  |
| UP2MF23003C0 |  | CU-P2 ; Inst. Of Motorised Dampers & Fire Dampers (Fan RM) | 8d | 2011-10-18 | 2011-10-27 | UP2MF23002C0 |  |  |  |  | -46.83d | 0d | MECHANICAL [2394 h]; Cost |  |  |  |  |  |  | UP2MF23003C0 | 23054 |  | UP | C | 23 | P2 | MF | ME | 230 | 03 | ETA | BILL 3 | B03 | MHV | R00 | ACF04 | MEP | 230 |  |  |  |
| UP2MF27009C0 |  | CU-P2 ; Bms Conn. Works To Equipments (Fan RM) | 12d | 2011-10-19 | 2011-11-02 | UP2MF27007C0 FF+6d |  |  |  |  | -43.82d | 12.01d | ELECTRICAL [130.8 h]; Cost |  |  |  |  |  |  | UP2MF27009C0 | 27060 |  | UP | C | 27 | P2 | MF | ME | 270 | 09 | ETA | BILL 3 | B03 | MELV | R00 | ACF07 | MEP | 270 |  |  |  |
| UP2MF21102C0 |  | CU-P2 ; Press. Tst Fire Fight Pipe & Insp. By Cnslt (Fan RM) | 5d | 2011-10-22 | 2011-10-27 | UP2MF21101C0 |  |  |  |  | -53.98d | 0d | MECHANICAL [487.2 h]; Cost |  |  |  |  |  |  | UP2MF21102C0 | 21180 |  | UP | C | 21 | P2 | MF | ME | 211 | 02 | ETA | BILL 3 | B03 | MFS | R00 | ACF07 | MEP | 211 |  |  |  |
| UP2MF23011C0 |  | CU-P2 ; Duct Conn. Works To Fans (Fan RM) | 21d | 2011-10-27 | 2011-11-24 | UP2MF23002C0, UP2MF23003C0, UP2MF23010C0 |  |  |  |  | -46.83d | 14.17d | MECHANICAL [3189.6 h]; Cost |  |  |  |  |  |  | UP2MF23011C0 | 23031 |  | UP | C | 23 | P2 | MF | ME | 230 | 11 | ETA | BILL 3 | B03 | MHV | R00 | ACF07 | MEP | 230 |  |  |  |
| UP2MF21103C0 |  | CU-P2 ; Inst. Of Sprinkler Heads (Fan RM) | 10d | 2011-10-27 | 2011-11-12 | UP2MF21102C0 |  |  |  |  | -53.98d | 0d | MECHANICAL [409.2 h]; Cost |  |  |  |  |  |  | UP2MF21103C0 | 21150 |  | UP | C | 21 | P2 | MF | ME | 211 | 03 | ETA | BILL 3 | B03 | MFS | R00 | ACF04 | MEP | 211 |  |  |  |
| UP2MF23007C0 |  | CU-P2 ; Press. Tst CHW Pipe & Insp. Works By Cnslt (Fan RM) | 7d | 2011-10-29 | 2011-11-09 | UP2MF23001C0, UP2MF23004C0, UP2MF23005C0, UP2MF23013C0 |  |  |  |  | -54.48d | 0d | MECHANICAL [2485.2 h]; Cost |  |  |  |  |  |  | UP2MF23007C0 | 23090 |  | UP | C | 23 | P2 | MF | ME | 230 | 07 | ETA | BILL 3 | B03 | MHV | R00 | ACF07 | MEP | 230 |  |  |  |
| UP2MF22002C0 |  | CU-P2 ; Inst. Of Hose Bib (Fan RM) | 5d | 2011-10-30 | 2011-11-05 | UP2MF22003C0 |  |  |  |  | -39.83d | 21.17d | PLUMBING [188.4 h]; Cost |  |  |  |  |  |  | UP2MF22002C0 | 22075 |  | UP | C | 22 | P2 | MF | ME | 220 | 02 | ETA | BILL 3 | B03 | MPL | R00 | ACF04 | MEP | 220 |  |  |  |
| UP2MF26004C0 |  | CU-P2 ; Isolator's For Equipments & Roller Shutters (Fan RM) | 9d | 2011-10-31 | 2011-11-14 | UP2MF23001C0 SS+21d, UP2MF23010C0 SS+21d |  |  |  |  | -55.83d | 0d | ELECTRICAL [483.6 h]; Cost |  |  |  |  |  |  | UP2MF26004C0 | 26074 |  | UP | C | 26 | P2 | MF | ME | 260 | 04 | ETA | BILL 3 | B03 | MEL | R00 | ACF04 | MEP | 260 |  |  |  |
| UP2MF26005C0 |  | CU-P2 ; Elec. Conn. Works To Equipments (Fan RM) | 10d | 2011-10-31 | 2011-11-15 | UP2MF26002C0, UP2MF26004C0 SS |  |  |  |  | -55.83d | 0d | ELECTRICAL [807.6 h]; Cost |  |  |  |  |  |  | UP2MF26005C0 | 26083 |  | UP | C | 26 | P2 | MF | ME | 260 | 05 | ETA | BILL 3 | B03 | MEL | R00 | ACF07 | MEP | 260 |  |  |  |
| UP2MF23009C0 |  | CU-P2 ; Insul. Of CHW Pipe & Insp. By Consultant (Fan RM) | 14d | 2011-11-09 | 2011-11-27 | UP2MF23007C0 |  |  |  |  | -54.48d | 6.52d | MECHANICAL [1254 h]; Cost |  |  |  |  |  |  | UP2MF23009C0 | 23080 |  | UP | C | 23 | P2 | MF | ME | 230 | 09 | ETA | BILL 3 | B03 | MHV | R00 | ACF04 | MEP | 230 |  |  |  |
| UP2MF21104C0 |  | CU-P2 ; Inst. Of Fire Extinguishers / Fhc (Fan RM) | 11d | 2011-11-12 | 2011-11-24 | UP2MF21103C0 |  |  |  |  | -53.98d | 7.02d | MECHANICAL [506.4 h]; Cost |  |  |  |  |  |  | UP2MF21104C0 | 21160 |  | UP | C | 21 | P2 | MF | ME | 211 | 04 | ETA | BILL 3 | B03 | MFS | R00 | ACF04 | MEP | 211 |  |  |  |
| UP2MF26003C0 |  | CU-P2 ; Inst. Of Lights / Switches / Sockets (Fan RM) | 6d | 2011-11-17 | 2011-11-24 | UP2MF26002C0, UP2MF26005C0 SS+12d, UP2MF26005C0 FF |  |  |  |  | -55.83d | 0d | ELECTRICAL [1701.6 h]; Cost |  |  |  |  |  |  | UP2MF26003C0 | 26061 |  | UP | C | 26 | P2 | MF | ME | 260 | 03 | ETA | BILL 3 | B03 | MEL | R00 | ACF04 | MEP | 260 |  |  |  |
| UP2MF27003C0 |  | CU-P2 ; ELV Dev. - Sensors, Smoke Detector / Spkrs (Fan RM) | 7d | 2011-11-17 | 2011-11-27 | UP2MF26003C0 FF, UP2MF26003C0 SS, UP2MF27002C0, UP2MF27009C0 SS+10d |  |  |  |  | -55.83d | 0d | ELECTRICAL [153.6 h]; Cost |  |  |  |  |  |  | UP2MF27003C0 | 27040 |  | UP | C | 27 | P2 | MF | ME | 270 | 03 | ETA | BILL 3 | B03 | MELV | R00 | ACF07 | MEP | 270 |  |  |  |
| UP2MF27004C0 |  | CU-P2 ; Batt. Offline Readers & Telecom Data Outlets (Fan RM) | 7d | 2011-11-28 | 2011-12-07 | UP2MF27003C0 SS+8d, UAFGN03300R02 FF+1d |  |  |  |  | -55.83d | 5.17d | ELECTRICAL [82.8 h]; Cost |  |  |  |  |  |  | UP2MF27004C0 | 27070 |  | UP | C | 27 | P2 | MF | ME | 270 | 04 | ETA | BILL 3 | B03 | MELV | R00 | ACF07 | MEP | 270 |  |  |  |

| ID | WBS | Activity | Duration | Start | Finish | Predecessors | Complete | Remaining | Planned start | Planned finish | Total float | Free float | Resources | Cost | Actual cost | change id | DIVISION FOR ACTIVITY ID | RENZ % COMPLETE | Claimed This Month | CCAD BUILDING(SET) | CCAD PHASE(SET) | CCAD DIVISION(SET) | CCAD FLOOR(SET) | CCAD ZONE(SET) | CCAD WORK(SET) | CCAD SECTION(SET) | CCAD SERIAL No.(SET) | CCAD RESPONSIBILITY(SET) | CCAD CBS(SET) | CCAD BILL(SET) | CCAD TAG(SET) | CCAD REV(SET) | CCADACF (SET) | CCAD CSA | CCAD SSCF | P_811 | P_711 | user_number8 | user_integer1 | user_integer2 | user_number7 |
| --- | --- | --- | --- | --- | --- | --- | --- | --- | --- | --- | --- | --- | --- | --- | --- | --- | --- | --- | --- | --- | --- | --- | --- | --- | --- | --- | --- | --- | --- | --- | --- | --- | --- | --- | --- | --- | --- | --- | --- | --- | --- |
|  | 04 | **PARALLING SWITCH GEAR RM** |  | 2010-10-11 | 2011-11-14 |  |  |  |  |  |  |  |  |  |  |  |  |  |  |  |  |  |  |  |  |  |  |  |  |  |  |  |  |  |  |  |  |  |  |  |  |
| UP2PS26009C0 |  | CU-P2 ; Copper Tape For Earthing (Paraling Switch Gear RM) | 10d | 2010-10-11 A | 2011-10-22 | UP2PS26005C0 | 95% | 0.5d | 2011-05-03 | 2011-05-15 | -30.96d | 0d | ELECTRICAL [5169.6 h]; Cost [279946 AED] | 279,945.85 | 265,948.56 | UP2PS26009C0 | 26031 | 90 | 21132.65 | UP | C | 26 | P2 | PS | ME | 260 | 09 | ETA | BILL 3 | B03 | MEL | R00 | ACF04 | MEP | 260 |  |  |  |  |  |  |
| UP2PS26011C0 |  | CU-P2 ; Back Boxes & Conduites On Wall (Paraling Switch Gear RM) | 7.88d | 2011-04-12 A | 2011-10-01 | UP2S104001C0, UP2S104003C0 | 95% | 0.39d | 2011-04-13 | 2011-04-21 | -37.55d | 0d | ELECTRICAL [1807.2 h]; Cost [6501.63 AED] | 6,501.63 | 6,176.55 | UP2PS26011C0 |  | 45 | 58677.6 | UP | C | 26 | P2 | PS | ME | 260 | 11 | ETA | BILL 3 | B03 | MEL | R00 | ACF04 | MEP | 260 | 95 | 85 |  |  |  |  |
| UP2PS27002C0 |  | CU-P2 ; Trnk & Conduiting For ELV Syss (Paraling Switch Gear RM) | 11.88d | 2011-04-21 A | 2011-10-04 | UP2PS26011C0, UP2S104003C0 | 75% | 2.97d | 2011-04-23 | 2011-05-05 | -37.55d | 0d | ELECTRICAL [52.8 h]; Cost [2874.8 AED] | 2,874.8 | 2,156.1 | UP2PS27002C0 | 27010 | 45 | 497.4 | UP | C | 27 | P2 | PS | ME | 270 | 02 | ETA | BILL 3 | B03 | MELV | R00 | ACF04 | MEP | 270 | 60 | 50 | 0 | 0 | 0 | 0 |
| UP2PS26004C0 |  | CU-P2 ; Mv - ATS Panels - 26 Nos. (Paraling Switch Gear RM) | 32d | 2011-05-03 A | 2011-10-05 | UP2PS26003C0 SS+6d | 95% | 1.6d | 2011-07-30 | 2011-09-06 | -22.96d | 0d | ELECTRICAL [13742.4 h]; Cost [7407426 AED] | 7,407,426 | 7,037,054.7 | UP2PS26004C0 | 26012 | 10 | 6531214.94 | UP | C | 26 | P2 | PS | ME | 260 | 04 | ETA | BILL 3 | B03 | MEL | R00 | ACF04 | MEP | 260 | 95 | 50 |  |  |  |  |
| UP2PS26007C0 |  | CU-P2 ; Epds Control Panels - 4 Nos. (Paraling Switch Gear RM) | 16d | 2011-05-09 A | 2011-10-12 | UP2PS26003C0 SS+15d, UP2PS26004C0 FF+6d | 95% | 0.8d | 2011-08-24 | 2011-09-13 | -22.96d | 8d | ELECTRICAL [12938.4 h]; Cost [6967997 AED] | 6,967,997.2 | 6,619,597.34 | UP2PS26007C0 | 26060 | 20 | 5738984.69 | UP | C | 26 | P2 | PS | ME | 260 | 07 | ETA | BILL 3 | B03 | MEL | R00 | ACF04 | MEP | 260 | 95 | 80 |  |  |  |  |
| UP2PS23001C0 |  | CU-P2 ; Inst. Of Duct Supp.s & Ducting (Paraling Switch Gear RM) | 11.88d | 2011-05-15 A | 2011-10-12 | UP2PS26001C0 | 90% | 1.19d | 2011-07-30 | 2011-08-11 | -37.55d | 0d | MECHANICAL [1333.2 h]; Cost [37738.7 AED] | 37,738.68 | 33,964.82 | UP2PS23001C0 | 23015 | 25 |  | UP | C | 23 | P2 | PS | ME | 230 | 01 | ETA | BILL 3 | B03 | MHV | R00 | ACF04 | MEP | 230 | 30 | 25 | 0 | 0 | 0 | 0 |
| UP2PS23002C0 |  | CU-P2 ; Vcd'S & Duct Conn. Works (Paraling Switch Gear RM) | 15d | 2011-05-15 A | 2011-10-16 | UP2PS23001C0 SS+6d | 75% | 3.75d | 2011-08-06 | 2011-08-22 | 447d | 0d | MECHANICAL [750 h]; Cost [4756.4 AED] | 4,756.4 | 3,567.3 | UP2PS23002C0 | 23030 | 20 |  | UP | C | 23 | P2 | PS | ME | 230 | 02 | ETA | BILL 3 | B03 | MHV | R00 | ACF07 | MEP | 230 | 30 | 20 | 0 | 0 | 0 | 0 |
| UP2PS23003C0 |  | CU-P2 ; Motorised Smk Fire Damper & Duct Conn. (Paraling Switch Gear RM) | 11.88d | 2011-05-15 A | 2011-10-12 | UP2PS23002C0 SS+6d | 90% | 1.19d | 2011-08-13 | 2011-08-25 | 447d | 0d | MECHANICAL [2394 h]; Cost [127190 AED] | 127,190 | 114,471 | UP2PS23003C0 | 23054 | 20 |  | UP | C | 23 | P2 | PS | ME | 230 | 03 | ETA | BILL 3 | B03 | MHV | R00 | ACF04 | MEP | 230 |  |  | 0 | 0 | 0 | 0 |
| UP2PS26001C0 |  | CU-P2 ; Trnk & Cnduit - Light / Pwr & Emerg. (Paraling Switch Gear RM) | 11.88d | 2011-05-15 A | 2011-10-11 | UP2PS27002C0 FF+6d | 75% | 2.97d | 2011-07-16 | 2011-07-28 | -37.55d | 0d | ELECTRICAL [1807.2 h]; Cost [6501.63 AED] | 6,501.63 | 4,876.22 | UP2PS26001C0 | 26020 | 20 | 14669.36 | UP | C | 26 | P2 | PS | ME | 260 | 01 | ETA | BILL 3 | B03 | MEL | R00 | ACF04 | MEP | 260 |  |  | 0 | 0 | 0 | 0 |
| UP2PS27003C0 |  | CU-P2 ; Wiring Works For ELV Systems (Paraling Switch Gear RM) | 11.88d | 2011-05-15 A | 2011-10-12 | UP2PS27002C0 | 40% | 7.12d | 2011-07-23 | 2011-08-04 | -22.49d | 8.47d | ELECTRICAL [46.8 h]; Cost [2549.35 AED] | 2,549.35 | 1,019.74 | UP2PS27003C0 | 27020 | 30 |  | UP | C | 27 | P2 | PS | ME | 270 | 03 | ETA | BILL 3 | B03 | MELV | R00 | ACF07 | MEP | 270 |  |  |  |  |  |  |
| UP2PS09901C0 |  | CU-P2 ; Wall Prime & 1st Coat (Paraling Switch Gear RM) | 12d | 2011-06-14 A | 2011-10-24 | UP2PS27001C0, UP2PS27003C0 | 95% | 0.6d | 2011-07-31 | 2011-08-13 | -24.26d | 0d | WALL PAINT [3475 h]; WALL PAINT [4337 m2]; Cost |  |  | UP2PS09901C0 |  |  | 29529.14 | UP | C | 09 | P2 | PS | PA | 099 | 01 | SIS | BILL 3 | B03 | 01 | R00 | ACF06 |  | 099 | 95 | 80 |  |  |  |  |
| UP2PS26003C0 |  | CU-P2 ; Inst. Of Epds Panels - 4 Nos. (Paraling Switch Gear RM) | 30d | 2011-06-19 A | 2011-10-05 | UP2PS27002C0 | 95% | 1.5d | 2011-07-16 | 2011-08-20 | -22.96d | 0d | ELECTRICAL [12938.4 h]; Cost [6967997 AED] | 6,967,997.2 | 6,619,597.34 | UP2PS26003C0 | 26060 |  | 7378694.6 | UP | C | 26 | P2 | PS | ME | 260 | 03 | ETA | BILL 3 | B03 | MEL | R00 | ACF04 | MEP | 260 | 95 | 80 |  |  |  |  |
| UP2PS26005C0 |  | CU-P2 ; Cable Lader - Inside The Riser (Paraling Switch Gear RM) | 14d | 2011-06-25 A | 2011-10-22 | UP2PS27001C0 SS+16d | 35% | 9.1d | 2011-07-25 | 2011-08-09 | -30.96d | 0d | ELECTRICAL [3290.4 h]; Cost [43488.7 AED] | 43,488.68 | 15,221.04 | UP2PS26005C0 | 26030 |  | 67248.85 | UP | C | 26 | P2 | PS | ME | 260 | 05 | ETA | BILL 3 | B03 | MEL | R00 | ACF04 | MEP | 260 |  |  | 0 | 0 | 0 | 0 |
| UP2PS27001C0 |  | CU-P2 ; Wiring To Lighting / Pwr / Emergency (Paraling Switch Gear RM) | 21d | 2011-06-27 A | 2011-10-23 | UP2PS26001C0 | 50% | 10.5d | 2011-07-06 | 2011-07-30 | -30.96d | 0d | ELECTRICAL [2007.6 h]; Cost [10136.5 AED] | 10,136.46 | 5,068.23 | UP2PS27001C0 | 27021 |  | 54964.36 | UP | C | 27 | P2 | PS | ME | 270 | 01 | ETA | BILL 3 | B03 | MELV | R00 | ACF07 | MEP | 270 | 35 | 34 | 0 | 0 | 0 | 0 |
| UP2PS09601C0 |  | CU-P2 ; Floor Finishing (Paraling Switch Gear RM) | 12d | 2011-07-10 A | 2011-10-26 | UP2PS08102C0 | 95% | 0.6d | 2011-08-22 | 2011-09-07 | -24.26d | 36.74d | ASSORTED FLOOR FINISH [2784 h]; ASSORTED FLOOR FINISH [1542 m2]; Cost |  |  | UP2PS09601C0 |  |  |  | UP | C | 09 | P2 | PS | FF | 096 | 01 | SIS | BILL 3 | B03 | 01 | R00 | ACF06 |  | FF | 95 | 90 |  |  |  |  |
| UP2PS09902C0 |  | CU-P2 ; Wall 2nd Coat (Paraling Switch Gear RM) | 9d | 2011-07-10 A | 2011-10-30 | UP2PS09901C0, UP2PS09904C0, UP2PS26002C0 | 95% | 0.45d | 2011-09-25 | 2011-10-05 | 436.59d | 35.59d | WALL PAINT [1872 h]; WALL PAINT [2335 m2]; Cost |  |  | UP2PS09902C0 |  |  |  | UP | C | 09 | P2 | PS | PA | 099 | 02 | SIS | BILL 3 | B03 | 02 | R00 | ACF06 |  | 099 | 95 | 80 |  |  |  |  |
| UP2PS09903C0 |  | CU-P2 ; Ceiling Prime & 1st Coat (Paraling Switch Gear RM) | 12d | 2011-07-10 A | 2011-10-16 | UP2PS21101C0, UP2PS23002C0 | 100% | 0d | 2011-08-08 | 2011-08-22 | 448.44d | 11.85d | Cost |  |  | UP2PS09903C0 |  |  |  | UP | C | 09 | P2 | PS | PA | 099 | 03 | SIS | BILL 3 | B03 | 01 | R00 | ACF06 |  | 099 | 95 | 75 |  |  |  |  |
| UP2PS09904C0 |  | CU-P2 ; Ceiling Final Coat (Paraling Switch Gear RM) | 10d | 2011-07-10 A | 2011-10-29 | UP2PS09903C0, UP2PS23004C0, UP2PS27004C0 | 100% | 0d | 2011-09-13 | 2011-09-25 | 436.59d | 0d | Cost |  |  | UP2PS09904C0 |  |  |  | UP | C | 09 | P2 | PS | PA | 099 | 04 | SIS | BILL 3 | B03 | 02 | R00 | ACF06 |  | 099 | 95 | 75 |  |  |  |  |
| UP2PS08101C0 |  | CU-P2 ; Door Frames (Paraling Switch Gear RM) | 18d | 2011-08-02 A | 2011-10-02 | UP2S104001C0 | 90% | 1.8d | 2011-08-02 | 2011-08-22 | -5.6d | 18.66d | ASSORTED DOORS [48 h]; Cost |  |  | UP2PS08101C0 |  |  |  | UP | C | 08 | P2 | PS | DO | 081 | 01 | SIS | BILL 3 | B03 | DF | R00 | ACF06 |  | 081 | 10 | 0 |  |  |  |  |
| UP2PS08102C0 |  | CU-P2 ; Doors (Paraling Switch Gear RM) | 12d | 2011-08-02 A | 2011-10-25 | UP2PS08101C0, UP2PS09901C0 | 90% | 1.2d | 2011-09-10 | 2011-09-24 | -24.26d | 0d | METAL DOORS [80 h]; METAL DOORS [8 no]; Cost |  |  | UP2PS08102C0 |  |  |  | UP | C | 08 | P2 | PS | DO | 081 | 02 | SIS | BILL 3 | B03 | DR | R00 | ACF06 |  | 081 | 10 | 0 |  |  |  |  |
| UP2PS21101C0 |  | CU-P2 ; Pipe - Fire Suppression System (Paraling Switch Gear RM) | 18d | 2011-08-10 A | 2011-10-12 | UP2PS23001C0 FF, UP2PS23001C0 SS+7d | 95% | 0.9d | 2011-08-17 | 2011-09-10 | -37.55d | 0d | MECHANICAL [4234.8 h]; Cost [289004 AED] | 289,003.78 | 274,553.59 | UP2PS21101C0 | 21110 |  |  | UP | C | 21 | P2 | PS | ME | 211 | 01 | ETA | BILL 3 | B03 | MFS | R00 | ACF04 | MEP | 211 | 95 | 0 |  |  |  |  |
| UP2PS21102C0 |  | CU-P2 ; Cylinders - Fire Supr. Sys -16 No (Paraling Switch Gear RM) | 12d | 2011-08-10 A | 2011-10-19 | UP2PS21101C0 | 50% | 6d | 2011-09-10 | 2011-09-24 | -37.55d | 0d | MECHANICAL [4504.8 h]; Cost [289004 AED] | 289,003.78 | 144,501.89 | UP2PS21102C0 | 21120 |  |  | UP | C | 21 | P2 | PS | ME | 211 | 02 | ETA | BILL 3 | B03 | MFS | R00 | ACF04 | MEP | 211 | 50 | 0 |  |  |  |  |
| UP2PS23004C0 |  | CU-P2 ; Inst. Of Grilles / Diffusers (Paraling Switch Gear RM) | 6.12d | 2011-09-10 A | 2011-10-17 | UP2PS23003C0 FF+4d, UP2PS23003C0 SS+2d | 75% | 1.53d | 2011-09-22 | 2011-09-29 | 447d | 10.41d | MECHANICAL [819.6 h]; Cost [8501 AED] | 8,501 | 6,375.75 | UP2PS23004C0 | 23072 |  |  | UP | C | 23 | P2 | PS | ME | 230 | 04 | ETA | BILL 3 | B03 | MHV | R00 | ACF04 | MEP | 230 |  |  |  |  |  |  |
| UP2PS26002C0 |  | CU-P2 ; Lights / Switches / Sockets (Paraling Switch Gear RM) | 10d | 2011-09-10 A | 2011-10-24 | UP2PS26007C0, UP2PS26009C0, UP2PS26010C0 SS+6d | 80% | 2d | 2011-10-08 | 2011-10-19 | -30.96d | 0d | ELECTRICAL [1701.6 h]; Cost [19522.4 AED] | 19,522.4 | 4,880.6 | UP2PS26002C0 | 26061 |  |  | UP | C | 26 | P2 | PS | ME | 260 | 02 | ETA | BILL 3 | B03 | MEL | R00 | ACF07 | MEP | 260 |  |  |  |  |  |  |
| UP2PS26010C0 |  | CU-P2 ; Glanding & Termination Of Panels (Paraling Switch Gear RM) | 14d | 2011-09-10 A | 2011-11-09 | UP2PS26003C0 SS+15d, UP2PS26003C0 FF, UP2PS26004C0, UP2PS26004C0 FF, UP2PS26005C0, UP2PS26007C0 SS+10d | 5% | 13.3d | 2011-09-26 | 2011-10-12 | -30.46d | 0.5d | ELECTRICAL [1622.4 h]; Cost [18867.6 AED] | 18,867.56 | 943.38 | UP2PS26010C0 | 26051 |  |  | UP | C | 26 | P2 | PS | ME | 260 | 10 | ETA | BILL 3 | B03 | MEL | R00 | ACF07 | MEP | 260 |  |  |  |  |  |  |
| UP2PS21103C0 |  | CU-P2 ; Conn. Works To Cylinders (Paraling Switch Gear RM) | 12d | 2011-10-19 | 2011-11-02 | UP2PS21102C0 |  |  |  |  | -37.55d | 0d | MECHANICAL [4234.8 h]; Cost |  |  | UP2PS21103C0 | 21130 |  |  | UP | C | 21 | P2 | PS | ME | 211 | 03 | ETA | BILL 3 | B03 | MFS | R00 | ACF07 | MEP | 211 |  |  |  |  |  |  |
| UP2PS27004C0 |  | CU-P2 ; ELV Dev.- Snsr, Smk Detector / Spkrs (Paraling Switch Gear RM) | 6d | 2011-10-22 | 2011-10-29 | UP2PS26002C0 SS, UP2PS27003C0 |  |  |  |  | -30.96d | 0d | ELECTRICAL [153.6 h]; Cost |  |  | UP2PS27004C0 | 27040 |  |  | UP | C | 27 | P2 | PS | ME | 270 | 04 | ETA | BILL 3 | B03 | MELV | R00 | ACF07 | MEP | 270 |  |  |  |  |  |  |
| UP2PS27005C0 |  | CU-P2 ; Batt. Offline Readers & Telecom Outlets (Paraling Switch Gear RM) | 4d | 2011-10-29 | 2011-11-02 | UP2PS27004C0 |  |  |  |  | -30.96d | 30.04d | Labor General [1.2 h]; Cost |  |  | UP2PS27005C0 | 27070 |  |  | UP | C | 27 | P2 | PS | ME | 270 | 05 | ETA | BILL 3 | B03 | MELV | R00 | ACF07 | MEP | 270 |  |  |  |  |  |  |
| UP2PS21104C0 |  | CU-P2 ; Inst. Of Fire Extinguisher / Fhc (Paraling Switch Gear RM) | 7d | 2011-11-02 | 2011-11-14 | UP2PS21103C0 |  |  |  |  | -37.55d | 23.45d | MECHANICAL [166.8 h]; Cost |  |  | UP2PS21104C0 | 21160 |  |  | UP | C | 21 | P2 | PS | ME | 211 | 04 | ETA | BILL 3 | B03 | MFS | R00 | ACF04 | MEP | 211 |  |  |  |  |  |  |

| ID | WBS | Activity | Duration | Start | Finish | Predecessors | Complete | Remaining | Planned start | Planned finish | Total float | Free float | Resources | Cost | Actual cost | change id | RENZ % COMPLETE | CCAD BUILDING(SET) | CCAD PHASE(SET) | CCAD DIVISION(SET) | CCAD FLOOR(SET) | CCAD ZONE(SET) | CCAD WORK(SET) | CCAD SECTION(SET) | CCAD SERIAL No.(SET) | CCAD RESPONSIBILITY(SET) | CCAD CBS(SET) | CCAD BILL(SET) | CCAD TAG(SET) | CCAD REV(SET) | CCADACF (SET) | CCAD CSA | CCAD SSCF | DIVISION FOR ACTIVITY ID | P_811 | P_711 | user_number8 | user_integer1 | user_integer2 | user_number7 | Claimed This Month |
| --- | --- | --- | --- | --- | --- | --- | --- | --- | --- | --- | --- | --- | --- | --- | --- | --- | --- | --- | --- | --- | --- | --- | --- | --- | --- | --- | --- | --- | --- | --- | --- | --- | --- | --- | --- | --- | --- | --- | --- | --- | --- |
|  | 06 | **CORR & STR CASE** |  | 2011-04-21 | 2011-12-06 |  |  |  |  |  |  |  |  |  |  |  |  |  |  |  |  |  |  |  |  |  |  |  |  |  |  |  |  |  |  |  |  |  |  |  |  |
| UP2CS26014C0 |  | CU-P2 ; Inst. Of Back Boxes & Conduites On Wall (Public Area) | 8d | 2011-04-21 A | 2011-10-04 | UP2S103305C0, UP2S104001C0 FF | 50% | 4d | 2011-05-09 | 2011-05-18 | -61d | 0d | ELECTRICAL [1807.2 h]; Cost [6501.63 AED] | 6,501.63 | 3,250.81 | UP2CS26014C0 | 50 | UP | C | 26 | P2 | CS | ME | 260 | 14 | ETA | BILL 3 | B03 | MEL | R00 | ACF04 | MEP | 260 |  |  |  |  |  |  |  |  |
| UP2CS22002C0 |  | CU-P2 ; Inst. Of Drainage Pipe (Public Area) | 12d | 2011-05-15 A | 2011-10-09 | UP2CS23001C0 FF, UP2CS23001C0 SS | 95% | 0.6d | 2011-08-03 | 2011-08-16 | -61d | 0d | PLUMBING [591.6 h]; Cost [16284.7 AED] | 16,284.74 | 15,470.5 | UP2CS22002C0 | 90 | UP | C | 22 | P2 | CS | ME | 220 | 02 | ETA | BILL 3 | B03 | MPL | R00 | ACF04 | MEP | 220 | 22020 | 95 | 90 |  |  |  |  |  |
| UP2CS23001C0 |  | CU-P2 ; Inst. Of Duct Supp.s & Ducting (Public Area) | 18d | 2011-05-15 A | 2011-10-09 | UP2CS26002C0 SS, UP2CS26002C0 FF | 75% | 4.5d | 2011-07-27 | 2011-08-16 | -61d | 0d | MECHANICAL [1333.2 h]; Cost [37738.7 AED] | 37,738.68 | 28,304.01 | UP2CS23001C0 | 10 | UP | C | 23 | P2 | CS | ME | 230 | 01 | ETA | BILL 3 | B03 | MHV | R00 | ACF04 | MEP | 230 | 23015 |  |  | 0 | 0 | 0 | 0 |  |
| UP2CS26002C0 |  | CU-P2 ; Trnk & Cnduit For Lighting / Pwr / Emerg. (Public Area) | 16d | 2011-05-15 A | 2011-10-09 | UP2CS27001C0 FF, UP2CS27001C0 SS+6d | 50% | 8d | 2011-07-09 | 2011-07-26 | -61d | 0d | ELECTRICAL [1807.2 h]; Cost [6501.63 AED] | 6,501.63 | 3,250.81 | UP2CS26002C0 | 35 | UP | C | 26 | P2 | CS | ME | 260 | 02 | ETA | BILL 3 | B03 | MEL | R00 | ACF04 | MEP | 260 | 26020 |  |  |  |  |  |  | 14669.36 |
| UP2CS27001C0 |  | CU-P2 ; Trunking & Conduiting Works For ELV Syss (Public Area) | 11.88d | 2011-05-15 A | 2011-10-05 | UP2CS26014C0 SS, UP2CS26014C0 FF | 65% | 4.16d | 2011-07-02 | 2011-07-14 | -61d | 0d | ELECTRICAL [52.8 h]; Cost [2874.8 AED] | 2,874.8 | 1,868.62 | UP2CS27001C0 | 35 | UP | C | 27 | P2 | CS | ME | 270 | 01 | ETA | BILL 3 | B03 | MELV | R00 | ACF04 | MEP | 270 | 27010 | 50 | 35 | 0 | 0 | 0 | 0 |  |
| UP2CS26001C0 |  | CU-P2 ; Inst. Of Cable Tray (Public Area) | 12d | 2011-09-05 A | 2011-10-12 | UP2CS26002C0 | 75% | 3d | 2011-09-13 | 2011-09-27 | -59.6d | 0d | ELECTRICAL [1977.6 h]; Cost [10561.5 AED] | 10,561.54 | 7,921.15 | UP2CS26001C0 |  | UP | C | 26 | P2 | CS | ME | 260 | 01 | ETA | BILL 3 | B03 | MEL | R00 | ACF04 | MEP | 260 | 26030 |  |  |  |  |  |  | 80834.66 |
| UP2CS26003C0 |  | CU-P2 ; Wiring Works To Lighting / Pwr / Emerg. (Public Area) | 12d | 2011-09-05 A | 2011-10-25 | UP2CS26001C0 | 10% | 10.8d | 2011-09-27 | 2011-10-11 | -59.6d | 0d | ELECTRICAL [2007.6 h]; Cost [10136.5 AED] | 10,136.46 | 1,013.65 | UP2CS26003C0 |  | UP | C | 26 | P2 | CS | ME | 260 | 03 | ETA | BILL 3 | B03 | MEL | R00 | ACF07 | MEP | 260 | 26041 |  |  |  |  |  |  |  |
| UP2CS27002C0 |  | CU-P2 ; Wiring Works For ELV Systems (Public Area) | 12d | 2011-09-05 A | 2011-10-11 | UP2CS27001C0 SS+6d | 20% | 9.6d | 2011-09-01 | 2011-09-14 | -47.4d | 0d | ELECTRICAL [46.8 h]; Cost [2549.35 AED] | 2,549.35 | 509.87 | UP2CS27002C0 |  | UP | C | 27 | P2 | CS | ME | 270 | 02 | ETA | BILL 3 | B03 | MELV | R00 | ACF07 | MEP | 270 | 27020 |  |  |  |  |  |  | 594.87 |
| UP2CS08103C0 |  | CU-P2 ; Door Frames (Public Area) | 6d | 2011-09-10 A | 2011-10-05 | UP2S304002C0 | 20% | 4.8d | 2011-09-01 | 2011-09-07 | -30.6d | 29d | ASSORTED DOORS [28 h]; Cost |  |  | UP2CS08103C0 |  | UP | C | 08 | P2 | CS | DO | 081 | 03 | SIS | BILL 3 | B03 | DF | R00 | ACF06 |  | 081 |  |  |  |  |  |  |  |  |
| UP2CS08104C0 |  | CU-P2 ; Doors (Public Area) | 12d | 2011-09-10 A | 2011-11-24 | OGNMU00059S0, OGNMU00065S0, UP2CS08103C0, UP2CS09905C0 | 10% | 10.8d | 2011-10-25 | 2011-11-12 | -59.6d | 0d | METAL DOORS [50 h]; METAL DOORS [5 no]; Cost |  |  | UP2CS08104C0 |  | UP | C | 08 | P2 | CS | DO | 081 | 04 | SIS | BILL 3 | B03 | DR | R00 | ACF06 |  | 081 |  |  |  |  |  |  |  |  |
| UP2CS23003C0 |  | CU-P2 ; Inst. Of Diffusers (Public Area) | 12d | 2011-09-10 A | 2011-11-03 | UP2CS23002C0 | 10% | 10.8d | 2011-10-04 | 2011-10-18 | 420.4d | 11.4d | MECHANICAL [819.6 h]; Cost [8501 AED] | 8,501 | 850.1 | UP2CS23003C0 |  | UP | C | 23 | P2 | CS | ME | 230 | 03 | ETA | BILL 3 | B03 | MHV | R00 | ACF04 | MEP | 230 | 23050 |  |  |  |  |  |  |  |
| UP2CS23002C0 |  | CU-P2 ; Inst. Of Vcd'S & Duct Conn. Works (Public Area) | 12d | 2011-09-20 A | 2011-10-22 | UP2CS23001C0 | 10% | 10.8d | 2011-09-20 | 2011-10-04 | 420.4d | 0d | MECHANICAL [1794 h]; Cost [4756.4 AED] | 4,756.4 | 475.64 | UP2CS23002C0 |  | UP | C | 23 | P2 | CS | ME | 230 | 02 | ETA | BILL 3 | B03 | MHV | R00 | ACF04 | MEP | 230 | 23030 |  |  |  |  |  |  |  |
| UP2CS21105C0 |  | CU-P2 ; Inst. Of Fire Fighting Pipe (Public Area) | 12d | 2011-10-10 | 2011-10-23 | UP2CS22002C0 |  |  |  |  | -61d | 0d | MECHANICAL [487.2 h]; Cost |  |  | UP2CS21105C0 |  | UP | C | 21 | P2 | CS | ME | 211 | 05 | ETA | BILL 3 | B03 | MFS | R00 | ACF04 | MEP | 211 | 21140 |  |  |  |  |  |  |  |
| UP2CS22003C0 |  | CU-P2 ; Inst. Of Floor Clean Outs & Floor Drains (Public Area) | 6d | 2011-10-10 | 2011-10-16 | UP2CS22002C0 |  |  |  |  | -23d | 38d | PLUMBING [518.4 h]; Cost |  |  | UP2CS22003C0 |  | UP | C | 22 | P2 | CS | ME | 220 | 03 | ETA | BILL 3 | B03 | MPL | R00 | ACF04 | MEP | 220 | 22070 |  |  |  |  |  |  |  |
| UP2CS27004C0 |  | CU-P2 ; Inst. Of Fm 200 Control Panel (Public Area) | 7d | 2011-10-11 | 2011-10-19 | UP2CS27002C0 |  |  |  |  | 409.4d | 0d | Labor General [1.2 h]; Cost |  |  | UP2CS27004C0 |  | UP | C | 27 | P2 | CS | ME | 270 | 04 | ETA | BILL 3 | B03 | MELV | R00 | ACF04 | MEP | 270 | 27031 |  |  |  |  |  |  |  |
| UP2CS27005C0 |  | CU-P2 ; Dressing, Glanding & Termin. Of Ctrl Pnl (Public Area) | 12d | 2011-10-19 | 2011-11-02 | UP2CS27004C0 |  |  |  |  | 409.4d | 0d | ELECTRICAL [1622.4 h]; Cost |  |  | UP2CS27005C0 |  | UP | C | 27 | P2 | CS | ME | 270 | 05 | ETA | BILL 3 | B03 | MELV | R00 | ACF07 | MEP | 270 | 27050 |  |  |  |  |  |  |  |
| UP2CS09907C0 |  | CU-P2 ; Ceiling Prime & 1st Coat (Public Area) | 0d | 2011-10-22 | 2011-10-22 | UP2CS23001C0, UP2CS23002C0 |  |  |  |  | 431.2d | 22.2d | Cost |  |  | UP2CS09907C0 |  | UP | C | 09 | P2 | CS | PA | 099 | 07 | SIS | BILL 3 | B03 | 01 | R00 | ACF06 |  | 099 |  |  |  |  |  |  |  |  |
| UP2CS21109C0 |  | CU-P2 ; Inst. Of Zone Control Valve (Public Area) | 6d | 2011-10-24 | 2011-10-30 | UP2CS21105C0 |  |  |  |  | -61d | 0d | MECHANICAL [886.8 h]; Cost |  |  | UP2CS21109C0 |  | UP | C | 21 | P2 | CS | ME | 211 | 09 | ETA | BILL 3 | B03 | MFS | R00 | ACF04 | MEP | 211 | 21175 |  |  |  |  |  |  |  |
| UP2CS09905C0 |  | CU-P2 ; Wall Prime & 1st Coat (Public Area) | 12d | 2011-10-25 | 2011-11-12 | OGNMU00057S0, UP2CS26003C0, UP2CS27002C0 |  |  |  |  | -59.6d | 0d | WALL PAINT [2070 h]; WALL PAINT [2584 m2]; Cost |  |  | UP2CS09905C0 |  | UP | C | 09 | P2 | CS | PA | 099 | 05 | SIS | BILL 3 | B03 | 01 | R00 | ACF06 |  | 099 |  |  |  |  |  |  |  |  |
| UP2CS26004C0 |  | CU-P2 ; Light Fittings / Switches / Sockets (Public Area) | 10d | 2011-10-25 | 2011-11-09 | UP2CS26003C0 |  |  |  |  | 416.2d | 6.8d | ELECTRICAL [1701.6 h]; Cost |  |  | UP2CS26004C0 |  | UP | C | 26 | P2 | CS | ME | 260 | 04 | ETA | BILL 3 | B03 | MEL | R00 | ACF07 | MEP | 260 | 26061 |  |  |  |  |  |  |  |
| UP2CS21106C0 |  | CU-P2 ; Press. Tst Fire Fight Pipe & Insp. By Cnslt (Public Area) | 5d | 2011-10-31 | 2011-11-05 | UP2CS21109C0 |  |  |  |  | -61d | 0d | MECHANICAL [826.8 h]; Cost |  |  | UP2CS21106C0 |  | UP | C | 21 | P2 | CS | ME | 211 | 06 | ETA | BILL 3 | B03 | MFS | R00 | ACF07 | MEP | 211 | 21180 |  |  |  |  |  |  |  |
| UP2CS27003C0 |  | CU-P2 ; ELV Dev.- Sensors, Smoke Detector / Spkrs (Public Area) | 12d | 2011-11-02 | 2011-11-20 | UP2CS26004C0 FF, UP2CS26004C0 SS, UP2CS27002C0, UP2CS27005C0 |  |  |  |  | 409.4d | 0.4d | ELECTRICAL [153.6 h]; Cost |  |  | UP2CS27003C0 |  | UP | C | 27 | P2 | CS | ME | 270 | 03 | ETA | BILL 3 | B03 | MELV | R00 | ACF07 | MEP | 270 | 27040 |  |  |  |  |  |  |  |
| UP2CS21107C0 |  | CU-P2 ; Inst. Of Sprinkler Heads (Public Area) | 10d | 2011-11-09 | 2011-11-20 | UP2CS21106C0 |  |  |  |  | -61d | 0d | MECHANICAL [70.8 h]; Cost |  |  | UP2CS21107C0 |  | UP | C | 21 | P2 | CS | ME | 211 | 07 | ETA | BILL 3 | B03 | MFS | R00 | ACF04 | MEP | 211 | 21150 |  |  |  |  |  |  |  |
| UP2CS09908C0 |  | CU-P2 ; Ceiling Final Coat (Public Area) | 0d | 2011-11-21 | 2011-11-21 | UP2CS09907C0, UP2CS21107C0, UP2CS23003C0, UP2CS27003C0 |  |  |  |  | 409d | 0d | Cost |  |  | UP2CS09908C0 |  | UP | C | 09 | P2 | CS | PA | 099 | 08 | SIS | BILL 3 | B03 | 02 | R00 | ACF06 |  | 099 |  |  |  |  |  |  |  |  |
| UP2CS21108C0 |  | CU-P2 ; Inst. Of Fire Extinguishers / Fhc (Public Area) | 11d | 2011-11-21 | 2011-12-05 | UP2CS21107C0 |  |  |  |  | -61d | 0d | MECHANICAL [166.8 h]; Cost |  |  | UP2CS21108C0 |  | UP | C | 21 | P2 | CS | ME | 211 | 08 | ETA | BILL 3 | B03 | MFS | R00 | ACF04 | MEP | 211 | 21160 |  |  |  |  |  |  |  |
| UP2CS09602C0 |  | CU-P2 ; Floor Finishing (Public Area) | 6d | 2011-11-24 | 2011-12-04 | UP2CS08104C0 |  |  |  |  | -59.6d | 1.4d | ASSORTED FLOOR FINISH [1656 h]; ASSORTED FLOOR FINISH [918 m2]; Cost |  |  | UP2CS09602C0 |  | UP | C | 09 | P2 | CS | FF | 096 | 02 | SIS | BILL 3 | B03 | 01 | R00 | ACF06 |  | FF |  |  |  |  |  |  |  |  |
| UP2CS09906C0 |  | CU-P2 ; Wall 2nd Coat (Public Area) | 5d | 2011-11-30 | 2011-12-06 | UP2CS09905C0, UP2CS09908C0 FS+7d, UP2CS26004C0 |  |  |  |  | 409d | 8d | WALL PAINT [1115 h]; WALL PAINT [1391 m2]; Cost |  |  | UP2CS09906C0 |  | UP | C | 09 | P2 | CS | PA | 099 | 06 | SIS | BILL 3 | B03 | 02 | R00 | ACF06 |  | 099 |  |  |  |  |  |  |  |  |

| ID | WBS | Activity | Duration | Start | Finish | Predecessors | Complete | Remaining | Planned start | Planned finish | Total float | Free float | Resources | change id | CCAD BUILDING(SET) | CCAD PHASE(SET) | CCAD FLOOR(SET) | CCAD ZONE(SET) | CCAD WORK(SET) | CCAD SECTION(SET) | CCAD SERIAL No.(SET) | CCAD CBS(SET) | CCAD BILL(SET) | CCAD TAG(SET) | CCAD REV(SET) | CCADACF (SET) | CCAD SSCF | RENZ % COMPLETE | CCAD DIVISION(SET) | CCAD RESPONSIBILITY(SET) | CCAD CUP CODE(SET) | CCAD CSA | Claimed This Month | P_811 | P_711 | user_number8 | user_integer1 | user_integer2 | user_number7 |
| --- | --- | --- | --- | --- | --- | --- | --- | --- | --- | --- | --- | --- | --- | --- | --- | --- | --- | --- | --- | --- | --- | --- | --- | --- | --- | --- | --- | --- | --- | --- | --- | --- | --- | --- | --- | --- | --- | --- | --- |
|  | 10 | **Testing & Snagging** |  | 2011-11-17 | 2012-01-10 |  |  |  |  |  |  |  |  |  |  |  |  |  |  |  |  |  |  |  |  |  |  |  |  |  |  |  |  |  |  |  |  |  |  |
| UP2TS01801C0 |  | UP-P2 ; Systems testing and snagging | 21d | 2011-11-17 | 2011-12-13 | UP2CS09602C0 FF+7d, UP2CS21108C0 FF+7d, UP2CS22003C0 FF+7d, UP2MF09601C0 FF+7d, UP2MF21104C0 FF+7d, UP2MF22002C0 FF+7d, UP2MF23009C0 FF+7d, UP2MF23011C0 FF, UP2MF27004C0 FF, UP2ML09601C0 FF, UP2ML21102C0 FF, UP2ML22003C0 FF, UP2ML23007C0 FF, UP2ML27004C0 FF, UP2PS09601C0 FF, UP2PS21104C0 FF, UP2PS27005C0 FF, UP2TA09601C0 FF, UP2TA21104C0 FF, UP2TA27004C0 FF |  |  |  |  | -61d | 20d | TESTING & COMMISSIONING [1785 h]; Cost | UP2TS01801C0 | UP | C | P2 | TS | SC | 018 | 01 | BILL 3 | B03 | 02 | R00 | ACF07 | 018 |  |  |  |  |  |  |  |  |  |  |  |  |
| UP2TS01802C0 |  | UP-P2 ; Touch-up & Clean / JV inspection /CIR /De-snag | 18d | 2011-12-17 | 2012-01-07 | UP2CS09602C0, UP2CS09906C0, UP2CS21108C0, UP2CS22003C0, UP2MF09601C0, UP2MF09902C0, UP2MF21104C0, UP2MF22002C0, UP2MF23009C0, UP2MF23011C0, UP2MF27004C0, UP2ML09601C0, UP2ML09902C0, UP2ML21102C0, UP2ML22003C0, UP2ML23007C0, UP2ML27004C0, UP2PS09601C0, UP2PS09902C0, UP2PS21104C0, UP2PS27005C0, UP2S104004C0, UP2S204003C0, UP2S204004C0, UP2S304003C0, UP2S304004C0, UP2S431202C0, UP2TA09601C0, UP2TA09902C0, UP2TA21104C0, UP2TA27004C0, UP3FP09902C0 |  |  |  |  | 401d | 0d | TESTING & COMMISSIONING [298 h]; Cost | UP2TS01802C0 | UP | C | P2 | TS | SC | 018 | 02 | BILL 3 | B03 | 02 | R00 | ACF07 | 018 |  |  |  |  |  |  |  |  |  |  |  |  |
| UP2TS01803C0 |  | UP-P2 ; Minor snags | 3d | 2012-01-08 | 2012-01-10 | UP2TS01801C0, UP2TS01802C0 |  |  |  |  | 401d | 398.12d | Labor General [1 h]; Cost | UP2TS01803C0 | UP | C | P2 | TS | SC | 018 | 03 | BILL 3 | B03 | 03 | R00 | ACF07 | 018 |  |  |  |  |  |  |  |  |  |  |  |  |
|  | GL | **Ground Level** |  | 2011-01-05 | 2011-12-31 |  |  |  |  |  |  |  |  |  |  |  |  |  |  |  |  |  |  |  |  |  |  |  |  |  |  |  |  |  |  |  |  |  |  |
|  | S1 | **Zone S1** |  | 2011-01-05 | 2011-07-20 |  |  |  |  |  |  |  |  |  |  |  |  |  |  |  |  |  |  |  |  |  |  |  |  |  |  |  |  |  |  |  |  |  |  |
| UGLS103301C0 |  | CU-GL ; PT Slab (Zone S1-1) | 20d | 2011-01-05 A | 2011-03-02 A | UP2S103303C0 | 100% |  | 2011-02-12 | 2011-03-06 |  |  | CONCRETE [10624 h]; CONCRETE [267 m3]; Cost | UGLS103301C0 | UP | C | GL | S1 | CT | 033 | 01 | BILL 3 | B03 | 07 | R00 | ACF03 | 033 | 100 | 03 | SIS | 1 | PT |  |  |  |  |  |  |  |
| UGLS103302C0 |  | CU-GL ; PT Slab (Zone S1-2) | 21d | 2011-02-12 A | 2011-05-24 A | UP2S103304C0 | 100% |  | 2011-02-10 | 2011-03-07 |  |  | CONCRETE [20200 h]; CONCRETE [508 m3]; Cost | UGLS103302C0 | UP | C | GL | S1 | CT | 033 | 02 | BILL 3 | B03 | 07 | R00 | ACF03 | 033 | 100 | 03 | SIS | 2 | PT |  |  |  |  |  |  |  |
| UGLS103303C0 |  | CU-GL ; PT Slab (Zone S1-3) | 20d | 2011-02-19 A | 2011-07-20 A | UP2S103305C0 | 100% |  | 2011-02-19 | 2011-03-14 |  |  | CONCRETE [8352 h]; CONCRETE [210 m3]; Cost | UGLS103303C0 | UP | C | GL | S1 | CT | 033 | 03 | BILL 3 | B03 | 07 | R00 | ACF03 | 033 | 90 | 03 | SIS | 3 | PT |  |  |  |  |  |  |  |
| UGLS103304C0 |  | CU-GL ; Smoke Stack & Upstand (Zone S1-0) | 14d | 2011-03-24 A | 2011-07-20 A | UGLS103303C0 | 100% |  | 2011-04-13 | 2011-04-30 |  |  | CONCRETE [6400 h]; CONCRETE [161 m3]; Cost | UGLS103304C0 | UP | C | GL | S1 | CT | 033 | 04 | BILL 3 | B03 | 10 | R00 | ACF03 | 033 | 10 | 03 | SIS | 0 |  | 9360.04 |  |  |  |  |  |  |
|  | S2 | **Zone S2** |  | 2011-03-19 | 2011-10-02 |  |  |  |  |  |  |  |  |  |  |  |  |  |  |  |  |  |  |  |  |  |  |  |  |  |  |  |  |  |  |  |  |  |  |
| UGLS203302C0 |  | CU-GL ; PT Slab (Zone S2-2) | 12d | 2011-03-19 A | 2011-05-30 A | UP2S203302C0 FF | 100% |  | 2011-03-16 | 2011-03-29 |  |  | CONCRETE [10776 h]; CONCRETE [271 m3]; Cost | UGLS203302C0 | UP | C | GL | S2 | CT | 033 | 02 | BILL 3 | B03 | 07 | R00 | ACF03 | 033 | 100 | 03 | SIS | 2 | PT |  |  |  |  |  |  |  |
| UGLS203301C0 |  | CU-GL ; PT Slab (Zone S2-1) | 20d | 2011-03-29 A | 2011-05-25 A | UP2S203301C0 | 100% |  | 2011-04-07 | 2011-04-30 |  |  | CONCRETE [8272 h]; CONCRETE [208 m3]; Cost | UGLS203301C0 | UP | C | GL | S2 | CT | 033 | 01 | BILL 3 | B03 | 07 | R00 | ACF03 | 033 | 100 | 03 | SIS | 1 | PT |  |  |  |  |  |  |  |
| UGLS203303C0 |  | CU-GL ; Smoke Stack & Upstand (Zone S2-0) | 14d | 2011-08-02 A | 2011-10-02 | UGLS203302C0 | 90% | 1.4d | 2011-07-31 | 2011-08-15 | 460.6d | 1d | CONCRETE [5968 h]; CONCRETE [150 m3]; Cost | UGLS203303C0 | UP | C | GL | S2 | CT | 033 | 03 | BILL 3 | B03 | 10 | R00 | ACF03 | 033 |  | 03 | SIS | 0 |  |  | 75 | 0 |  |  |  |  |
|  | S3 | **Zone S3** |  | 2011-03-17 | 2011-10-02 |  |  |  |  |  |  |  |  |  |  |  |  |  |  |  |  |  |  |  |  |  |  |  |  |  |  |  |  |  |  |  |  |  |  |
| UGLS303302C0 |  | CU-GL ; PT Slab (Zone S3-2) | 20d | 2011-03-17 A | 2011-07-20 A | UP2S303302C0, UP2OA03300C1 FF | 100% |  | 2011-03-19 | 2011-04-11 |  |  | CONCRETE [14752 h]; CONCRETE [371 m3]; Cost | UGLS303302C0 | UP | C | GL | S3 | CT | 033 | 02 | BILL 3 | B03 | 07 | R00 | ACF03 | 033 | 70 | 03 | SIS | 2 | PT |  |  |  |  |  |  |  |
| UGLS303301C0 |  | CU-GL ; PT Slab (Zone S3-1) | 20d | 2011-04-20 A | 2011-07-20 A | UFNS303306C0, UP2S103302C0, UP2S303301C0 | 100% |  | 2011-04-25 | 2011-05-17 |  |  | CONCRETE [13632 h]; CONCRETE [343 m3]; Cost | UGLS303301C0 | UP | C | GL | S3 | CT | 033 | 01 | BILL 3 | B03 | 07 | R00 | ACF03 | 033 | 50 | 03 | SIS | 1 | PT |  |  |  |  |  |  |  |
| UGLS303303C0 |  | CU-GL ; Smoke Stack & Upstand (Zone S3-0) | 14d | 2011-07-10 A | 2011-10-02 | UGLS303302C0 | 90% | 1.4d | 2011-07-03 | 2011-07-18 | 460.6d | 1d | CONCRETE [4536 h]; CONCRETE [114 m3]; Cost | UGLS303303C0 | UP | C | GL | S3 | CT | 033 | 03 | BILL 3 | B03 | 10 | R00 | ACF03 | 033 |  | 03 | SIS | 0 |  |  | 75 | 50 |  |  |  |  |
|  | S4 | **Zone S4** |  | 2011-08-14 | 2011-10-02 |  |  |  |  |  |  |  |  |  |  |  |  |  |  |  |  |  |  |  |  |  |  |  |  |  |  |  |  |  |  |  |  |  |  |
| UGLS403301C0 |  | CU-GL ; Smoke Stack & Upstand (Zone S4-0) | 14d | 2011-08-14 A | 2011-10-02 | UP2S431201C0 | 90% | 1.4d | 2011-08-14 | 2011-09-01 | 460.6d | 1d | CONCRETE [2184 h]; CONCRETE [55 m3]; Cost | UGLS403301C0 | UP | C | GL | S4 | CT | 033 | 01 | BILL 3 | B03 | 10 | R00 | ACF03 | 033 |  | 03 | SIS | 0 |  |  | 75 | 0 |  |  |  |  |
|  | 10 | **Testing & Snagging** |  | 2011-10-03 | 2011-12-31 |  |  |  |  |  |  |  |  |  |  |  |  |  |  |  |  |  |  |  |  |  |  |  |  |  |  |  |  |  |  |  |  |  |  |
| UGLTS01801C0 |  | UP-GL ; Touch-up & Clean / JV inspection /CIR /De-snag | 18d | 2011-10-03 | 2011-10-24 | UGLS103304C0, UGLS203303C0, UGLS303303C0, UGLS403301C0, UP3S105509C0, UP3S205509C0, UP3S305509C0, UV09GZ04052R2 |  |  |  |  | 459.6d | 50.6d | TESTING & COMMISSIONING [128 h]; Cost | UGLTS01802C0 | UP | C | GL | TS | SC | 018 | 02 | BILL 3 | B03 | 02 | R00 | ACF07 | 018 |  |  |  |  |  |  |  |  |  |  |  |  |
| UGLTS01803C0 |  | UP-GL ; Minor Snags | 3d | 2011-12-28 | 2011-12-31 | UGLTS01801C0, UZ9GZ27053R2 FF, UV09GZ26015R2 FF, UV09GZ28006R2 FF |  |  |  |  | 409d | 406.12d | Labor General [1 h]; Cost | UGLTS01803C0 | UP | C | GL | TS | SC | 018 | 03 | BILL 3 | B03 | 03 | R00 | ACF07 | 018 |  |  |  |  |  |  |  |  |  |  |  |  |
|  | EX | **External** |  | 2011-07-10 | 2012-02-09 |  |  |  |  |  |  |  |  |  |  |  |  |  |  |  |  |  |  |  |  |  |  |  |  |  |  |  |  |  |  |  |  |  |  |
|  | 01 | **Structure & Envelopment** |  | 2011-07-10 | 2012-01-15 |  |  |  |  |  |  |  |  |  |  |  |  |  |  |  |  |  |  |  |  |  |  |  |  |  |  |  |  |  |  |  |  |  |  |
| UEXCO04407C0 |  | CU-EX ; Granite veneer Bracket, mullion & transom installation (Common Zone) | 120d | 2011-07-10 A | 2011-12-28 | UGLS303301C0 FS+28d | 40% | 72d | 2011-08-07 | 2012-01-02 | 380d | 0d | FACADE GRANITE VENEER [2759.6 h]; Cost | UEXCO04407C0 | UP | C | EX | CO | FA | 044 | 07 | BILL 11 | B03 | FGV | R00 | ACF05 | 044 |  |  |  |  | FA |  | 40 | 15 | 0 | 0 | 0 | 0 |
| UEXCO04415C0 |  | CU-EX ; Granite veneer installation (Common Zone) | 62d | 2011-08-02 A | 2012-01-10 | UEXCO04407C0 SS, UEXCO04407C0 FF+10d | 20% | 49.6d | 2011-09-11 | 2011-11-27 | 380d | 4d | FACADE GRANITE VENEER [8497.5 h]; FACADE GRANITE VENEER [1844.19 m2]; FACADE TOTAL QUANTITY m2 [1844.19 m2]; Cost | UEXCO04415C0 | UP | C | EX | CO | FA | 044 | 15 | BILL 11 | B03 | FGV | R00 | ACF05 | 044 |  |  |  |  | FA |  | 5 | 0 | 0 | 0 | 0 | 0 |
| UEXCO04403C0 |  | CU-EX ; Louvers Bracket, mullion & transom installation (Common Zone) | 45d | 2011-10-02 | 2011-11-27 | OGNMU00039S0, UGLS303301C0 FS+61d |  |  |  |  | 376d | 0d | FACADE STEEL GRILL [1032.2 h]; Cost | UEXCO04403C0 | UP | C | EX | CO | FA | 044 | 03 | BILL 11 | B03 | FSL | R00 | ACF05 | 044 |  |  |  |  | FA |  |  |  |  |  |  |  |
| UEXCO04413C0 |  | CU-EX ; Louvers installation (Common Zone) | 40d | 2011-11-28 | 2012-01-15 | UEXCO04403C0 |  |  |  |  | 376d | 0d | FACADE SAND LOUVERS [4787.6 h]; FACADE SAND LOUVERS [328.12 m2]; FACADE TOTAL QUANTITY m2 [328.12 m2]; Cost | UEXCO04413C0 | UP | C | EX | CO | FA | 044 | 13 | BILL 11 | B03 | FSL | R00 | ACF05 | 044 |  |  |  |  | FA |  |  |  |  |  |  |  |

| ID | WBS | Activity | Duration | Start | Finish | Predecessors | Complete | Remaining | Planned start | Planned finish | Total float | Free float | Resources | change id | CCAD BUILDING(SET) | CCAD PHASE(SET) | CCAD FLOOR(SET) | CCAD ZONE(SET) | CCAD WORK(SET) | CCAD SECTION(SET) | CCAD SERIAL No.(SET) | CCAD CBS(SET) | CCAD BILL(SET) | CCAD TAG(SET) | CCAD REV(SET) | CCADACF (SET) | CCAD SSCF | CCAD HANDOVER(SET) | CCAD CSA | P_811 | P_711 | Change Order # | NEW ACTIVITY ID | RENZ % COMPLETE | CCAD DIVISION(SET) |
| --- | --- | --- | --- | --- | --- | --- | --- | --- | --- | --- | --- | --- | --- | --- | --- | --- | --- | --- | --- | --- | --- | --- | --- | --- | --- | --- | --- | --- | --- | --- | --- | --- | --- | --- | --- |
|  | 10 | **Precommissioning Tesing & snagging** |  | 2012-01-16 | 2012-02-09 |  |  |  |  |  |  |  |  |  |  |  |  |  |  |  |  |  |  |  |  |  |  |  |  |  |  |  |  |  |  |
| UAFTS01801C0 |  | CU-AF ; Touch-up & Clean / JV inspection /CIR /De-snag | 18d | 2012-01-16 | 2012-02-06 | UEXCO04413C0, UEXCO04415C0 |  |  |  |  | 376d | 0d | TESTING & COMMISSIONING [64 h]; Cost | UAFTS01802C0 | UP | C | AF | TS | SC | 018 | 02 | BILL 11 | B03 | 02 | R00 | ACF07 | 018 |  |  |  |  |  |  |  |  |
| UAFTS01803C0 |  | CU-AF ; Minor Snags | 3d | 2012-02-07 | 2012-02-09 | UAFTS01801C0 |  |  |  |  | 376d | 373.12d | Labor General [1 h]; Cost | UAFTS01803C0 | UP | C | AF | TS | SC | 018 | 03 | BILL 11 | B03 | 03 | R00 | ACF07 | 018 |  |  |  |  |  |  |  |  |
|  | 1 | **Maintenace for Operation** |  |  |  |  |  |  |  |  |  |  |  |  |  |  |  |  |  |  |  |  |  |  |  |  |  |  |  |  |  |  |  |  |  |
|  | CL | **Clinic Building** |  | 2010-05-20 | 2013-03-19 |  |  |  |  |  |  |  |  |  |  |  |  |  |  |  |  |  |  |  |  |  |  |  |  |  |  |  |  |  |  |
|  | OA | **Overall** |  | 2011-06-01 | 2011-12-18 |  |  |  |  |  |  |  |  |  |  |  |  |  |  |  |  |  |  |  |  |  |  |  |  |  |  |  |  |  |  |
| CAFT1405509C0 |  | CB - Steel Staircase Installation (Stair # 14) (P2 to 4F) | 21d | 2011-06-01 A | 2011-06-28 A | BAFT1405509C1 FS+3d | 100% |  | 2011-07-04 | 2011-07-27 |  |  | STRUCTURAL STEEL [32 T(Fe)]; Labor General [8 h]; Cost | IP3SE03305C0 | CB | C | AF | GEN | SW | 055 | 05 |  | B04 | 01 | R00 | ACF03 | 055 | S1 | ST |  |  |  |  |  |  |
| CAFT1505509C0 |  | CB - Steel Staircase Installation (Stair # 15) (P1 to 5F) | 44d | 2011-06-08 A | 2011-08-03 A | BAFT1505509C1 FS+3d | 100% |  | 2011-07-04 | 2011-08-23 |  |  | STRUCTURAL STEEL [60 T(Fe)]; Cost | IP3SE03305C0 | CB | C | AF | GEN | SW | 055 | 05 |  | B04 | 01 | R00 | ACF03 | 055 | S1 | ST | 100 | 90 |  |  |  |  |
| CAFT1105509C0 |  | CB - Steel Staircase Installation (Stair # 11) (P3 to 5F) | 50d | 2011-08-03 A | 2011-12-18 | BAFT1105509C1 FS+3d, CAFT1205509C0 FF, A10290 FS+58d, CV10GZ05553R2 FF | 10% | 45d | 2011-08-03 | 2011-10-02 | 92.5d | 0d | STRUCTURAL STEEL [96 T(Fe)]; Cost | IP3SE03305C0 | CB | C | AF | GEN | SW | 055 | 05 |  | B04 | 01 | R00 | ACF03 | 055 | S1 | ST | 10 | 0 |  |  |  |  |
| CAFT1205509C0 |  | CB - Steel Staircase Installation (Stair # 12) (P3 to 4F) | 44d | 2011-08-03 A | 2011-10-12 | BAFT1205509C1 FS+3d | 75% | 11d | 2011-08-03 | 2011-09-25 | 144.5d | 52d | STRUCTURAL STEEL [65 T(Fe)]; Cost | IP3SE03305C0 | CB | C | AF | GEN | SW | 055 | 05 |  | B04 | 01 | R00 | ACF03 | 055 | S1 | ST | 60 | 0 |  |  |  |  |
|  | FN | **Foundation** |  | 2010-05-20 | 2011-06-30 |  |  |  |  |  |  |  |  |  |  |  |  |  |  |  |  |  |  |  |  |  |  |  |  |  |  |  |  |  |  |
|  | S1 | **Zone S1** |  | 2010-05-25 | 2011-03-29 |  |  |  |  |  |  |  |  |  |  |  |  |  |  |  |  |  |  |  |  |  |  |  |  |  |  |  |  |  |  |
| CFNS107101C0 |  | CB-FN ; Pilecap-Horizontal waterproofing (Zone S1) | 6d | 2010-05-25 A | 2010-06-12 A | CFNS103305C0 SS+10d | 100% |  | 2010-06-10 | 2010-06-16 |  |  | THERMAL & MOISTURE [40 h]; THERMAL & MOISTURE [43 m2]; Cost | CFNS107101C0 | CB | C | FN | S1 | CT | 071 | 01 | BILL 4 | B04 | 02 | R00 | ACF02 | 071 | S1 |  |  |  | 3 | 3 | 100 |  |
| CFNS131201C0 |  | CB-FN ; Pilecap-Excavation & Compaction (Zone S1) | 45d | 2010-05-27 A | 2010-06-05 A | MGNMI00101M0 FS+66d | 100% |  | 2010-05-29 | 2010-07-20 |  |  | EXCAVATION & BACKFILLING [16 h]; EXCAVATION & BACKFILLING [8 m3]; Cost | CFNS131201C0 | CB | C | FN | S1 | CT | 312 | 01 | BILL 4 | B04 | 03 | R00 | ACF02 | 312 | S1 |  |  |  | 23 | 23 | 100 |  |
| CFNS131203C0 |  | CB-FN ; Pilecap-Pilecap treatment (Zone S1) | 18.03d | 2010-05-30 A | 2010-06-03 A | CFNS131201C0 SS+6d | 100% |  | 2010-05-19 | 2010-06-09 |  |  | ANTI-TERMITE [1440 h]; ANTI-TERMITE [441 m2]; Cost | CFNS131203C0 | CB | C | FN | S1 | CT | 312 | 03 | BILL 4 | B04 | 02 | R00 | ACF02 | 312 | S1 |  |  |  | 24 | 24 | 100 |  |
| CFNS103305C0 |  | CB-FN ; Pilecap-Blinding concrete (Zone S1) | 20.38d | 2010-06-05 A | 2010-06-10 A | CFNS131203C0 SS+9d | 100% |  | 2010-05-30 | 2010-06-22 |  |  | ANTI-TERMITE [1320 h]; CONCRETE [328 h]; CONCRETE [8 m3]; ANTI-TERMITE [6 m2]; Cost | CFNS103305C0 | CB | C | FN | S1 | CT | 033 | 05 | BILL 4 | B04 | 01 | R00 | ACF02 | 033 | S1 |  |  |  | 25 | 25 | 100 | 03 |
| CFNS103317C0 |  | CB-FN ; Pilecap-Pilecap concrete (Zone S1) | 50.21d | 2010-06-13 A | 2010-08-15 A | CFNS107101C0 SS+6d | 100% |  | 2010-06-17 | 2010-08-16 |  |  | CONCRETE [360 h]; CONCRETE [9 m3]; Cost | CFNS103317C0 | CB | C | FN | S1 | CT | 033 | 17 | BILL 4 | B04 | 02 | R00 | ACF02 | 033 | S1 |  |  |  | 26 | 26 | 100 | 03 |
| CFNS107103C0 |  | CB-FN ; Pilecap-Vertical waterproofing (Zone S1) | 6d | 2010-06-20 A | 2010-08-22 A | CFNS103317C0 SS+45d | 100% |  | 2010-11-01 | 2010-11-07 |  |  | THERMAL & MOISTURE [72 h]; THERMAL & MOISTURE [101 m2]; Cost | CFNS107103C0 | CB | C | FN | S1 | CT | 071 | 03 | BILL 4 | B04 | 03 | R00 | ACF02 | 071 | S1 |  |  |  | 27 | 27 | 100 |  |
| CFNS131215C0 |  | CB-FN ; Pilecap-Backfilling & compaction (Zone S1) | 18.06d | 2010-07-20 A | 2010-12-22 A | CFNS107103C0 | 100% |  | 2010-11-08 | 2010-12-02 |  |  | EXCAVATION & BACKFILLING [448 h]; EXCAVATION & BACKFILLING [295 m3]; Cost | CFNS131215C0 | CB | C | FN | S1 | CT | 312 | 15 | BILL 4 | B04 | 03 | R00 | ACF02 | 312 | S1 |  |  |  | 28 | 28 | 100 |  |
| CFNS131202C0 |  | CB-FN ; Grade beam-Excavation & Compaction (Zone S1) | 18d | 2010-08-05 A | 2010-10-30 A | CFNS131201C0, CFNSD31201C0 | 100% |  | 2010-07-04 | 2010-07-25 |  |  | Labor General [0.5 h]; Cost | CFNS131202C0 | CB | C | FN | S1 | CT | 312 | 02 | BILL 4 | B04 | 03 | R00 | ACF02 | 312 | S1 |  |  |  | 29 | 29 | 100 |  |
| CFNS103307C0 |  | CB-FN ; Grade beam-Blinding concrete (Zone S1) | 12.01d | 2010-08-20 A | 2010-10-25 A | CFNS131202C0 | 100% |  | 2010-07-26 | 2010-08-09 |  |  | ANTI-TERMITE [1632 h]; CONCRETE [7320 h]; CONCRETE [184 m3]; ANTI-TERMITE [2 m2]; Cost | CFNS103307C0 | CB | C | FN | S1 | CT | 033 | 07 | BILL 4 | B04 | 01 | R00 | ACF02 | 033 | S1 |  |  |  | 30 | 30 | 100 | 03 |
| CFNS107105C0 |  | CB-FN ; Grade beam-Horizontal waterproofing (Zone S1) | 18.14d | 2010-08-22 A | 2010-10-27 A | CFNS103307C0 | 100% |  | 2010-11-11 | 2010-12-06 |  |  | THERMAL & MOISTURE [288 h]; THERMAL & MOISTURE [381 m2]; Cost | CFNS107105C0 | CB | C | FN | S1 | CT | 071 | 05 | BILL 4 | B04 | 02 | R00 | ACF02 | 071 | S1 |  |  |  | 31 | 31 | 100 |  |
| CFNS103319C0 |  | CB-FN ; Grade beam-Grade beam concrete (Zone S1) | 40.03d | 2010-08-28 A | 2010-10-30 A | CFNS103317C0 SS, CFNS107105C0 SS+16d | 100% |  | 2010-08-28 | 2010-10-14 |  |  | CONCRETE [8080 h]; CONCRETE [203 m3]; Cost | CFNS103319C0 | CB | C | FN | S1 | CT | 033 | 19 | BILL 4 | B04 | 02 | R00 | ACF02 | 033 | S1 |  |  |  | 32 | 32 | 100 | 03 |
| CFNS107107C0 |  | CB-FN ; Grade beam-Vertical waterproofing (Zone S1) | 6.04d | 2010-09-02 A | 2010-10-31 A | CFNS103319C0 | 100% |  | 2010-12-04 | 2010-12-12 |  |  | THERMAL & MOISTURE [672 h]; THERMAL & MOISTURE [890 m2]; Cost | CFNS107107C0 | CB | C | FN | S1 | CT | 071 | 07 | BILL 4 | B04 | 03 | R00 | ACF02 | 071 | S1 |  |  |  | 33 | 33 | 100 |  |
| CFNS131204C0 |  | CB-FN ; Drainage-Excavation & Compaction (Zone S1) | 6d | 2010-09-09 A | 2011-01-26 A | CFNS103317C0 SS+45d | 100% |  | 2010-09-12 | 2010-09-18 |  |  | EXCAVATION & BACKFILLING [48 h]; EXCAVATION & BACKFILLING [32 m3]; Cost | CFNS131204C0 | CB | C | FN | S1 | CT | 312 | 04 | BILL 4 | B04 | 04 | R00 | ACF02 | 312 | S1 |  |  |  | 4 | 4 | 100 |  |
| CFNS131216C0 |  | CB-FN ; Grade beam-Backfilling & compaction (Zone S1) | 12.04d | 2010-09-12 A | 2010-12-22 A | CFNS107107C0 | 100% |  | 2010-09-12 | 2010-09-26 |  |  | EXCAVATION & BACKFILLING [448 h]; EXCAVATION & BACKFILLING [295 m3]; Cost | CFNS131216C0 | CB | C | FN | S1 | CT | 312 | 16 | BILL 4 | B04 | 03 | R00 | ACF02 | 312 | S1 |  |  |  | 34 | 34 | 100 |  |
| CFNS131221C0 |  | CB-FN ; Drainage-Pipe laying (Zone S1) | 12d | 2010-10-16 A | 2011-03-29 A | CFNS131204C0 | 100% |  | 2010-11-08 | 2010-11-24 |  |  | Labor General [0.5 h]; Cost | CFNS131221C0 | CB | C | FN | S1 | CT | 312 | 21 | BILL 4 | B04 | 04 | R00 | ACF02 | 312 | S1 |  |  |  | 35 | 35 | 100 |  |
| CFNS107109C0 |  | CB-FN ; Slab on Grade-Horizontal waterproofing (Zone S1) | 12d | 2010-12-20 A | 2011-02-15 A | CFNS103309C0 | 100% |  | 2011-01-16 | 2011-01-29 |  |  | THERMAL & MOISTURE [1912 h]; THERMAL & MOISTURE [2542 m2]; Cost | CFNS107109C0 | CB | C | FN | S1 | CT | 071 | 09 | BILL 4 | B04 | 02 | R00 | ACF02 | 071 | S1 |  |  |  | 38 | 38 | 100 |  |
| CFNS103323C0 |  | CB-FN ; Slab on Grade-SOG concrete (Zone S1) | 43d | 2010-12-24 A | 2011-02-20 A | CFNS107109C0 | 100% |  | 2011-02-02 | 2011-03-24 |  |  | ANTI-TERMITE [2256 h]; CONCRETE [1152 h]; CONCRETE [29 m3]; ANTI-TERMITE [264 m2]; Cost | CFNS103323C0 | CB | C | FN | S1 | CT | 033 | 23 | BILL 4 | B04 | 06 | R00 | ACF02 | 033 | S1 |  |  |  | 39 | 39 | 100 | 03 |
| CFNS131218C0 |  | CB-FN ; Drainage-Backfilling & compaction (Zone S1) | 6d | 2010-12-26 A | 2011-01-29 A | CFNS131221C0 | 100% |  | 2010-12-12 | 2010-12-19 |  |  | EXCAVATION & BACKFILLING [192 h]; EXCAVATION & BACKFILLING [126 m3]; Cost | CFNS131218C0 | CB | C | FN | S1 | CT | 312 | 18 | BILL 4 | B04 | 04 | R00 | ACF02 | 312 | S1 |  |  |  | 36 | 36 | 100 |  |
| CFNS103309C0 |  | CB-FN ; Slab on Grade-Blinding concrete (Zone S1) | 18.01d | 2011-01-17 A | 2011-01-22 A | CFNS131215C0, CFNS131216C0, CFNS131218C0, CFNSC31215C0 | 100% |  | 2011-01-17 | 2011-02-07 |  |  | ANTI-TERMITE [2448 h]; CONCRETE [7320 h]; CONCRETE [184 m3]; ANTI-TERMITE [15 m2]; Cost | CFNS103309C0 | CB | C | FN | S1 | CT | 033 | 09 | BILL 4 | B04 | 01 | R00 | ACF02 | 033 | S1 |  |  |  | 37 | 37 | 100 | 03 |

| ID | WBS | Activity | Duration | Start | Finish | Predecessors | Complete | Planned start | Planned finish | Resources | Change Order # | NEW ACTIVITY ID | change id | RENZ % COMPLETE | CCAD BUILDING(SET) | CCAD PHASE(SET) | CCAD FLOOR(SET) | CCAD ZONE(SET) | CCAD WORK(SET) | CCAD SECTION(SET) | CCAD SERIAL No.(SET) | CCAD CBS(SET) | CCAD BILL(SET) | CCAD HANDOVER(SET) | CCAD TAG(SET) | CCAD REV(SET) | CCADACF (SET) | CCAD SSCF | CCAD DIVISION(SET) | Claimed This Month |
| --- | --- | --- | --- | --- | --- | --- | --- | --- | --- | --- | --- | --- | --- | --- | --- | --- | --- | --- | --- | --- | --- | --- | --- | --- | --- | --- | --- | --- | --- | --- |
|  | S2 | **Zone S2** |  | 2010-05-20 | 2011-06-30 |  |  |  |  |  |  |  |  |  |  |  |  |  |  |  |  |  |  |  |  |  |  |  |  |  |
| CFNS231201C0 |  | CB-FN ; Pilecap-Excavation & Compaction (Zone S2) | 3.88d | 2010-05-20 A | 2010-08-29 A | MGNMI00101M0 FS+64d | 100% | 2010-11-01 | 2010-11-04 | EXCAVATION & BACKFILLING [16 h]; EXCAVATION & BACKFILLING [11 m3]; Cost | 40 | 40 | CFNS231201C0 | 100 | CB | C | FN | S2 | CT | 312 | 01 | BILL 4 | B04 | S1 | 03 | R00 | ACF02 | 312 |  |  |
| CFNS203305C0 |  | CB-FN ; Pilecap-Blinding concrete (Zone S2) | 12.01d | 2010-06-03 A | 2010-10-07 A | CFNS231203C0 SS+12d | 100% | 2010-06-03 | 2010-06-17 | ANTI-TERMITE [1408 h]; CONCRETE [7320 h]; CONCRETE [184 m3]; ANTI-TERMITE [9 m2]; Cost | 42 | 42 | CFNS203305C0 | 100 | CB | C | FN | S2 | CT | 033 | 05 | BILL 4 | B04 | S1 | 01 | R00 | ACF02 | 033 | 03 |  |
| CFNS203317C0 |  | CB-FN ; Pilecap-Pilecap concrete (Zone S2) | 89d | 2010-06-10 A | 2010-10-16 A | CFNS207101C0 | 100% | 2010-12-13 | 2011-03-27 | CONCRETE [552 h]; CONCRETE [14 m3]; Cost | 5 | 5 | CFNS203317C0 | 100 | CB | C | FN | S2 | CT | 033 | 17 | BILL 4 | B04 | S1 | 02 | R00 | ACF02 | 033 | 03 |  |
| CFNS207101C0 |  | CB-FN ; Pilecap-Horizontal waterproofing (Zone S2) | 12d | 2010-06-17 A | 2010-10-20 A | CFNS203305C0 SS+4d | 100% | 2010-06-17 | 2010-06-30 | THERMAL & MOISTURE [48 h]; THERMAL & MOISTURE [57 m2]; Cost | 43 | 43 | CFNS207101C0 | 100 | CB | C | FN | S2 | CT | 071 | 01 | BILL 4 | B04 | S1 | 02 | R00 | ACF02 | 071 |  |  |
| CFNS207103C0 |  | CB-FN ; Pilecap-Vertical waterproofing (Zone S2) | 6d | 2010-06-25 A | 2010-10-25 A | CFNS203317C0 SS+55d, CFNS203317C0 FF | 100% | 2010-12-08 | 2010-12-14 | THERMAL & MOISTURE [96 h]; THERMAL & MOISTURE [134 m2]; Cost | 44 | 44 | CFNS207103C0 | 100 | CB | C | FN | S2 | CT | 071 | 03 | BILL 4 | B04 | S1 | 03 | R00 | ACF02 | 071 |  |  |
| CFNS231215C0 |  | CB-FN ; Pilecap-Backfilling & compaction (Zone S2) | 6.03d | 2010-07-05 A | 2010-10-15 A | CFNS207103C0 | 100% | 2010-12-15 | 2010-12-22 | EXCAVATION & BACKFILLING [360 h]; EXCAVATION & BACKFILLING [239 m3]; Cost | 45 | 45 | CFNS231215C0 | 100 | CB | C | FN | S2 | CT | 312 | 15 | BILL 4 | B04 | S1 | 03 | R00 | ACF02 | 312 |  |  |
| CFNS231202C0 |  | CB-FN ; Grade beam-Excavation & Compaction (Zone S2) | 6d | 2010-08-10 A | 2010-09-02 A | CFNS231201C0 SS | 100% | 2010-08-10 | 2010-08-16 | Labor General [0.5 h]; Cost | 46 | 46 | CFNS231202C0 | 100 | CB | C | FN | S2 | CT | 312 | 02 | BILL 4 | B04 | S1 | 03 | R00 | ACF02 | 312 |  |  |
| CFNS203307C0 |  | CB-FN ; Grade beam-Blinding concrete (Zone S2) | 6d | 2010-08-21 A | 2010-10-25 A | CFNS231202C0 | 100% | 2010-08-21 | 2010-08-28 | ANTI-TERMITE [2200 h]; CONCRETE [7320 h]; CONCRETE [184 m3]; ANTI-TERMITE [6 m2]; Cost | 47 | 47 | CFNS203307C0 | 100 | CB | C | FN | S2 | CT | 033 | 07 | BILL 4 | B04 | S1 | 01 | R00 | ACF02 | 033 | 03 |  |
| CFNS203319C0 |  | CB-FN ; Grade beam-Grade beam concrete (Zone S2) | 60.38d | 2010-08-28 A | 2011-02-25 A | CFNS203317C0 SS+61d, CFNS207105C0 | 100% | 2011-02-24 | 2011-05-05 | CONCRETE [480 h]; CONCRETE [12 m3]; Cost | 49 | 49 | CFNS203319C0 | 100 | CB | C | FN | S2 | CT | 033 | 19 | BILL 4 | B04 | S1 | 02 | R00 | ACF02 | 033 | 03 |  |
| CFNS231203C0 |  | CB-FN ; Pilecap-Pilecap treatment (Zone S2) | 18d | 2010-08-30 A | 2010-10-10 A | CFNS231201C0 | 100% | 2010-11-06 | 2010-11-29 | ANTI-TERMITE [808 h]; ANTI-TERMITE [595 m2]; Cost | 41 | 41 | CFNS231203C0 | 100 | CB | C | FN | S2 | CT | 312 | 03 | BILL 4 | B04 | S1 | 02 | R00 | ACF02 | 312 |  |  |
| CFNS207105C0 |  | CB-FN ; Grade beam-Horizontal waterproofing (Zone S2) | 6.08d | 2010-09-05 A | 2011-05-24 A | CFNS203307C0 | 100% | 2010-11-08 | 2010-11-18 | THERMAL & MOISTURE [384 h]; THERMAL & MOISTURE [505 m2]; Cost | 48 | 48 | CFNS207105C0 | 100 | CB | C | FN | S2 | CT | 071 | 05 | BILL 4 | B04 | S1 | 02 | R00 | ACF02 | 071 |  |  |
| CFNS207107C0 |  | CB-FN ; Grade beam-Vertical waterproofing (Zone S2) | 6.03d | 2010-09-05 A | 2010-10-31 A | CFNS203319C0 | 100% | 2010-12-08 | 2010-12-15 | THERMAL & MOISTURE [888 h]; THERMAL & MOISTURE [1179 m2]; Cost | 50 | 50 | CFNS207107C0 | 100 | CB | C | FN | S2 | CT | 071 | 07 | BILL 4 | B04 | S1 | 03 | R00 | ACF02 | 071 |  |  |
| CFNS231216C0 |  | CB-FN ; Grade beam-Backfilling & compaction (Zone S2) | 6.03d | 2010-09-15 A | 2011-02-28 A | CFNS207107C0 | 100% | 2010-09-15 | 2010-09-22 | EXCAVATION & BACKFILLING [600 h]; EXCAVATION & BACKFILLING [398 m3]; Cost | 51 | 51 | CFNS231216C0 | 100 | CB | C | FN | S2 | CT | 312 | 16 | BILL 4 | B04 | S1 | 03 | R00 | ACF02 | 312 |  |  |
| CFNS203309C0 |  | CB-FN ; MEP trench-Blinding concrete (Zone S2) | 18.02d | 2010-10-20 A | 2010-10-27 A | CFNS231204C0 | 100% | 2011-02-24 | 2011-03-17 | ANTI-TERMITE [832 h]; CONCRETE [10728 h]; CONCRETE [270 m3]; ANTI-TERMITE [53 m2]; Cost | 6 | 6 | CFNS203309C0 | 100 | CB | C | FN | S2 | CT | 033 | 09 | BILL 4 | B04 | S1 | 01 | R00 | ACF02 | 033 | 03 |  |
| CFNS231204C0 |  | CB-FN ; MEP trench-Excavation & Compaction (Zone S2) | 6.1d | 2010-10-20 A | 2010-10-25 A | CFNS203317C0 SS+55d | 100% | 2010-12-08 | 2010-12-15 | EXCAVATION & BACKFILLING [96 h]; EXCAVATION & BACKFILLING [63 m3]; Cost | 52 | 52 | CFNS231204C0 | 100 | CB | C | FN | S2 | CT | 312 | 04 | BILL 4 | B04 | S1 | 04 | R00 | ACF02 | 312 |  |  |
| CFNS231208C0 |  | CB-FN ; Drainage-Excavation & Compaction (Zone S2) | 6.29d | 2010-10-20 A | 2011-03-03 A | CFNS203317C0 SS+55d | 100% | 2010-12-08 | 2010-12-15 | EXCAVATION & BACKFILLING [136 h]; EXCAVATION & BACKFILLING [84 m3]; Cost | 65 | 65 | CFNS231208C0 | 100 | CB | C | FN | S2 | CT | 312 | 08 | BILL 4 | B04 | S1 | 04 | R00 | ACF02 | 312 |  |  |
| CFNS207109C0 |  | CB-FN ; MEP trench-Horizontal waterproofing (Zone S2) | 6.16d | 2010-10-21 A | 2010-10-27 A | CFNS203309C0 SS+10d, CFNS203309C0 FF, CFNS203311C0 FF | 100% | 2010-12-22 | 2010-12-29 | THERMAL & MOISTURE [232 h]; THERMAL & MOISTURE [296 m2]; Cost | 53 | 53 | CFNS207109C0 | 100 | CB | C | FN | S2 | CT | 071 | 09 | BILL 4 | B04 | S1 | 02 | R00 | ACF02 | 071 |  |  |
| CFNS203325C0 |  | CB-FN ; MEP trench-Trench Slab concrete (Zone S2) | 18.01d | 2010-10-22 A | 2010-10-28 A | CFNS207109C0 | 100% | 2010-12-29 | 2011-01-20 | CONCRETE [7320 h]; CONCRETE [184 m3]; Cost | 54 | 54 | CFNS203325C0 | 100 | CB | C | FN | S2 | CT | 033 | 25 | BILL 4 | B04 | S1 | 09 | R00 | ACF02 | 033 | 03 |  |
| CFNS207111C0 |  | CB-FN ; MEP trench-Vertical waterproofing (Zone S2) | 17.88d | 2010-10-22 A | 2010-10-31 A | CFNS203315C0 SS+36d, CFNS203315C0 FF | 100% | 2011-03-05 | 2011-03-24 | THERMAL & MOISTURE [520 h]; THERMAL & MOISTURE [690 m2]; Cost | 56 | 56 | CFNS207111C0 | 100 | CB | C | FN | S2 | CT | 071 | 11 | BILL 4 | B04 | S1 | 03 | R00 | ACF02 | 071 |  |  |
| CFNS231218C0 |  | CB-FN ; MEP trench-Backfilling & compaction (Zone S2) | 5.88d | 2010-10-22 A | 2010-11-30 A | CFNS207111C0 SS+6d, CFNS207111C0 FF | 100% | 2011-03-19 | 2011-03-24 | EXCAVATION & BACKFILLING [120 h]; EXCAVATION & BACKFILLING [80 m3]; Cost | 59 | 59 | CFNS231218C0 | 100 | CB | C | FN | S2 | CT | 312 | 18 | BILL 4 | B04 | S1 | 04 | R00 | ACF02 | 312 |  |  |
| CFNS203315C0 |  | CB-FN ; MEP trench-Trench wall concrete (Zone S2) | 49d | 2010-10-24 A | 2010-10-30 A | CFNS203325C0 | 100% | 2011-01-20 | 2011-03-17 | CONCRETE [7320 h]; CONCRETE [184 m3]; Cost | 55 | 55 | CFNS203315C0 | 100 | CB | C | FN | S2 | CT | 033 | 15 | BILL 4 | B04 | S1 | 09 | R00 | ACF02 | 033 | 03 |  |
| CFNS231224C0 |  | CB-FN ; Drainage-Pipe laying (Zone S2) | 12d | 2010-10-25 A | 2011-04-06 A | CFNS231208C0 | 100% | 2011-01-05 | 2011-01-19 | Labor General [0.5 h]; Cost | 66 | 66 | CFNS231224C0 | 100 | CB | C | FN | S2 | CT | 312 | 24 | BILL 4 | B04 | S1 | 04 | R00 | ACF02 | 312 |  |  |
| CFNS203313C0 |  | CB-FN ; Slab on Grade-Blinding concrete (Zone S2) | 18.04d | 2010-11-08 A | 2011-04-14 A | CFNS231215C0, CFNS231216C0, CFNS231218C0, CFNS231220C0, CFNS231222C0, CFNSD31215C0 | 100% | 2011-01-16 | 2011-02-06 | ANTI-TERMITE [1416 h]; CONCRETE [7320 h]; CONCRETE [184 m3]; ANTI-TERMITE [14 m2]; Cost | 68 | 68 | CFNS203313C0 | 100 | CB | C | FN | S2 | CT | 033 | 13 | BILL 4 | B04 | S1 | 01 | R00 | ACF02 | 033 | 03 |  |
| CFNS231206C0 |  | CB-FN ; Duct bank-Excavation & Compaction (Zone S2) | 6d | 2010-12-05 A | 2011-01-29 A | CFNS203317C0 SS+55d | 100% | 2010-12-01 | 2010-12-08 | EXCAVATION & BACKFILLING [40 h]; EXCAVATION & BACKFILLING [21 m3]; Cost | 60 | 60 | CFNS231206C0 | 100 | CB | C | FN | S2 | CT | 312 | 06 | BILL 4 | B04 | S1 | 04 | R00 | ACF02 | 312 |  |  |
| CFNS203311C0 |  | CB-FN ; Duct bank-Blinding concrete (Zone S2) | 12d | 2010-12-07 A | 2011-01-18 A | CFNS231206C0 | 100% | 2010-12-09 | 2010-12-22 | ANTI-TERMITE [1216 h]; CONCRETE [7320 h]; CONCRETE [184 m3]; ANTI-TERMITE [2 m2]; Cost | 61 | 61 | CFNS203311C0 | 100 | CB | C | FN | S2 | CT | 033 | 11 | BILL 4 | B04 | S1 | 01 | R00 | ACF02 | 033 | 03 |  |
| CFNS231221C0 |  | CB-FN ; Duct bank-Pipe laying (Zone S2) | 12d | 2011-01-06 A | 2011-02-03 A | CFNS231231C0 | 100% | 2011-01-19 | 2011-02-01 | Labor General [0.5 h]; Cost | 62 | 62 | CFNS231221C0 | 100 | CB | C | FN | S2 | CT | 312 | 21 | BILL 4 | B04 | S1 | 04 | R00 | ACF02 | 312 |  |  |
| CFNS231231C0 |  | CB-FN ; Duct bank-Rebar laying (Zone S2) | 12d | 2011-01-06 A | 2011-02-03 A | CFNS203311C0 SS+6d | 100% | 2011-01-06 | 2011-01-19 | CONCRETE [48 h]; Cost | 7 | 7 | CFNS231231C0 | 100 | CB | C | FN | S2 | CT | 033 | 31 | BILL 4 | B04 | S1 | 02 | R00 | ACF02 | 033 |  |  |
| CFNS203333C0 |  | CB-FN ; Duct bank-Duct bank concrete (Zone S2) | 18d | 2011-01-09 A | 2011-02-03 A | CFNS203317C0 FF, CFNS231221C0 | 100% | 2011-02-02 | 2011-02-22 | CONCRETE [6600 h]; CONCRETE [166 m3]; Cost | 63 | 63 | CFNS203333C0 | 100 | CB | C | FN | S2 | CT | 033 | 33 | BILL 4 | B04 | S1 | 09 | R00 | ACF02 | 033 | 03 |  |
| CFNS231220C0 |  | CB-FN ; Duct bank-Backfilling & compaction (Zone S2) | 6d | 2011-01-11 A | 2011-02-08 A | CFNS203333C0 | 100% | 2011-02-24 | 2011-03-02 | EXCAVATION & BACKFILLING [120 h]; EXCAVATION & BACKFILLING [80 m3]; Cost | 64 | 64 | CFNS231220C0 | 100 | CB | C | FN | S2 | CT | 312 | 20 | BILL 4 | B04 | S1 | 03 | R00 | ACF02 | 312 |  |  |
| CFNS203323C0 |  | CB-FN ; Slab on Grade-SOG concrete (Zone S2) | 42d | 2011-02-05 A | 2011-06-30 A | CFNS207113C0 | 100% | 2011-03-16 | 2011-05-04 | ANTI-TERMITE [1104 h]; CONCRETE [1552 h]; CONCRETE [39 m3]; ANTI-TERMITE [244 m2]; Cost | 70 | 70 | CFNS203323C0 | 95 | CB | C | FN | S2 | CT | 033 | 23 | BILL 4 | B04 | S1 | 06 | R00 | ACF02 | 033 | 03 | 13656.16 |
| CFNS207113C0 |  | CB-FN ; Slab on Grade-Horizontal waterproofing (Zone S2) | 12d | 2011-02-15 A | 2011-05-17 A | CFNS203313C0 | 100% | 2011-03-02 | 2011-03-16 | THERMAL & MOISTURE [2536 h]; THERMAL & MOISTURE [3369 m2]; Cost | 69 | 69 | CFNS207113C0 | 100 | CB | C | FN | S2 | CT | 071 | 13 | BILL 4 | B04 | S1 | 02 | R00 | ACF02 | 071 |  |  |
| CFNS231222C0 |  | CB-FN ; Drainage-Backfilling & compaction (Zone S2) | 6d | 2011-03-01 A | 2011-04-05 A | CFNS231224C0 | 100% | 2011-03-05 | 2011-03-12 | EXCAVATION & BACKFILLING [64 h]; EXCAVATION & BACKFILLING [42 m3]; Cost | 67 | 67 | CFNS231222C0 | 100 | CB | C | FN | S2 | CT | 312 | 22 | BILL 4 | B04 | S1 | 04 | R00 | ACF02 | 312 |  |  |

| ID | WBS | Activity | Type | Duration | Start | Finish | Predecessors | Complete | Remaining | Planned start | Planned finish | Total float | Free float | Resources | Change Order # | NEW ACTIVITY ID | change id | RENZ % COMPLETE | CCAD BUILDING(SET) | CCAD PHASE(SET) | CCAD FLOOR(SET) | CCAD ZONE(SET) | CCAD WORK(SET) | CCAD SECTION(SET) | CCAD SERIAL No.(SET) | CCAD CBS(SET) | CCAD BILL(SET) | CCAD HANDOVER(SET) | CCAD TAG(SET) | CCAD REV(SET) | CCADACF (SET) | CCAD SSCF | CCAD DIVISION(SET) | Actual Cost | CCAD CSA | Claimed This Month | U% |
| --- | --- | --- | --- | --- | --- | --- | --- | --- | --- | --- | --- | --- | --- | --- | --- | --- | --- | --- | --- | --- | --- | --- | --- | --- | --- | --- | --- | --- | --- | --- | --- | --- | --- | --- | --- | --- | --- |
|  | SC | **Zone SC** |  |  | 2010-06-20 | 2010-10-26 |  |  |  |  |  |  |  |  |  |  |  |  |  |  |  |  |  |  |  |  |  |  |  |  |  |  |  |  |  |  |  |
| CFNSC31201C0 |  | CB-FN ; Lift Core-Excavation & Compaction (Zone SC) |  | 6d | 2010-06-20 A | 2010-06-27 A | MGNMI00101M0 FS+74d | 100% |  | 2010-11-01 | 2010-11-07 |  |  | EXCAVATION & BACKFILLING [688 h]; EXCAVATION & BACKFILLING [459 m3]; Cost | 1 | 1 | CFNSC31201C0 | 100 | CB | C | FN | SC | CT | 312 | 01 | BILL 4 | B04 | S1 | 03 | R00 | ACF02 | 312 |  |  |  |  |  |
| CFNSC31203C0 |  | CB-FN ; Lift Core-Pilecap treatment (Zone SC) |  | 9d | 2010-06-27 A | 2010-06-28 A | CFNSC31201C0 | 100% |  | 2010-11-08 | 2010-11-21 |  |  | ANTI-TERMITE [976 h]; ANTI-TERMITE [33 m2]; Cost | 8 | 8 | CFNSC31203C0 | 100 | CB | C | FN | SC | CT | 312 | 03 | BILL 4 | B04 | S1 | 03 | R00 | ACF02 | 312 |  |  |  |  |  |
| CFNSC03305C0 |  | CB-FN ; Lift Core-Blinding concrete (Zone SC) |  | 6.03d | 2010-06-28 A | 2010-06-30 A | CFNSC31203C0 | 100% |  | 2010-11-22 | 2010-11-29 |  |  | ANTI-TERMITE [856 h]; CONCRETE [7320 h]; CONCRETE [184 m3]; ANTI-TERMITE [1 m2]; Cost | 9 | 9 | CFNSC03305C0 | 100 | CB | C | FN | SC | CT | 033 | 05 | BILL 4 | B04 | S1 | 04 | R00 | ACF03 | 033 | 03 |  |  |  |  |
| CFNSC07107C0 |  | CB-FN ; Lift Core-Horizontal waterproofing (Zone SC) |  | 6.04d | 2010-07-01 A | 2010-07-03 A | CFNSC03305C0 | 100% |  | 2010-11-29 | 2010-12-06 |  |  | THERMAL & MOISTURE [432 h]; THERMAL & MOISTURE [572 m2]; Cost | 10 | 10 | CFNSC07107C0 | 100 | CB | C | FN | SC | CT | 071 | 07 | BILL 4 | B04 | S1 | 02 | R00 | ACF02 | 071 |  |  |  |  |  |
| CFNSC03309C0 |  | CB-FN ; Lift Core-Raft concrete (Zone SC) |  | 16d | 2010-07-04 A | 2010-07-08 A | CFNSC07107C0 | 100% |  | 2010-12-06 | 2010-12-26 |  |  | CONCRETE [19800 h]; CONCRETE [498 m3]; Cost | 11 | 11 | CFNSC03309C0 | 100 | CB | C | FN | SC | CT | 033 | 09 | BILL 4 | B04 | S1 | 04 | R00 | ACF03 | 033 | 03 |  |  |  |  |
| CFNSC03311C0 |  | CB-FN ; Lift Core-Wall concrete (Zone SC) |  | 10.35d | 2010-07-09 A | 2010-07-25 A | CFNSC03309C0 | 100% |  | 2010-12-26 | 2011-01-08 |  |  | CONCRETE [136 h]; Cost | 12 | 12 | CFNSC03311C0 | 100 | CB | C | FN | SC | CT | 033 | 11 | BILL 4 | B04 | S1 | 04 | R00 | ACF03 | 033 | 03 |  |  |  |  |
| CFNSC07113C0 |  | CB-FN ; Lift Core-Vertical waterproofing (Zone SC) |  | 4d | 2010-07-26 A | 2010-07-29 A | CFNSC03311C0 | 100% |  | 2011-01-08 | 2011-01-11 |  |  | THERMAL & MOISTURE [1000 h]; THERMAL & MOISTURE [1335 m2]; Cost | 13 | 13 | CFNSC07113C0 | 100 | CB | C | FN | SC | CT | 071 | 13 | BILL 4 | B04 | S1 | 03 | R00 | ACF02 | 071 |  |  |  |  |  |
| CFNSC31215C0 |  | CB-FN ; Lift Core-Backfilling & compaction (Zone SC) |  | 4.36d | 2010-07-30 A | 2010-10-26 A | CFNSC07113C0 | 100% |  | 2011-01-12 | 2011-01-17 |  |  | EXCAVATION & BACKFILLING [72 h]; EXCAVATION & BACKFILLING [44 m3]; Cost | 14 | 14 | CFNSC31215C0 | 100 | CB | C | FN | SC | CT | 312 | 15 | BILL 4 | B04 | S1 | 03 | R00 | ACF02 | 312 |  |  |  |  |  |
|  | SD | **Zone SD** |  |  | 2010-06-20 | 2010-12-02 |  |  |  |  |  |  |  |  |  |  |  |  |  |  |  |  |  |  |  |  |  |  |  |  |  |  |  |  |  |  |  |
| CFNSD31201C0 |  | CB-FN ; Lift Core-Excavation & Compaction (Zone SD) |  | 3d | 2010-06-20 A | 2010-06-27 A | CFNSC31201C0, MGNMI00101M0 FS+90d | 100% |  | 2010-11-08 | 2010-11-10 |  |  | EXCAVATION & BACKFILLING [688 h]; EXCAVATION & BACKFILLING [459 m3]; Cost | 16 | 16 | CFNSD31201C0 | 100 | CB | C | FN | SD | CT | 312 | 01 | BILL 4 | B04 | S1 | 03 | R00 | ACF02 | 312 |  |  |  |  |  |
| CFNSD31203C0 |  | CB-FN ; Lift Core-Pilecap treatment (Zone SD) |  | 6d | 2010-06-21 A | 2010-06-23 A | CFNSD31201C0 | 100% |  | 2010-11-11 | 2010-11-21 |  |  | ANTI-TERMITE [1144 h]; ANTI-TERMITE [33 m2]; Cost | 2 | 2 | CFNSD31203C0 | 100 | CB | C | FN | SD | CT | 312 | 03 | BILL 4 | B04 | S1 | 03 | R00 | ACF02 | 312 |  |  |  |  |  |
| CFNSD03305C0 |  | CB-FN ; Lift Core-Blinding concrete (Zone SD) |  | 3.02d | 2010-06-28 A | 2010-07-03 A | CFNSD31203C0 | 100% |  | 2010-11-22 | 2010-11-25 |  |  | ANTI-TERMITE [736 h]; CONCRETE [7320 h]; CONCRETE [184 m3]; ANTI-TERMITE [1 m2]; Cost | 17 | 17 | CFNSD03305C0 | 100 | CB | C | FN | SD | CT | 033 | 05 | BILL 4 | B04 | S1 | 04 | R00 | ACF03 | 033 | 03 |  |  |  |  |
| CFNSD07107C0 |  | CB-FN ; Lift Core-Horizontal waterproofing (Zone SD) |  | 6.04d | 2010-07-04 A | 2010-12-02 A | CFNSD03305C0 | 100% |  | 2010-11-25 | 2010-12-02 |  |  | THERMAL & MOISTURE [432 h]; THERMAL & MOISTURE [572 m2]; Cost | 18 | 18 | CFNSD07107C0 | 100 | CB | C | FN | SD | CT | 071 | 07 | BILL 4 | B04 | S1 | 02 | R00 | ACF02 | 071 |  |  |  |  |  |
| CFNSD03309C0 |  | CB-FN ; Lift Core-Raft concrete (Zone SD) |  | 13d | 2010-07-06 A | 2010-07-11 A | CFNSD07107C0 | 100% |  | 2010-12-02 | 2010-12-19 |  |  | CONCRETE [19800 h]; CONCRETE [498 m3]; Cost | 19 | 19 | CFNSD03309C0 | 100 | CB | C | FN | SD | CT | 033 | 09 | BILL 4 | B04 | S1 | 04 | R00 | ACF03 | 033 | 03 |  |  |  |  |
| CFNSD03311C0 |  | CB-FN ; Lift Core-Wall concrete (Zone SD) |  | 12.42d | 2010-07-12 A | 2010-07-29 A | CFNSD03309C0 | 100% |  | 2010-12-19 | 2011-01-03 |  |  | CONCRETE [136 h]; Cost | 20 | 20 | CFNSD03311C0 | 100 | CB | C | FN | SD | CT | 033 | 11 | BILL 4 | B04 | S1 | 04 | R00 | ACF03 | 033 | 03 |  |  |  |  |
| CFNSD07113C0 |  | CB-FN ; Lift Core-Vertical waterproofing (Zone SD) |  | 3.88d | 2010-07-30 A | 2010-08-03 A | CFNSD03311C0 | 100% |  | 2011-01-03 | 2011-01-06 |  |  | THERMAL & MOISTURE [1000 h]; THERMAL & MOISTURE [1335 m2]; Cost | 21 | 21 | CFNSD07113C0 | 100 | CB | C | FN | SD | CT | 071 | 13 | BILL 4 | B04 | S1 | 03 | R00 | ACF02 | 071 |  |  |  |  |  |
| CFNSD31215C0 |  | CB-FN ; Lift Core-Backfilling & compaction (Zone SD) |  | 4.36d | 2010-08-20 A | 2010-10-23 A | CFNSD07113C0 | 100% |  | 2011-01-08 | 2011-01-12 |  |  | EXCAVATION & BACKFILLING [72 h]; EXCAVATION & BACKFILLING [44 m3]; Cost | 22 | 22 | CFNSD31215C0 | 100 | CB | C | FN | SD | CT | 312 | 15 | BILL 4 | B04 | S1 | 03 | R00 | ACF02 | 312 |  |  |  |  |  |
|  | P3 | **Level Podium 3** |  |  | 2010-07-30 | 2012-10-14 |  |  |  |  |  |  |  |  |  |  |  |  |  |  |  |  |  |  |  |  |  |  |  |  |  |  |  |  |  |  |  |
|  | 01 | **Structure & Envelopment** |  |  | 2010-07-30 | 2012-04-17 |  |  |  |  |  |  |  |  |  |  |  |  |  |  |  |  |  |  |  |  |  |  |  |  |  |  |  |  |  |  |  |
| CP3SD03311C0 |  | CB-P3 ; Overall-Corewall concrete (Zone SD) |  | 8d | 2010-07-30 A | 2010-08-03 A | CFNSD03311C0 | 100% |  | 2011-01-03 | 2011-01-11 |  |  | CONCRETE [4968 h]; CONCRETE [125 m3]; Cost | 157 | 249 | CP3SD03311C0 | 100 | CB | C | P3 | SD | CT | 033 | 11 | BILL 4 | B04 | S1 | 04 | R00 | ACF03 | 033 | 03 |  |  |  |  |
| CP3S105101C0 |  | CB-P3 ; Erection of Structural Steel (Zone S1) |  | 18.51d | 2010-08-09 A | 2010-11-05 A | CFNS103317C0 SS+39d, OGNMU00005S0 | 100% |  | 2010-08-03 | 2010-08-24 |  |  | STRUCTURAL STEEL [7921 h]; STRUCTURAL STEEL [304 T(Fe)]; Cost | 154 | 83 | CP3S105101C0 | 100 | CB | C | P3 | S1 | ST | 051 | 01 | BILL 4 | B04 | S1 | 01 | R00 | ACF03 | 051 |  | 1155356 | ST |  |  |
| CP3SC03311C0 |  | CB-P3 ; Overall-Corewall concrete (Zone SC) |  | 19d | 2010-08-09 A | 2010-08-12 A | CFNSC03311C0 | 100% |  | 2011-01-08 | 2011-01-29 |  |  | CONCRETE [4968 h]; CONCRETE [125 m3]; Cost | 157 | 86 | CP3SC03311C0 | 100 | CB | C | P3 | SC | CT | 033 | 11 | BILL 4 | B04 | S1 | 04 | R00 | ACF03 | 033 | 03 |  |  |  |  |
| CP3S205101C0 |  | CB-P3 ; Erection of Structural Steel (Zone S2) |  | 13.94d | 2010-08-22 A | 2010-11-17 A | CFNS203317C0 SS+35d, CP3S105101C0 SS+10d, CP3SD03311C0 | 100% |  | 2010-08-15 | 2010-08-30 |  |  | STRUCTURAL STEEL [2125 h]; STRUCTURAL STEEL [82 T(Fe)]; Cost | 154 | 247 | CP3S205101C0 | 100 | CB | C | P3 | S2 | ST | 051 | 01 | BILL 4 | B04 | S1 | 01 | R00 | ACF03 | 051 |  | 1531519 | ST |  |  |
| CP3S107807C0 |  | CB-P3 ; Cementitious Fire Proofing (Zone S1) |  | 10d | 2011-04-03 A | 2011-04-26 A | CFNS103323C0, CP2S103335C0 | 100% |  | 2011-03-02 | 2011-03-13 |  |  | CEMENTITIOUS FIREPROOFING [1415 h]; CEMENTITIOUS FIREPROOFING [2829 m2]; Cost | 156 | 85 | CP3S107807C0 | 100 | CB | C | P3 | S1 | ST | 078 | 07 | BILL 4 | B04 | S1 | 04 | R00 | ACF03 | 078 |  |  | ST |  |  |
| CP3S207808C0 |  | CB-P3 ; Cementitious Fire Proofing (Zone S2) |  | 12d | 2011-04-07 A | 2011-07-19 A | CFNS203323C0, CP2S203335C0 | 100% |  | 2011-05-07 | 2011-05-21 |  |  | CEMENTITIOUS FIREPROOFING [1875 h]; CEMENTITIOUS FIREPROOFING [3750 m2]; Cost | 156 | 1410 | CP3S207808C0 | 97 | CB | C | P3 | S2 | ST | 078 | 08 | BILL 4 | B04 | S1 | 04 | R00 | ACF03 | 078 |  |  | ST |  |  |
| CP3CO04001C0 |  | CB-P3 ; Blockworks (Common Zone) |  | 18d | 2011-04-17 A | 2011-06-23 A | CP3S107807C0, CP3S207808C0, OGNMU00001S0 | 100% |  | 2011-05-21 | 2011-06-11 |  |  | BLOCKWORKS [977 h]; BLOCKWORKS [279 m2]; Cost | 73 | 73 | CP3CO04001C0 | 80 | CB | C | P3 | CO | BL | 040 | 01 | BILL 4 | B04 | S1 | BL | R00 | ACF06 | 040 | 04 |  |  | 11648 |  |
| CP3CO04003C0 |  | CB-P3 ; Plaster to Blockwork (Common Zone) |  | 24d | 2011-05-15 A | 2011-07-31 A | CP3CO04001C0 | 100% |  | 2011-07-23 | 2011-08-20 |  |  | BLOCKWORKS [25 h]; Cost |  |  | CP3CO04003C0 | 80 | CB | C | P3 | CO | BL | 040 | 03 | BILL 4 | B04 | S1 | BL | R00 | ACF06 | 040 |  |  |  |  |  |
| CP3S205101C10 |  | CB-P3 ; Secondary Steel for Mech Trenches (Zone S2) |  | 2d | 2011-07-10 A | 2011-09-29 A | CP3S207808C0 | 100% |  | 2011-08-04 | 2011-08-07 |  |  | STRUCTURAL STEEL [2 T(Fe)]; Cost | 154 | 247 | CP3S205101C0 |  | CB | C | P3 | S2 | SW | 055 | 01 | BILL 4 | B04 | S1 | 01 | R00 | ACF03 | 055 |  | 1531519 |  |  | 90 |
| CP3GN00101C0 |  | CB-P3 ; Temporary Enclosure | level of effort | 40d | 2011-08-10 A | 2012-01-30 | CP3TR09203C0 SS, CP3M109203C0 SS, CP3TO09203C0 SS, CP3PA09203C0 SS |  | 99d | 2011-10-05 | 2011-11-23 | 179.4d | 0d | Labor General [0.6 h]; Cost |  |  |  |  | CB | C | P3 | GEN | FA | GEN |  |  | B04 |  | TE | R00 | ACF05 | 010 |  |  | FA |  |  |
| CP3CO04401C0 |  | CB-P3 ; S2 - Bracket (Common Zone - to be ST11) |  | 23d | 2012-01-04 | 2012-01-30 | CP1S103335C0, CP1S203335C0, CP3S107807C0, CP3S207808C0, OGNMU00039S0, CP3GN00101C0 FF, PGLS403391C0 FS+72d, PAF1405509C0 |  |  |  |  | 179.4d | 0d | FACADE NATURAL STONE PANEL [0.6 h]; Cost | 71 | 71 | CP3CO04401C0 |  | CB | C | P3 | CO | FA | 044 | 01 | BILL 4 | B04 | S1 | FS2 | R00 | ACF05 | 044 |  |  | FA |  |  |
| CP3CO04409C0 |  | CB-P3 ; S2 Stone facade (Common Zone to be - ST11) |  | 66d | 2012-01-31 | 2012-04-17 | CP3CO04401C0, CR5S103335C0, CR5S203335C0 SS, CP2CO04401C0 SS, CP2CO04403C0 SS, CP3CO04401C0 SS |  |  |  |  | 190d | 10.6d | FACADE NATURAL STONE PANEL [398 h]; FACADE NATURAL STONE PANEL [146 m2]; FACADE TOTAL QUANTITY m2 [146 m2]; Cost | 72 | 72 | CP3CO04409C0 |  | CB | C | P3 | CO | FA | 044 | 09 | BILL 4 | B04 | S1 | FS2 | R00 | ACF05 | 044 |  |  | FA |  |  |

| ID | WBS | Activity | Duration | Start | Finish | Predecessors | Complete | Remaining | Planned start | Planned finish | Total float | Free float | Resources | Cost | Actual cost | change id | RENZ % COMPLETE | July2011 Target% Complete | Claimed This Month | P_811 | P_711 | CCAD BUILDING(SET) | CCAD PHASE(SET) | CCAD FLOOR(SET) | CCAD ZONE(SET) | CCAD WORK(SET) | CCAD SECTION(SET) | CCAD SERIAL No.(SET) | CCAD SUB ZONE MEP(SET) | CCAD CBS(SET) | CCAD BILL(SET) | CCAD HANDOVER(SET) | CCAD TAG(SET) | CCAD REV(SET) | CCADACF (SET) | CCAD CSA | CCAD SSCF | Act Selector % | user_number8 | user_integer1 | user_integer2 | user_number7 | Change Order # | NEW ACTIVITY ID | PERCENT COMPLETE | CCAD MEQ | CCAD DIVISION(SET) |
| --- | --- | --- | --- | --- | --- | --- | --- | --- | --- | --- | --- | --- | --- | --- | --- | --- | --- | --- | --- | --- | --- | --- | --- | --- | --- | --- | --- | --- | --- | --- | --- | --- | --- | --- | --- | --- | --- | --- | --- | --- | --- | --- | --- | --- | --- | --- | --- |
|  | 04 | **Public Area ( Elev.Lobby & Corridors )** |  | 2010-10-16 | 2012-10-14 |  |  |  |  |  |  |  |  |  |  |  |  |  |  |  |  |  |  |  |  |  |  |  |  |  |  |  |  |  |  |  |  |  |  |  |  |  |  |  |  |  |  |
| CP3PA22019C0 |  | CB-P3 ; 1st Fix, Inst of Drainage pipe (ceiling) (Public Area) | 200d | 2010-10-16 A | 2011-10-11 | CP3PA23001C0 SS, CP3PA27010C0 SS+3d, CP3S205101C10 FF | 95% | 10d | 2011-06-20 | 2012-02-20 | 79d | 0d | PLUMBING [1714.8 h]; Cost [92715.9 AED] | 92,715.95 | 88,080.15 | CP3PA22019C0 | 70 | 98 | 30080.68 | 95 | 90 | CB | C | P3 | PA | ME | 220 | 19 | 1S | BILL 4 | B04 | S1 | 1F | R00 | ACF04 | MEP | 220 | M1F |  |  |  |  |  |  |  |  |  |
| CP3PA23001C0 |  | CB-P3 ; 1st Fix, Inst. of Supports for MEP (Public Area) | 200d | 2011-05-03 A | 2011-10-11 | CP2S103335C0, CP2S203335C0, CP3S107807C0, CP3S207808C0 | 95% | 10d | 2011-06-11 | 2012-02-11 | 52d | 0d | MECHANICAL [1568.4 h]; Cost [57766.2 AED] | 57,766.25 | 54,877.94 | CP3PA23001C0 | 20 | 98 | 76935.75 |  |  | CB | C | P3 | PA | ME | 230 | 01 | 1S | BILL 4 | B04 | S1 | 1F | R00 | ACF04 | MEP | 230 | M1F |  |  |  |  |  |  |  |  |  |
| CP3PA09201C0 |  | CB-P3 ; Metal Studs (Public Area) | 60d | 2011-05-15 A | 2011-10-30 | CFNS103323C0, CFNS203323C0, CP3PA23001C0 SS+12d | 57% | 25.8d | 2011-07-07 | 2011-09-18 | 52d | 0d | PARTITIONS [115 h]; PARTITIONS - Metal Studs [15 m]; Cost |  |  | CP3PA09201C0 | 5 |  | 1744.84 | 40 | 20 | CB | C | P3 | PA | PT | 092 | 01 |  | BILL 4 | B04 | S1 | 1F | R00 | ACF06 | GP | 092 | PMS | 0 | 0 | 0 | 0 | 313 | 944 |  |  |  |
| CP3PA21111C0 |  | CB-P3 ; 1st Fix, Inst of Sprinkler main pipe (Public Area) | 200d | 2011-05-15 A | 2011-10-23 | CP3PA22005C0 SS+4d, CP3PA23001C0 SS | 90% | 20d | 2011-08-15 | 2012-04-15 | 106.1d | 0d | MECHANICAL [686.4 h]; Cost [37438.4 AED] | 37,438.4 | 33,694.56 | CP3PA21111C0 | 35 | 75 | 13034.6 | 95 | 90 | CB | C | P3 | PA | ME | 211 | 11 | 1S | BILL 4 | B04 | S1 | 1F | R00 | ACF04 | MEP | 211 | M1F |  |  |  |  |  |  | 90 |  |  |
| CP3PA22005C0 |  | CB-P3 ; 1st Fix, Inst of Water supply pipe (ceiling) (Public Area) | 54d | 2011-05-15 A | 2011-11-20 | CP3PA22019C0 SS+3d, CP3PA23001C0 SS | 25% | 40.5d | 2011-08-10 | 2011-10-15 | 79d | 0d | PLUMBING [1682.4 h]; Cost [90924.8 AED] | 90,924.75 | 22,731.19 | CP3PA22005C0 | 20 | 90 | 73800.2 |  |  | CB | C | P3 | PA | ME | 220 | 05 | 1S | BILL 4 | B04 | S1 | 1F | R00 | ACF04 | MEP | 220 | M1F |  |  |  |  |  |  |  |  |  |
| CP3PA23017C0 |  | CB-P3 ; 1st Fix, Inst of CHW pipe (Public Area) | 70d | 2011-05-15 A | 2011-11-13 | CP3PA21111C0 SS+4d, CP3PA23001C0 SS | 50% | 35d | 2011-08-20 | 2011-11-15 | 106.1d | 0d | MECHANICAL [2395.2 h]; Cost [130782 AED] | 130,781.76 | 65,390.88 | CP3PA23017C0 | 25 | 85 | 91014.75 |  |  | CB | C | P3 | PA | ME | 230 | 17 | 1S | BILL 4 | B04 | S1 | 1F | R00 | ACF04 | MEP | 230 | M1F |  |  |  |  |  |  |  |  |  |
| CP3PA27010C0 |  | CB-P3 ; 1st Fix, Inst of Trunking for ELV system (Public Area) | 70d | 2011-05-15 A | 2011-11-13 | CP3PA23001C0 SS, CP3PA26013C0 SS+3d, CP3S107807C0 | 50% | 35d | 2011-08-07 | 2011-10-30 | 79d | 0d | ELECTRICAL [540 h]; Cost [24667.9 AED] | 24,667.88 | 12,333.94 | CP3PA27010C0 | 10 | 85 | 25523.29 |  |  | CB | C | P3 | PA | ME | 270 | 10 | 1S | BILL 4 | B04 | S1 | 1F | R00 | ACF04 | MEP | 270 | M1F |  |  |  |  |  |  |  |  |  |
| CP3PA26013C0 |  | CB-P3 ; 1st Fix, Inst of Cable Tray (Public Area) | 70d | 2011-05-17 A | 2011-11-13 | CP3PA23001C0 SS, CP3PA26001C0 SS+3d, CP3S107807C0 | 50% | 35d | 2011-08-03 | 2011-10-26 | 79d | 0d | ELECTRICAL [948 h]; Cost [17044 AED] | 17,043.96 | 8,521.98 | CP3PA26013C0 | 10 | 85 | 13891.14 |  |  | CB | C | P3 | PA | ME | 260 | 13 | 1S | BILL 4 | B04 | S1 | 1F | R00 | ACF04 | MEP | 260 | M1F |  |  |  |  |  |  |  |  |  |
| CP3PA21117C0 |  | CB-P3 ; 1st Fix, Inst of Sprinkler branch pipe (Public Area) | 200d | 2011-06-08 A | 2011-11-27 | CP3PA09201C0, CP3PA21111C0 | 90% | 20d | 2011-09-12 | 2012-05-10 | 133.7d | 101.2d | MECHANICAL [1009.2 h]; Cost [55153.8 AED] | 55,153.76 | 49,638.38 | CP3PA21117C0 |  | 85 | 31967.72 | 95 | 90 | CB | C | P3 | PA | ME | 211 | 17 | 1S | BILL 4 | B04 | S1 | 1F | R00 | ACF04 | MEP | 211 | M1F |  |  |  |  |  |  | 90 |  |  |
| CP3PA22011C0 |  | CB-P3 ; 2nd Fix, Drainage/Water pipe (wall) (Public Area) | 66d | 2011-06-14 A | 2012-01-09 | CP3PA09201C0, CAFCI09201R02 FS+58d | 50% | 33d | 2011-07-07 | 2011-09-25 | 32.5d | 0d | PLUMBING [1714.8 h]; Cost [92715.9 AED] | 92,715.95 | 46,357.98 | CP3PA22011C0 |  | 20 | 16114.63 | 50 | 15 | CB | C | P3 | PA | ME | 220 | 11 | 2n | BILL 4 | B04 | S1 | 2F | R00 | ACF07 | MEP | 220 |  |  |  |  |  |  |  |  |  |  |
| CP3PA26001C0 |  | CB-P3 ; 1st Fix, Inst of Trunking/Conduiting (Public Area) | 70d | 2011-06-19 A | 2011-11-13 | CP3PA23001C0 SS, CP3S107807C0 | 50% | 35d | 2011-08-02 | 2011-10-25 | 79d | 0d | ELECTRICAL [1138.8 h]; Cost [29580.4 AED] | 29,580.43 | 14,790.21 | CP3PA26001C0 |  | 85 | 64444.5 |  |  | CB | C | P3 | PA | ME | 260 | 01 | 1S | BILL 4 | B04 | S1 | 1F | R00 | ACF04 | MEP | 260 | M1F |  |  |  |  |  |  |  |  |  |
| CP3PA26009C0 |  | CB-P3 ; 2nd Fix, Inst of Wall conduites (Public Area) | 42d | 2011-06-19 A | 2011-12-17 | CP3PA09201C0 | 15% | 35.7d | 2011-07-07 | 2011-08-25 | 52d | 19.5d | ELECTRICAL [430.8 h]; Cost [29580.4 AED] | 29,580.43 | 4,437.06 | CP3PA26009C0 |  | 20 | 5144.35 |  |  | CB | C | P3 | PA | ME | 260 | 09 | 2n | BILL 4 | B04 | S1 | 2F | R00 | ACF07 | MEP | 260 |  |  |  |  |  |  |  |  |  |  |
| CP3PA27001C0 |  | CB-P3 ; 1st Fix, Wiring/ Cabling work (Public Area) | 48d | 2011-06-20 A | 2011-12-31 | CP3PA26001C0, CP3PA26013C0, CP3PA27010C0, CP3PA26001C0 SS | 20% | 38.4d | 2011-10-03 | 2011-12-04 | 106.1d | 73.6d | ELECTRICAL [216 h]; Cost [15494.5 AED] | 15,494.51 | 3,098.9 | CP3PA27001C0 |  | 20 | 3598.69 |  |  | CB | C | P3 | PA | ME | 270 | 01 | 1S | BILL 4 | B04 | S1 | 1F | R00 | ACF04 | MEP | 270 | M1F |  |  |  |  |  |  |  |  |  |
| CP3PA26007C0 |  | CB-P3 ; 2nd Fix, Cable Pulling (Public Area) | 42d | 2011-06-21 A | 2011-11-14 | CP3PA09201C0 SS+6d | 15% | 35.7d | 2011-07-07 | 2011-08-25 | 77.8d | 45.3d | ELECTRICAL [6616.8 h]; Cost [324578 AED] | 324,577.9 | 48,686.69 | CP3PA26007C0 |  | 20 | 56476.1 |  |  | CB | C | P3 | PA | ME | 260 | 07 | 2n | BILL 4 | B04 | S1 | 2F | R00 | ACF07 | MEP | 260 |  |  |  |  |  |  |  |  |  |  |
| CP3PA09203C0 |  | CB-P3 ; Partitions early wall & 1st face (Public Area) | 60d | 2011-08-10 A | 2011-11-03 | CP3PA09201C0 SS+12d | 51% | 29.4d | 2011-10-05 | 2011-12-19 | 90.1d | 57.6d | PARTITIONS [15 m]; PARTITIONS [81 h]; Cost |  |  | CP3PA09203C0 |  |  |  | 10 | 0 | CB | C | P3 | PA | PT | 092 | 03 |  | BILL 4 | B04 | S1 | 2F | R00 | ACF06 | GP | 092 | P1F | 0 | 0 | 0 | 0 | 314 | 945 |  |  |  |
| CP3PA23008C0 |  | CB-P3 ; 1st Fix, Inst of VCD's/FD's (Public Area) | 54d | 2011-08-10 A | 2011-12-26 | CP3PA23023C0 | 30% | 37.8d | 2011-12-04 | 2012-02-07 | 110.2d | 77.7d | MECHANICAL [2648.4 h]; Cost [143058 AED] | 143,057.96 | 42,917.39 | CP3PA23008C0 |  |  |  | 30 | 0 | CB | C | P3 | PA | ME | 230 | 08 | 1S | BILL 4 | B04 | S1 | 1F | R00 | ACF04 | MEP | 230 | M1F |  |  |  |  |  |  |  |  |  |
| CP3PA23009C0 |  | CB-P3 ; 2nd Fix, Inst of VAV'S CHW connection (Public Area) | 48d | 2011-08-10 A | 2011-12-31 | CP3PA23017C0 | 20% | 38.4d | 2011-10-17 | 2011-12-18 | 106.1d | 0d | MECHANICAL [1419.6 h]; Cost [76659.7 AED] | 76,659.7 | 15,331.94 | CP3PA23009C0 |  |  |  | 20 | 0 | CB | C | P3 | PA | ME | 230 | 09 | 2n | BILL 4 | B04 | S1 | 2F | R00 | ACF07 | MEP | 230 |  |  |  |  |  |  |  |  |  |  |
| CP3PA23011C0 |  | CB-P3 ; 2nd Fix, Inst of Equipment (FCU,FAN) (Public Area) | 48d | 2011-08-10 A | 2012-04-14 | CP3PA09205C0 | 20% | 38.4d | 2012-01-30 | 2012-03-27 | 42.1d | 9.6d | MECHANICAL [988.8 h]; Cost [225035 AED] | 225,034.53 | 45,006.91 | CP3PA23011C0 |  |  |  | 20 | 0 | CB | C | P3 | PA | ME | 230 | 11 | 2n | BILL 4 | B04 | S1 | 2F | R00 | ACF04 | MEP | 230 |  |  |  |  |  |  |  |  | H |  |
| CP3PA23015C0 |  | CB-P3 ; 2nd Fix, Insulation of CHW pipe & Duct (Public Area) | 54d | 2011-08-10 A | 2011-12-11 | CP3PA23009C0 SS, CP3PA23017C0 SS, CP3PA23023C0 | 60% | 21.6d | 2011-12-04 | 2012-02-07 | 122.9d | 90.4d | MECHANICAL [6742.8 h]; Cost [363863 AED] | 363,863.22 | 218,317.93 | CP3PA23015C0 |  |  |  | 30 | 0 | CB | C | P3 | PA | ME | 230 | 15 | 2n | BILL 4 | B04 | S1 | 2F | R00 | ACF07 | MEP | 230 |  | 0 | 0 | 0 | 0 |  |  |  |  |  |
| CP3PA23023C0 |  | CB-P3 ; 1st Fix, Inst of Main Ducting (Public Area) | 63d | 2011-09-05 A | 2011-11-09 | CP3PA23001C0 SS+4d, CP3PA23017C0 SS+3d | 50% | 31.5d | 2011-09-01 | 2011-11-16 | 110.2d | 0d | MECHANICAL [16992 h]; Cost [927678 AED] | 927,677.51 | 463,838.75 | CP3PA23023C0 |  | 45 |  |  |  | CB | C | P3 | PA | ME | 230 | 23 | 1S | BILL 4 | B04 | S1 | 1F | R00 | ACF04 | MEP | 230 | M1F |  |  |  |  |  |  |  |  |  |
| CP3PA08103C0 |  | CB-P3 ; Door Frames (Public Area) | 42d | 2011-10-30 | 2011-12-24 | CP3PA09201C0, GNHE08101C0 |  |  |  |  | 87.7d | 55.2d | ASSORTED DOORS [74 h]; Cost |  |  | CP3PA08103C0 |  |  |  |  |  | CB | C | P3 | PA | DO | 081 | 03 |  | BILL 4 | B04 | S1 | DF | R00 | ACF06 |  | 081 |  |  |  |  |  | 316 | 947 |  |  | 08 |
| CP3PA01005C0 |  | CB-P3 ; 2nd, Wall Inspection by Consultant (Public Area) | 6d | 2012-01-10 | 2012-01-16 | CP3PA22011C0, CP3PA26007C0, CP3PA26009C0 |  |  |  |  | 32.5d | 0d | Labor General [0.6 h]; Cost |  |  | CP3PA01005C0 |  | 35 |  |  |  | CB | C | P3 | PA | ME | 010 | 05 | 2n | BILL 4 | B04 | S1 | WI | R00 | ACF07 | MEP | 010 |  |  |  |  |  |  |  |  |  |  |
| CP3PA09205C0 |  | CB-P3 ; Partitions Closing (Public Area) | 36d | 2012-01-17 | 2012-02-28 | CP3PA01005C0, CP3PA09203C0, CP3PA22005C0, CP3PA22019C0, CAFOA09204C1 FF, CP3PA08103C0 FF, CAFT1105509C0 FF |  |  |  |  | 32.5d | 0d | PARTITIONS [15 m]; PARTITIONS [109 h]; Cost |  |  | CP3PA09205C0 |  |  |  |  |  | CB | C | P3 | PA | PT | 092 | 05 |  | BILL 4 | B04 | S1 | FF | R00 | ACF06 | GP | 092 | P2F |  |  |  |  | 315 | 946 |  |  |  |
| CP3PA08301C0 |  | CB-P3 ; Overhead coiling doors (Public Area) | 36d | 2012-01-31 | 2012-03-14 | CP3M108105C0 |  |  |  |  | 142.82d | 0d | ASSORTED DOORS [490 h]; ASSORTED DOORS [49 no]; Cost |  |  | CP3ME08301C0 |  |  |  |  |  | CB | C | P3 | PA | DO | 083 | 01 |  | BILL 4 | B04 | S1 | 05 | R00 | ACF06 |  | 083 |  |  |  |  |  |  |  |  |  |  |
| CP3PA09901C0 |  | CB-P3 ; Wall Prime & 1st coat (Public Area) | 24d | 2012-02-29 | 2012-03-27 | CP3CO04003C0 SS+24d, CP3PA09205C0 |  |  |  |  | 32.5d | 0d | WALL PAINT [231 h]; WALL PAINT [288 m2]; Cost |  |  | CP3PA09901C0 |  |  |  |  |  | CB | C | P3 | PA | PA | 099 | 01 |  | BILL 4 | B04 | S1 | 01 | R00 | ACF06 |  | 099 |  |  |  |  |  | 328 | 956 |  |  |  |
| CP3PA26005C0 |  | CB-P3 ; 2nd Fix, Wiring for Power/Lighting/Emergency (Public Area) | 42d | 2012-02-29 | 2012-04-17 | CP3PA09205C0 |  |  |  |  | 80.5d | 6d | ELECTRICAL [216 h]; Cost |  |  | CP3PA26005C0 |  |  |  |  |  | CB | C | P3 | PA | ME | 260 | 05 | 2n | BILL 4 | B04 | S1 | 2F | R00 | ACF07 | MEP | 260 |  |  |  |  |  |  |  |  |  |  |
| CP3PA26011C0 |  | CB-P3 ; 2nd Fix, Inst of Equipment (DB) (Public Area) | 42d | 2012-02-29 | 2012-04-17 | CP3PA09205C0 |  |  |  |  | 38.5d | 6d | ELECTRICAL [1266 h]; Cost |  |  | CP3PA26011C0 |  |  |  |  |  | CB | C | P3 | PA | ME | 260 | 11 | 2n | BILL 4 | B04 | S1 | 2F | R00 | ACF04 | MEP | 260 |  |  |  |  |  |  |  |  | E |  |
| CP3PA26053C0 |  | CB-P3 ; 2nd Fix, Wiring / Cabling (Public Area) | 30d | 2012-02-29 | 2012-04-03 | CP3PA09205C0 |  |  |  |  | 134.5d | 102d | ELECTRICAL [216 h]; Cost |  |  | CP3PA26053C0 |  |  |  |  |  | CB | C | P3 | PA | ME | 260 | 53 | 2n | BILL 4 | B04 | S1 | 2F | R00 | ACF07 | MEP | 260 |  |  |  |  |  | 389 | 977 |  |  |  |
| CP3PA27020C0 |  | CB-P3 ; 2nd Fix, Inst of ELV Equipment (Panels) (Public Area) | 42d | 2012-02-29 | 2012-04-17 | CP3PA09205C0 |  |  |  |  | 122.5d | 60d | ELECTRICAL [384 h]; Cost |  |  | CP3PA27020C0 |  |  |  |  |  | CB | C | P3 | PA | ME | 270 | 20 | 2n | BILL 4 | B04 | S1 | 2F | R00 | ACF04 | MEP | 270 |  |  |  |  |  |  |  |  | E |  |
| CP3PA05501C0 |  | CB-P3 ; Handrails & balustrade (Public Area) | 36d | 2012-03-28 | 2012-05-08 | CP3PA09901C0, CAFT1105509C0, CAFT1205509C0 |  |  |  |  | 145d | 112.5d | SECONDARY STEEL [270 h]; Cost |  |  | CP3PA05501C0 |  |  |  |  |  | CB | C | P3 | PA | SW | 055 | 01 |  | BILL 4 | B04 | S1 | 01 | R00 | ACF03 |  | a |  |  |  |  |  |  |  |  |  |  |
| CP3PA09501C0 |  | CB-P3 ; Ceiling Grid and ServiceTile (Public Area) | 24d | 2012-03-28 | 2012-04-24 | CP3PA09205C0 SS+15d, CP3PA21117C0, CP3PA23008C0, CP3PA23009C0, CP3PA23015C0, CP3PA27001C0, CP3S205101C10, CP3PA26011C0 FF, CP3PA23011C0 FF, CP3PA09901C0 |  |  |  |  | 32.5d | 0d | CEILING GRID FOR GYPSUM [969.13 h]; CEILING GRID FOR GYPSUM [83.11 m2]; Cost |  |  | CP3PA09501C0 |  |  |  |  |  | CB | C | P3 | PA | CE | 095 | 01 |  | BILL 4 | B04 | S1 | 01 | R00 | ACF06 |  | 095 |  |  |  |  |  | 323 | 952 |  |  |  |
| CP3PA09601C0 |  | CB-P3 ; Flooring (Rubber & etc) (Public Area) | 30d | 2012-04-25 | 2012-05-29 | CP3PA09901C0, CP3PA09501C0 |  |  |  |  | 62.5d | 0d | RUBBER FLOOR [120 h]; RUBBER FLOOR [286 m2]; Cost |  |  | CP3PA09601C0 |  |  |  |  |  | CB | C | P3 | PA | FF | 096 | 01 |  | BILL 4 | B04 | S1 | 03 | R00 | ACF06 |  | RF |  |  |  |  |  | 326 | 955 |  |  |  |
| CP3PA09903C0 |  | CB-P3 ; Wall Final Paint (Public Area) | 24d | 2012-04-25 | 2012-05-22 | CP3PA09901C0, CP3PA09905C0 |  |  |  |  | 133d | 54d | WALL PAINT [125 h]; WALL PAINT [155 m2]; Cost |  |  | CP3PA09903C0 |  |  |  |  |  | CB | C | P3 | PA | PA | 099 | 03 |  | BILL 4 | B04 | S1 | 02 | R00 | ACF06 |  | 099 |  |  |  |  |  | 329 | 957 |  |  |  |
| CP3PA09905C0 |  | CB-P3 ; Ceiling Prime & 1st coat (Public Area) | 0d | 2012-04-25 | 2012-04-25 | CP3PA09501C0 |  |  |  |  | 133d | 0d | Cost |  |  | CP3PA09905C0 |  |  |  |  |  | CB | C | P3 | PA | PA | 099 | 05 |  | BILL 4 | B04 | S1 | 01 | R00 | ACF06 |  | 099 |  |  |  |  |  | 330 | 958 |  |  |  |
| CP3PA21115C0 |  | CB-P3 ; 2nd Fix, Inst of Sprinkler droppers (Public Area) | 42d | 2012-04-25 | 2012-06-12 | CP3PA09501C0 |  |  |  |  | 68.5d | 0d | MECHANICAL [1404 h]; Cost |  |  | CP3PA21115C0 |  |  |  |  |  | CB | C | P3 | PA | ME | 211 | 15 | 2n | BILL 4 | B04 | S1 | 2F | R00 | ACF07 | MEP | 211 |  |  |  |  |  |  |  |  |  |  |
| CP3PA23021C0 |  | CB-P3 ; 2nd Fix, Inst of Flexible Duct & Plenum boxes (Public Area) | 42d | 2012-04-25 | 2012-06-12 | CP3PA09205C0, CP3PA09501C0 |  |  |  |  | 32.5d | 0d | MECHANICAL [903.6 h]; Cost |  |  | CP3PA23021C0 |  |  |  |  |  | CB | C | P3 | PA | ME | 230 | 21 | 2n | BILL 4 | B04 | S1 | 2F | R00 | ACF07 | MEP | 230 |  |  |  |  |  |  |  |  |  |  |
| CP3PA26015C0 |  | CB-P3 ; Final Fix, Termination & Gladding of Cables (Public Area) | 36d | 2012-04-25 | 2012-06-05 | CP3PA26005C0, CP3PA09501C0 |  |  |  |  | 74.5d | 42d | ELECTRICAL [826.8 h]; Cost |  |  | CP3PA26015C0 |  |  |  |  |  | CB | C | P3 | PA | ME | 260 | 15 | FF | BILL 4 | B04 | S1 | FF | R00 | ACF07 | MEP | 260 |  |  |  |  |  |  |  |  |  |  |
| CP3PA26017C0 |  | CB-P3 ; Final Fix, Inst of Ceiling rose (Public Area) | 36d | 2012-04-25 | 2012-06-05 | CP3PA09501C0 |  |  |  |  | 68.5d | 0d | ELECTRICAL [123.6 h]; Cost |  |  | CP3PA26017C0 |  |  |  |  |  | CB | C | P3 | PA | ME | 260 | 17 | FF | BILL 4 | B04 | S1 | FF | R00 | ACF07 | MEP | 260 |  |  |  |  |  |  |  |  |  |  |
| CP3PA27002C0 |  | CB-P3 ; 2nd Fix, Wiring Droppers (Public Area) | 42d | 2012-04-25 | 2012-06-12 | CP3PA09501C0 |  |  |  |  | 68.5d | 0d | ELECTRICAL [216 h]; Cost |  |  | CP3PA27002C0 |  |  |  |  |  | CB | C | P3 | PA | ME | 270 | 02 | 2n | BILL 4 | B04 | S1 | 2F | R00 | ACF07 | MEP | 270 |  |  |  |  |  |  |  |  |  |  |
| CP3PA21113C0 |  | CB-P3 ; Final Fix, Inst of Sprinklers head/ Extinguisher (Public Area) | 36d | 2012-05-02 | 2012-06-12 | CP3PA09501C0, CP3PA21115C0 SS+6d |  |  |  |  | 68.5d | 36d | MECHANICAL [278.4 h]; Cost |  |  | CP3PA21113C0 |  |  |  |  |  | CB | C | P3 | PA | ME | 211 | 13 | FF | BILL 4 | B04 | S1 | FF | R00 | ACF07 | MEP | 211 |  |  |  |  |  |  |  |  |  |  |
| CP3PA26003C0 |  | CB-P3 ; Final Fix, Inst of Light fittings (Public Area) | 36d | 2012-05-02 | 2012-06-12 | CP3PA09501C0, CP3PA26017C0 SS+6d |  |  |  |  | 68.5d | 36d | ELECTRICAL [7983.6 h]; Cost |  |  | CP3PA26003C0 |  |  |  |  |  | CB | C | P3 | PA | ME | 260 | 03 | FF | BILL 4 | B04 | S1 | FF | R00 | ACF07 | MEP | 260 |  |  |  |  |  |  |  |  |  |  |
| CP3PA27030C0 |  | CB-P3 ; Final Fix, Inst of ELV device (Detector/Speaker) (Public Area) | 36d | 2012-05-02 | 2012-06-12 | CP3PA09501C0, CP3PA27002C0 SS+6d |  |  |  |  | 68.5d | 36d | ELECTRICAL [2054.4 h]; Cost |  |  | CP3PA27030C0 |  |  |  |  |  | CB | C | P3 | PA | ME | 270 | 30 | FF | BILL 4 | B04 | S1 | FF | R00 | ACF07 | MEP | 270 |  |  |  |  |  |  |  |  |  |  |
| CP3PA08107C0 |  | CB-P3 ; Doors (Public Area) | 36d | 2012-05-30 | 2012-07-11 | CP3PA08103C0, CP3PA09901C0, CP3PA09601C0 |  |  |  |  | 73d | 0d | ASSORTED DOORS [250 h]; ASSORTED DOORS [25 no]; Cost |  |  | CP3PA08107C0 |  |  |  |  |  | CB | C | P3 | PA | DO | 081 | 07 |  | BILL 4 | B04 | S1 | DR | R00 | ACF06 |  | 081 |  |  |  |  |  | 317 | 948 |  |  | 08 |
| CP3PA09701C0 |  | CB-P3 ; Wall finishes (ST, WD, WC) (Public Area) | 24d | 2012-05-30 | 2012-06-27 | CP3PA27020C0 FF, CP3PA09601C0 |  |  |  |  | 62.5d | 0d | ASSORTED WALL FINISH [105 h]; ASSORTED WALL FINISH [120 m2]; Cost |  |  | CP3PA09701C0 |  |  |  |  |  | CB | C | P3 | PA | WF | 097 | 01 |  | BILL 4 | B04 | S1 | 01 | R00 | ACF06 |  | 097 |  |  |  |  |  | 105 | 1002 |  |  |  |
| CP3PA23019C0 |  | CB-P3 ; Final Fix, Inst of Grilles & Diffusers (Public Area) | 36d | 2012-06-13 | 2012-07-25 | CP3PA09501C0, CP3PA23021C0 |  |  |  |  | 32.5d | 0d | MECHANICAL [1970.4 h]; Cost |  |  | CP3PA23019C0 |  |  |  |  |  | CB | C | P3 | PA | ME | 230 | 19 | FF | BILL 4 | B04 | S1 | FF | R00 | ACF07 | MEP | 230 |  |  |  |  |  |  |  |  |  |  |
| CP3PA11001C0 |  | CB-P3 ; Wall Protection (WP, CG, WG, FCG) (Public Area) | 24d | 2012-06-28 | 2012-07-25 | CP3PA09701C0, CP3PA09903C0 SS |  |  |  |  | 79d | 46.5d | FF&E [2 h]; Cost |  |  | CP3PA11001C0 |  |  |  |  |  | CB | C | P3 | PA | WF | 110 | 01 |  | BILL 4 | B04 | S1 | 03 | R00 | ACF08 |  | b |  |  |  |  |  | 326 | 1001 |  |  |  |
| CP3PA11009C0 |  | CB-P3 ; Signage (Public Area) | 14d | 2012-06-28 | 2012-07-14 | CP3PA09701C0 |  |  |  |  | 89d | 56.5d | SIGNAGES [88 h]; SIGNAGES [88.32 no]; Cost |  |  | CP3PA11009C0 |  |  |  |  |  | CB | C | P3 | PA | SA | 110 | 09 |  | BILL 4 | B04 | S1 | 09 | R00 | ACF08 |  | c |  |  |  |  |  | 322 | 951 |  |  | 08 |
| CP3PA08709C0 |  | CB-P3 ; Ironmongery (Public Area) | 18d | 2012-07-12 | 2012-08-01 | CP3PA08107C0 |  |  |  |  | 73d | 40.5d | IRONMONGERY [90 h]; IRONMONGERY [9 no]; Cost |  |  | CP3PA08709C0 |  |  |  |  |  | CB | C | P3 | PA | DO | 087 | 09 |  | BILL 4 | B04 | S1 | IM | R00 | ACF06 |  | 087 |  |  |  |  |  | 322 | 951 |  |  | 08 |
| CP3PA01006C0 |  | CB-P3 ; 2nd, Ceiling Inspection by Consultants (Public Area) | 6d | 2012-07-26 | 2012-08-01 | CP3PA21115C0, CP3PA23009C0, CP3PA23011C0, CP3PA23015C0, CP3PA27002C0, CP3PA09501C0, CP3PA21113C0, CP3PA23019C0, CP3PA26003C0, CP3PA26015C0, CP3PA26017C0, CP3PA27030C0 |  |  |  |  | 32.5d | 0d | Labor General [0.6 h]; Cost |  |  | CP3PA01006C0 |  |  |  |  |  | CB | C | P3 | PA | ME | 010 | 06 | 2n | BILL 4 | B04 | S1 | CI | R00 | ACF07 | MEP | 010 |  |  |  |  |  |  |  |  |  |  |
| CP3PA09503C0 |  | CB-P3 ; Ceiling closure - ACT/Gypsum (Public Area) | 18d | 2012-08-02 | 2012-08-25 | CAFOA09503C1 FF, CP3PA01006C0, CP3PA21115C0, CP3PA23021C0, CP3PA26005C0, CP3PA27002C0, CP3PA09701C0, CP3PA26053C0 |  |  |  |  | 32.5d | 0d | ASSORTED CEILING FINISH [185.73 h]; CEILING GYPSUM [27.27 h]; ASSORTED CEILING FINISH [302 m2]; CEILING GYPSUM [76 m2]; Cost |  |  | CP3PA09503C0 |  |  |  |  |  | CB | C | P3 | PA | CE | 095 | 03 |  | BILL 4 | B04 | S1 | 02 | R00 | ACF06 |  | 095 |  |  |  |  |  | 324 | 953 |  |  |  |
| CP3PA09907C0 |  | CB-P3 ; Ceiling Final paint (Public Area) | 0d | 2012-08-26 | 2012-08-26 | CP3PA09601C0, CP3PA09905C0, CP3PA09503C0 |  |  |  |  | 55d | 22.5d | Cost |  |  | CP3PA09907C0 |  |  |  |  |  | CB | C | P3 | PA | PA | 099 | 07 |  | BILL 4 | B04 | S1 | 02 | R00 | ACF06 |  | 099 |  |  |  |  |  | 331 | 959 |  |  |  |
| CP3PA26019C0 |  | CB-P3 ; Final Fix, Inst of Switch/Sockets (Public Area) | 10.5d | 2012-08-26 | 2012-09-06 | CP3PA09901C0, CP3PA09501C0, CP3PA09503C0 |  |  |  |  | 32.5d | 0d | ELECTRICAL [427.2 h]; Cost |  |  | CP3PA26019C0 |  |  |  |  |  | CB | C | P3 | PA | ME | 260 | 19 | FF | BILL 4 | B04 | S1 | FF | R00 | ACF07 | MEP | 260 |  |  |  |  |  |  |  |  |  |  |

| ID | WBS | Activity | Duration | Start | Finish | Predecessors | Complete | Remaining | Planned start | Planned finish | Total float | Free float | Resources | Cost | Actual cost | change id | CCAD BUILDING(SET) | CCAD PHASE(SET) | CCAD FLOOR(SET) | CCAD ZONE(SET) | CCAD WORK(SET) | CCAD SECTION(SET) | CCAD SERIAL No.(SET) | CCAD CBS(SET) | CCAD BILL(SET) | CCAD HANDOVER(SET) | CCAD TAG(SET) | CCAD REV(SET) | CCADACF (SET) | CCAD SSCF | user_number8 | user_integer1 | user_integer2 | user_number7 | Change Order # | NEW ACTIVITY ID | RENZ % COMPLETE | Claimed This Month | P_811 | P_711 | CCAD CSA | Act Selector % | July2011 Target% Complete | CCAD SUB ZONE MEP(SET) | CCAD MEQ | CCAD DIVISION(SET) | IDDD |
| --- | --- | --- | --- | --- | --- | --- | --- | --- | --- | --- | --- | --- | --- | --- | --- | --- | --- | --- | --- | --- | --- | --- | --- | --- | --- | --- | --- | --- | --- | --- | --- | --- | --- | --- | --- | --- | --- | --- | --- | --- | --- | --- | --- | --- | --- | --- | --- |
|  | 10 | **Precommissioning Tesing & snagging (Public Area)** |  | 2012-09-06 | 2012-10-14 |  |  |  |  |  |  |  |  |  |  |  |  |  |  |  |  |  |  |  |  |  |  |  |  |  |  |  |  |  |  |  |  |  |  |  |  |  |  |  |  |  |  |
| CP3TS01804C0 |  | CB-P3 ; MEP de-snag, FIREM sign-off | 12d | 2012-09-06 | 2012-09-20 | CP3PA21113C0, CP3PA27030C0, CP3PA26003C0, CP3PA26019C0 |  |  |  |  | 32.5d | 0d | TESTING & COMMISSIONING [765 h]; Cost |  |  | CP3TS01801C0 | CB | C | P3 | TS | SC | 018 | 01 | BILL 4 | B04 | S1 | 01 | R00 | ACF07 | 018 |  |  |  |  |  |  |  |  |  |  |  |  |  |  |  |  |  |
| CP3TS01807C0 |  | CB-P3 ; Touch-up & Clean / JV inspection /CIR /De-snag | 14.75d | 2012-09-20 | 2012-10-08 | CP3PA08301C0, CP3PA08709C0, CP3PA09601C0, CP3PA09701C0, CP3PA09903C0, CP3PA09907C0, CP3PA11001C0, CP3PA11009C0, CP3TS01804C0, CP3PA05501C0, CP3PA09503C0, CP3PA26019C0 |  |  |  |  | 32.5d | 0d | TESTING & COMMISSIONING [128 h]; Cost |  |  | CP3TS01802C0 | CB | C | P3 | TS | SC | 018 | 02 | BILL 4 | B04 | S1 | 02 | R00 | ACF07 | 018 |  |  |  |  |  |  |  |  |  |  |  |  |  |  |  |  |  |
| CP3TS01810C0 |  | CB-P3 ; Consultant's final de-snag inspection | 5.25d | 2012-10-08 | 2012-10-14 | CP3TS01807C0, CP3TS01811C0, CP3TS01811C0 FF |  |  |  |  | 32.5d | 0d | Labor General [1 h]; Cost |  |  | CP3TS01803C0 | CB | C | P3 | TS | SC | 018 | 03 | BILL 4 | B04 | S1 | 03 | R00 | ACF07 | 018 |  |  |  |  |  |  |  |  |  |  |  |  |  |  |  |  |  |
|  | 06 | **TR Room** |  | 2011-05-15 | 2012-08-27 |  |  |  |  |  |  |  |  |  |  |  |  |  |  |  |  |  |  |  |  |  |  |  |  |  |  |  |  |  |  |  |  |  |  |  |  |  |  |  |  |  |  |
| CP3TR09201C0 |  | CB-P3 ; Metal Studs (TR RM) | 12d | 2011-05-15 A | 2011-11-05 | CP3CO04003C0, CP3PA09201C0, A10290 FS+58d | 57% | 5.16d | 2011-08-20 | 2011-09-05 | 56.4d | 0d | PARTITIONS [115 h]; PARTITIONS - Metal Studs [15 m]; Cost |  |  | CP3TR09201C0 | CB | C | P3 | TR | PT | 092 | 01 | BILL 4 | B04 | S1 | 1F | R00 | ACF06 | 092 | 0 | 0 | 0 | 0 | 313 | 885 | 5 | 2035.65 | 40 | 20 | GP | PMS |  |  |  |  |  |
| CP3TR26026C0 |  | CB-P3 ; 2nd Fix, Conduit (TR RM) | 36d | 2011-06-02 A | 2011-12-08 | CP3TR09201C0 SS+6d | 20% | 28.8d | 2011-07-21 | 2011-09-04 | 56.4d | 0d | ELECTRICAL [430.8 h]; Cost [29580.4 AED] | 29,580.43 | 5,916.09 | CP3TR26026C0 | CB | C | P3 | TR | ME | 260 | 26 | BILL 4 | B04 | S1 | 2F | R00 | ACF07 | 260 |  |  |  |  |  |  |  | 6859.13 |  |  | MEP |  | 20 | 2n |  |  |  |
| CP3TR09203C0 |  | CB-P3 ; Partitions 1st face (TR RM) | 48d | 2011-08-10 A | 2011-12-01 | CP3TR09201C0 SS+12d | 51% | 23.52d | 2011-10-16 | 2011-12-17 | 73.68d | 17.28d | PARTITIONS [15 m]; PARTITIONS [97 h]; Cost |  |  | CP3TR09203C0 | CB | C | P3 | TR | PT | 092 | 03 | BILL 4 | B04 | S1 | 2F | R00 | ACF06 | 092 | 0 | 0 | 0 | 0 | 314 | 886 |  |  | 10 | 0 | GP | P1F |  |  |  |  |  |
| CP3TR23009C0 |  | CB-P3 ; 2nd Fix, Inst of VAV'S CHW connection (TR RM) | 36d | 2011-08-10 A | 2011-12-14 | CP3TR09201C0 | 20% | 28.8d | 2011-12-27 | 2012-02-08 | 93.24d | 0d | MECHANICAL [1419.6 h]; Cost [76659.7 AED] | 76,659.7 | 15,331.94 | CP3TR23009C0 | CB | C | P3 | TR | ME | 230 | 09 | BILL 4 | B04 | S1 | 2F | R00 | ACF07 | 230 |  |  |  |  |  |  |  |  | 20 | 0 | MEP |  |  | 2n |  |  |  |
| CP3TR23011C0 |  | CB-P3 ; 2nd Fix, Inst of VCD's/FD's (TR RM) | 36d | 2011-08-10 A | 2011-12-11 | CP3TR09201C0 | 30% | 25.2d | 2011-12-27 | 2012-02-08 | 96.84d | 0d | MECHANICAL [2648.4 h]; Cost [143058 AED] | 143,057.96 | 42,917.39 | CP3TR23011C0 | CB | C | P3 | TR | ME | 230 | 11 | BILL 4 | B04 | S1 | 2F | R00 | ACF07 | 230 |  |  |  |  |  |  |  |  | 30 | 0 | MEP |  |  | 2n |  |  |  |
| CP3TR23013C0 |  | CB-P3 ; 2nd Fix, Insulation of CHW pipe & Duct (TR RM) | 36d | 2011-08-10 A | 2011-11-30 | CP3TR23009C0 SS, CP3TR23011C0 SS | 50% | 18d | 2012-01-18 | 2012-02-29 | 104.04d | 47.64d | MECHANICAL [6742.8 h]; Cost [363863 AED] | 363,863.22 | 181,931.61 | CP3TR23013C0 | CB | C | P3 | TR | ME | 230 | 13 | BILL 4 | B04 | S1 | 2F | R00 | ACF07 | 230 | 0 | 0 | 0 | 0 |  |  |  |  | 30 | 0 | MEP |  |  | 2n |  |  |  |
| CP3TR26009C0 |  | CB-P3 ; 2nd Fix, Inst of Equipment (DB, TR, SG,BUS) (TR RM) | 54d | 2011-09-05 A | 2012-02-11 | CP3TR09205C0 SS | 25% | 40.5d | 2011-12-08 | 2012-02-12 | 129.9d | 61.5d | ELECTRICAL [14013.6 h]; Cost [3188823 AED] | 3,188,823.2 | 797,205.8 | CP3TR26009C0 | CB | C | P3 | TR | ME | 260 | 09 | BILL 4 | B04 | S1 | 2F | R00 | ACF04 | 260 |  |  |  |  |  |  |  |  |  |  | MEP |  |  | 2n | E |  |  |
| CP3TR08101C0 |  | CB-P3 ; Door Frames (TR RM) | 18d | 2011-11-05 | 2011-11-30 | CP3TR09201C0, GNHE08101C0 |  |  |  |  | 104.04d | 47.64d | ASSORTED DOORS [0.5 h]; Cost |  |  | CP3TR08101C0 | CB | C | P3 | TR | DO | 081 | 01 | BILL 4 | B04 | S1 | DF | R00 | ACF06 | 081 |  |  |  |  | 316 | 20001090 |  |  |  |  |  |  |  |  |  | 08 |  |
| CP3TR01005C0 |  | CB-P3 ; 2nd, Wall Inspection by Consultant (TR RM) | 12d | 2011-12-08 | 2011-12-22 | CP3TR26026C0 |  |  |  |  | 56.4d | 0d | Labor General [0.6 h]; Cost |  |  | CP3TR01005C0 | CB | C | P3 | TR | ME | 010 | 05 | BILL 4 | B04 | S1 | WI | R00 | ACF07 | 010 |  |  |  |  |  |  |  |  |  |  | MEP |  |  | 2n |  |  |  |
| CP3TR09205C0 |  | CB-P3 ; Partitions Closing (TR RM) | 30d | 2011-12-22 | 2012-01-28 | CP3TR01005C0, CP3TR08101C0 FF, CP3TR09201C0, CP3TR09203C0, CAFOA09204C1 FF, CP3TR23009C0 FF, CP3TR23013C0 FF, CP3TR23011C0 FF |  |  |  |  | 56.4d | 0d | PARTITIONS [15 m]; PARTITIONS [127 h]; Cost |  |  | CP3TR09205C0 | CB | C | P3 | TR | PT | 092 | 05 | BILL 4 | B04 | S1 | FF | R00 | ACF06 | 092 |  |  |  |  | 315 | 887 |  |  |  |  | GP | P2F |  |  |  |  |  |
| CP3TR09901C0 |  | CB-P3 ; Wall Prime & 1st coat (TR RM) | 18d | 2012-01-28 | 2012-02-19 | CP3TR09205C0 |  |  |  |  | 56.4d | 0d | WALL PAINT [106 h]; WALL PAINT [131 m2]; Cost |  |  | CP3TR09901C0 | CB | C | P3 | TR | PA | 099 | 01 | BILL 4 | B04 | S1 | 01 | R00 | ACF06 | 099 |  |  |  |  | 360 | 20001110 |  |  |  |  |  |  |  |  |  |  |  |
| CP3TR26027C0 |  | CB-P3 ; 2nd Fix, Wiring / Cabling (TR RM) | 30d | 2012-01-28 | 2012-03-04 | CP3TR09205C0 |  |  |  |  | 116.4d | 36d | ELECTRICAL [216 h]; Cost |  |  | CP3TR26027C0 | CB | C | P3 | TR | ME | 260 | 27 | BILL 4 | B04 | S1 | 2F | R00 | ACF07 | 260 |  |  |  |  | 417 | 1318 |  |  |  |  | MEP |  |  | 2n |  |  |  |
| CP3TR09501C0 |  | CB-P3 ; Ceiling grid and ServiceTile (TR RM) | 24d | 2012-02-19 | 2012-03-18 | CP3TR09205C0 SS+15d, CP3TR09901C0 |  |  |  |  | 56.4d | 0d | CEILING GRID FOR GYPSUM [121.75 h]; CEILING GRID FOR GYPSUM [10.42 m2]; Cost |  |  | CP3TR09501C0 | CB | C | P3 | TR | CE | 095 | 01 | BILL 4 | B04 | S1 | 01 | R00 | ACF06 | 095 |  |  |  |  | 336 | 1327 |  |  |  |  |  |  |  |  |  |  | 1 |
| CP3TR09601C0 |  | CB-P3 ; Flooring (Rubber & etc) (TR RM) | 36d | 2012-03-18 | 2012-04-29 | CP3TR09501C0 |  |  |  |  | 56.4d | 0d | RUBBER FLOOR [152 m2]; RUBBER FLOOR [64 h]; Cost |  |  | CP3TR09601C0 | CB | C | P3 | TR | FF | 096 | 01 | BILL 4 | B04 | S1 | 03 | R00 | ACF06 | RF |  |  |  |  | 359 | 20001120 |  |  |  |  |  |  |  |  |  |  |  |
| CP3TR23023C0 |  | CB-P3 ; 2nd Fix, Flexible ducts (TR RM) | 30d | 2012-03-18 | 2012-04-22 | CP3TR09501C0 |  |  |  |  | 80.4d | 24d | MECHANICAL [903.6 h]; Cost |  |  | CP3TR23023C0 | CB | C | P3 | TR | ME | 230 | 23 | BILL 4 | B04 | S1 | 2F | R00 | ACF07 | 230 |  |  |  |  | 412 | 20001140 |  |  |  |  | MEP |  |  | 2n |  |  |  |
| CP3TR23074C0 |  | CB-P3 ; Final Fix, Grilles, panels & diffusers (TR RM) | 30d | 2012-03-18 | 2012-04-22 | CP3TR09501C0 |  |  |  |  | 68.4d | 0d | MECHANICAL [1970.4 h]; Cost |  |  | CP3TR23074C0 | CB | C | P3 | TR | ME | 230 | 74 | BILL 4 | B04 | S1 | FF | R00 | ACF07 | 230 |  |  |  |  | 419 | 20001160 |  |  |  |  | MEP |  |  | FF |  |  |  |
| CP3TR26005C0 |  | CB-P3 ; 2nd Fix, Wiring for Power/Lighting/Emergency (TR RM) | 30d | 2012-03-18 | 2012-04-22 | CP3TR26026C0, CP3TR26027C0 SS+6d, CP3TR09501C0 |  |  |  |  | 80.4d | 24d | ELECTRICAL [216 h]; Cost |  |  | CP3TR26005C0 | CB | C | P3 | TR | ME | 260 | 05 | BILL 4 | B04 | S1 | 2F | R00 | ACF07 | 260 |  |  |  |  |  |  |  |  |  |  | MEP |  |  | 2n |  |  |  |
| CP3TR26013C0 |  | CB-P3 ; Final Fix, Termination & Gladding of Cables (TR RM) | 30d | 2012-03-18 | 2012-04-22 | CP3TR26009C0 FF, CP3TR09501C0 |  |  |  |  | 68.4d | 0d | ELECTRICAL [826.8 h]; Cost |  |  | CP3TR26013C0 | CB | C | P3 | TR | ME | 260 | 13 | BILL 4 | B04 | S1 | FF | R00 | ACF07 | 260 |  |  |  |  |  |  |  |  |  |  | MEP |  |  | FF |  |  |  |
| CP3TR26015C0 |  | CB-P3 ; Final Fix, Inst of Ceiling rose (TR RM) | 30d | 2012-03-18 | 2012-04-22 | CP3TR09501C0 |  |  |  |  | 68.4d | 0d | ELECTRICAL [123.6 h]; Cost |  |  | CP3TR26015C0 | CB | C | P3 | TR | ME | 260 | 15 | BILL 4 | B04 | S1 | FF | R00 | ACF07 | 260 |  |  |  |  |  |  |  |  |  |  | MEP |  |  | FF |  |  |  |
| CP3TR26076C0 |  | CB-P3 ; Final Fix, Lighting fittings (TR RM) | 30d | 2012-03-18 | 2012-04-22 | CP3TR09501C0 |  |  |  |  | 68.4d | 0d | ELECTRICAL [7983.6 h]; Cost |  |  | CP3TR26076C0 | CB | C | P3 | TR | ME | 260 | 76 | BILL 4 | B04 | S1 | FF | R00 | ACF07 | 260 |  |  |  |  | 420 | 20001170 |  |  |  |  | MEP |  |  | FF |  |  |  |
| CP3TR27002C0 |  | CB-P3 ; 2nd Fix, Dressing of ELV panels (TR RM) | 30d | 2012-03-18 | 2012-04-22 | CP3TR09205C0, CP3TR27020C0 SS |  |  |  |  | 96.4d | 40d | ELECTRICAL [1284 h]; Cost |  |  | CP3TR27002C0 | CB | C | P3 | TR | ME | 270 | 02 | BILL 4 | B04 | S1 | 2F | R00 | ACF07 | 270 |  |  |  |  |  |  |  |  |  |  | MEP |  |  | 2n |  |  |  |
| CP3TR27020C0 |  | CB-P3 ; 2nd Fix, Inst of ELV Equipment (Panels) (TR RM) | 30d | 2012-03-18 | 2012-04-22 | CP3TR09205C0, CP3TR09501C0 |  |  |  |  | 96.4d | 0d | ELECTRICAL [384 h]; Cost |  |  | CP3TR27020C0 | CB | C | P3 | TR | ME | 270 | 20 | BILL 4 | B04 | S1 | 2F | R00 | ACF04 | 270 |  |  |  |  |  |  |  |  |  |  | MEP |  |  | 2n | E |  |  |
| CP3TR27030C0 |  | CB-P3 ; Final Fix, Inst of ELV device (Detector/Speaker) (TR RM) | 30d | 2012-03-18 | 2012-04-22 | CP3TR09501C0 |  |  |  |  | 68.4d | 0d | ELECTRICAL [2054.4 h]; Cost |  |  | CP3TR27030C0 | CB | C | P3 | TR | ME | 270 | 30 | BILL 4 | B04 | S1 | FF | R00 | ACF07 | 270 |  |  |  |  |  |  |  |  |  |  | MEP |  |  | FF |  |  |  |
| CP3TR01006C0 |  | CB-P3 ; 2nd, Ceiling Inspection by Consultants (TR RM) | 12d | 2012-04-22 | 2012-05-06 | CP3TR23009C0, CP3TR23011C0, CP3TR23013C0, CP3TR09501C0, CP3TR23074C0, CP3TR26013C0, CP3TR26015C0, CP3TR26076C0, CP3TR27030C0 |  |  |  |  | 68.4d | 12d | Labor General [0.6 h]; Cost |  |  | CP3TR01006C0 | CB | C | P3 | TR | ME | 010 | 06 | BILL 4 | B04 | S1 | CI | R00 | ACF07 | 010 |  |  |  |  |  |  |  |  |  |  | MEP |  |  | 2n |  |  |  |
| CP3TR08105C0 |  | CB-P3 ; Doors (TR RM) | 18d | 2012-04-29 | 2012-05-20 | CP3TR08101C0, CP3TR09901C0, OGNMU00059S0, OGNMU00065S0, CP3TR09601C0 |  |  |  |  | 90.4d | 34d | ASSORTED DOORS [10 h]; ASSORTED DOORS [1 no]; Cost |  |  | CP3TR08105C0 | CB | C | P3 | TR | DO | 081 | 05 | BILL 4 | B04 | S1 | DR | R00 | ACF06 | 081 |  |  |  |  | 317 | 1325 |  |  |  |  |  |  |  |  |  | 08 |  |
| CP3TR21115C0 |  | CB-P3 ; 2nd Fix, Gaseous Fire Suppression (TR RM) | 18d | 2012-04-29 | 2012-05-20 | CP3TR09601C0 |  |  |  |  | 56.4d | 0d | MECHANICAL [3854.4 h]; Cost |  |  | CP3TR21115C0 | CB | C | P3 | TR | ME | 211 | 15 | BILL 4 | B04 | S1 | 2F | R00 | ACF07 | 211 |  |  |  |  | 411 | 20001130 |  |  |  |  | MEP |  |  | 2n |  |  |  |
| CP3TR09503C0 |  | CB-P3 ; Ceiling closure (TR RM) | 16d | 2012-05-20 | 2012-06-07 | CP3TR01006C0, CP3TR09501C0, CP3TR21115C0, CP3TR26005C0, CP3TR26026C0, CP3TR26027C0, CP3TR27002C0 FF, CP3TR23023C0 |  |  |  |  | 56.4d | 0d | ASSORTED CEILING FINISH [52.27 h]; CEILING GYPSUM [3.48 h]; ASSORTED CEILING FINISH [85 m2]; CEILING GYPSUM [21 m2]; Cost |  |  | CP3TR09503C0 | CB | C | P3 | TR | CE | 095 | 03 | BILL 4 | B04 | S1 | 02 | R00 | ACF06 | 095 |  |  |  |  | 337 | 20001080 |  |  |  |  |  |  |  |  |  |  |  |
| CP3TR09903C0 |  | CB-P3 ; Wall - Final Paint (TR RM) | 18d | 2012-06-07 | 2012-06-30 | CP3TR09901C0, CP3TR09905C0 |  |  |  |  | 56.4d | 0d | WALL PAINT [57 h]; WALL PAINT [70 m2]; Cost |  |  | CP3TR09903C0 | CB | C | P3 | TR | PA | 099 | 03 | BILL 4 | B04 | S1 | 02 | R00 | ACF06 | 099 |  |  |  |  | 361 | 1312 |  |  |  |  |  |  |  |  |  |  |  |
| CP3TR09905C0 |  | CB-P3 ; Ceiling Prime & 1st coat (TR RM) | 0d | 2012-06-07 | 2012-06-07 | CP3TR09503C0 |  |  |  |  | 56.4d | 0d | Cost |  |  | CP3TR09905C0 | CB | C | P3 | TR | PA | 099 | 05 | BILL 4 | B04 | S1 | 01 | R00 | ACF06 | 099 |  |  |  |  | 362 | 1313 |  |  |  |  |  |  |  |  |  |  |  |
| CP3TR09907C0 |  | CB-P3 ; Ceiling - Final paint (TR RM) | 0d | 2012-06-07 | 2012-06-07 | CP3TR09905C0 |  |  |  |  | 86.4d | 30d | Cost |  |  | CP3TR09907C0 | CB | C | P3 | TR | PA | 099 | 07 | BILL 4 | B04 | S1 | 02 | R00 | ACF06 | 099 |  |  |  |  | 363 | 1314 |  |  |  |  |  |  |  |  |  |  |  |
| CP3TR26017C0 |  | CB-P3 ; Final Fix, Inst of Switch/Sockets (TR RM) | 12d | 2012-06-07 | 2012-06-23 | CP3TR09901C0, CP3TR09501C0, CP3TR09503C0 |  |  |  |  | 56.4d | 0d | ELECTRICAL [427.2 h]; Cost |  |  | CP3TR26017C0 | CB | C | P3 | TR | ME | 260 | 17 | BILL 4 | B04 | S1 | FF | R00 | ACF07 | 260 |  |  |  |  |  |  |  |  |  |  | MEP |  |  | FF |  |  |  |
| CP3TR01802C0 |  | CB-P3 ; MEP de-snag, FIREM sign-off (TR RM) | 18d | 2012-06-23 | 2012-07-14 | CP3TR21115C0, CP3TR23009C0, CP3TR23011C0, CP3TR23013C0, CP3TR23023C0, CP3TR26005C0, CP3TR26009C0, CP3TR26026C0, CP3TR26027C0, CP3TR27002C0, CP3TR27020C0, CP3TR26017C0 |  |  |  |  | 56.4d | 0d | TESTING & COMMISSIONING [510 h]; Cost |  |  | CP3TR01851C0 | CB | C | P3 | TR | SC | 018 | 53 | BILL 4 | B04 | S1 | 01 | R00 | ACF07 | 018 |  |  |  |  | 396 |  |  |  |  |  |  |  |  |  |  |  |  |
| CP3TR08709C0 |  | CB-P3 ; Ironmongery (TR RM) | 12d | 2012-06-30 | 2012-07-14 | CP3TR08105C0, CP3TR09903C0 |  |  |  |  | 56.4d | 0d | IRONMONGERY [20 h]; IRONMONGERY [2 no]; Cost |  |  | CP3TR08709C0 | CB | C | P3 | TR | DO | 087 | 09 | BILL 4 | B04 | S1 | IM | R00 | ACF06 | 087 |  |  |  |  | 322 | 20001100 |  |  |  |  |  |  |  |  |  | 08 |  |
| CP3TR01801C0 |  | CB-P3 ; Touch-up & Clean / JV inspection /CIR /De-snag | 24d | 2012-07-14 | 2012-08-11 | CP3TR01802C0, CP3TR08101C0, CP3TR08105C0, CP3TR08709C0, CP3TR09201C0, CP3TR09203C0, CP3TR09205C0, CP3TR09501C0, CP3TR09503C0, CP3TR09601C0, CP3TR09901C0, CP3TR09903C0, CP3TR09905C0, CP3TR09907C0, CP3TR23074C0, CP3TR26013C0, CP3TR26015C0, CP3TR26017C0, CP3TR26076C0, CP3TR27030C0 |  |  |  |  | 56.4d | 0d | TESTING & COMMISSIONING [85 h]; Cost |  |  | CP3TR01851C0 | CB | C | P3 | TR | SC | 018 | 51 | BILL 4 | B04 | S1 | 02 | R00 | ACF07 | 018 |  |  |  |  | 396 |  |  |  |  |  |  |  |  |  |  |  |  |
| CP3TR01803C0 |  | CB-P3 ; Consultant's final de-snag inspection | 12d | 2012-08-11 | 2012-08-27 | CP3TR01801C0 |  |  |  |  | 56.4d | 48.05d | Labor General [1 h]; Cost |  |  | CP3TS01803C0 | CB | C | P3 | TR | SC | 018 | 03 | BILL 4 | B04 | S1 | 03 | R00 | ACF07 | 018 |  |  |  |  |  |  |  |  |  |  |  |  |  |  |  |  |  |

| ID | WBS | Activity | Duration | Start | Finish | Predecessors | Complete | Remaining | Planned start | Planned finish | Total float | Free float | Resources | Cost | Actual cost | Change Order # | NEW ACTIVITY ID | change id | RENZ % COMPLETE | Claimed This Month | CCAD BUILDING(SET) | CCAD PHASE(SET) | CCAD DIVISION(SET) | CCAD FLOOR(SET) | CCAD ZONE(SET) | CCAD WORK(SET) | CCAD SECTION(SET) | CCAD SERIAL No.(SET) | CCAD CBS(SET) | CCAD BILL(SET) | CCAD HANDOVER(SET) | CCAD TAG(SET) | CCAD REV(SET) | CCADACF (SET) | CCAD SSCF | ACCESS DATES | July2011 Target% Complete | CCAD SUB ZONE MEP(SET) | CCAD CSA | Act Selector % | P_811 | P_711 | user_number8 | user_integer1 | user_integer2 | user_number7 | CCAD MEQ |
| --- | --- | --- | --- | --- | --- | --- | --- | --- | --- | --- | --- | --- | --- | --- | --- | --- | --- | --- | --- | --- | --- | --- | --- | --- | --- | --- | --- | --- | --- | --- | --- | --- | --- | --- | --- | --- | --- | --- | --- | --- | --- | --- | --- | --- | --- | --- | --- |
|  | 07 | **MEP Rooms** |  | 2011-04-13 | 2012-08-26 |  |  |  |  |  |  |  |  |  |  |  |  |  |  |  |  |  |  |  |  |  |  |  |  |  |  |  |  |  |  |  |  |  |  |  |  |  |  |  |  |  |  |
| CP3M104001C0 |  | CB-P3 ; Blockworks (Mech RM) | 28d | 2011-04-13 A | 2011-06-14 A | CFNS103323C0, CFNS203323C0, CP3S107807C0, CP3S207808C0 | 100% |  | 2011-05-21 | 2011-06-22 |  |  | BLOCKWORKS [3084 h]; BLOCKWORKS [881 m2]; Cost |  |  | 73 | 73 | CP3ME04001C0 | 80 | 36725.58 | CB | C | 04 | P3 | M1 | BL | 040 | 01 | BILL 4 | B04 | S1 | BL | R00 | ACF06 | 040 |  |  |  |  |  |  |  |  |  |  |  |  |
| CP3M126010C0 |  | CB-P3 ; 1st Fix, Inst of Trunking/Conduiting (Mech RM) | 54d | 2011-05-10 A | 2011-11-16 | CP2S103335C0, CP2S203335C0, CP3M123010C0 SS, CP3S107807C0, CP3S207808C0 | 30% | 37.8d | 2011-08-08 | 2011-10-12 | 59.25d | 0d | ELECTRICAL [430.8 h]; Cost [29580.4 AED] | 29,580.43 | 8,874.13 |  |  | CP3ME26010C0 | 15 | 5144.35 | CB | C |  | P3 | M1 | ME | 260 | 10 | BILL 4 | B04 | S1 | 1F | R00 | ACF04 | 260 | ACCESS | 30 | 1S | MEP | M1F |  |  |  |  |  |  |  |
| CP3M126012C0 |  | CB-P3 ; 1st Fix, Inst of Cable Tray (Mech RM) | 70d | 2011-05-10 A | 2011-11-13 | CP2S103335C0, CP2S203335C0, CP3M123010C0 SS, CP3M127010C0 SS+6d, CP3S107807C0, CP3S207808C0 | 50% | 35d | 2011-08-22 | 2011-11-17 | 59.25d | 0d | ELECTRICAL [948 h]; Cost [17044 AED] | 17,043.96 | 8,521.98 |  |  | CP3ME26012C0 | 15 | 3968.9 | CB | C |  | P3 | M1 | ME | 260 | 12 | BILL 4 | B04 | S1 | 1F | R00 | ACF04 | 260 |  | 35 | 1S | MEP | M1F | 50 | 45 |  |  |  |  |  |
| CP3M123010C0 |  | CB-P3 ; 1st Fix, Inst. of Supports for MEP (Mech RM) | 200d | 2011-05-11 A | 2011-10-11 | CP2S103335C0, CP2S203335C0, CP3M104001C0 SS+14d, CP3S107807C0, CP3S207808C0 | 95% | 10d | 2011-07-07 | 2012-03-07 | 49.95d | 0d | MECHANICAL [1024.8 h]; Cost [57766.2 AED] | 57,766.25 | 54,877.94 |  |  | CP3ME23010C0 | 60 |  | CB | C |  | P3 | M1 | ME | 230 | 10 | BILL 4 | B04 | S1 | 1F | R00 | ACF04 | 230 |  | 90 | 1S | MEP | M1F |  |  |  |  |  |  |  |
| CP3M104003C0 |  | CB-P3 ; Plaster to Blockwork (Mech RM) | 24d | 2011-05-15 A | 2011-09-29 A | CFNS103323C0, CFNS203323C0, CP3M104001C0, CP3S107807C0, CP3S207808C0 | 100% |  | 2011-07-31 | 2011-08-28 |  |  | BLOCKWORKS [192 h]; Cost |  |  |  |  | CP3ME04003C0 | 80 |  | CB | C |  | P3 | M1 | BL | 040 | 03 | BILL 4 | B04 | S1 | BL | R00 | ACF06 | 040 |  |  |  |  |  |  |  |  |  |  |  |  |
| CP3M109201C0 |  | CB-P3 ; Metal Studs (Mech RM) | 60d | 2011-05-15 A | 2011-11-14 | CFNS103323C0, CFNS203323C0, CP3M104001C0 SS, CP3M104003C0 SS, CP3M123010C0 | 57% | 25.8d | 2011-08-08 | 2011-10-19 | 49.95d | 0d | PARTITIONS [1010 h]; PARTITIONS - Metal Studs [133 m]; Cost |  |  | 313 | 2001 | CP3ME09201C0 | 5 | 16576.03 | CB | C |  | P3 | M1 | PT | 092 | 01 | BILL 4 | B04 | S1 | 1F | R00 | ACF06 | 092 |  |  |  | GP | PMS | 40 | 20 | 0 | 0 | 0 | 0 |  |
| CP3M127010C0 |  | CB-P3 ; 1st Fix, Inst of Trunking for ELV system (Mech RM) | 70d | 2011-05-15 A | 2011-11-13 | CP2S103335C0, CP2S203335C0, CP3M123010C0 SS, CP3M126010C0 SS+6d, CP3S107807C0, CP3S207808C0 | 50% | 35d | 2011-08-15 | 2011-11-10 | 59.25d | 0d | ELECTRICAL [457.2 h]; Cost [24667.9 AED] | 24,667.88 | 12,333.94 |  |  | CP3ME27010C0 | 10 | 7162.68 | CB | C |  | P3 | M1 | ME | 270 | 10 | BILL 4 | B04 | S1 | 1F | R00 | ACF04 | 270 |  | 35 | 1S | MEP | M1F | 50 | 35 |  |  |  |  |  |
| CP3M122012C0 |  | CB-P3 ; 1st Fix, Inst of Drainage pipe (Mech RM) | 180d | 2011-05-17 A | 2011-10-20 | CP3M123010C0 SS, CP3M126012C0 SS+6d, CP3S107807C0, CP3S207808C0 | 90% | 18d | 2011-08-29 | 2012-04-05 | 59.25d | 0d | PLUMBING [1714.8 h]; Cost [92715.9 AED] | 92,715.95 | 83,444.36 |  |  | CP3ME22012C0 | 15 | 48343.89 | CB | C |  | P3 | M1 | ME | 220 | 12 | BILL 4 | B04 | S1 | 1F | R00 | ACF04 | 220 |  | 85 | 1S | MEP | M1F | 90 | 85 |  |  |  |  |  |
| CP3M122014C0 |  | CB-P3 ; 1st Fix, Inst of Water supply pipe (Mech RM) | 54d | 2011-06-07 A | 2011-11-20 | CP3M122012C0 SS+6d, CP3M123010C0 SS, CP3S107807C0, CP3S207808C0 | 25% | 40.5d | 2011-07-21 | 2011-09-25 | 59.25d | 0d | PLUMBING [1682.4 h]; Cost [90924.8 AED] | 90,924.75 | 22,731.19 |  |  | CP3ME22014C0 |  | 68528.76 | CB | C |  | P3 | M1 | ME | 220 | 14 | BILL 4 | B04 | S1 | 1F | R00 | ACF04 | 220 |  | 55 | 1S | MEP | M1F | 25 | 20 |  |  |  |  |  |
| CP3M126020C0 |  | CB-P3 ; 2nd Fix, Wiring for Power/Lighting/Emergency (Mech RM) | 42d | 2011-06-09 A | 2011-12-28 | CP3M109201C0, CP3M126012C0 | 15% | 35.7d | 2011-08-25 | 2011-10-16 | 116.25d | 66.3d | ELECTRICAL [216 h]; Cost [15494.5 AED] | 15,494.51 | 2,324.18 |  |  | CP3ME26020C0 |  | 2699.02 | CB | C |  | P3 | M1 | ME | 260 | 20 | BILL 4 | B04 | S1 | 2F | R00 | ACF07 | 260 |  | 20 | 2n | MEP |  |  |  |  |  |  |  |  |
| CP3M121114C0 |  | CB-P3 ; 1st Fix, Inst of Sprinkler branch pipe (Mech RM) | 150d | 2011-06-14 A | 2011-11-10 | CP3M121112C0 | 90% | 15d | 2011-09-11 | 2012-03-12 | 94.75d | 44.8d | MECHANICAL [1009.2 h]; Cost [55153.8 AED] | 55,153.76 | 49,638.38 |  |  | CP3ME21114C0 |  | 31967.72 | CB | C |  | P3 | M1 | ME | 211 | 14 | BILL 4 | B04 | S1 | 1F | R00 | ACF04 | 211 |  | 75 | 1S | MEP | M1F |  |  |  |  |  |  |  |
| CP3M127012C0 |  | CB-P3 ; 1st Fix, Wiring/ Cabling work (Mech RM) | 48d | 2011-06-16 A | 2011-12-31 | CP3M127010C0 | 20% | 38.4d | 2011-08-28 | 2011-10-25 | 78.35d | 28.4d | ELECTRICAL [216 h]; Cost [15494.5 AED] | 15,494.51 | 3,098.9 |  |  | CP3ME27012C0 |  | 3598.69 | CB | C |  | P3 | M1 | ME | 270 | 12 | BILL 4 | B04 | S1 | 1F | R00 | ACF04 | 270 |  | 20 | 1S | MEP | M1F |  |  |  |  |  |  |  |
| CP3M121112C0 |  | CB-P3 ; 1st Fix, Inst of Sprinkler main pipe (Mech RM) | 180d | 2011-07-10 A | 2011-10-20 | CP3M122014C0 SS+6d, CP3M123010C0 SS, CP3S107807C0, CP3S207808C0 | 90% | 18d | 2011-08-17 | 2012-03-25 | 80.95d | 0d | MECHANICAL [686.4 h]; Cost [37438.4 AED] | 37,438.4 | 33,694.56 |  |  | CP3ME21112C0 |  |  | CB | C |  | P3 | M1 | ME | 211 | 12 | BILL 4 | B04 | S1 | 1F | R00 | ACF04 | 211 |  | 80 | 1S | MEP | M1F |  |  |  |  |  |  |  |
| CP3M109203C0 |  | CB-P3 ; Partitions 1st face (Mech RM) | 48d | 2011-08-10 A | 2011-11-12 | CP3M109201C0 SS+12d | 51% | 23.52d | 2011-10-05 | 2011-12-05 | 66.23d | 16.28d | PARTITIONS [133 m]; PARTITIONS [774 h]; Cost |  |  |  | 1535 | CP3ME09203C0 |  |  | CB | C |  | P3 | M1 | PT | 092 | 03 | BILL 4 | B04 | S1 | 2F | R00 | ACF06 | 092 |  |  |  | GP | P1F | 10 | 0 | 0 | 0 | 0 | 0 |  |
| CP3M123012C0 |  | CB-P3 ; 1st Fix, Inst of CHW pipe (Mech RM) | 54d | 2011-08-10 A | 2011-11-10 | CP3M121112C0 SS+6d, CP3M123010C0 SS, CP3S107807C0, CP3S207808C0 | 40% | 32.4d | 2011-09-18 | 2011-11-23 | 80.95d | 0d | MECHANICAL [2395.2 h]; Cost [130782 AED] | 130,781.76 | 52,312.7 |  |  | CP3ME23012C0 |  |  | CB | C |  | P3 | M1 | ME | 230 | 12 | BILL 4 | B04 | S1 | 1F | R00 | ACF04 | 230 |  | 25 | 1S | MEP | M1F | 40 | 0 |  |  |  |  |  |
| CP3M123016C0 |  | CB-P3 ; 1st Fix, Inst of VCD's/FD's (Mech RM) | 54d | 2011-08-10 A | 2011-12-20 | CP3M123014C0 | 30% | 37.8d | 2011-11-09 | 2012-01-15 | 86.95d | 37d | MECHANICAL [2648.4 h]; Cost [143058 AED] | 143,057.96 | 42,917.39 |  |  | CP3ME23016C0 |  |  | CB | C |  | P3 | M1 | ME | 230 | 16 | BILL 4 | B04 | S1 | 1F | R00 | ACF04 | 230 |  | 20 | 1S | MEP | M1F | 30 | 0 |  |  |  |  |  |
| CP3M123020C0 |  | CB-P3 ; 2nd Fix, Inst of VAV'S CHW connection (Mech RM) | 48d | 2011-08-10 A | 2011-12-27 | CP3M123012C0 | 20% | 38.4d | 2012-01-21 | 2012-03-17 | 80.95d | 31d | MECHANICAL [1419.6 h]; Cost [76659.7 AED] | 76,659.7 | 15,331.94 |  |  | CP3ME23020C0 |  |  | CB | C |  | P3 | M1 | ME | 230 | 20 | BILL 4 | B04 | S1 | 2F | R00 | ACF07 | 230 |  |  | 2n | MEP |  | 20 | 0 |  |  |  |  |  |
| CP3M123022C0 |  | CB-P3 ; 2nd Fix, Inst of Equipment (FCU,FAN) (Mech RM) | 48d | 2011-08-10 A | 2012-02-25 | CP3M109205C0, CP3M126022C0 FF | 20% | 38.4d | 2011-12-15 | 2012-02-11 | 73.95d | 0d | MECHANICAL [1296 h]; Cost [294957 AED] | 294,956.89 | 58,991.38 |  |  | CP3ME23022C0 |  |  | CB | C |  | P3 | M1 | ME | 230 | 22 | BILL 4 | B04 | S1 | 2F | R00 | ACF04 | 230 |  |  | 2n | MEP |  | 20 | 0 |  |  |  |  | H |
| CP3M123026C0 |  | CB-P3 ; 2nd Fix, Insulation of CHW pipe & Duct (Mech RM) | 48d | 2011-08-10 A | 2011-10-27 | CP3M123012C0 SS, CP3M123014C0 SS | 50% | 24d | 2011-11-09 | 2012-01-08 | 127.75d | 77.8d | MECHANICAL [6742.8 h]; Cost [363863 AED] | 363,863.22 | 181,931.61 |  |  | CP3ME23026C0 |  |  | CB | C |  | P3 | M1 | ME | 230 | 26 | BILL 4 | B04 | S1 | 2F | R00 | ACF07 | 230 |  | 50 | 2n | MEP |  | 30 | 0 | 0 | 0 | 0 | 0 |  |
| CP3M123014C0 |  | CB-P3 ; 1st Fix, Inst of Ducting (Mech RM) | 54d | 2011-09-05 A | 2011-10-31 | CP3M123010C0 SS, CP3M123012C0 SS+6d, CP3S107807C0, CP3S207808C0 | 50% | 27d | 2011-09-01 | 2011-11-02 | 86.95d | 0d | MECHANICAL [16992 h]; Cost [927678 AED] | 927,677.51 | 463,838.75 |  |  | CP3ME23014C0 |  |  | CB | C |  | P3 | M1 | ME | 230 | 14 | BILL 4 | B04 | S1 | 1F | R00 | ACF04 | 230 |  |  | 1S | MEP | M1F |  |  |  |  |  |  |  |
| CP3M126024C0 |  | CB-P3 ; 2nd Fix, Inst of Equipment (DB, TR, SG) (Mech RM) | 42d | 2011-09-05 A | 2012-02-20 | CP3M109205C0 | 10% | 37.8d | 2011-12-19 | 2012-02-07 | 120.03d | 0d | ELECTRICAL [4905.6 h]; Cost [1116278 AED] | 1,116,277.83 | 111,627.78 |  |  | CP3ME26024C0 |  |  | CB | C |  | P3 | M1 | ME | 260 | 24 | BILL 4 | B04 | S1 | 2F | R00 | ACF04 | 260 |  |  | 2n | MEP |  |  |  |  |  |  |  | E |
| CP3M108101C0 |  | CB-P3 ; Metal Door Frames (Mech RM) | 42d | 2011-11-14 | 2012-01-05 | CP3M109201C0, GNHE08101C0 |  |  |  |  | 49.95d | 0d | METAL DOORS [581 h]; Cost |  |  |  | 1539 | CP3ME08101C0 |  |  | CB | C |  | P3 | M1 | DO | 081 | 01 | BILL 4 | B04 | S1 | DF | R00 | ACF06 | 081 |  |  |  |  |  |  |  |  |  |  |  |  |
| CP3M109205C0 |  | CB-P3 ; Partitions Closing (Mech RM) | 28d | 2011-12-01 | 2012-01-05 | CP3M109203C0, CP3M122012C0, CP3M122014C0, CAFOA09204C1 FF, CP3M108101C0 FF, CP3M121114C0 FF |  |  |  |  | 49.95d | 0d | PARTITIONS [133 m]; PARTITIONS [995 h]; Cost |  |  | 315 | 1063 | CP3ME09205C0 |  |  | CB | C |  | P3 | M1 | PT | 092 | 05 | BILL 4 | B04 | S1 | FF | R00 | ACF06 | 092 |  |  |  | GP | P2F |  |  |  |  |  |  |  |
| CP3M108105C0 |  | CB-P3 ; Metal Doors (Mech RM) | 22d | 2012-01-05 | 2012-01-31 | CP3M108101C0 |  |  |  |  | 142.82d | 0d | METAL DOORS [590 h]; METAL DOORS [59 no]; Cost |  |  | 317 | 1065 | CP3ME08105C0 |  |  | CB | C | 08 | P3 | M1 | DO | 081 | 05 | BILL 4 | B04 | S1 | DR | R00 | ACF06 | 081 |  |  |  |  |  |  |  |  |  |  |  |  |
| CP3M109901C0 |  | CB-P3 ; Wall Prime & 1st coat (Mech RM) | 24d | 2012-01-05 | 2012-02-02 | CP3M109205C0 |  |  |  |  | 49.95d | 0d | WALL PAINT [331 h]; WALL PAINT [412 m2]; Cost |  |  |  | 1542 | CP3ME09901C0 |  |  | CB | C |  | P3 | M1 | PA | 099 | 01 | BILL 4 | B04 | S1 | 01 | R00 | ACF06 | 099 |  |  |  |  |  |  |  |  |  |  |  |  |
| CP3M123023C0 |  | CB-P3 ; 2nd Fix, Inst of Equipment (Pump) (Mech RM) | 42d | 2012-01-05 | 2012-02-25 | CP3M109205C0, CP3M123022C0 FF |  |  |  |  | 73.95d | 0d | MECHANICAL [3607.2 h]; Cost |  |  |  |  | CP3ME23023C0 |  |  | CB | C |  | P3 | M1 | ME | 230 | 23 | BILL 4 | B04 | S1 | 2F | R00 | ACF04 | 230 |  |  | 2n | MEP |  |  |  |  |  |  |  | P |
| CP3M126022C0 |  | CB-P3 ; 2nd Fix, Cable Pulling (Mech RM) | 42d | 2012-01-05 | 2012-02-25 | CP3M126012C0, CP3M109205C0 |  |  |  |  | 73.95d | 0d | ELECTRICAL [6616.8 h]; Cost |  |  |  |  | CP3ME26022C0 |  |  | CB | C |  | P3 | M1 | ME | 260 | 22 | BILL 4 | B04 | S1 | 2F | R00 | ACF07 | 260 |  |  | 2n | MEP |  |  |  |  |  |  |  |  |
| CP3M127020C0 |  | CB-P3 ; 2nd Fix, Inst of ELV Equipment (Panels) (Mech RM) | 42d | 2012-01-05 | 2012-02-25 | CP3M109205C0 |  |  |  |  | 121.95d | 48d | ELECTRICAL [384 h]; Cost |  |  |  |  | CP3ME27020C0 |  |  | CB | C |  | P3 | M1 | ME | 270 | 20 | BILL 4 | B04 | S1 | 2F | R00 | ACF04 | 270 |  |  | 2n | MEP |  |  |  |  |  |  |  | E |
| CP3M105501C0 |  | CB-P3 ; Handrails & balustrade (Mech RM) | 36d | 2012-02-02 | 2012-03-17 | CP3M109901C0 |  |  |  |  | 160.82d | 110.88d | SECONDARY STEEL [851 h]; Cost |  |  |  |  | CP3ME05501C0 |  |  | CB | C |  | P3 | M1 | SW | 055 | 01 | BILL 4 | B04 | S1 | 01 | R00 | ACF03 | a |  |  |  |  |  |  |  |  |  |  |  |  |
| CP3M109501C0 |  | CB-P3 ; Ceiling grid and ServiceTile (Mech RM) | 36d | 2012-02-02 | 2012-03-17 | CP3M109205C0 SS+15d, CP3M122014C0, CP3M123016C0, CP3M123020C0, CP3M123026C0, CP3M126010C0, CP3M127012C0, CP3M123026C0 SS, CP3M126020C0 FF, CP3M109901C0 |  |  |  |  | 49.95d | 0d | CEILING GRID FOR GYPSUM [1178.54 h]; CEILING GRID FOR GYPSUM [100.73 m2]; Cost |  |  |  |  | CP3ME09501C0 |  |  | CB | C |  | P3 | M1 | CE | 095 | 01 | BILL 4 | B04 | S1 | 01 | R00 | ACF06 | 095 |  |  |  |  |  |  |  |  |  |  |  |  |
| CP3M109903C0 |  | CB-P3 ; Wall - Final Paint (Mech RM) | 24d | 2012-02-02 | 2012-03-03 | CP3M109901C0 |  |  |  |  | 172.82d | 122.88d | WALL PAINT [178 h]; WALL PAINT [222 m2]; Cost |  |  | 329 | 1068 | CP3ME09903C0 |  |  | CB | C |  | P3 | M1 | PA | 099 | 03 | BILL 4 | B04 | S1 | 02 | R00 | ACF06 | 099 |  |  |  |  |  |  |  |  |  |  |  |  |
| CP3M107101C0 |  | CB-P3 ; Waterproofing (Mech RM) | 15d | 2012-02-20 | 2012-03-08 | CP3M126024C0 |  |  |  |  | 120.03d | 0d | THERMAL & MOISTURE [88 h]; THERMAL & MOISTURE [575 m2]; Cost |  |  | 328 | 1469 | I05ME09901C0 |  |  | CB | C |  | P3 | M1 | FF | 071 | 01 | BILL 4 | B04 | S1 | 01 | R00 | ACF03 | 071 |  |  |  |  |  |  |  |  |  |  |  |  |
| CP3M121124C0 |  | CB-P3 ; 2nd Fix, Inst of Zone Control Valve (Mech RM) | 30d | 2012-02-25 | 2012-03-31 | CP3M123023C0 |  |  |  |  | 91.95d | 18d | MECHANICAL [1209.6 h]; Cost |  |  |  |  | CP3ME21124C0 |  |  | CB | C |  | P3 | M1 | ME | 211 | 24 | BILL 4 | B04 | S1 | 2F | R00 | ACF07 | 211 |  |  | 2n | MEP |  |  |  |  |  |  |  |  |
| CP3M109601C0 |  | CB-P3 ; Floor Finishes (Mech RM) | 24d | 2012-03-08 | 2012-04-05 | CP3M107101C0, CP3M109205C0, CP3M126024C0, OGNMU00055S0 |  |  |  |  | 120.03d | 70.08d | ASSORTED FLOOR FINISH [432 h]; ASSORTED FLOOR FINISH [236 m2]; Cost |  |  |  |  | CP3ME09601C0 |  |  | CB | C |  | P3 | M1 | FF | 096 | 01 | BILL 4 | B04 | S1 | 01 | R00 | ACF06 | FF |  |  |  |  |  |  |  |  |  |  |  |  |
| CP3M108709C0 |  | CB-P3 ; Ironmongery (Mech RM) | 20d | 2012-03-14 | 2012-04-07 | CP3M108105C0, CP3PA08301C0 |  |  |  |  | 142.82d | 92.88d | IRONMONGERY [150 h]; IRONMONGERY [15 no]; Cost |  |  | 322 | 1066 | CP3ME08709C0 |  |  | CB | C | 08 | P3 | M1 | DO | 087 | 09 | BILL 4 | B04 | S1 | IM | R00 | ACF06 | 087 |  |  |  |  |  |  |  |  |  |  |  |  |
| CP3M109701C0 |  | CB-P3 ; Wall finishes(Stone, venetian plaster, etc) (Mech RM) | 20d | 2012-03-17 | 2012-04-09 | CP3M109205C0, OGNMU00051S0, CP3M109501C0 |  |  |  |  | 95.95d | 46d | ASSORTED WALL FINISH [254 h]; ASSORTED WALL FINISH [292 m2]; Cost |  |  |  |  | CP3ME09701C0 |  |  | CB | C |  | P3 | M1 | WF | 097 | 01 | BILL 4 | B04 | S1 | 01 | R00 | ACF06 | 097 |  |  |  |  |  |  |  |  |  |  |  |  |
| CP3M109905C0 |  | CB-P3 ; Ceiling - Prime & 1st coat (Mech RM) | 0d | 2012-03-17 | 2012-03-17 | CP3M109501C0 |  |  |  |  | 160.82d | 86.88d | Cost |  |  |  |  | CP3ME09905C0 |  |  | CB | C |  | P3 | M1 | PA | 099 | 05 | BILL 4 | B04 | S1 | 01 | R00 | ACF06 | 099 |  |  |  |  |  |  |  |  |  |  |  |  |
| CP3M121120C0 |  | CB-P3 ; 2nd Fix, Inst of Sprinkler droppers (Mech RM) | 30d | 2012-03-17 | 2012-04-21 | CP3M109501C0 |  |  |  |  | 73.95d | 0d | MECHANICAL [1404 h]; Cost |  |  |  |  | CP3ME21120C0 |  |  | CB | C |  | P3 | M1 | ME | 211 | 20 | BILL 4 | B04 | S1 | 2F | R00 | ACF07 | 211 |  |  | 2n | MEP |  |  |  |  |  |  |  |  |
| CP3M121132C0 |  | CB-P3 ; Final Fix, Inst of Fire Extinguishers/FHC (Mech RM) | 30d | 2012-03-17 | 2012-04-21 | CP3M109205C0, CP3M109501C0 |  |  |  |  | 73.95d | 24d | MECHANICAL [4239.6 h]; Cost |  |  |  |  | CP3ME21132C0 |  |  | CB | C |  | P3 | M1 | ME | 211 | 32 | BILL 4 | B04 | S1 | FF | R00 | ACF07 | 211 |  |  | FF | MEP |  |  |  |  |  |  |  |  |
| CP3M123032C0 |  | CB-P3 ; 2nd Fix, Inst of Flexible Duct & Plenum boxes (Mech RM) | 24d | 2012-03-17 | 2012-04-14 | CP3M109501C0 |  |  |  |  | 49.95d | 0d | MECHANICAL [903.6 h]; Cost |  |  |  |  | CP3ME23032C0 |  |  | CB | C |  | P3 | M1 | ME | 230 | 32 | BILL 4 | B04 | S1 | FF | R00 | ACF07 | 230 |  |  | FF | MEP |  |  |  |  |  |  |  |  |
| CP3M126030C0 |  | CB-P3 ; Final Fix, Termination & Gladding of Cables (Mech RM) | 30d | 2012-03-17 | 2012-04-21 | CP3M109901C0, CP3M109501C0 |  |  |  |  | 73.95d | 24d | ELECTRICAL [826.8 h]; Cost |  |  |  |  | CP3ME26030C0 |  |  | CB | C |  | P3 | M1 | ME | 260 | 30 | BILL 4 | B04 | S1 | FF | R00 | ACF07 | 260 |  |  | FF | MEP |  |  |  |  |  |  |  |  |
| CP3M126032C0 |  | CB-P3 ; Final Fix, Inst of Ceiling rose (Mech RM) | 24d | 2012-03-17 | 2012-04-14 | CP3M109501C0, CP3M109501C0 FF |  |  |  |  | 67.95d | 0d | ELECTRICAL [123.6 h]; Cost |  |  |  |  | CP3ME26032C0 |  |  | CB | C |  | P3 | M1 | ME | 260 | 32 | BILL 4 | B04 | S1 | FF | R00 | ACF07 | 260 |  |  | FF | MEP |  |  |  |  |  |  |  |  |
| CP3M127022C0 |  | CB-P3 ; 2nd Fix, Wiring Droppers (Mech RM) | 30d | 2012-03-17 | 2012-04-21 | CP3M109501C0 |  |  |  |  | 85.95d | 36d | ELECTRICAL [216 h]; Cost |  |  |  |  | CP3ME27022C0 |  |  | CB | C |  | P3 | M1 | ME | 270 | 22 | BILL 4 | B04 | S1 | 2F | R00 | ACF07 | 270 |  |  | 2n | MEP |  |  |  |  |  |  |  |  |
| CP3M127030C0 |  | CB-P3 ; Final Fix, Inst of ELV device (Detector/Speaker) (Mech RM) | 30d | 2012-03-17 | 2012-04-21 | CP3M127020C0 FF, CP3M109501C0 |  |  |  |  | 73.95d | 24d | ELECTRICAL [2054.4 h]; Cost |  |  |  |  | CP3ME27030C0 |  |  | CB | C |  | P3 | M1 | ME | 270 | 30 | BILL 4 | B04 | S1 | FF | R00 | ACF07 | 270 |  |  | FF | MEP |  |  |  |  |  |  |  |  |
| CP3M127032C0 |  | CB-P3 ; Final Fix, BMS connection work to Equipment (Mech RM) | 48d | 2012-03-17 | 2012-05-12 | CP3M123023C0, CP3M109501C0 |  |  |  |  | 55.95d | 6d | ELECTRICAL [53396.4 h]; Cost |  |  |  |  | CP3ME27032C0 |  |  | CB | C |  | P3 | M1 | ME | 270 | 32 | BILL 4 | B04 | S1 | FF | R00 | ACF07 | 270 |  |  | FF | MEP |  |  |  |  |  |  |  |  |
| CP3M121130C0 |  | CB-P3 ; Final Fix, Inst of Sprinklers head (Mech RM) | 24d | 2012-03-24 | 2012-04-21 | CP3M121124C0 SS+6d, CP3M109501C0, CP3M121120C0 SS+6d |  |  |  |  | 73.95d | 24d | MECHANICAL [278.4 h]; Cost |  |  |  |  | CP3ME21130C0 |  |  | CB | C |  | P3 | M1 | ME | 211 | 30 | BILL 4 | B04 | S1 | FF | R00 | ACF07 | 211 |  |  | FF | MEP |  |  |  |  |  |  |  |  |
| CP3M126036C0 |  | CB-P3 ; Final Fix, Inst of Light fittings (Mech RM) | 30d | 2012-03-24 | 2012-04-28 | CP3M109501C0, CP3M126032C0 SS+6d |  |  |  |  | 67.95d | 18d | ELECTRICAL [7983.6 h]; Cost |  |  |  |  | CP3ME26036C0 |  |  | CB | C |  | P3 | M1 | ME | 260 | 36 | BILL 4 | B04 | S1 | FF | R00 | ACF07 | 260 |  |  | FF | MEP |  |  |  |  |  |  |  |  |
| CP3M123030C0 |  | CB-P3 ; Final Fix, Inst of Grilles & Diffusers (Mech RM) | 30d | 2012-04-14 | 2012-05-19 | CP3M109501C0, CP3M123032C0 |  |  |  |  | 49.95d | 0d | MECHANICAL [1970.4 h]; Cost |  |  |  |  | CP3ME23030C0 |  |  | CB | C |  | P3 | M1 | ME | 230 | 30 | BILL 4 | B04 | S1 | FF | R00 | ACF07 | 230 |  |  | FF | MEP |  |  |  |  |  |  |  |  |
| CP3M101060C0 |  | CB-P3 ; 2nd, Ceiling Inspection by Consultants (Mech RM) | 12d | 2012-05-19 | 2012-06-02 | CP3M121114C0, CP3M123016C0, CP3M109501C0, CP3M109501C0 FF, CP3M121130C0, CP3M121132C0, CP3M123030C0, CP3M126030C0, CP3M126032C0, CP3M126036C0, CP3M127030C0, CP3M127032C0 |  |  |  |  | 49.95d | 0d | Labor General [0.6 h]; Cost |  |  |  |  | CP3ME01060C0 |  |  | CB | C |  | P3 | M1 | ME | 010 | 60 | BILL 4 | B04 | S1 | CI | R00 | ACF07 | 010 |  |  | 2n | MEP |  |  |  |  |  |  |  |  |
| CP3M109503C0 |  | CB-P3 ; Ceiling closure - Acoustic tiles (Mech RM) | 20.88d | 2012-06-02 | 2012-06-27 | CAFOA09503C1 FF, CP3M101060C0, CP3M109501C0, CP3M121120C0, CP3M126020C0, CP3M126022C0, CP3M127022C0, CP3M109701C0, CP3M123032C0 |  |  |  |  | 49.95d | 0d | ASSORTED CEILING FINISH [224.47 h]; CEILING GYPSUM [33.01 h]; ASSORTED CEILING FINISH [365 m2]; CEILING GYPSUM [92 m2]; Cost |  |  |  |  | CP3ME09503C0 |  |  | CB | C |  | P3 | M1 | CE | 095 | 03 | BILL 4 | B04 | S1 | 02 | R00 | ACF06 | 095 |  |  |  |  |  |  |  |  |  |  |  |  |
| CP3M109907C0 |  | CB-P3 ; Ceiling - Final paint (Mech RM) | 0d | 2012-06-27 | 2012-06-27 | CP3M109905C0, CP3M109503C0 |  |  |  |  | 73.95d | 24d | Cost |  |  |  |  | CP3ME09907C0 |  |  | CB | C |  | P3 | M1 | PA | 099 | 07 | BILL 4 | B04 | S1 | 02 | R00 | ACF06 | 099 |  |  |  |  |  |  |  |  |  |  |  |  |
| CP3M122041C0 |  | CB-P3 ; Final Fix, Inst of All drain (Mech RM) | 12d | 2012-06-27 | 2012-07-11 | CP3M109601C0, CP3M109503C0 |  |  |  |  | 49.95d | 0d | PLUMBING [1491.6 h]; Cost |  |  |  |  | CP3ME22041C0 |  |  | CB | C |  | P3 | M1 | ME | 220 | 41 | BILL 4 | B04 | S1 | FF | R00 | ACF07 | 220 |  |  | FF | MEP |  |  |  |  |  |  |  |  |
| CP3M126034C0 |  | CB-P3 ; Final Fix, Inst of Switch/Sockets (Mech RM) | 12d | 2012-06-27 | 2012-07-11 | CP3M109503C0 |  |  |  |  | 49.95d | 0d | ELECTRICAL [427.2 h]; Cost |  |  |  |  | CP3ME26034C0 |  |  | CB | C |  | P3 | M1 | ME | 260 | 34 | BILL 4 | B04 | S1 | FF | R00 | ACF07 | 260 |  |  | FF | MEP |  |  |  |  |  |  |  |  |

| ID | WBS | Activity | Duration | Start | Finish | Predecessors | Complete | Remaining | Planned start | Planned finish | Total float | Free float | Resources | Cost | Actual cost | change id | CCAD BUILDING(SET) | CCAD PHASE(SET) | CCAD FLOOR(SET) | CCAD ZONE(SET) | CCAD WORK(SET) | CCAD SECTION(SET) | CCAD SERIAL No.(SET) | CCAD CBS(SET) | CCAD BILL(SET) | CCAD HANDOVER(SET) | CCAD TAG(SET) | CCAD REV(SET) | CCADACF (SET) | CCAD SSCF | Change Order # | NEW ACTIVITY ID | RENZ % COMPLETE | July2011 Target% Complete | Claimed This Month | P_811 | P_711 | CCAD SUB ZONE MEP(SET) | CCAD RESPONSIBILITY(SET) | CCAD CSA | Act Selector % | user_number8 | user_integer1 | user_integer2 | user_number7 | R3 Finish |
| --- | --- | --- | --- | --- | --- | --- | --- | --- | --- | --- | --- | --- | --- | --- | --- | --- | --- | --- | --- | --- | --- | --- | --- | --- | --- | --- | --- | --- | --- | --- | --- | --- | --- | --- | --- | --- | --- | --- | --- | --- | --- | --- | --- | --- | --- | --- |
|  | 10 | **Precommissioning Tesing & snagging (MEP Rooms)** |  | 2012-07-11 | 2012-08-26 |  |  |  |  |  |  |  |  |  |  |  |  |  |  |  |  |  |  |  |  |  |  |  |  |  |  |  |  |  |  |  |  |  |  |  |  |  |  |  |  |  |
| CP3TS01801C0 |  | CB-P3 ; MEP de-snag, FIREM sign-off | 12d | 2012-07-11 | 2012-07-25 | CP3M121130C0, CP3M122041C0, CP3M126036C0, CP3M126034C0 |  |  |  |  | 49.95d | 0d | TESTING & COMMISSIONING [1530 h]; Cost |  |  | CP3TS01801C0 | CB | C | P3 | TS | SC | 018 | 01 | BILL 4 | B04 | S1 | 01 | R00 | ACF07 | 018 |  |  |  |  |  |  |  |  |  |  |  |  |  |  |  |  |
| CP3TS01806C0 |  | CB-P3 ; Touch-up & Clean / JV inspection /CIR /De-snag | 18d | 2012-07-25 | 2012-08-15 | CP3M108105C0, CP3M108709C0, CP3M109601C0, CP3M109701C0, CP3M109903C0, CP3M109907C0, CP3TS01801C0, CP3M105501C0, CP3M109503C0 |  |  |  |  | 49.95d | 0d | TESTING & COMMISSIONING [128 h]; Cost |  |  | CP3TS01802C0 | CB | C | P3 | TS | SC | 018 | 02 | BILL 4 | B04 | S1 | 02 | R00 | ACF07 | 018 |  |  |  |  |  |  |  |  |  |  |  |  |  |  |  |  |
| CP3TS01809C0 |  | CB-P3 ; Consultant's final de-snag inspection | 7d | 2012-08-15 | 2012-08-26 | CP3TS01806C0 |  |  |  |  | 49.95d | 0d | Labor General [0.5 h]; Cost |  |  | CP3TS01803C0 | CB | C | P3 | TS | SC | 018 | 03 | BILL 4 | B04 | S1 | 03 | R00 | ACF07 | 018 |  |  |  |  |  |  |  |  |  |  |  |  |  |  |  |  |
|  | 09 | **Toilet** |  | 2010-10-25 | 2012-09-17 |  |  |  |  |  |  |  |  |  |  |  |  |  |  |  |  |  |  |  |  |  |  |  |  |  |  |  |  |  |  |  |  |  |  |  |  |  |  |  |  |  |
| CP3TO22003C0 |  | CB-P3 ; 1st Fix, Soil, waste & vent pipes (Toilet) | 150d | 2010-10-25 A | 2011-10-17 | CP3S107807C0, CP3S207808C0, CP3TO26008C0 SS+2d | 90% | 15d | 2011-05-03 | 2011-10-29 | 70.47d | 0d | PLUMBING [1714.8 h]; Cost [92715.9 AED] | 92,715.95 | 83,444.36 | CP3TO22003C0 | CB | C | P3 | TO | ME | 220 | 03 | BILL 4 | B04 | S1 | 1F | R00 | ACF04 | 220 | 372 | 5800 | 50 | 60 | 5371.55 | 90 | 85 | 1S | PP | MEP | M1F |  |  |  |  |  |
| CP3TO09201C0 |  | CB-P3 ; Metal Studs (Toilet) | 60d | 2011-05-15 A | 2011-10-30 | CFNS103323C0, CFNS203323C0, OGNMU00009S0 | 57% | 25.8d | 2011-08-08 | 2011-10-19 | 115.47d | 3.6d | PARTITIONS [520 h]; PARTITIONS - Metal Studs [68 m]; Cost |  |  | CP3TO09201C0 | CB | C | P3 | TO | PT | 092 | 01 | BILL 4 | B04 | S1 | 1F | R00 | ACF06 | 092 | 313 | 5600 | 5 |  | 8724.23 | 40 | 20 |  | PP | GP | PMS | 0 | 0 | 0 | 0 |  |
| CP3TO23006C0 |  | CB-P3 ; 1st Fix, Main ducts (Toilet) | 48d | 2011-05-15 A | 2011-10-27 | CP3S107807C0, CP3S207808C0, CP3TO23007C0 SS+2d | 50% | 24d | 2011-07-19 | 2011-09-15 | 91.78d | 0d | MECHANICAL [16992 h]; Cost [927678 AED] | 927,677.51 | 463,838.75 | CP3TO23006C0 | CB | C | P3 | TO | ME | 230 | 06 | BILL 4 | B04 | S1 | 1F | R00 | ACF04 | 230 |  |  | 10 | 50 |  |  |  | 1S | PP | MEP | M1F | 0 | 0 | 0 | 0 |  |
| CP3TO23007C0 |  | CB-P3 ; 1st Fix, Chilled water, recovery water pipes (Toilet) | 70d | 2011-05-15 A | 2011-11-13 | CP3S107807C0, CP3S207808C0, CP3TO21101C0 SS+2d | 50% | 35d | 2011-07-17 | 2011-10-09 | 91.78d | 0d | MECHANICAL [38377.2 h]; Cost [2095021 AED] | 2,095,020.78 | 1,047,510.39 | CP3TO23007C0 | CB | C | P3 | TO | ME | 230 | 07 | BILL 4 | B04 | S1 | 1F | R00 | ACF04 | 230 |  |  | 15 | 45 |  | 50 | 15 | 1S | PP | MEP | M1F |  |  |  |  |  |
| CP3TO26008C0 |  | CB-P3 ; 1st Fix, Cable tray & trunking (Toilet) | 70d | 2011-05-15 A | 2011-11-13 | CP3S107807C0, CP3S207808C0, CP3TO27009C0 SS+2d | 50% | 35d | 2011-07-10 | 2011-10-02 | 70.47d | 0d | ELECTRICAL [948 h]; Cost [17044 AED] | 17,043.96 | 8,521.98 | CP3TO26008C0 | CB | C | P3 | TO | ME | 260 | 08 | BILL 4 | B04 | S1 | 1F | R00 | ACF04 | 260 | 388 | 1080 | 10 | 45 | 4961.12 | 50 | 45 | 1S | PP | MEP | M1F |  |  |  |  |  |
| CP3TO27009C0 |  | CB-P3 ; 1st Fix, ELV tray & trunking (Toilet) | 70d | 2011-05-15 A | 2011-11-13 | CP3S107807C0, CP3S207808C0 | 50% | 35d | 2011-07-07 | 2011-09-29 | 70.47d | 0d | ELECTRICAL [457.2 h]; Cost [24667.9 AED] | 24,667.88 | 12,333.94 | CP3TO27009C0 | CB | C | P3 | TO | ME | 270 | 09 | BILL 4 | B04 | S1 | 1F | R00 | ACF04 | 270 | 376 | 5900 | 10 | 45 | 7162.68 | 50 | 45 | 1S | PP | MEP | M1F |  |  |  |  |  |
| CP3TO22005C0 |  | CB-P3 ; 1st Fix, Domestic cold water pipes (Toilet) | 90d | 2011-05-16 A | 2011-10-31 | CP3S107807C0, CP3S207808C0, CP3TO22003C0 SS+2d | 70% | 27d | 2011-05-05 | 2011-08-20 | 70.47d | 0d | PLUMBING [1682.4 h]; Cost [90924.8 AED] | 90,924.75 | 63,647.32 | CP3TO22005C0 | CB | C | P3 | TO | ME | 220 | 05 | BILL 4 | B04 | S1 | 1F | R00 | ACF04 | 220 | 369 | 5700 | 50 | 60 | 5271.45 | 70 | 60 | 1S | PP | MEP | M1F |  |  |  |  |  |
| CP3TO27038C0 |  | CB-P3 ; 2nd Fix, ELV Conduit & wiring (Toilet) | 42d | 2011-06-07 A | 2011-12-27 | CP3TO09201C0 SS+6d, CP3TO27009C0, CP2ER09201C0 SS+6d, DP2KS09201C0, CP3TO09203C0 SS | 15% | 35.7d | 2011-08-06 | 2011-09-26 | 80.78d | 10.3d | ELECTRICAL [457.2 h]; Cost [24667.9 AED] | 24,667.88 | 3,700.18 | CP3TO27038C0 | CB | C | P3 | TO | ME | 270 | 38 | BILL 4 | B04 | S1 | 2F | R00 | ACF07 | 270 |  |  |  | 30 | 4297.61 |  |  | 2n | PP | MEP |  |  |  |  |  |  |
| CP3TO26036C0 |  | CB-P3 ; 2nd Fix, Wiring / Cabling (Toilet) | 42d | 2011-06-08 A | 2011-12-27 | CP3TO09201C0 SS+6d, CP3TO26008C0, CP2ER09201C0 SS+6d, DP2KS09201C0 SS+6d, CP3TO09203C0 SS | 15% | 35.7d | 2011-08-06 | 2011-09-26 | 80.78d | 10.3d | ELECTRICAL [216 h]; Cost [15494.5 AED] | 15,494.51 | 2,324.18 | CP3TO26036C0 | CB | C | P3 | TO | ME | 260 | 36 | BILL 4 | B04 | S1 | 2F | R00 | ACF07 | 260 |  |  |  | 30 | 2699.02 |  |  | 2n | PP | MEP |  |  |  |  |  |  |
| CP3TO21101C0 |  | CB-P3 ; 1st Fix, Fire Suppression pipes (Toilet) | 27d | 2011-07-10 A | 2011-08-30 A | CP3S107807C0, CP3S207808C0, CP3TO22004C0 SS+2d | 100% |  | 2011-08-07 | 2011-09-10 |  |  | MECHANICAL [4150.8 h]; Cost [209189 AED] | 209,189.4 | 209,189.4 | CP3TO21101C0 | CB | C | P3 | TO | ME | 211 | 01 | BILL 4 | B04 | S1 | 1F | R00 | ACF04 | 211 |  |  |  | 40 |  | 100 | 90 | 1S | PP | MEP | M1F |  |  |  |  |  |
| CP3TO23075C0 |  | CB-P3 ; Final Fix, FCU (Toilet) | 118d | 2011-08-02 A | 2012-06-09 | CP3TO09501C0 | 80% | 24d | 2012-05-28 | 2012-10-15 | 84.88d | 14.4d | MECHANICAL [3530.4 h]; Cost [190684 AED] | 190,684.24 | 152,547.39 | CP3TO23075C0 | CB | C | P3 | TO | ME | 230 | 75 | BILL 4 | B04 | S1 | FF | R00 | ACF07 | 230 |  |  |  |  |  | 80 | 0 | FF | PP | MEP |  |  |  |  |  |  |
| CP3TO09203C0 |  | CB-P3 ; Partitions 1st face (Toilet) | 36d | 2011-08-10 A | 2011-10-25 | CP3TO09201C0 SS+12d, OGNMU00015S0, CP2ER09201C0 SS, DP2KS09201C0 SS | 51% | 17.64d | 2011-10-27 | 2011-12-14 | 111.88d | 0d | PARTITIONS [68 m]; PARTITIONS [403 h]; Cost |  |  | CP3TO09203C0 | CB | C | P3 | TO | PT | 092 | 03 | BILL 4 | B04 | S1 | 2F | R00 | ACF06 | 092 | 314 | 1533 |  |  |  | 10 | 0 |  | PP | GP | P1F | 0 | 0 | 0 | 0 |  |
| CP3TO22004C0 |  | CB-P3 ; 1st Fix, Hot water pipes (Toilet) | 150d | 2011-08-10 A | 2011-11-24 | CP3S107807C0, CP3S207808C0, CP3TO22005C0 SS+2d | 70% | 45d | 2011-09-06 | 2012-03-06 | 70.47d | 0d | PLUMBING [17512.8 h]; Cost [945933 AED] | 945,933.17 | 662,153.22 | CP3TO22004C0 | CB | C | P3 | TO | ME | 220 | 04 | BILL 4 | B04 | S1 | 1F | R00 | ACF04 | 220 |  |  |  |  |  | 70 | 0 | 1S | PP | MEP | M1F |  |  |  |  |  |
| CP3TO22033C0 |  | CB-P3 ; 2nd Fix, Domestic water pipes (Toilet) | 48d | 2011-08-10 A | 2011-12-14 | CP3TO09201C0 SS+6d, CP3TO22005C0, CP2ER09201C0 SS+6d, DP2KS09201C0, CP3TO09203C0 SS | 35% | 31.2d | 2011-10-27 | 2011-12-28 | 91.47d | 21d | PLUMBING [1682.4 h]; Cost [90924.8 AED] | 90,924.75 | 31,823.66 | CP3TO22033C0 | CB | C | P3 | TO | ME | 220 | 33 | BILL 4 | B04 | S1 | 2F | R00 | ACF07 | 220 | 1140 | 1360 |  |  |  | 35 | 0 | 2n | PP | MEP |  |  |  |  |  |  |
| CP3TO22034C0 |  | CB-P3 ; 2nd Fix, Hot water pipes (Toilet) | 48d | 2011-08-10 A | 2012-01-09 | CP3TO09201C0 SS+6d, CP3TO22004C0, CP2ER09201C0 SS+6d, DP2KS09201C0, CP3TO09203C0 SS | 25% | 36d | 2011-10-27 | 2011-12-28 | 70.47d | 0d | PLUMBING [17512.8 h]; Cost [945933 AED] | 945,933.17 | 236,483.29 | CP3TO22034C0 | CB | C | P3 | TO | ME | 220 | 34 | BILL 4 | B04 | S1 | 2F | R00 | ACF07 | 220 |  |  |  |  |  | 25 | 0 | 2n | PP | MEP |  |  |  |  |  |  |
| CP3TO22035C0 |  | CB-P3 ; 2nd Fix, Soil, waste & vent pipes (Toilet) | 66d | 2011-08-10 A | 2011-12-17 | CP3TO09201C0 SS+6d, CP3TO22003C0, CP2ER09201C0 SS+6d, DP2KS09201C0, CP3TO09203C0 SS | 50% | 33d | 2011-10-27 | 2012-01-19 | 89.67d | 19.2d | PLUMBING [1714.8 h]; Cost [92715.9 AED] | 92,715.95 | 46,357.98 | CP3TO22035C0 | CB | C | P3 | TO | ME | 220 | 35 | BILL 4 | B04 | S1 | 2F | R00 | ACF07 | 220 |  |  |  |  |  | 50 | 0 | 2n | PP | MEP |  |  |  |  |  |  |
| CP3TO23047C0 |  | CB-P3 ; 2nd Fix, Ceiling VAV / Damper (Toilet) | 48d | 2011-08-10 A | 2012-06-27 | CP3TO09501C0, CP3TO23006C0 | 20% | 38.4d | 2012-04-09 | 2012-06-03 | 70.47d | 0d | MECHANICAL [1419.6 h]; Cost [76659.7 AED] | 76,659.7 | 15,331.94 | CP3TO23047C0 | CB | C | P3 | TO | ME | 230 | 47 | BILL 4 | B04 | S1 | 2F | R00 | ACF07 | 230 |  |  |  |  |  | 20 | 0 | 2n | PP | MEP |  |  |  |  |  |  |
| CP3TO26037C0 |  | CB-P3 ; 2nd Fix, Conduit (Toilet) | 42d | 2011-08-10 A | 2011-12-14 | CP3TO09201C0 SS+6d, CP3TO23006C0, CP2ER09201C0 SS+6d, DP2KS09201C0 SS+6d, CP3TO09203C0 SS | 15% | 35.7d | 2011-10-27 | 2011-12-21 | 91.78d | 21.3d | ELECTRICAL [430.8 h]; Cost [29580.4 AED] | 29,580.43 | 4,437.06 | CP3TO26037C0 | CB | C | P3 | TO | ME | 260 | 37 | BILL 4 | B04 | S1 | 2F | R00 | ACF07 | 260 | 1144 | 6000 |  |  |  | 15 | 0 | 2n | PP | MEP |  |  |  |  |  |  |
| CP3TO21103C0 |  | CB-P3 ; 2nd Fix, Ceiling Fire Suppression pipes (Toilet) | 30d | 2011-10-25 | 2011-12-05 | CP3TO09203C0 |  |  |  |  | 205.24d | 134.76d | MECHANICAL [3975.6 h]; Cost |  |  | CP3TO21103C0 | CB | C | P3 | TO | ME | 211 | 03 | BILL 4 | B04 | S1 | 2F | R00 | ACF07 | 211 | 377 | 1079 |  |  |  |  |  | 2n | PP | MEP |  |  |  |  |  |  |
| CP3TO22042C0 |  | CB-P3 ; 2nd Fix, Ceiling Domestic cold water pipes (Toilet) | 36d | 2011-10-25 | 2011-12-12 | CP3TO09203C0 |  |  |  |  | 199.24d | 128.76d | PLUMBING [1682.4 h]; Cost |  |  | CP3TO22042C0 | CB | C | P3 | TO | ME | 220 | 42 | BILL 4 | B04 | S1 | 2F | R00 | ACF07 | 220 |  |  |  |  |  |  |  | 2n | PP | MEP |  |  |  |  |  |  |
| CP3TO22043C0 |  | CB-P3 ; 2nd Fix, Ceiling Hot water pipes (Toilet) | 36d | 2011-10-25 | 2011-12-12 | CP3TO09203C0 |  |  |  |  | 199.24d | 128.76d | PLUMBING [17512.8 h]; Cost |  |  | CP3TO22043C0 | CB | C | P3 | TO | ME | 220 | 43 | BILL 4 | B04 | S1 | 2F | R00 | ACF07 | 220 |  |  |  |  |  |  |  | 2n | PP | MEP |  |  |  |  |  |  |
| CP3TO22045C0 |  | CB-P3 ; 2nd Fix, Ceiling Soil, waste & vent pipes (Toilet) | 36d | 2011-10-25 | 2011-12-12 | CP3TO09203C0 |  |  |  |  | 199.24d | 128.76d | PLUMBING [1714.8 h]; Cost |  |  | CP3TO22045C0 | CB | C | P3 | TO | ME | 220 | 45 | BILL 4 | B04 | S1 | 2F | R00 | ACF07 | 220 |  |  |  |  |  |  |  | 2n | PP | MEP |  |  |  |  |  |  |
| CP3TO23046C0 |  | CB-P3 ; 2nd Fix, Chilled water, recovery water pipes (Toilet) | 36d | 2011-10-25 | 2011-12-12 | CP3TO09203C0 |  |  |  |  | 199.24d | 128.76d | MECHANICAL [38377.2 h]; Cost |  |  | CP3TO23046C0 | CB | C | P3 | TO | ME | 230 | 46 | BILL 4 | B04 | S1 | 2F | R00 | ACF07 | 230 |  |  |  |  |  |  |  | 2n | PP | MEP |  |  |  |  |  |  |
| CP3TO23051C0 |  | CB-P3 ; 2nd Fix, Branch ducts (Toilet) | 36d | 2011-10-25 | 2011-12-12 | CP3TO09203C0 |  |  |  |  | 199.24d | 128.76d | MECHANICAL [16992 h]; Cost |  |  | CP3TO23051C0 | CB | C | P3 | TO | ME | 230 | 51 | BILL 4 | B04 | S1 | 2F | R00 | ACF07 | 230 |  |  |  |  |  |  |  | 2n | PP | MEP |  |  |  |  |  |  |
| CP3TO26052C0 |  | CB-P3 ; 2nd Fix, Ceiling Conduit (Toilet) | 36d | 2011-10-25 | 2011-12-12 | CP3TO09203C0 |  |  |  |  | 199.24d | 128.76d | ELECTRICAL [430.8 h]; Cost |  |  | CP3TO26052C0 | CB | C | P3 | TO | ME | 260 | 52 | BILL 4 | B04 | S1 | 2F | R00 | ACF07 | 260 |  |  |  |  |  |  |  | 2n | PP | MEP |  |  |  |  |  |  |
| CP3TO27054C0 |  | CB-P3 ; 2nd Fix, Ceiling ELV Cabling & wiring (Toilet) | 30d | 2011-10-25 | 2011-12-05 | CP3TO09203C0 |  |  |  |  | 205.24d | 134.76d | ELECTRICAL [457.2 h]; Cost |  |  | CP3TO27054C0 | CB | C | P3 | TO | ME | 270 | 54 | BILL 4 | B04 | S1 | 2F | R00 | ACF07 | 270 | 390 | 6100 |  |  |  |  |  | 2n | PP | MEP |  |  |  |  |  |  |
| CP3TO09205C0 |  | CB-P3 ; Partitions Closing (Toilet) | 21d | 2012-01-10 | 2012-02-02 | CP3TO09203C0, CP3TO22033C0, CP3TO22034C0, CP3TO22035C0, CP3TO26036C0, CP3TO26037C0, CP3TO27038C0, CAFOA09204C1 FF |  |  |  |  | 70.47d | 0d | PARTITIONS [68 m]; PARTITIONS [524 h]; Cost |  |  | CP3TO09205C0 | CB | C | P3 | TO | PT | 092 | 05 | BILL 4 | B04 | S1 | FF | R00 | ACF06 | 092 | 315 | 1534 |  |  |  |  |  |  | PP | GP | P2F |  |  |  |  |  |
| CP3TO07103C0 |  | CB-P3 ; Waterproofing (Toilet) | 18d | 2012-02-05 | 2012-02-25 | CP3TO09205C0 |  |  |  |  | 70.47d | 0d | THERMAL & MOISTURE [24 h]; THERMAL & MOISTURE [124 m2]; Cost |  |  | CP3TO07103C0 | CB | C | P3 | TO | FF | 071 | 03 | BILL 4 | B04 | S1 | 01 | R00 | ACF03 | 071 | 105 | 79 |  |  |  |  |  |  | PP |  |  |  |  |  |  |  |
| CP3TO26053C0 |  | CB-P3 ; 2nd Fix, Ceiling Wiring / Cabling (Toilet) | 36d | 2012-02-05 | 2012-03-17 | CP3TO09205C0 |  |  |  |  | 156.88d | 86.4d | ELECTRICAL [216 h]; Cost |  |  | CP3TO26053C0 | CB | C | P3 | TO | ME | 260 | 53 | BILL 4 | B04 | S1 | 2F | R00 | ACF07 | 260 |  |  |  |  |  |  |  | 2n | PP | MEP |  |  |  |  |  |  |
| CP3TO09303C0 |  | CB-P3 ; Porcelain tiles (Toilet) | 30d | 2012-02-26 | 2012-03-31 | CP3TO07103C0 |  |  |  |  | 70.47d | 0d | CERAMIC FLOOR TILES [40 h]; Cost |  |  | CP3TO09303C0 | CB | C | P3 | TO | FF | 093 | 03 | BILL 4 | B04 | S1 | 02 | R00 | ACF06 | CT | 103 | 77 |  |  |  |  |  |  | PP |  |  |  |  |  |  |  |
| CP3TO09501C0 |  | CB-P3 ; Ceiling Grid and ServiceTile (Toilet) | 36d | 2012-04-01 | 2012-05-12 | CP3TO09205C0 SS+15d, CP3TO09303C0, CP3TO22045C0 FF, CP3TO22043C0 FF, CP3TO22042C0 FF, CP3TO26052C0 FF, CP3TO23046C0 FF, CP3TO23051C0 FF, CP3TO21103C0 FF, CP3TO27054C0 FF |  |  |  |  | 70.47d | 0d | CEILING GRID FOR GYPSUM [112.01 h]; CEILING GRID FOR GYPSUM [9.47 m2]; Cost |  |  | CP3TO09501C0 | CB | C | P3 | TO | CE | 095 | 01 | BILL 4 | B04 | S1 | 01 | R00 | ACF06 | 095 | 101 | 75 |  |  |  |  |  |  | PP |  |  |  |  |  |  |  |
| CP3TO09305C0 |  | CB-P3 ; Ceramic floor tile (Toilet) | 30d | 2012-05-13 | 2012-06-17 | CAFCI22001R02 FS+58d, CP3TO09501C0 |  |  |  |  | 71.38d | 0d | CERAMIC FLOOR TILES [32 h]; CERAMIC FLOOR TILES [14 m2]; Cost |  |  | CP3TO09305C0 | CB | C | P3 | TO | FF | 093 | 05 | BILL 4 | B04 | S1 | 02 | R00 | ACF06 | CT | 106 | 80 |  |  |  |  |  |  | PP |  |  |  |  |  |  | R3 |
| CP3TO21105C0 |  | CB-P3 ; Final Fix, Sprinkler Heads & accessories (Toilet) | 36d | 2012-05-13 | 2012-06-24 | CP3TO09501C0 |  |  |  |  | 72.88d | 2.4d | MECHANICAL [278.4 h]; Cost |  |  | CP3TO21105C0 | CB | C | P3 | TO | ME | 211 | 05 | BILL 4 | B04 | S1 | FF | R00 | ACF07 | 211 | 391 | 1082 |  |  |  |  |  | FF | PP | MEP |  |  |  |  |  |  |
| CP3TO21107C0 |  | CB-P3 ; Final Fix, Fire hose cabinets & extinguishers (Toilet) | 36d | 2012-05-13 | 2012-06-24 | OGNMU00061S0, CP3TO09501C0 |  |  |  |  | 72.88d | 2.4d | MECHANICAL [4239.6 h]; Cost |  |  | CP3TO21107C0 | CB | C | P3 | TO | ME | 211 | 07 | BILL 4 | B04 | S1 | FF | R00 | ACF07 | 211 |  |  |  |  |  |  |  | FF | PP | MEP |  |  |  |  |  |  |
| CP3TO23074C0 |  | CB-P3 ; Final Fix, Grilles, panels & diffusers (Toilet) | 36d | 2012-05-13 | 2012-06-24 | CP3TO09501C0 |  |  |  |  | 72.88d | 2.4d | MECHANICAL [1970.4 h]; Cost |  |  | CP3TO23074C0 | CB | C | P3 | TO | ME | 230 | 74 | BILL 4 | B04 | S1 | FF | R00 | ACF07 | 230 |  |  |  |  |  |  |  | FF | PP | MEP |  |  |  |  |  |  |
| CP3TO26076C0 |  | CB-P3 ; Final Fix, Lighting fittings / Outlets (Toilet) | 36d | 2012-05-13 | 2012-06-24 | CP3TO09501C0 |  |  |  |  | 72.88d | 2.4d | ELECTRICAL [7983.6 h]; Cost |  |  | CP3TO26076C0 | CB | C | P3 | TO | ME | 260 | 76 | BILL 4 | B04 | S1 | FF | R00 | ACF07 | 260 |  |  |  |  |  |  |  | FF | PP | MEP |  |  |  |  |  |  |
| CP3TO26077C0 |  | CB-P3 ; Final Fix, DB (Toilet) | 36d | 2012-05-13 | 2012-06-24 | CP3TO09501C0 |  |  |  |  | 72.88d | 2.4d | ELECTRICAL [5335.2 h]; Cost |  |  | CP3TO26077C0 | CB | C | P3 | TO | ME | 260 | 77 | BILL 4 | B04 | S1 | FF | R00 | ACF07 | 260 |  |  |  |  |  |  |  | FF | PP | MEP |  |  |  |  |  |  |
| CP3TO27080C0 |  | CB-P3 ; Final Fix, ELV devices (Toilet) | 36d | 2012-05-13 | 2012-06-24 | CP3TO09501C0 |  |  |  |  | 72.88d | 2.4d | ELECTRICAL [2054.4 h]; Cost |  |  | CP3TO27080C0 | CB | C | P3 | TO | ME | 270 | 80 | BILL 4 | B04 | S1 | FF | R00 | ACF07 | 270 | 401 | 6200 |  |  |  |  |  | FF | PP | MEP |  |  |  |  |  |  |
| CP3TO27087C0 |  | CB-P3 ; Final Fix, Fire alarm devices (Toilet) | 36d | 2012-05-13 | 2012-06-24 | CP3PA23015C0, CP3TO09501C0 |  |  |  |  | 72.88d | 2.4d | ELECTRICAL [108896 h]; Cost |  |  | CP3TO27087C0 | CB | C | P3 | TO | ME | 270 | 87 | BILL 4 | B04 | S1 | FF | R00 | ACF07 | 270 |  |  |  |  |  |  |  | FF | PP | MEP |  |  |  |  |  |  |
| CP3TO33073C0 |  | CB-P3 ; Final Fix, Sanitary appliances (Toilet) | 36d | 2012-05-13 | 2012-06-24 | CP3TO09501C0, CP3TO22033C0, A10230 FS+148d |  |  |  |  | 72.88d | 2.4d | PLUMBING [1491.6 h]; Cost |  |  | CP3TO33073C0 | CB | C | P3 | TO | ME | 330 | 73 | BILL 4 | B04 | S1 | FF | R00 | ACF07 | 330 | 395 | 1366 |  |  |  |  |  | FF | PP | MEP |  |  |  |  |  |  |
| CP3TO10201C0 |  | CB-P3 ; Toilet Internal Partitions (Toilet) | 22.5d | 2012-06-18 | 2012-07-14 | CP3TO09305C0 |  |  |  |  | 71.38d | 0d | PARTITIONS [141 h]; PARTITIONS [8.38 m]; Cost |  |  | CP3TO10201C0 | CB | C | P3 | TO | FI | 102 | 01 | BILL 4 | B04 | S1 | SP | R00 | ACF06 | 102 | 104 | 78 |  |  |  |  |  |  | PP |  |  |  |  |  |  |  |
| CP3TO33001C0 |  | CB-P3 ; Counter-tops (Toilet) | 17.25d | 2012-06-18 | 2012-07-08 | CP3TO09305C0 |  |  |  |  | 76.62d | 5.25d | Labor General [0.5 h]; Cost |  |  | CP3TO33001C0 | CB | C | P3 | TO | AC | 330 | 01 | BILL 4 | B04 | S1 | SP | R00 | ACF08 | 330 | 107 | 81 |  |  |  |  |  |  | PP |  |  |  |  |  |  |  |
| CP3TO09503C0 |  | CB-P3 ; Ceiling closure (Toilet) | 12d | 2012-06-27 | 2012-07-11 | CAFOA09503C1 FF, CP3TO21103C0, CP3TO22042C0, CP3TO22043C0, CP3TO22045C0, CP3TO23046C0, CP3TO23047C0, CP3TO23051C0, CP3TO26052C0, CP3TO26053C0, CP3TO27054C0, CP3TO21105C0, CP3TO21107C0, CP3TO23074C0, CP3TO23075C0, CP3TO26076C0, CP3TO26077C0, CP3TO27080C0, CP3TO27087C0, CP3TO33073C0 |  |  |  |  | 70.47d | 0d | ASSORTED CEILING FINISH [20.91 h]; CEILING GYPSUM [3.08 h]; ASSORTED CEILING FINISH [34 m2]; CEILING GYPSUM [9 m2]; Cost |  |  | CP3TO09503C0 | CB | C | P3 | TO | CE | 095 | 03 | BILL 4 | B04 | S1 | 02 | R00 | ACF06 | 095 | 102 | 76 |  |  |  |  |  |  | PP |  |  |  |  |  |  |  |
| CP3TO33003C0 |  | CB-P3 ; Toilet accessories (Toilet) | 9d | 2012-07-14 | 2012-07-24 | CP3TO10201C0, CP3TO33001C0 |  |  |  |  | 71.38d | 0.9d | PARTITIONS [1260 h]; Cost |  |  | CP3TO33003C0 | CB | C | P3 | TO | AC | 330 | 03 | BILL 4 | B04 | S1 | SP | R00 | ACF08 | 330 | 108 | 82 |  |  |  |  |  |  | PP |  |  |  |  |  |  |  |

| ID | WBS | Activity | Type | Duration | Start | Finish | Predecessors | Complete | Remaining | Planned start | Planned finish | Total float | Free float | Resources | change id | CCAD BUILDING(SET) | CCAD PHASE(SET) | CCAD FLOOR(SET) | CCAD ZONE(SET) | CCAD WORK(SET) | CCAD SECTION(SET) | CCAD SERIAL No.(SET) | CCAD RESPONSIBILITY(SET) | CCAD CBS(SET) | CCAD BILL(SET) | CCAD HANDOVER(SET) | CCAD TAG(SET) | CCAD REV(SET) | CCADACF (SET) | CCAD SSCF | Change Order # | NEW ACTIVITY ID | RENZ % COMPLETE | CCAD DIVISION(SET) | Actual Cost | CCAD CSA | Claimed This Month | P_811 | P_711 |
| --- | --- | --- | --- | --- | --- | --- | --- | --- | --- | --- | --- | --- | --- | --- | --- | --- | --- | --- | --- | --- | --- | --- | --- | --- | --- | --- | --- | --- | --- | --- | --- | --- | --- | --- | --- | --- | --- | --- | --- |
|  | 10 | **Precommissioning Tesing & snagging (Toilet)** |  |  | 2012-07-11 | 2012-09-17 |  |  |  |  |  |  |  |  |  |  |  |  |  |  |  |  |  |  |  |  |  |  |  |  |  |  |  |  |  |  |  |  |  |
| CP3TS01805C0 |  | CB-P3 ; MEP de-snag, FIREM sign-off |  | 12d | 2012-07-11 | 2012-07-25 | CP3TO09503C0 |  |  |  |  | 70.47d | 0d | TESTING & COMMISSIONING [765 h]; Cost | CP3TS01801C0 | CB | C | P3 | TS | SC | 018 | 01 | PP | BILL 4 | B04 | S1 | 01 | R00 | ACF07 | 018 |  |  |  |  |  |  |  |  |  |
| CP3TS01808C0 |  | CB-P3 ; Touch-up & Clean / JV inspection /CIR /De-snag |  | 17d | 2012-07-25 | 2012-08-14 | CP3TO09303C0, CP3TO09305C0, CP3TO10201C0, CP3TO33001C0, CP3TO33003C0, CP3TO33073C0, CP3TS01805C0 |  |  |  |  | 70.47d | 20.52d | TESTING & COMMISSIONING [128 h]; Cost | CP3TS01802C0 | CB | C | P3 | TS | SC | 018 | 02 | PP | BILL 4 | B04 | S1 | 02 | R00 | ACF07 | 018 |  |  |  |  |  |  |  |  |  |
| CP3TS01811C0 |  | CB-P3 ; Consultant's final de-snag inspection |  | 6.88d | 2012-09-09 | 2012-09-17 | CP3TS01808C0, CAFTS01803C0, CP3TS01809C0 |  |  |  |  | 49.95d | 17.45d | Labor General [1 h]; Cost | CP3TS01803C0 | CB | C | P3 | TS | SC | 018 | 03 | PP | BILL 4 | B04 | S1 | 03 | R00 | ACF07 | 018 |  |  |  |  |  |  |  |  |  |
|  | P2 | **Level Podium 2** |  |  | 2010-08-04 | 2012-11-12 |  |  |  |  |  |  |  |  |  |  |  |  |  |  |  |  |  |  |  |  |  |  |  |  |  |  |  |  |  |  |  |  |  |
|  | 01 | **Structure & Envelopment** |  |  | 2010-08-04 | 2012-04-30 |  |  |  |  |  |  |  |  |  |  |  |  |  |  |  |  |  |  |  |  |  |  |  |  |  |  |  |  |  |  |  |  |  |
| CP2SD03311C0 |  | CB-P2 ; Corewall concrete (Zone SD) |  | 28d | 2010-08-04 A | 2010-09-06 A | CP3SD03311C0 | 100% |  | 2011-01-12 | 2011-02-13 |  |  | CONCRETE [4968 h]; CONCRETE [125 m3]; Cost | CP2SD03311C0 | CB | C | P2 | SD | CT | 033 | 11 |  | BILL 4 | B04 | S1 | 04 | R00 | ACF03 | 033 | 301 | 266 | 100 | 03 |  |  |  |  |  |
| CP2SC03311C0 |  | CB-P2 ; Corewall concrete (Zone SC) |  | 22d | 2010-08-13 A | 2010-09-16 A | CP3SC03311C0 | 100% |  | 2011-01-30 | 2011-02-23 |  |  | CONCRETE [4968 h]; CONCRETE [125 m3]; Cost | CP2SC03311C0 | CB | C | P2 | SC | CT | 033 | 11 |  | BILL 4 | B04 | S1 | 04 | R00 | ACF03 | 033 | 301 | 262 | 100 | 03 |  |  |  |  |  |
| CP2S105101C0 |  | CB-P2 ; Erection of Structural Steel (Zone S1) |  | 20.38d | 2010-08-14 A | 2011-01-05 A | CP3S105101C0 SS+9d, CP3S105101C0 FF, DP3S205101C0 SS | 100% |  | 2010-08-14 | 2010-09-06 |  |  | STRUCTURAL STEEL [4745 h]; STRUCTURAL STEEL [184 T(Fe)]; Cost | CP2S105101C0 | CB | C | P2 | S1 | ST | 051 | 01 |  | BILL 4 | B04 | S1 | 01 | R00 | ACF03 | 051 | 297 | 258 | 100 |  | 1479745 | ST |  |  |  |
| CP2S205101C0 |  | CB-P2 ; Erection of Structural Steel (Zone S2) |  | 11.1d | 2010-08-14 A | 2010-11-02 A | CP2SD03311C0 SS+10d, CP3S205101C0 SS+8d, CP3S205101C0 FF | 100% |  | 2010-08-24 | 2010-09-06 |  |  | STRUCTURAL STEEL [1673 h]; STRUCTURAL STEEL [64 T(Fe)]; Cost | CP2S205101C0 | CB | C | P2 | S2 | ST | 051 | 01 |  | BILL 4 | B04 | S1 | 01 | R00 | ACF03 | 051 | 297 | 264 | 100 |  | 1961522 | ST |  |  |  |
| CP2S105103C0 |  | CB-P2 ; Alignment & welding (Zone S1) |  | 20.71d | 2010-08-15 A | 2011-01-09 A | CP2S105101C0 SS+3d, CP2S105101C0 FF, CP3S105101C0 FF | 100% |  | 2010-08-17 | 2010-09-09 |  |  | STRUCTURAL STEEL [392 h]; Cost | CP2S105103C0 | CB | C | P2 | S1 | ST | 051 | 03 |  | BILL 4 | B04 | S1 | 02 | R00 | ACF03 | 051 | 298 | 259 | 100 |  | 164416 | ST |  |  |  |
| CP2S205103C0 |  | CB-P2 ; Alignment & welding (Zone S2) |  | 9.94d | 2010-08-17 A | 2010-11-10 A | CP2S205101C0 SS+3d, CP2S205101C0 FF, CP3S205101C0 FF | 100% |  | 2010-08-28 | 2010-09-07 |  |  | STRUCTURAL STEEL [520 h]; Cost | CP2S205103C0 | CB | C | P2 | S2 | ST | 051 | 03 |  | BILL 4 | B04 | S1 | 02 | R00 | ACF03 | 051 | 298 | 265 | 100 |  | 217947 | ST |  |  |  |
| CP2S105305C0 |  | CB-P2 ; Metal Decking (Zone S1) |  | 14.88d | 2010-10-12 A | 2011-01-04 A | CP1S105101C0, CP2S105103C0 FS+14d, OGNMU00005S0 | 100% |  | 2010-09-28 | 2010-10-14 |  |  | METAL DECKING [2328 h]; METAL DECKING [2949 m2]; Cost | CP2S105305C0 | CB | C | P2 | S1 | ST | 053 | 05 |  | BILL 4 | B04 | S1 | 03 | R00 | ACF03 | 053 | 299 | 260 | 100 |  | 346258 | ST |  |  |  |
| CP2S205305C0 |  | CB-P2 ; Metal Decking (Zone S2) |  | 20d | 2010-11-02 A | 2010-11-25 A | CP1S205101C0, CP2S205103C0 FS+26d | 100% |  | 2010-12-09 | 2011-01-03 |  |  | METAL DECKING [3088 h]; METAL DECKING [3909 m2]; Cost | CP2S205305C0 | CB | C | P2 | S2 | ST | 053 | 05 |  | BILL 4 | B04 | S1 | 03 | R00 | ACF03 | 053 | 299 | 267 | 100 |  | 458993 | ST |  |  |  |
| CP2CO04403C0 |  | CB-P2 ; S2 - Ex. partitions (Common Zone - to be S11) |  | 42d | 2010-11-12 A | 2012-02-13 | CGLS103335C0, CGLS203335C0, CP1S103335C0, CP1S203335C0, CP2GN00202C0 FF, CP3CO04401C0 SS | 20% | 33.6d | 2011-10-16 | 2011-12-10 | 179.4d | 0d | FACADE NATURAL STONE PANEL [0.6 h]; Cost | CP2CO04403C0 | CB | C | P2 | CO | FA | 044 | 03 |  | BILL 4 | B04 | S1 | FS2 | R00 | ACF05 | 044 | 166 | 89 | 10 |  |  | FA |  |  |  |
| CP2S103335C0 |  | CB-P2 ; Concrete on metal decking (Zone S1) |  | 10d | 2010-12-06 A | 2011-01-05 A | CP2S105305C0 | 100% |  | 2010-12-22 | 2011-01-04 |  |  | CONCRETE [13392 h]; CONCRETE [337 m3]; Cost | CP2S103335C0 | CB | C | P2 | S1 | CT | 033 | 35 |  | BILL 4 | B04 | S1 | 08 | R00 | ACF03 | 033 | 302 | 263 | 100 | 03 |  |  |  |  |  |
| CP2S203335C0 |  | CB-P2 ; Concrete on metal decking (Zone S2) |  | 10d | 2010-12-08 A | 2010-12-13 A | CP2S205305C0 | 100% |  | 2011-01-08 | 2011-01-19 |  |  | CONCRETE [17808 h]; CONCRETE [448 m3]; Cost | CP2S203335C0 | CB | C | P2 | S2 | CT | 033 | 35 |  | BILL 4 | B04 | S1 | 08 | R00 | ACF03 | 033 | 302 | 268 | 100 | 03 |  |  |  |  |  |
| CP2CO04401C0 |  | CB-P2 ; S1 - Ex. partitions (Common Zone) |  | 200d | 2011-01-10 A | 2011-10-11 | CGLS103335C0, CGLS203335C0, CP2GN00202C0 FF | 95% | 10d | 2011-02-02 | 2011-09-26 | 125.75d | 0d | PARTITIONS [102.29 m]; PARTITIONS [509.4 h]; Cost | CP2CO04401C0 | CB | C | P2 | CO | FA | 044 | 01 |  | BILL 4 | B04 | S1 | FS1 | R00 | ACF05 | 044 | 164 | 87 | 60 |  |  | FA | 32317.25 |  |  |
| CP2S207808C0 |  | CB-P2 ; Cementitious Fire Proofing (Zone S2) |  | 12d | 2011-01-17 A | 2011-02-12 A | CP1S203335C0 | 100% |  | 2011-01-02 | 2011-01-15 |  |  | CEMENTITIOUS FIREPROOFING [1875 h]; CEMENTITIOUS FIREPROOFING [3750 m2]; Cost | CP2S207808C0 | CB | C | P2 | S2 | ST | 078 | 08 |  | BILL 4 | B04 | S1 | 04 | R00 | ACF03 | 078 | 300 | 269 | 100 |  |  | ST |  |  |  |
| CP2S107807C0 |  | CB-P2 ; Cementitious Fire Proofing (Zone S1) |  | 10d | 2011-01-30 A | 2011-02-12 A | CP1S103335C0, CP2S103335C0, CP2S203335C0 | 100% |  | 2011-02-01 | 2011-02-12 |  |  | CEMENTITIOUS FIREPROOFING [1415 h]; CEMENTITIOUS FIREPROOFING [2829 m2]; Cost | CP2S107807C0 | CB | C | P2 | S1 | ST | 078 | 07 |  | BILL 4 | B04 | S1 | 04 | R00 | ACF03 | 078 | 300 | 261 | 100 |  |  | ST |  |  |  |
| CP2CO04001C0 |  | CB-P2 ; Blockworks (Common Zone) |  | 28d | 2011-03-27 A | 2011-04-21 A | CP2S107807C0, CP2S207808C0 | 100% |  | 2011-02-28 | 2011-04-02 |  |  | BLOCKWORKS [4498 h]; BLOCKWORKS [1285 m2]; Cost | CP2CO04001C0 | CB | C | P2 | CO | BL | 040 | 01 |  | BILL 4 | B04 | S1 | BL | R00 | ACF06 | 040 | 73 | 73 | 100 | 04 |  |  |  |  |  |
| CP2CO04003C0 |  | CB-P2 ; Plaster to Blockwork (Common Zone) |  | 36d | 2011-04-03 A | 2011-04-21 A | CP2CO04001C0 SS+24d | 100% |  | 2011-03-28 | 2011-05-09 |  |  | BLOCKWORKS [113 h]; Cost | CP2CO04003C0 | CB | C | P2 | CO | BL | 040 | 03 |  | BILL 4 | B04 | S1 | BL | R00 | ACF06 | 040 |  |  | 100 |  |  |  |  |  |  |
| CP2GN00202C0 |  | CB-P2 ; Temporary Enclosure | level of effort | 184.36d | 2011-04-05 A | 2012-02-13 | CP2PA09203C0 SS, CP2DC09203C0 SS, CP2TR09203C0 SS, CP2ER09203C0 SS | 41% | 109.6d | 2011-04-05 | 2011-11-13 | 179.4d | 0d | Labor General [0.6 h]; Cost |  | CB | C | P2 | GEN | FA | GEN |  |  |  | B04 |  | TE | R00 | ACF05 | 010 |  |  |  |  |  | FA |  | 64.95 | 50.7 |
| CP2CO04411C0 |  | CB-P2 ; S1 onyx stone facade (Common Zone) |  | 66d | 2011-09-05 A | 2011-10-16 | CP2CO04401C0 | 95% | 3.3d | 2011-09-25 | 2011-12-15 | 281.7d | 222.3d | FACADE STONE PANEL 1 [655 h]; FACADE STONE PANEL 1 [239 m2]; FACADE TOTAL QUANTITY m2 [239 m2]; Cost | CP2CO04411C0 | CB | C | P2 | CO | FA | 044 | 11 |  | BILL 4 | B04 | S1 | FS1 | R00 | ACF05 | 044 | 167 | 90 |  |  |  | FA |  |  |  |
| CP2CO04455C0 |  | CB-P2 ; S1 Inner Side of External Partition (Common Zone) |  | 42d | 2012-01-11 | 2012-03-01 | CP2CO04401C0, CP2PA09205C0 SS, CP2DC09205C0 SS |  |  |  |  | 52.95d | 36d | FACADE STONE PANEL 1 [765.9 h]; Cost | DP3CO04415C0 | CB | C | P2 | CO | FA | 044 | 15 |  | BILL 5 | B04 | S1 | FS1 | R00 | ACF05 | 044 |  |  |  |  |  | FA |  |  |  |
| CP2CO04409C0 |  | CB-P2 ; S2 stone facade (Common Zone - to be S11) |  | 66d | 2012-02-13 | 2012-04-30 | CP2CO04403C0, CP3CO04409C0 SS |  |  |  |  | 179.4d | 0d | FACADE NATURAL STONE PANEL [443.6 h]; FACADE NATURAL STONE PANEL [162 m2]; FACADE TOTAL QUANTITY m2 [162 m2]; Cost | CP2CO04409C0 | CB | C | P2 | CO | FA | 044 | 09 |  | BILL 4 | B04 | S1 | FS2 | R00 | ACF05 | 044 | 165 | 88 |  |  |  | FA |  |  |  |

| ID | WBS | Activity | Duration | Start | Finish | Predecessors | Complete | Remaining | Planned start | Planned finish | Total float | Free float | Resources | Cost | Actual cost | user_number8 | user_integer1 | user_integer2 | user_number7 | Change Order # | NEW ACTIVITY ID | change id | RENZ % COMPLETE | Claimed This Month | P_811 | P_711 | CCAD BUILDING(SET) | CCAD PHASE(SET) | CCAD FLOOR(SET) | CCAD ZONE(SET) | CCAD WORK(SET) | CCAD SECTION(SET) | CCAD SERIAL No.(SET) | CCAD CBS(SET) | CCAD BILL(SET) | CCAD HANDOVER(SET) | CCAD TAG(SET) | CCAD REV(SET) | CCADACF (SET) | CCAD CSA | CCAD SSCF | Act Selector % | PERCENT COMPLETE | July2011 Target% Complete | CCAD SUB ZONE MEP(SET) | CCAD MEQ | CCAD DIVISION(SET) | R3 Finish |
| --- | --- | --- | --- | --- | --- | --- | --- | --- | --- | --- | --- | --- | --- | --- | --- | --- | --- | --- | --- | --- | --- | --- | --- | --- | --- | --- | --- | --- | --- | --- | --- | --- | --- | --- | --- | --- | --- | --- | --- | --- | --- | --- | --- | --- | --- | --- | --- | --- |
|  | 04 | **Public Area ( Elev.Lobby & Corridors )** |  | 2011-01-09 | 2012-11-12 |  |  |  |  |  |  |  |  |  |  |  |  |  |  |  |  |  |  |  |  |  |  |  |  |  |  |  |  |  |  |  |  |  |  |  |  |  |  |  |  |  |  |  |
| CP2PA09201C0 |  | CB-P2 ; Metal Studs (Public Area) | 84d | 2011-01-09 A | 2011-10-29 | CP2PA23001C0 SS+12d | 71% | 24.36d | 2011-05-12 | 2011-08-20 | 35.79d | 0d | PARTITIONS [2396 h]; PARTITIONS - Metal Studs [715 m]; Cost |  |  | 0 | 0 | 0 | 0 | 313 | 944 | CP2PA09201C0 | 35 | 31988.8 | 70 | 60 | CB | C | P2 | PA | PT | 092 | 01 | BILL 4 | B04 | S1 | 1F | R00 | ACF06 | GP | 092 | PMS |  |  |  |  |  |  |
| CP2PA21111C0 |  | CB-P2 ; 1st Fix, Inst of Sprinkler main pipe (Public Area) | 200d | 2011-01-15 A | 2011-10-26 | CP2PA22005C0 SS+7d, CP2PA23001C0 | 90% | 20d | 2011-04-25 | 2011-12-24 | 144.55d | 0d | MECHANICAL [866.4 h]; Cost [37438.4 AED] | 37,438.4 | 33,694.56 |  |  |  |  |  |  | CP2PA21111C0 | 95 |  |  |  | CB | C | P2 | PA | ME | 211 | 11 | BILL 4 | B04 | S1 | 1F | R00 | ACF04 | MEP | 211 | M1F | 90 | 100 | 1S |  |  |  |
| CP2PA23001C0 |  | CB-P2 ; 1st Fix, Inst. of Supports for MEP (Public Area) | 27d | 2011-01-20 A | 2011-10-03 | CP1S103335C0, CP1S203335C0, CP2S107807C0, CP2S207808C0 | 90% | 2.7d | 2011-04-11 | 2011-05-12 | 35.79d | 0d | MECHANICAL [1596 h]; Cost [57766.2 AED] | 57,766.25 | 51,989.63 |  |  |  |  |  |  | CP2PA23001C0 | 100 |  |  |  | CB | C | P2 | PA | ME | 230 | 01 | BILL 4 | B04 | S1 | 1F | R00 | ACF04 | MEP | 230 | M1F |  |  | 1S |  |  |  |
| CP2PA23023C0 |  | CB-P2 ; 1st Fix, Inst of Main Ducting (Public Area) | 200d | 2011-01-20 A | 2011-10-26 | CP2PA23001C0, CP2PA23017C0 SS+7d | 90% | 20d | 2011-05-15 | 2012-01-14 | 147.05d | 0d | MECHANICAL [17564.4 h]; Cost [927678 AED] | 927,677.51 | 834,909.76 |  |  |  |  |  |  | CP2PA23023C0 | 75 | 215256.8 |  |  | CB | C | P2 | PA | ME | 230 | 23 | BILL 4 | B04 | S1 | 1F | R00 | ACF04 | MEP | 230 | M1F | 90 | 95 | 1S |  |  |  |
| CP2PA22019C0 |  | CB-P2 ; 1st Fix, Inst of Drainage pipe (ceiling) (Public Area) | 200d | 2011-02-09 A | 2011-10-08 | CP2PA23001C0, CP2PA26013C0 SS+10d | 98% | 4d | 2011-06-13 | 2012-02-13 | 93.05d | 0d | PLUMBING [1714.8 h]; Cost [92715.9 AED] | 92,715.95 | 90,861.63 |  |  |  |  |  |  | CP2PA22019C0 | 85 | 5371.55 | 98 | 95 | CB | C | P2 | PA | ME | 220 | 19 | BILL 4 | B04 | S1 | 1F | R00 | ACF04 | MEP | 220 | M1F |  | 100 | 1S |  |  |  |
| CP2PA23017C0 |  | CB-P2 ; 1st Fix, Inst of CHW pipe (Public Area) | 200d | 2011-02-10 A | 2011-10-26 | CP2PA21111C0 SS+10d, CP2PA23001C0 | 90% | 20d | 2011-05-07 | 2012-01-05 | 144.55d | 0d | MECHANICAL [2966.4 h]; Cost [130782 AED] | 130,781.76 | 117,703.58 |  |  |  |  |  |  | CP2PA23017C0 | 80 | 7584.55 |  |  | CB | C | P2 | PA | ME | 230 | 17 | BILL 4 | B04 | S1 | 1F | R00 | ACF04 | MEP | 230 | M1F | 90 | 90 | 1S |  |  |  |
| CP2PA26001C0 |  | CB-P2 ; 1st Fix, Inst of Trunking/Conduiting (Public Area) | 200d | 2011-02-19 A | 2011-11-10 | CP2PA23001C0, CP2S107807C0, CP2S207808C0 | 85% | 30d | 2011-05-12 | 2012-01-11 | 93.05d | 0d | ELECTRICAL [1197.6 h]; Cost [29580.4 AED] | 29,580.43 | 25,143.36 |  |  |  |  |  |  | CP2PA26001C0 | 70 | 21102.75 | 98 | 95 | CB | C | P2 | PA | ME | 260 | 01 | BILL 4 | B04 | S1 | 1F | R00 | ACF04 | MEP | 260 | M1F |  | 98 | 1S |  |  |  |
| CP2PA21117C0 |  | CB-P2 ; 1st Fix, Inst of Sprinkler branch pipe (Public Area) | 200d | 2011-03-14 A | 2011-11-24 | CP2PA09201C0, CP2PA21111C0 | 90% | 20d | 2011-06-16 | 2012-02-16 | 145.39d | 116.44d | MECHANICAL [1190.4 h]; Cost [55153.8 AED] | 55,153.76 | 49,638.38 |  |  |  |  |  |  | CP2PA21117C0 | 95 |  |  |  | CB | C | P2 | PA | ME | 211 | 17 | BILL 4 | B04 | S1 | 1F | R00 | ACF04 | MEP | 211 | M1F | 90 | 100 | 1S |  |  |  |
| CP2PA26013C0 |  | CB-P2 ; 1st Fix, Inst of Cable Tray (Public Area) | 54d | 2011-03-15 A | 2011-10-12 | CP2PA23001C0, CP2PA27010C0 SS+7d, CP2S107807C0, CP2S207808C0 | 85% | 8.1d | 2011-04-05 | 2011-06-07 | 93.05d | 0d | ELECTRICAL [1714.8 h]; Cost [17044 AED] | 17,043.96 | 14,487.37 |  |  |  |  |  |  | CP2PA26013C0 | 65 | 24486.11 |  |  | CB | C | P2 | PA | ME | 260 | 13 | BILL 4 | B04 | S1 | 1F | R00 | ACF04 | MEP | 260 | M1F |  |  | 1S |  |  |  |
| CP2PA27010C0 |  | CB-P2 ; 1st Fix, Inst of Trunking for ELV system (Public Area) | 200d | 2011-03-17 A | 2011-10-08 | CP2PA23001C0, CP2PA26001C0 SS+10d, CP2S107807C0, CP2S207808C0 | 98% | 4d | 2011-03-28 | 2011-11-23 | 93.05d | 0d | ELECTRICAL [724.8 h]; Cost [24667.9 AED] | 24,667.88 | 24,174.52 |  |  |  |  |  |  | CP2PA27010C0 | 50 | 20761.65 | 98 | 95 | CB | C | P2 | PA | ME | 270 | 10 | BILL 4 | B04 | S1 | 1F | R00 | ACF04 | MEP | 270 | M1F |  | 95 | 1S |  |  |  |
| CP2PA09203C0 |  | CB-P2 ; Partitions 1st face (Public Area) | 54d | 2011-04-05 A | 2011-12-08 | CP2PA09201C0 | 45% | 29.7d | 2011-02-28 | 2011-05-02 | 37.64d | 0d | PARTITIONS [715 m]; PARTITIONS [1886 h]; Cost |  |  | 0 | 0 | 0 | 0 | 314 | 945 | CP2PA09203C0 | 10 | 33588.3 | 40 | 29 | CB | C | P2 | PA | PT | 092 | 03 | BILL 4 | B04 | S1 | 2F | R00 | ACF06 | GP | 092 | P1F |  |  |  |  |  |  |
| CP2PA23015C0 |  | CB-P2 ; 2nd Fix, Insulation of CHW pipe & Duct (Public Area) | 150d | 2011-04-16 A | 2011-11-27 | CP2PA23009C0 SS, CP2PA23017C0 SS, CP2PA23023C0 SS | 85% | 22.5d | 2011-08-08 | 2012-02-09 | 144.55d | 115.6d | MECHANICAL [6742.8 h]; Cost [363863 AED] | 363,863.22 | 309,283.73 |  |  |  |  |  |  | CP2PA23015C0 | 60 |  | 85 | 75 | CB | C | P2 | PA | ME | 230 | 15 | BILL 4 | B04 | S1 | 2F | R00 | ACF07 | MEP | 230 |  |  | 75 | 2n |  |  |  |
| CP2PA22005C0 |  | CB-P2 ; 1st Fix, Inst of Water supply pipe (ceiling) (Public Area) | 150d | 2011-05-01 A | 2011-10-20 | CP2PA22019C0 SS+7d, CP2PA23001C0 | 90% | 15d | 2011-04-17 | 2011-10-12 | 97.05d | 0d | PLUMBING [1682.4 h]; Cost [90924.8 AED] | 90,924.75 | 81,832.27 |  |  |  |  |  |  | CP2PA22005C0 | 75 |  | 90 | 85 | CB | C | P2 | PA | ME | 220 | 05 | BILL 4 | B04 | S1 | 1F | R00 | ACF04 | MEP | 220 | M1F |  | 85 | 1S |  |  |  |
| CP2PA22011C0 |  | CB-P2 ; 2nd Fix, Drainage/Water pipe (wall) (Public Area) | 72d | 2011-05-15 A | 2012-01-04 | CP2PA09201C0, CAFCI09201R02 FS+58d | 60% | 28.8d | 2011-05-31 | 2011-08-23 | 16.95d | 0d | PLUMBING [2247.6 h]; Cost [92715.9 AED] | 92,715.95 | 55,629.57 |  |  |  |  |  |  | CP2PA22011C0 | 40 |  | 60 | 40 | CB | C | P2 | PA | ME | 220 | 11 | BILL 4 | B04 | S1 | 2F | R00 | ACF07 | MEP | 220 |  |  | 85 | 2n |  |  |  |
| CP2PA23008C0 |  | CB-P2 ; 1st Fix, Inst of VCD's/FD's (Public Area) | 100d | 2011-05-15 A | 2011-11-22 | CP2PA23023C0 | 80% | 20d | 2011-07-21 | 2011-11-21 | 147.05d | 118.1d | MECHANICAL [3220.8 h]; Cost [143058 AED] | 143,057.96 | 114,446.37 | 0 | 0 | 0 | 0 |  |  | CP2PA23008C0 | 40 | 33189.45 |  |  | CB | C | P2 | PA | ME | 230 | 08 | BILL 4 | B04 | S1 | 1F | R00 | ACF04 | MEP | 230 | M1F |  | 75 | 1S |  |  |  |
| CP2PA40302C0 |  | CB-P2 ; 2nd Fix, Pneumatic tube (Public Area) | 72d | 2011-05-15 A | 2011-11-14 | CP2PA09201C0 | 85% | 10.8d | 2011-05-31 | 2011-08-23 | 58.59d | 41.64d | MECHANICAL [2798.4 h]; Cost [137402 AED] | 137,402.07 | 116,791.76 | 0 | 0 | 0 | 0 |  |  | CP1E140302C0 | 30 |  | 60 | 45 | CB | C | P2 | PA | ME | 403 | 02 | BILL 4 | B04 | S1 | 2F | R00 | ACF07 | MEP | 403 |  |  | 45 | 2n |  |  |  |
| CP2PA27001C0 |  | CB-P2 ; 1st Fix, Wiring/ Cabling work (Public Area) | 90d | 2011-06-06 A | 2012-01-16 | CP2PA26001C0, CP2PA26013C0, CP2PA27010C0 | 40% | 54d | 2011-06-26 | 2011-10-12 | 103.05d | 74.1d | ELECTRICAL [981.6 h]; Cost [15494.5 AED] | 15,494.51 | 6,197.8 |  |  |  |  |  |  | CP2PA27001C0 |  | 40865.06 |  |  | CB | C | P2 | PA | ME | 270 | 01 | BILL 4 | B04 | S1 | 1F | R00 | ACF04 | MEP | 270 | M1F |  | 65 | 1S |  |  |  |
| CP2PA23009C0 |  | CB-P2 ; 2nd Fix, Inst of VAV'S CHW connection (Public Area) | 90d | 2011-07-06 A | 2011-11-20 | CP2PA23017C0 | 80% | 18d | 2011-08-07 | 2011-11-27 | 144.55d | 0d | MECHANICAL [1419.6 h]; Cost [76659.7 AED] | 76,659.7 | 61,327.76 | 0 | 0 | 0 | 0 |  |  | CP2PA23009C0 |  |  | 70 | 40 | CB | C | P2 | PA | ME | 230 | 09 | BILL 4 | B04 | S1 | 2F | R00 | ACF07 | MEP | 230 |  |  | 55 | 2n |  |  |  |
| CP2PA26009C0 |  | CB-P2 ; 2nd Fix, Inst of Wall conduites (Public Area) | 66d | 2011-07-10 A | 2011-11-29 | CP2PA09201C0 | 65% | 23.1d | 2011-06-30 | 2011-09-17 | 46.29d | 29.34d | ELECTRICAL [430.8 h]; Cost [29580.4 AED] | 29,580.43 | 19,227.28 | 0 | 0 | 0 | 0 |  |  | CP2PA26009C0 |  |  | 50 | 20 | CB | C | P2 | PA | ME | 260 | 09 | BILL 4 | B04 | S1 | 2F | R00 | ACF07 | MEP | 260 |  |  | 15 | 2n |  |  |  |
| CP2PA23011C0 |  | CB-P2 ; 2nd Fix, Inst of Equipment (FCU,FAN) (Public Area) | 48d | 2011-08-10 A | 2012-04-17 | CP2PA09205C0 | 30% | 33.6d | 2012-01-23 | 2012-03-20 | 85.35d | 68.4d | MECHANICAL [988.8 h]; Cost [225035 AED] | 225,034.53 | 67,510.36 |  |  |  |  |  |  | CP2PA23011C0 |  |  | 30 | 0 | CB | C | P2 | PA | ME | 230 | 11 | BILL 4 | B04 | S1 | 2F | R00 | ACF04 | MEP | 230 |  |  |  | 2n | H |  |  |
| CP2PA26053C0 |  | CB-P2 ; 2nd Fix, Wiring / Cabling (Public Area) | 30d | 2011-08-10 A | 2012-01-11 | CP2PA09203C0 | 5% | 28.5d | 2012-01-23 | 2012-02-28 | 131.19d | 102.24d | ELECTRICAL [216 h]; Cost [15494.5 AED] | 15,494.51 | 774.73 |  |  |  |  | 389 | 977 | CP2PA26053C0 |  |  | 50 | 0 | CB | C | P2 | PA | ME | 260 | 53 | BILL 4 | B04 | S1 | 2F | R00 | ACF07 | MEP | 260 |  |  |  | 2n |  |  |  |
| CP2PA26007C0 |  | CB-P2 ; 2nd Fix, Cable Pulling (Public Area) | 42d | 2011-09-05 A | 2011-12-12 | CP2PA09201C0 | 20% | 33.6d | 2011-10-01 | 2011-11-21 | 35.79d | 18.84d | ELECTRICAL [6616.8 h]; Cost [324578 AED] | 324,577.9 | 64,915.58 |  |  |  |  |  |  | CP2PA26007C0 |  |  |  |  | CB | C | P2 | PA | ME | 260 | 07 | BILL 4 | B04 | S1 | 2F | R00 | ACF07 | MEP | 260 |  |  | 50 | 2n |  |  |  |
| CP2PA08103C0 |  | CB-P2 ; Door Frames (Public Area) | 42d | 2011-10-29 | 2011-12-22 | CP2PA09201C0, GNHE08101C0 |  |  |  |  | 81.39d | 64.44d | ASSORTED DOORS [211 h]; Cost |  |  |  |  |  |  | 316 | 947 | CP2PA08103C0 |  |  |  |  | CB | C | P2 | PA | DO | 081 | 03 | BILL 4 | B04 | S1 | DF | R00 | ACF06 |  | 081 |  |  |  |  |  | 08 |  |
| CP2PA01005C0 |  | CB-P2 ; 2nd, Wall Inspection by Consultant (Public Area) | 6d | 2012-01-04 | 2012-01-11 | CP2PA22011C0, CP2PA26007C0, CP2PA26009C0, CP2PA40302C0 |  |  |  |  | 16.95d | 0d | Labor General [0.6 h]; Cost |  |  |  |  |  |  |  |  | CP2PA01005C0 |  |  |  |  | CB | C | P2 | PA | ME | 010 | 05 | BILL 4 | B04 | S1 | WI | R00 | ACF07 | MEP | 010 |  |  |  | 2n |  |  |  |
| CP2PA09205C0 |  | CB-P2 ; Partitions Closing (Public Area) | 48d | 2012-01-11 | 2012-03-08 | CP2PA01005C0, CP2PA09203C0, CP2PA22005C0 SS+40d, CP2PA22019C0, CAFOA09204C1 FF, CP2PA08103C0 FF |  |  |  |  | 16.95d | 0d | PARTITIONS [715 m]; PARTITIONS [2405 h]; Cost |  |  |  |  |  |  | 315 | 946 | CP2PA09205C0 |  |  |  |  | CB | C | P2 | PA | PT | 092 | 05 | BILL 4 | B04 | S1 | FF | R00 | ACF06 | GP | 092 | P2F |  |  |  |  |  |  |
| CP2PA09901C0 |  | CB-P2 ; Wall Prime & 1st coat (Public Area) | 30d | 2012-03-08 | 2012-04-12 | CP2CO04003C0 SS+24d, CP2PA09205C0, CP2CO04455C0 FF |  |  |  |  | 16.95d | 0d | WALL PAINT [632 h]; WALL PAINT [788 m2]; Cost |  |  |  |  |  |  | 328 | 956 | CP2PA09901C0 |  |  |  |  | CB | C | P2 | PA | PA | 099 | 01 | BILL 4 | B04 | S1 | 01 | R00 | ACF06 |  | 099 |  |  |  |  |  |  |  |
| CP2PA26005C0 |  | CB-P2 ; 2nd Fix, Wiring for Power/Lighting/Emergency (Public Area) | 66d | 2012-03-08 | 2012-05-24 | CP2PA09205C0 |  |  |  |  | 34.95d | 0d | ELECTRICAL [216 h]; Cost |  |  |  |  |  |  |  |  | CP2PA26005C0 | 5 | 13494.75 |  |  | CB | C | P2 | PA | ME | 260 | 05 | BILL 4 | B04 | S1 | 2F | R00 | ACF07 | MEP | 260 |  |  | 88 | 2n |  |  |  |
| CP2PA26011C0 |  | CB-P2 ; 2nd Fix, Inst of Equipment (DB) (Public Area) | 42d | 2012-03-08 | 2012-04-26 | CP2PA09205C0 |  |  |  |  | 40.95d | 12d | ELECTRICAL [1266 h]; Cost |  |  |  |  |  |  |  |  | CP2PA26011C0 |  |  |  |  | CB | C | P2 | PA | ME | 260 | 11 | BILL 4 | B04 | S1 | 2F | R00 | ACF04 | MEP | 260 |  |  |  | 2n | E |  |  |
| CP2PA27020C0 |  | CB-P2 ; 2nd Fix, Inst of ELV Equipment (Panels) (Public Area) | 42d | 2012-03-08 | 2012-04-26 | CP2PA09205C0 |  |  |  |  | 76.95d | 60d | ELECTRICAL [384 h]; Cost |  |  |  |  |  |  |  |  | CP2PA27020C0 |  |  |  |  | CB | C | P2 | PA | ME | 270 | 20 | BILL 4 | B04 | S1 | 2F | R00 | ACF04 | MEP | 270 |  |  |  | 2n | E |  |  |
| CP2PA05501C0 |  | CB-P2 ; Handrails & balustrade (Public Area) | 36d | 2012-04-12 | 2012-05-24 | CP2PA09901C0, CAFT1405509C0, CAFT1105509C0, CAFT1205509C0 |  |  |  |  | 16.95d | 0d | SECONDARY STEEL [616 h]; Cost |  |  |  |  |  |  |  |  | CP2PA05501C0 |  |  |  |  | CB | C | P2 | PA | SW | 055 | 01 | BILL 4 | B04 | S1 | 01 | R00 | ACF03 |  | a |  |  |  |  |  |  |  |
| CP2PA09501C0 |  | CB-P2 ; Ceiling Grid and ServiceTile (Public Area) | 24d | 2012-04-12 | 2012-05-10 | CP2PA09205C0 SS+15d, CP2PA21117C0, CP2PA23008C0, CP2PA23009C0, CP2PA23015C0, CP2PA27001C0, CAFCI22001R02 FS+58d, CP2PA26011C0 FF, CP2PA26053C0 FF, CP2PA09901C0 |  |  |  |  | 28.95d | 0d | CEILING GRID FOR GYPSUM [2697.98 h]; CEILING GRID FOR GYPSUM [230.96 m2]; Cost |  |  |  |  |  |  | 323 | 952 | CP2PA09501C0 |  |  |  |  | CB | C | P2 | PA | CE | 095 | 01 | BILL 4 | B04 | S1 | 01 | R00 | ACF06 |  | 095 |  |  |  |  |  |  | R3 |
| CP2PA09602C0 |  | CB-P2 ; Flooring (Stone) (Public Area) | 36d | 2012-05-10 | 2012-06-23 | CP2PA09901C0, CAFCI22001R02 FS+58d, CP2PA09501C0 |  |  |  |  | 28.95d | 12d | STONE FLOOR [29 m2]; STONE FLOOR [28 h]; Cost |  |  |  |  |  |  | 326 | 955 | CP2PA09601C0 |  |  |  |  | CB | C | P2 | PA | FF | 096 | 01 | BILL 4 | B04 | S1 | 09 | R00 | ACF06 |  | ST |  |  |  |  |  |  | R3 |
| CP2PA09903C0 |  | CB-P2 ; Wall Final Paint (Public Area) | 30d | 2012-05-10 | 2012-06-14 | CP2PA09901C0, CP2PA09905C0 |  |  |  |  | 118.95d | 84d | WALL PAINT [340 h]; WALL PAINT [424 m2]; Cost |  |  |  |  |  |  | 329 | 957 | CP2PA09903C0 |  |  |  |  | CB | C | P2 | PA | PA | 099 | 03 | BILL 4 | B04 | S1 | 02 | R00 | ACF06 |  | 099 |  |  |  |  |  |  |  |
| CP2PA09905C0 |  | CB-P2 ; Ceiling Prime & 1st coat (Public Area) | 0d | 2012-05-10 | 2012-05-10 | CP2PA09501C0 |  |  |  |  | 118.95d | 0d | Cost |  |  |  |  |  |  | 330 | 958 | CP2PA09905C0 |  |  |  |  | CB | C | P2 | PA | PA | 099 | 05 | BILL 4 | B04 | S1 | 01 | R00 | ACF06 |  | 099 |  |  |  |  |  |  |  |
| CP2PA21115C0 |  | CB-P2 ; 2nd Fix, Inst of Sprinkler droppers (Public Area) | 30d | 2012-05-10 | 2012-06-14 | CP2PA09501C0 |  |  |  |  | 40.95d | 0d | MECHANICAL [1404 h]; Cost |  |  |  |  |  |  |  |  | CP2PA21115C0 |  |  |  |  | CB | C | P2 | PA | ME | 211 | 15 | BILL 4 | B04 | S1 | 2F | R00 | ACF07 | MEP | 211 |  |  | 70 | 2n |  |  |  |
| CP2PA23021C0 |  | CB-P2 ; 2nd Fix, Inst of Flexible Duct & Plenum boxes (Public Area) | 30d | 2012-05-10 | 2012-06-14 | CP2PA09501C0 |  |  |  |  | 40.95d | 0d | MECHANICAL [903.6 h]; Cost |  |  |  |  |  |  |  |  | CP2PA23021C0 |  |  |  |  | CB | C | P2 | PA | ME | 230 | 21 | BILL 4 | B04 | S1 | 2F | R00 | ACF07 | MEP | 230 |  |  |  | 2n |  |  |  |
| CP2PA26017C0 |  | CB-P2 ; Final Fix, Inst of Ceiling rose (Public Area) | 48d | 2012-05-10 | 2012-07-07 | CP2PA09501C0 |  |  |  |  | 40.95d | 0d | ELECTRICAL [123.6 h]; Cost |  |  |  |  |  |  |  |  | CP2PA26017C0 |  |  |  |  | CB | C | P2 | PA | ME | 260 | 17 | BILL 4 | B04 | S1 | FF | R00 | ACF07 | MEP | 260 |  |  |  | FF |  |  |  |
| CP2PA27002C0 |  | CB-P2 ; 2nd Fix, Wiring Droppers (Public Area) | 42d | 2012-05-10 | 2012-06-30 | CP2PA09501C0 |  |  |  |  | 40.95d | 0d | ELECTRICAL [216 h]; Cost |  |  |  |  |  |  |  |  | CP2PA27002C0 |  |  |  |  | CB | C | P2 | PA | ME | 270 | 02 | BILL 4 | B04 | S1 | 2F | R00 | ACF07 | MEP | 270 |  |  |  | 2n |  |  |  |
| CP2PA40303C0 |  | CB-P2 ; Final Fix, Pneumatic Station (Public Area) | 48d | 2012-05-10 | 2012-07-07 | CP2PA09501C0 |  |  |  |  | 46.95d | 12d | MECHANICAL [2661.6 h]; Cost |  |  |  |  |  |  |  |  | CP1E140303C0 |  |  |  |  | CB | C | P2 | PA | ME | 403 | 03 | BILL 4 | B04 | S1 | FF | R00 | ACF07 | MEP | 403 |  |  |  | FF |  |  |  |
| CP2PA21113C0 |  | CB-P2 ; Final Fix, Inst of Sprinklers head/ Extinguisher (Public Area) | 48d | 2012-05-17 | 2012-07-14 | CP2PA09501C0, CP2PA21115C0 SS+6d |  |  |  |  | 40.95d | 6d | MECHANICAL [278.4 h]; Cost |  |  |  |  |  |  |  |  | CP2PA21113C0 |  |  |  |  | CB | C | P2 | PA | ME | 211 | 13 | BILL 4 | B04 | S1 | FF | R00 | ACF07 | MEP | 211 |  |  |  | FF |  |  |  |
| CP2PA23019C0 |  | CB-P2 ; Final Fix, Inst of Grilles & Diffusers (Public Area) | 48d | 2012-05-17 | 2012-07-14 | CP2PA09501C0, CP2PA23021C0 SS+6d |  |  |  |  | 40.95d | 6d | MECHANICAL [1970.4 h]; Cost |  |  |  |  |  |  |  |  | CP2PA23019C0 |  |  |  |  | CB | C | P2 | PA | ME | 230 | 19 | BILL 4 | B04 | S1 | FF | R00 | ACF07 | MEP | 230 |  |  |  | FF |  |  |  |
| CP2PA26003C0 |  | CB-P2 ; Final Fix, Inst of Light fittings (Public Area) | 48d | 2012-05-17 | 2012-07-14 | CP2PA09501C0, CP2PA26017C0 SS+6d |  |  |  |  | 40.95d | 6d | ELECTRICAL [7983.6 h]; Cost |  |  |  |  |  |  |  |  | CP2PA26003C0 |  |  |  |  | CB | C | P2 | PA | ME | 260 | 03 | BILL 4 | B04 | S1 | FF | R00 | ACF07 | MEP | 260 |  |  |  | FF |  |  |  |
| CP2PA27030C0 |  | CB-P2 ; Final Fix, Inst of ELV device (Detector/Speaker) (Public Area) | 48d | 2012-05-17 | 2012-07-14 | CP2PA09501C0, CP2PA27002C0 SS+6d |  |  |  |  | 40.95d | 6d | ELECTRICAL [2054.4 h]; Cost |  |  |  |  |  |  |  |  | CP2PA27030C0 |  |  |  |  | CB | C | P2 | PA | ME | 270 | 30 | BILL 4 | B04 | S1 | FF | R00 | ACF07 | MEP | 270 |  |  |  | FF |  |  |  |
| CP2PA09601C0 |  | CB-P2 ; Flooring (Rubber & etc) (Public Area) | 36d | 2012-05-24 | 2012-07-07 | CP2PA09901C0, CP2PA09501C0, CP2PA05501C0, CP2PA27020C0 FF, CP2PA23011C0 FF |  |  |  |  | 16.95d | 0d | RUBBER FLOOR [240 h]; RUBBER FLOOR [592 m2]; Cost |  |  |  |  |  |  | 326 | 955 | CP2PA09601C0 |  |  |  |  | CB | C | P2 | PA | FF | 096 | 01 | BILL 4 | B04 | S1 | 03 | R00 | ACF06 |  | RF |  |  |  |  |  |  | R3 |
| CP2PA26015C0 |  | CB-P2 ; Final Fix, Termination & Gladding of Cables (Public Area) | 48d | 2012-05-24 | 2012-07-21 | CP2PA26005C0, CP2PA09501C0 |  |  |  |  | 34.95d | 0d | ELECTRICAL [826.8 h]; Cost |  |  |  |  |  |  |  |  | CP2PA26015C0 |  |  |  |  | CB | C | P2 | PA | ME | 260 | 15 | BILL 4 | B04 | S1 | FF | R00 | ACF07 | MEP | 260 |  |  |  | FF |  |  |  |
| CP2PA08107C0 |  | CB-P2 ; Doors (Public Area) | 42d | 2012-07-07 | 2012-08-27 | CP2PA08103C0, CP2PA09901C0, CP2PA09601C0, CP2PA09602C0 |  |  |  |  | 34.95d | 0d | ASSORTED DOORS [720 h]; ASSORTED DOORS [72 no]; Cost |  |  |  |  |  |  | 317 | 948 | CP2PA08107C0 |  |  |  |  | CB | C | P2 | PA | DO | 081 | 07 | BILL 4 | B04 | S1 | DR | R00 | ACF06 |  | 081 |  |  |  |  |  | 08 |  |
| CP2PA09701C0 |  | CB-P2 ; Wall finishes (ST, WD, WC) (Public Area) | 36d | 2012-07-07 | 2012-08-18 | CP2PA27020C0 FF, CP2PA09501C0, CP2PA09601C0, CP2PA09602C0 |  |  |  |  | 16.95d | 0d | ASSORTED WALL FINISH [94 h]; ASSORTED WALL FINISH [107 m2]; Cost |  |  |  |  |  |  | 105 | 1002 | CP2PA09701C0 |  |  |  |  | CB | C | P2 | PA | WF | 097 | 01 | BILL 4 | B04 | S1 | 01 | R00 | ACF06 |  | 097 |  |  |  |  |  |  |  |
| CP2PA01006C0 |  | CB-P2 ; 2nd, Ceiling Inspection by Consultants (Public Area) | 6d | 2012-07-21 | 2012-07-28 | CP2PA21115C0, CP2PA23009C0, CP2PA23011C0, CP2PA23015C0, CP2PA27002C0, CP2PA09501C0, CP2PA21113C0, CP2PA23019C0, CP2PA26003C0, CP2PA26015C0, CP2PA26017C0, CP2PA27030C0, CP2PA40303C0 |  |  |  |  | 34.95d | 18d | Labor General [0.6 h]; Cost |  |  |  |  |  |  |  |  | CP2PA01006C0 |  |  |  |  | CB | C | P2 | PA | ME | 010 | 06 | BILL 4 | B04 | S1 | CI | R00 | ACF07 | MEP | 010 |  |  |  | 2n |  |  |  |
| CP2PA09503C0 |  | CB-P2 ; Ceiling closure - ACT/Gypsum (Public Area) | 24d | 2012-08-18 | 2012-09-17 | CAFOA09503C1 FF, CP2PA01006C0, CP2PA21115C0, CP2PA26005C0, CP2PA27002C0, CP2PA09701C0, CP2PA23021C0 |  |  |  |  | 16.95d | 0d | ASSORTED CEILING FINISH [515.37 h]; CEILING GYPSUM [75.85 h]; ASSORTED CEILING FINISH [838 m2]; CEILING GYPSUM [211 m2]; Cost |  |  |  |  |  |  | 324 | 953 | CP2PA09503C0 |  |  |  |  | CB | C | P2 | PA | CE | 095 | 03 | BILL 4 | B04 | S1 | 02 | R00 | ACF06 |  | 095 |  |  |  |  |  |  | R3 |
| CP2PA11001C0 |  | CB-P2 ; Wall Protection (WP, CG, WG, FCG) (Public Area) | 24d | 2012-08-18 | 2012-09-17 | CP2PA09701C0, CP2PA09903C0 SS |  |  |  |  | 40.95d | 24d | FF&E [4 h]; Cost |  |  |  |  |  |  | 326 | 1001 | CP2PA11001C0 |  |  |  |  | CB | C | P2 | PA | WF | 110 | 01 | BILL 4 | B04 | S1 | 03 | R00 | ACF08 |  | b |  |  |  |  |  |  |  |
| CP2PA11009C0 |  | CB-P2 ; Signage (Public Area) | 15d | 2012-08-18 | 2012-09-06 | CP2PA09701C0 |  |  |  |  | 49.95d | 33d | SIGNAGES [177 h]; SIGNAGES [176.64 no]; Cost |  |  |  |  |  |  | 322 | 951 | CP2PA11009C0 |  |  |  |  | CB | C | P2 | PA | SA | 110 | 09 | BILL 4 | B04 | S1 | 09 | R00 | ACF08 |  | c |  |  |  |  |  | 08 |  |
| CP2PA08709C0 |  | CB-P2 ; Ironmongery (Public Area) | 24d | 2012-08-27 | 2012-09-24 | CP2PA08107C0 |  |  |  |  | 34.95d | 18d | IRONMONGERY [360 h]; IRONMONGERY [36 no]; Cost |  |  |  |  |  |  | 322 | 951 | CP2PA08709C0 |  |  |  |  | CB | C | P2 | PA | DO | 087 | 09 | BILL 4 | B04 | S1 | IM | R00 | ACF06 |  | 087 |  |  |  |  |  | 08 |  |
| CP2PA09907C0 |  | CB-P2 ; Ceiling Final paint (Public Area) | 0d | 2012-09-17 | 2012-09-17 | CP2PA09601C0, CP2PA09905C0, CP2PA09602C0, CP2PA09503C0 |  |  |  |  | 40.95d | 24d | Cost |  |  |  |  |  |  | 331 | 959 | CP2PA09907C0 |  |  |  |  | CB | C | P2 | PA | PA | 099 | 07 | BILL 4 | B04 | S1 | 02 | R00 | ACF06 |  | 099 |  |  |  |  |  |  |  |
| CP2PA26019C0 |  | CB-P2 ; Final Fix, Inst of Switch/Sockets (Public Area) | 12d | 2012-09-17 | 2012-10-01 | CP2PA09901C0, CP2PA09501C0, CP2PA09503C0 |  |  |  |  | 16.95d | 0d | ELECTRICAL [427.2 h]; Cost |  |  |  |  |  |  |  |  | CP2PA26019C0 |  |  |  |  | CB | C | P2 | PA | ME | 260 | 19 | BILL 4 | B04 | S1 | FF | R00 | ACF07 | MEP | 260 |  |  |  | FF |  |  |  |

| ID | WBS | Activity | Duration | Start | Finish | Predecessors | Complete | Remaining | Planned start | Planned finish | Total float | Free float | Resources | Cost | Actual cost | change id | CCAD BUILDING(SET) | CCAD PHASE(SET) | CCAD FLOOR(SET) | CCAD ZONE(SET) | CCAD WORK(SET) | CCAD SECTION(SET) | CCAD SERIAL No.(SET) | CCAD CBS(SET) | CCAD BILL(SET) | CCAD HANDOVER(SET) | CCAD TAG(SET) | CCAD REV(SET) | CCADACF (SET) | CCAD SSCF | RENZ % COMPLETE | CCAD SUB ZONE MEP(SET) | CCAD CSA | Act Selector % | July2011 Target% Complete | user_number8 | user_integer1 | user_integer2 | user_number7 | Change Order # | NEW ACTIVITY ID | Claimed This Month | R3 Partitions | P_811 | P_711 | CCAD MEQ | CCAD DIVISION(SET) |
| --- | --- | --- | --- | --- | --- | --- | --- | --- | --- | --- | --- | --- | --- | --- | --- | --- | --- | --- | --- | --- | --- | --- | --- | --- | --- | --- | --- | --- | --- | --- | --- | --- | --- | --- | --- | --- | --- | --- | --- | --- | --- | --- | --- | --- | --- | --- | --- |
|  | 10 | **Precommissioning Tesing & snagging ( Public Area)** |  | 2012-10-01 | 2012-11-12 |  |  |  |  |  |  |  |  |  |  |  |  |  |  |  |  |  |  |  |  |  |  |  |  |  |  |  |  |  |  |  |  |  |  |  |  |  |  |  |  |  |  |
| CP2TS01801C0 |  | CB-P2 ; MEP de-snag, FIREM sign-off | 12d | 2012-10-01 | 2012-10-15 | CP2PA26015C0, CP2PA21113C0, CP2PA23019C0, CP2PA26017C0, CP2PA26003C0, CP2PA27030C0, CP2PA40303C0, CP2PA26019C0 |  |  |  |  | 16.95d | 0d | TESTING & COMMISSIONING [2040 h]; Cost |  |  | CP2TS01801C0 | CB | C | P2 | TS | SC | 018 | 01 | BILL 4 | B04 | S1 | 01 | R00 | ACF07 | 018 |  |  |  |  |  |  |  |  |  |  |  |  |  |  |  |  |  |
| CP2TS01806C0 |  | CB-P2 ; Touch-up & Clean / JV inspection /CIR /De-snag | 14.25d | 2012-10-15 | 2012-11-04 | CP2PA05501C0, CP2PA08709C0, CP2PA09601C0, CP2PA09701C0, CP2PA09903C0, CP2PA09907C0, CP2PA11001C0, CP2PA11009C0, CP2TS01801C0, CP2PA09602C0, CP2PA09503C0, CP2DC20967C0 |  |  |  |  | 16.95d | 0d | TESTING & COMMISSIONING [170 h]; Cost |  |  | CP2TS01802C0 | CB | C | P2 | TS | SC | 018 | 02 | BILL 4 | B04 | S1 | 02 | R00 | ACF07 | 018 |  |  |  |  |  |  |  |  |  |  |  |  |  |  |  |  |  |
| CP2TS01809C0 |  | CB-P2 ; Consultant's final de-snag inspection | 7d | 2012-11-04 | 2012-11-12 | CP2TS01806C0 |  |  |  |  | 16.95d | 9.62d | Labor General [0.5 h]; Cost |  |  | CP2TS01803C0 | CB | C | P2 | TS | SC | 018 | 03 | BILL 4 | B04 | S1 | 03 | R00 | ACF07 | 018 |  |  |  |  |  |  |  |  |  |  |  |  |  |  |  |  |  |
|  | 05 | **Demo Cooking, Pantry, Retail** |  | 2011-01-19 | 2012-10-22 |  |  |  |  |  |  |  |  |  |  |  |  |  |  |  |  |  |  |  |  |  |  |  |  |  |  |  |  |  |  |  |  |  |  |  |  |  |  |  |  |  |  |
| CP2DC23001C0 |  | CB-P2 ; 1st Fix, Inst. of Supports for MEP (Cooking,Pantry,Retail) | 28d | 2011-01-19 A | 2011-10-03 | CP1S103335C0, CP1S203335C0, CP2S107807C0, CP2S207808C0 | 90% | 2.7d | 2011-02-13 | 2011-03-17 | 41.79d | 0d | MECHANICAL [1596 h]; Cost [57766.2 AED] | 57,766.25 | 51,989.63 | CP2DC23001C0 | CB | C | P2 | DC | ME | 230 | 01 | BILL 4 | B04 | S1 | 1F | R00 | ACF04 | 230 | 100 | 1S | MEP | M1F |  |  |  |  |  |  |  |  |  |  |  |  |  |
| CP2DC21111C0 |  | CB-P2 ; 1st Fix, Inst of Sprinkler main pipe (Cooking,Pantry,Retail) | 45d | 2011-01-20 A | 2011-10-05 | CP2DC22005C0 SS+10d, CP2DC23001C0 | 95% | 2.25d | 2011-04-04 | 2011-05-26 | 139.05d | 0d | MECHANICAL [866.4 h]; Cost [37438.4 AED] | 37,438.4 | 35,566.48 | CP2DC21111C0 | CB | C | P2 | DC | ME | 211 | 11 | BILL 4 | B04 | S1 | 1F | R00 | ACF04 | 211 | 90 | 1S | MEP | M1F | 100 |  |  |  |  |  |  |  |  |  |  |  |  |
| CP2DC09201C0 |  | CB-P2 ; Metal Studs (Cooking,Pantry,Retail) | 84d | 2011-01-22 A | 2011-11-09 | CP2DC23001C0, CAFCI09202R02 FS+52d | 71% | 24.36d | 2011-03-17 | 2011-06-23 | 37.49d | 0d | PARTITIONS [577 h]; PARTITIONS - Metal Studs [172 m]; Cost |  |  | CP2DC09201C0 | CB | C | P2 | DC | PT | 092 | 01 | BILL 4 | B04 | S1 | 1F | R00 | ACF06 | 092 | 35 |  | GP | PMS |  | 0 | 0 | 0 | 0 | 313 | 944 | 7561 | R3 |  |  |  |  |
| CP2DC22019C0 |  | CB-P2 ; 1st Fix, Inst of Drainage pipe (ceiling) (Cooking,Pantry,Retail) | 62d | 2011-02-03 A | 2011-10-06 | CP2DC23001C0, CP2DC26013C0 SS+10d | 95% | 3.1d | 2011-04-23 | 2011-07-05 | 70.95d | 0d | PLUMBING [1714.8 h]; Cost [92715.9 AED] | 92,715.95 | 88,080.15 | CP2DC22019C0 | CB | C | P2 | DC | ME | 220 | 19 | BILL 4 | B04 | S1 | 1F | R00 | ACF04 | 220 | 90 | 1S | MEP | M1F |  |  |  |  |  |  |  | 10742.96 |  |  |  |  |  |
| CP2DC26001C0 |  | CB-P2 ; 1st Fix, Inst of Trunking/Conduiting (Cooking,Pantry,Retail) | 200d | 2011-02-19 A | 2011-10-08 | CP2DC23001C0, CP2S207808C0 | 98% | 4d | 2011-03-17 | 2011-11-13 | 70.95d | 0d | ELECTRICAL [1197.6 h]; Cost [29580.4 AED] | 29,580.43 | 28,988.82 | CP2DC26001C0 | CB | C | P2 | DC | ME | 260 | 01 | BILL 4 | B04 | S1 | 1F | R00 | ACF04 | 260 | 70 | 1S | MEP | M1F | 95 |  |  |  |  |  |  | 21102.75 |  | 98 | 95 |  |  |
| CP2DC26013C0 |  | CB-P2 ; 1st Fix, Inst of Cable Tray (Cooking,Pantry,Retail) | 200d | 2011-02-19 A | 2011-10-15 | CP2DC23001C0, CP2DC27010C0 SS+7d, CP2S207808C0 | 95% | 10d | 2011-04-11 | 2011-12-10 | 70.95d | 0d | ELECTRICAL [1714.8 h]; Cost [17044 AED] | 17,043.96 | 16,191.76 | CP2DC26013C0 | CB | C | P2 | DC | ME | 260 | 13 | BILL 4 | B04 | S1 | 1F | R00 | ACF04 | 260 | 70 | 1S | MEP | M1F | 95 |  |  |  |  |  |  | 17489.43 |  |  |  |  |  |
| CP2DC27010C0 |  | CB-P2 ; 1st Fix, Inst of Trunking for ELV system (Cooking,Pantry,Retail) | 200d | 2011-02-19 A | 2011-10-15 | CP2DC23001C0, CP2DC26001C0 SS+14d, CP2S207808C0 | 95% | 10d | 2011-04-03 | 2011-11-30 | 70.95d | 0d | ELECTRICAL [724.8 h]; Cost [24667.9 AED] | 24,667.88 | 23,434.48 | CP2DC27010C0 | CB | C | P2 | DC | ME | 270 | 10 | BILL 4 | B04 | S1 | 1F | R00 | ACF04 | 270 | 50 | 1S | MEP | M1F | 95 |  |  |  |  |  |  | 20761.65 |  |  |  |  |  |
| CP2DC23023C0 |  | CB-P2 ; 1st Fix, Inst of Main Ducting (Cooking,Pantry,Retail) | 200d | 2011-03-07 A | 2011-10-12 | CP2DC23001C0, CP2DC23017C0 SS+7d | 96% | 8d | 2011-04-24 | 2011-12-22 | 144.55d | 0d | MECHANICAL [17564.4 h]; Cost [927678 AED] | 927,677.51 | 890,570.41 | CP2DC23023C0 | CB | C | P2 | DC | ME | 230 | 23 | BILL 4 | B04 | S1 | 1F | R00 | ACF04 | 230 | 75 | 1S | MEP | M1F | 95 |  |  |  |  |  |  | 161442.6 |  |  |  |  |  |
| CP2DC21117C0 |  | CB-P2 ; 1st Fix, Inst of Sprinkler branch pipe (Cooking,Pantry,Retail) | 62d | 2011-03-17 A | 2011-11-13 | CP2DC09201C0, CP2DC21111C0 | 95% | 3.1d | 2011-05-26 | 2011-08-08 | 144.79d | 107.3d | MECHANICAL [1190.4 h]; Cost [55153.8 AED] | 55,153.76 | 52,396.07 | CP2DC21117C0 | CB | C | P2 | DC | ME | 211 | 17 | BILL 4 | B04 | S1 | 1F | R00 | ACF04 | 211 | 95 | 1S | MEP | M1F |  |  |  |  |  |  |  | 3197.19 |  |  |  |  |  |
| CP2DC22005C0 |  | CB-P2 ; 1st Fix, Inst of Water supply pipe (ceiling) (Cooking,Pantry,Retail) | 120d | 2011-04-06 A | 2011-11-10 | CP2DC22019C0 SS+7d, CP2DC23001C0 | 75% | 30d | 2011-05-01 | 2011-09-21 | 70.95d | 0d | PLUMBING [1682.4 h]; Cost [90924.8 AED] | 90,924.75 | 68,193.56 | CP2DC22005C0 | CB | C | P2 | DC | ME | 220 | 05 | BILL 4 | B04 | S1 | 1F | R00 | ACF04 | 220 | 30 | 1S | MEP | M1F | 65 |  |  |  |  |  |  |  |  | 75 | 65 |  |  |
| CP2DC23017C0 |  | CB-P2 ; 1st Fix, Inst of CHW pipe (Cooking,Pantry,Retail) | 150d | 2011-04-14 A | 2011-10-20 | CP2DC21111C0 SS+10d, CP2DC23001C0 | 90% | 15d | 2011-04-16 | 2011-10-11 | 139.05d | 0d | MECHANICAL [2966.4 h]; Cost [130782 AED] | 130,781.76 | 117,703.58 | CP2DC23017C0 | CB | C | P2 | DC | ME | 230 | 17 | BILL 4 | B04 | S1 | 1F | R00 | ACF04 | 230 | 60 | 1S | MEP | M1F | 70 |  |  |  |  |  |  | 7584.55 |  |  |  |  |  |
| CP2DC09203C0 |  | CB-P2 ; Partitions 1st face (Cooking,Pantry,Retail) | 36d | 2011-04-19 A | 2011-12-05 | CP2DC09201C0 | 45% | 19.8d | 2011-04-11 | 2011-05-23 | 52.49d | 0d | PARTITIONS [172 m]; PARTITIONS [451 h]; Cost |  |  | CP2DC09203C0 | CB | C | P2 | DC | PT | 092 | 03 | BILL 4 | B04 | S1 | 2F | R00 | ACF06 | 092 | 10 |  | GP | P1F |  | 0 |  |  | 0 | 314 | 945 | 7939.05 |  | 40 | 29 |  |  |
| CP2DC23015C0 |  | CB-P2 ; 2nd Fix, Insulation of CHW pipe & Duct (Cooking,Pantry,Retail) | 150d | 2011-05-10 A | 2011-11-20 | CP2DC23009C0 SS, CP2DC23017C0 SS, CP2DC23023C0 SS | 85% | 22.5d | 2011-07-18 | 2012-01-18 | 139.05d | 101.56d | MECHANICAL [6742.8 h]; Cost [363863 AED] | 363,863.22 | 309,283.73 | CP2DC23015C0 | CB | C | P2 | DC | ME | 230 | 15 | BILL 4 | B04 | S1 | 2F | R00 | ACF07 | 230 | 20 | 2n | MEP |  | 65 |  |  |  |  |  |  |  |  | 85 | 65 |  |  |
| CP2DC22011C0 |  | CB-P2 ; 2nd Fix, Drainage/Water pipe (wall) (Cooking,Pantry,Retail) | 72d | 2011-05-15 A | 2011-12-15 | CP2DC09201C0 | 60% | 28.8d | 2011-04-11 | 2011-07-05 | 37.49d | 0d | PLUMBING [2247.6 h]; Cost [92715.9 AED] | 92,715.95 | 55,629.57 | CP2DC22011C0 | CB | C | P2 | DC | ME | 220 | 11 | BILL 4 | B04 | S1 | 2F | R00 | ACF07 | 220 | 20 | 2n | MEP |  | 60 |  |  |  |  |  |  |  |  | 60 | 20 |  |  |
| CP2DC23009C0 |  | CB-P2 ; 2nd Fix, Inst of VAV'S CHW connection (Cooking,Pantry,Retail) | 90d | 2011-05-15 A | 2011-11-14 | CP2DC23017C0 | 80% | 18d | 2011-07-05 | 2011-10-20 | 139.05d | 0d | MECHANICAL [1419.6 h]; Cost [76659.7 AED] | 76,659.7 | 61,327.76 | CP2DC23009C0 | CB | C | P2 | DC | ME | 230 | 09 | BILL 4 | B04 | S1 | 2F | R00 | ACF07 | 230 | 10 | 2n | MEP |  | 75 | 0 | 0 | 0 | 0 |  |  |  |  | 70 | 40 |  |  |
| CP2DC23008C0 |  | CB-P2 ; 1st Fix, Inst of VCD's/FD's (Cooking,Pantry,Retail) | 120d | 2011-06-08 A | 2011-11-13 | CP2DC23023C0 | 80% | 24d | 2011-06-21 | 2011-11-14 | 144.55d | 107.06d | MECHANICAL [3220.8 h]; Cost [143058 AED] | 143,057.96 | 114,446.37 | CP2DC23008C0 | CB | C | P2 | DC | ME | 230 | 08 | BILL 4 | B04 | S1 | 1F | R00 | ACF04 | 230 |  | 1S | MEP | M1F | 80 |  |  |  |  |  |  | 82973.64 |  |  |  |  |  |
| CP2DC26009C0 |  | CB-P2 ; 2nd Fix, Inst of Wall conduites (Cooking,Pantry,Retail) | 66d | 2011-06-08 A | 2011-12-12 | CP2DC09201C0 | 60% | 26.4d | 2011-06-08 | 2011-08-25 | 39.89d | 2.4d | ELECTRICAL [430.8 h]; Cost [29580.4 AED] | 29,580.43 | 17,748.26 | CP2DC26009C0 | CB | C | P2 | DC | ME | 260 | 09 | BILL 4 | B04 | S1 | 2F | R00 | ACF07 | 260 |  | 2n | MEP |  | 30 | 0 | 0 | 0 | 0 |  |  | 6859.13 |  | 50 | 30 |  |  |
| CP2DC27001C0 |  | CB-P2 ; 1st Fix, Wiring/ Cabling work (Cooking,Pantry,Retail) | 90d | 2011-06-14 A | 2011-11-24 | CP2DC26001C0, CP2DC26013C0, CP2DC27010C0 | 65% | 31.5d | 2011-06-26 | 2011-10-12 | 135.05d | 97.56d | ELECTRICAL [981.6 h]; Cost [15494.5 AED] | 15,494.51 | 10,071.43 | CP2DC27001C0 | CB | C | P2 | DC | ME | 270 | 01 | BILL 4 | B04 | S1 | 1F | R00 | ACF04 | 270 |  | 1S | MEP | M1F | 30 |  |  |  |  |  |  | 37459.62 |  | 65 | 55 |  |  |
| CP2DC23011C0 |  | CB-P2 ; 2nd Fix, Inst of Equipment (FCU,FAN) (Cooking,Pantry,Retail) | 48d | 2011-08-10 A | 2012-03-21 | CP2DC09205C0 | 30% | 33.6d | 2012-02-16 | 2012-04-12 | 37.49d | 0d | MECHANICAL [988.8 h]; Cost [225035 AED] | 225,034.53 | 67,510.36 | CP2DC23011C0 | CB | C | P2 | DC | ME | 230 | 11 | BILL 4 | B04 | S1 | 2F | R00 | ACF04 | 230 |  | 2n | MEP |  |  |  |  |  |  |  |  |  |  | 30 | 0 | H |  |
| CP2DC26005C0 |  | CB-P2 ; 2nd Fix, Wiring for Power/Lighting/Emergency (Cooking,Pantry,Retail) | 60d | 2011-08-10 A | 2012-03-25 | CP2DC09205C0 | 40% | 36d | 2012-02-16 | 2012-04-26 | 71.09d | 33.6d | ELECTRICAL [216 h]; Cost [15494.5 AED] | 15,494.51 | 6,197.8 | CP2DC26005C0 | CB | C | P2 | DC | ME | 260 | 05 | BILL 4 | B04 | S1 | 2F | R00 | ACF07 | 260 |  | 2n | MEP |  |  |  |  |  |  |  |  |  |  | 40 | 0 |  |  |
| CP2DC26053C0 |  | CB-P2 ; 2nd Fix, Wiring / Cabling (Cooking,Pantry,Retail) | 66d | 2011-08-10 A | 2012-01-14 | CP2DC09203C0 | 50% | 33d | 2012-02-16 | 2012-05-03 | 131.09d | 93.6d | ELECTRICAL [216 h]; Cost [15494.5 AED] | 15,494.51 | 7,747.25 | CP2DC26053C0 | CB | C | P2 | DC | ME | 260 | 53 | BILL 4 | B04 | S1 | 2F | R00 | ACF07 | 260 |  | 2n | MEP |  |  |  |  |  |  | 389 | 977 |  |  | 50 | 0 |  |  |
| CP2DC05511C0 |  | CB-P2 ; Wall reinforcement for MEP (Cooking,Pantry,Retail) | 24d | 2011-11-09 | 2011-12-10 | CP2DC09201C0 |  |  |  |  | 48.29d | 10.8d | SECONDARY STEEL [108 h]; Cost |  |  | CP2DC05511C0 | CB | C | P2 | DC | SW | 055 | 11 | BILL 4 | B04 | S1 | 07 | R00 | ACF03 | b |  |  |  |  |  |  |  |  |  |  |  |  |  |  |  |  |  |
| CP2DC08103C0 |  | CB-P2 ; Door Frames (Cooking,Pantry,Retail) | 42d | 2011-11-09 | 2011-12-31 | CP2DC09201C0, GNHE08101C0 |  |  |  |  | 72.29d | 34.8d | ASSORTED DOORS [64 h]; Cost |  |  | CP2DC08103C0 | CB | C | P2 | DC | DO | 081 | 03 | BILL 4 | B04 | S1 | DF | R00 | ACF06 | 081 |  |  |  |  |  |  |  |  |  | 316 | 947 |  |  |  |  |  | 08 |
| CP2DC01005C0 |  | CB-P2 ; 2nd, Wall Inspection by Consultant (Cooking,Pantry,Retail) | 6d | 2011-12-15 | 2011-12-22 | CP2DC22011C0, CP2DC26009C0 |  |  |  |  | 37.49d | 0d | Labor General [0.6 h]; Cost |  |  | CP2DC01005C0 | CB | C | P2 | DC | ME | 010 | 05 | BILL 4 | B04 | S1 | WI | R00 | ACF07 | 010 |  | 2n | MEP |  |  |  |  |  |  |  |  |  |  |  |  |  |  |
| CP2DC09205C0 |  | CB-P2 ; Partitions Closing (Cooking,Pantry,Retail) | 42d | 2011-12-22 | 2012-02-12 | CP2DC01005C0, CP2DC05511C0, CP2DC09203C0, CP2DC22005C0, CP2DC22019C0, CAFCI09201R02 FS+58d, CAFOA09204C1 FF, CP2DC08103C0 FF |  |  |  |  | 37.49d | 0d | PARTITIONS [172 m]; PARTITIONS [579 h]; Cost |  |  | CP2DC09205C0 | CB | C | P2 | DC | PT | 092 | 05 | BILL 4 | B04 | S1 | FF | R00 | ACF06 | 092 |  |  | GP | P2F |  |  |  |  |  | 315 | 946 |  | R3 |  |  |  |  |
| CP2DC07103C0 |  | CB-P2 ; Waterproofing (Cooking,Pantry,Retail) | 12d | 2012-02-12 | 2012-02-26 | CP2DC08103C0, CP2DC09205C0 |  |  |  |  | 83.09d | 0d | THERMAL & MOISTURE [80 h]; THERMAL & MOISTURE [525 m2]; Cost |  |  | CP2DC07103C0 | CB | C | P2 | DC | FF | 071 | 03 | BILL 4 | B04 | S1 | 01 | R00 | ACF03 | 071 |  |  |  |  |  |  |  |  |  | 105 | 999 |  |  |  |  |  |  |
| CP2DC09901C0 |  | CB-P2 ; Wall Prime & 1st coat (Cooking,Pantry,Retail) | 30d | 2012-02-12 | 2012-03-18 | CP2DC09205C0 |  |  |  |  | 41.09d | 0d | WALL PAINT [66 h]; WALL PAINT [81 m2]; Cost |  |  | CP2DC09901C0 | CB | C | P2 | DC | PA | 099 | 01 | BILL 4 | B04 | S1 | 01 | R00 | ACF06 | 099 |  |  |  |  |  |  |  |  |  | 328 | 956 |  |  |  |  |  |  |
| CP2DC26007C0 |  | CB-P2 ; 2nd Fix, Cable Pulling (Cooking,Pantry,Retail) | 42d | 2012-02-12 | 2012-04-01 | CP2DC09201C0, CP2DC09205C0 |  |  |  |  | 137.09d | 99.6d | ELECTRICAL [6616.8 h]; Cost |  |  | CP2DC26007C0 | CB | C | P2 | DC | ME | 260 | 07 | BILL 4 | B04 | S1 | 2F | R00 | ACF07 | 260 |  | 2n | MEP |  | 60 |  |  |  |  |  |  |  |  |  |  |  |  |
| CP2DC26011C0 |  | CB-P2 ; 2nd Fix, Inst of Equipment (DB) (Cooking,Pantry,Retail) | 36d | 2012-02-12 | 2012-03-25 | CP2DC09205C0 |  |  |  |  | 71.09d | 33.6d | ELECTRICAL [1266 h]; Cost |  |  | CP2DC26011C0 | CB | C | P2 | DC | ME | 260 | 11 | BILL 4 | B04 | S1 | 2F | R00 | ACF04 | 260 |  | 2n | MEP |  |  |  |  |  |  |  |  |  |  |  |  | E |  |
| CP2DC27020C0 |  | CB-P2 ; 2nd Fix, Inst of ELV Equipment (Panels) (Cooking,Pantry,Retail) | 36d | 2012-02-12 | 2012-03-25 | CP2DC09205C0 |  |  |  |  | 71.09d | 33.6d | ELECTRICAL [384 h]; Cost |  |  | CP2DC27020C0 | CB | C | P2 | DC | ME | 270 | 20 | BILL 4 | B04 | S1 | 2F | R00 | ACF04 | 270 |  | 2n | MEP |  |  |  |  |  |  |  |  |  |  |  |  | E |  |
| CP2DC09305C0 |  | CB-P2 ; Ceramic floor tile (Cooking,Pantry,Retail) | 30d | 2012-02-26 | 2012-04-01 | CP2DC07103C0 |  |  |  |  | 83.09d | 27.6d | CERAMIC FLOOR TILES [48 h]; CERAMIC FLOOR TILES [27 m2]; Cost |  |  | CP2DC09305C0 | CB | C | P2 | DC | FF | 093 | 05 | BILL 4 | B04 | S1 | 02 | R00 | ACF06 | CT |  |  |  |  |  |  |  |  |  | 106 | 1000 |  |  |  |  |  |  |
| CP2DC05501C0 |  | CB-P2 ; Handrails & balustrade (Cooking,Pantry,Retail) | 36d | 2012-03-18 | 2012-04-29 | CP2DC09901C0 |  |  |  |  | 157.09d | 119.6d | SECONDARY STEEL [146 h]; Cost |  |  | CP2DC05501C0 | CB | C | P2 | DC | SW | 055 | 01 | BILL 4 | B04 | S1 | 01 | R00 | ACF03 | a |  |  |  |  |  |  |  |  |  |  |  |  |  |  |  |  |  |
| CP2DC09501C0 |  | CB-P2 ; Ceiling Grid and ServiceTile (Cooking,Pantry,Retail) | 36d | 2012-03-21 | 2012-05-02 | CP2DC21117C0, CP2DC23008C0, CP2DC23009C0, CP2DC23015C0, CP2DC27001C0, CP2DC26011C0 FF, CP2DC23011C0, CP2DC26053C0 FF, CP2DC09205C0, CP2DC27020C0 FF, CP2DC26005C0 FF, CP2DC09901C0 |  |  |  |  | 37.49d | 0d | CEILING GRID FOR GYPSUM [652.58 h]; CEILING GRID FOR GYPSUM [55.78 m2]; Cost |  |  | CP2DC09501C0 | CB | C | P2 | DC | CE | 095 | 01 | BILL 4 | B04 | S1 | 01 | R00 | ACF06 | 095 |  |  |  |  |  |  |  |  |  | 323 | 952 |  |  |  |  |  |  |
| CP2DC09601C0 |  | CB-P2 ; Flooring (Rubber & etc) (Cooking,Pantry,Retail) | 36d | 2012-05-02 | 2012-06-13 | CP2DC09901C0, CP2DC09501C0 |  |  |  |  | 37.49d | 0d | RUBBER FLOOR [64 h]; RUBBER FLOOR [143 m2]; Cost |  |  | CP2DC09601C0 | CB | C | P2 | DC | FF | 096 | 01 | BILL 4 | B04 | S1 | 03 | R00 | ACF06 | RF |  |  |  |  |  |  |  |  |  | 326 | 955 |  |  |  |  |  |  |
| CP2DC09903C0 |  | CB-P2 ; Wall Final Paint (Cooking,Pantry,Retail) | 30d | 2012-05-02 | 2012-06-06 | CP2DC09901C0, CP2DC09905C0 |  |  |  |  | 123.49d | 0d | WALL PAINT [36 h]; WALL PAINT [44 m2]; Cost |  |  | CP2DC09903C0 | CB | C | P2 | DC | PA | 099 | 03 | BILL 4 | B04 | S1 | 02 | R00 | ACF06 | 099 |  |  |  |  |  |  |  |  |  | 329 | 957 |  |  |  |  |  |  |
| CP2DC09905C0 |  | CB-P2 ; Ceiling Prime & 1st coat (Cooking,Pantry,Retail) | 0d | 2012-05-02 | 2012-05-02 | CP2DC09501C0 |  |  |  |  | 123.49d | 0d | Cost |  |  | CP2DC09905C0 | CB | C | P2 | DC | PA | 099 | 05 | BILL 4 | B04 | S1 | 01 | R00 | ACF06 | 099 |  |  |  |  |  |  |  |  |  | 330 | 958 |  |  |  |  |  |  |
| CP2DC20967C0 |  | CB-P2, Carpet Tile Finish (Cooking,Pantry,Retail, Offices, W/S) | 0d | 2012-05-02 | 2012-05-02 | CP2DC09903C0 SS |  |  |  |  | 155.99d | 139.04d | Cost |  |  |  | CB | C | P2 | DC | FF | 096 |  |  | B04 |  |  | R00 | ACF06 | CPT |  |  | CPT |  |  |  |  |  |  |  |  |  |  |  |  |  |  |
| CP2DC21115C0 |  | CB-P2 ; 2nd Fix, Inst of Sprinkler droppers (Cooking,Pantry,Retail) | 30d | 2012-05-02 | 2012-06-06 | CP2DC09501C0 |  |  |  |  | 49.49d | 0d | MECHANICAL [1404 h]; Cost |  |  | CP2DC21115C0 | CB | C | P2 | DC | ME | 211 | 15 | BILL 4 | B04 | S1 | 2F | R00 | ACF07 | 211 |  | 2n | MEP |  |  |  |  |  |  |  |  |  |  |  |  |  |  |
| CP2DC22021C0 |  | CB-P2 ; Final Fix, Terminate Sanitary Ware & Appliances (Cooking,Pantry,Retail) | 48d | 2012-05-02 | 2012-06-28 | CP2DC22011C0, CP2DC09501C0 |  |  |  |  | 55.49d | 6d | PLUMBING [1562.4 h]; Cost |  |  | CP2DC22021C0 | CB | C | P2 | DC | ME | 220 | 21 | BILL 4 | B04 | S1 | FF | R00 | ACF07 | 220 |  | FF | MEP |  |  |  |  |  |  |  |  |  |  |  |  |  |  |
| CP2DC22025C0 |  | CB-P2 ; Final Fix, Inst of Sanitary Ware (Cooking,Pantry,Retail) | 48d | 2012-05-02 | 2012-06-28 | CP2DC09205C0, CP2DC09305C0, CP2DC09501C0, A10230 FS+148d |  |  |  |  | 55.49d | 6d | PLUMBING [1562.4 h]; Cost |  |  | CP2DC22025C0 | CB | C | P2 | DC | ME | 220 | 25 | BILL 4 | B04 | S1 | FF | R00 | ACF07 | 220 |  | FF | MEP |  |  |  |  |  |  |  |  |  |  |  |  |  |  |
| CP2DC23021C0 |  | CB-P2 ; 2nd Fix, Inst of Flexible Duct & Plenum boxes (Cooking,Pantry,Retail) | 36d | 2012-05-02 | 2012-06-13 | CP2DC09205C0, CP2DC09501C0 |  |  |  |  | 49.49d | 0d | MECHANICAL [903.6 h]; Cost |  |  | CP2DC23021C0 | CB | C | P2 | DC | ME | 230 | 21 | BILL 4 | B04 | S1 | 2F | R00 | ACF07 | 230 |  | 2n | MEP |  |  |  |  |  |  |  |  |  |  |  |  |  |  |
| CP2DC26015C0 |  | CB-P2 ; Final Fix, Termination & Gladding of Cables (Cooking,Pantry,Retail) | 48d | 2012-05-02 | 2012-06-28 | CP2DC26005C0, CP2DC09501C0 |  |  |  |  | 55.49d | 6d | ELECTRICAL [826.8 h]; Cost |  |  | CP2DC26015C0 | CB | C | P2 | DC | ME | 260 | 15 | BILL 4 | B04 | S1 | FF | R00 | ACF07 | 260 |  | FF | MEP |  |  |  |  |  |  |  |  |  |  |  |  |  |  |
| CP2DC26017C0 |  | CB-P2 ; Final Fix, Inst of Ceiling rose (Cooking,Pantry,Retail) | 48d | 2012-05-02 | 2012-06-28 | CP2DC09501C0 |  |  |  |  | 49.49d | 0d | ELECTRICAL [123.6 h]; Cost |  |  | CP2DC26017C0 | CB | C | P2 | DC | ME | 260 | 17 | BILL 4 | B04 | S1 | FF | R00 | ACF07 | 260 |  | FF | MEP |  |  |  |  |  |  |  |  |  |  |  |  |  |  |
| CP2DC27002C0 |  | CB-P2 ; 2nd Fix, Wiring Droppers (Cooking,Pantry,Retail) | 42d | 2012-05-02 | 2012-06-21 | CP2DC09501C0 |  |  |  |  | 49.49d | 0d | ELECTRICAL [216 h]; Cost |  |  | CP2DC27002C0 | CB | C | P2 | DC | ME | 270 | 02 | BILL 4 | B04 | S1 | 2F | R00 | ACF07 | 270 |  | 2n | MEP |  |  |  |  |  |  |  |  |  |  |  |  |  |  |
| CP2DC06101C0 |  | CB-P2 ; Wood / caseworks (Cooking,Pantry,Retail) | 60d | 2012-05-08 | 2012-07-18 | CP2CO04401C0, CP2DC09501C0, CP2DC09901C0, CAFWA00113M0 |  |  |  |  | 44.65d | 7.16d | WOOD WORK/CASEWORK [1322.37 no]; WOOD WORK/CASEWORK [5389 h]; Cost |  |  | CP2DC06101C0 | CB | C | P2 | DC | WO | 061 | 01 | BILL 4 | B04 | S1 | WW | R00 | ACF06 | 061 |  |  |  |  |  |  |  |  |  | 332 | 960 |  |  |  |  |  |  |
| CP2DC21113C0 |  | CB-P2 ; Final Fix, Inst of Sprinklers head/ Extinguisher (Cooking,Pantry,Retail) | 48d | 2012-05-09 | 2012-07-05 | CP2DC09501C0, CP2DC21115C0 SS+6d |  |  |  |  | 49.49d | 0d | MECHANICAL [278.4 h]; Cost |  |  | CP2DC21113C0 | CB | C | P2 | DC | ME | 211 | 13 | BILL 4 | B04 | S1 | FF | R00 | ACF07 | 211 |  | FF | MEP |  |  |  |  |  |  |  |  |  |  |  |  |  |  |
| CP2DC23019C0 |  | CB-P2 ; Final Fix, Inst of Grilles & Diffusers (Cooking,Pantry,Retail) | 48d | 2012-05-09 | 2012-07-05 | CP2DC09501C0, CP2DC23021C0 SS+6d |  |  |  |  | 49.49d | 0d | MECHANICAL [1970.4 h]; Cost |  |  | CP2DC23019C0 | CB | C | P2 | DC | ME | 230 | 19 | BILL 4 | B04 | S1 | FF | R00 | ACF07 | 230 |  | FF | MEP |  |  |  |  |  |  |  |  |  |  |  |  |  |  |
| CP2DC26003C0 |  | CB-P2 ; Final Fix, Inst of Light fittings (Cooking,Pantry,Retail) | 48d | 2012-05-09 | 2012-07-05 | CP2DC09501C0, CP2DC26017C0 SS+6d |  |  |  |  | 49.49d | 0d | ELECTRICAL [7983.6 h]; Cost |  |  | CP2DC26003C0 | CB | C | P2 | DC | ME | 260 | 03 | BILL 4 | B04 | S1 | FF | R00 | ACF07 | 260 |  | FF | MEP |  |  |  |  |  |  |  |  |  |  |  |  |  |  |
| CP2DC27030C0 |  | CB-P2 ; Final Fix, Inst of ELV device (Detector/Speaker) (Cooking,Pantry,Retail) | 48d | 2012-05-09 | 2012-07-05 | CP2DC09501C0, CP2DC27002C0 SS+6d |  |  |  |  | 49.49d | 0d | ELECTRICAL [2054.4 h]; Cost |  |  | CP2DC27030C0 | CB | C | P2 | DC | ME | 270 | 30 | BILL 4 | B04 | S1 | FF | R00 | ACF07 | 270 |  | FF | MEP |  |  |  |  |  |  |  |  |  |  |  |  |  |  |
| CP2DC08107C0 |  | CB-P2 ; Doors (Cooking,Pantry,Retail) | 42d | 2012-06-13 | 2012-08-02 | CP2DC08103C0, CP2DC09901C0, CP2DC09601C0 |  |  |  |  | 57.49d | 0d | ASSORTED DOORS [220 h]; ASSORTED DOORS [22 no]; Cost |  |  | CP2DC08107C0 | CB | C | P2 | DC | DO | 081 | 07 | BILL 4 | B04 | S1 | DR | R00 | ACF06 | 081 |  |  |  |  |  |  |  |  |  | 317 | 948 |  |  |  |  |  | 08 |
| CP2DC09701C0 |  | CB-P2 ; Wall finishes (ST, WD, WC) (Cooking,Pantry,Retail) | 36d | 2012-06-13 | 2012-07-26 | CP2DC27020C0 FF, CAFCI22001R02 FS+158d, CP2DC06101C0 SS, CP2DC09601C0 |  |  |  |  | 37.49d | 0d | ASSORTED WALL FINISH [981 h]; ASSORTED WALL FINISH [1128 m2]; Cost |  |  | CP2DC09701C0 | CB | C | P2 | DC | WF | 097 | 01 | BILL 4 | B04 | S1 | 01 | R00 | ACF06 | 097 |  |  |  |  |  |  |  |  |  | 105 | 1002 |  |  |  |  |  |  |
| CP2DC11071C0 |  | CB-P2 ; Food Service Equipment (Cooking,Pantry,Retail) | 42d | 2012-06-13 | 2012-08-02 | CP2DC09601C0 |  |  |  |  | 75.49d | 38d | FF&E [1461 h]; FF&E [486.88 no]; Cost |  |  | CP2DC11071C0 | CB | C | P2 | DC | EQ | 110 | 71 | BILL 4 | B04 | S1 | 06 | R00 | ACF08 | KE |  |  | FK |  |  |  |  |  |  | 313 | 944 |  |  |  |  |  |  |
| CP2DC01006C0 |  | CB-P2 ; 2nd, Ceiling Inspection by Consultants (Cooking,Pantry,Retail) | 6d | 2012-07-05 | 2012-07-12 | CP2DC21115C0, CP2DC23009C0, CP2DC23011C0, CP2DC23015C0, CP2DC27002C0, CP2DC09501C0, CP2DC21113C0, CP2DC22021C0, CP2DC22025C0, CP2DC23019C0, CP2DC26003C0, CP2DC26015C0, CP2DC26017C0, CP2DC27030C0 |  |  |  |  | 49.49d | 12d | Labor General [0.6 h]; Cost |  |  | CP2DC01006C0 | CB | C | P2 | DC | ME | 010 | 06 | BILL 4 | B04 | S1 | CI | R00 | ACF07 | 010 |  | 2n | MEP |  |  |  |  |  |  |  |  |  |  |  |  |  |  |
| CP2DC09503C0 |  | CB-P2 ; Ceiling closure - ACT/Gypsum (Cooking,Pantry,Retail) | 20d | 2012-07-26 | 2012-08-21 | CAFOA09503C1 FF, CP2DC01006C0, CP2DC21115C0, CP2DC23021C0, CP2DC26005C0, CP2DC27002C0, CP2DC06101C0, CP2DC09701C0, CP2DC26007C0 |  |  |  |  | 37.49d | 0d | ASSORTED CEILING FINISH [124.23 h]; CEILING GYPSUM [18.25 h]; ASSORTED CEILING FINISH [202 m2]; CEILING GYPSUM [51 m2]; Cost |  |  | CP2DC09503C0 | CB | C | P2 | DC | CE | 095 | 03 | BILL 4 | B04 | S1 | 02 | R00 | ACF06 | 095 |  |  |  |  |  |  |  |  |  | 324 | 953 |  |  |  |  |  |  |
| CP2DC11001C0 |  | CB-P2 ; Wall Protection (WP, CG, WG, FCG) (Cooking,Pantry,Retail) | 24d | 2012-07-26 | 2012-08-26 | CP2DC09701C0, CP2DC09903C0 SS |  |  |  |  | 57.49d | 20d | FF&E [4 h]; Cost |  |  | CP2DC11001C0 | CB | C | P2 | DC | WF | 110 | 01 | BILL 4 | B04 | S1 | 03 | R00 | ACF08 | b |  |  |  |  |  |  |  |  |  | 326 | 1001 |  |  |  |  |  |  |
| CP2DC08709C0 |  | CB-P2 ; Ironmongery (Cooking,Pantry,Retail) | 18d | 2012-08-02 | 2012-08-26 | CP2DC08107C0 |  |  |  |  | 57.49d | 20d | IRONMONGERY [90 h]; IRONMONGERY [9 no]; Cost |  |  | CP2DC08709C0 | CB | C | P2 | DC | DO | 087 | 09 | BILL 4 | B04 | S1 | IM | R00 | ACF06 | 087 |  |  |  |  |  |  |  |  |  | 322 | 951 |  |  |  |  |  | 08 |
| CP2DC09907C0 |  | CB-P2 ; Ceiling Final paint (Cooking,Pantry,Retail) | 0d | 2012-08-21 | 2012-08-21 | CP2DC09601C0, CP2DC09905C0, CP2DC09503C0 |  |  |  |  | 61.49d | 24d | Cost |  |  | CP2DC09907C0 | CB | C | P2 | DC | PA | 099 | 07 | BILL 4 | B04 | S1 | 02 | R00 | ACF06 | 099 |  |  |  |  |  |  |  |  |  | 331 | 959 |  |  |  |  |  |  |
| CP2DC22027C0 |  | CB-P2 ; Final Fix, Inst of All drain (Cooking,Pantry,Retail) | 12d | 2012-08-21 | 2012-09-04 | CP2DC09305C0, CP2DC09503C0 |  |  |  |  | 37.49d | 0d | PLUMBING [1562.4 h]; Cost |  |  | CP2DC22027C0 | CB | C | P2 | DC | ME | 220 | 27 | BILL 4 | B04 | S1 | FF | R00 | ACF07 | 220 |  | FF | MEP |  |  |  |  |  |  |  |  |  |  |  |  |  |  |
| CP2DC26019C0 |  | CB-P2 ; Final Fix, Inst of Switch/Sockets (Cooking,Pantry,Retail) | 12d | 2012-08-21 | 2012-09-04 | CP2DC09901C0, CP2DC09501C0, CP2DC09503C0 |  |  |  |  | 37.49d | 0d | ELECTRICAL [427.2 h]; Cost |  |  | CP2DC26019C0 | CB | C | P2 | DC | ME | 260 | 19 | BILL 4 | B04 | S1 | FF | R00 | ACF07 | 260 |  | FF | MEP |  |  |  |  |  |  |  |  |  |  |  |  |  |  |

| ID | WBS | Activity | Duration | Start | Finish | Predecessors | Complete | Remaining | Planned start | Planned finish | Total float | Free float | Resources | Cost | Actual cost | change id | CCAD BUILDING(SET) | CCAD PHASE(SET) | CCAD FLOOR(SET) | CCAD ZONE(SET) | CCAD WORK(SET) | CCAD SECTION(SET) | CCAD SERIAL No.(SET) | CCAD CBS(SET) | CCAD BILL(SET) | CCAD HANDOVER(SET) | CCAD TAG(SET) | CCAD REV(SET) | CCADACF (SET) | CCAD SSCF | user_number8 | user_integer1 | user_integer2 | user_number7 | Change Order # | NEW ACTIVITY ID | RENZ % COMPLETE | Claimed This Month | CCAD CSA | Act Selector % | P_811 | P_711 | July2011 Target% Complete | CCAD SUB ZONE MEP(SET) | CCAD MEQ | CCAD DIVISION(SET) | IDDD |
| --- | --- | --- | --- | --- | --- | --- | --- | --- | --- | --- | --- | --- | --- | --- | --- | --- | --- | --- | --- | --- | --- | --- | --- | --- | --- | --- | --- | --- | --- | --- | --- | --- | --- | --- | --- | --- | --- | --- | --- | --- | --- | --- | --- | --- | --- | --- | --- |
|  | 10 | **Precommissioning Tesing & snagging ( Demo Cooking, Pantry, Retail)** |  | 2012-09-04 | 2012-10-22 |  |  |  |  |  |  |  |  |  |  |  |  |  |  |  |  |  |  |  |  |  |  |  |  |  |  |  |  |  |  |  |  |  |  |  |  |  |  |  |  |  |  |
| CP2TS01804C0 |  | CB-P2 ; MEP de-snag, FIREM sign-off | 12d | 2012-09-04 | 2012-09-18 | CP2DC22025C0, CP2DC22027C0, CP2DC26015C0, CP2DC21113C0, CP2DC23019C0, CP2DC26017C0, CP2DC26003C0, CP2DC27030C0, CP2DC22021C0, CP2DC26019C0 |  |  |  |  | 37.49d | 0d | TESTING & COMMISSIONING [1020 h]; Cost |  |  | CP2TS01801C0 | CB | C | P2 | TS | SC | 018 | 01 | BILL 4 | B04 | S1 | 01 | R00 | ACF07 | 018 |  |  |  |  |  |  |  |  |  |  |  |  |  |  |  |  |  |
| CP2TS01807C0 |  | CB-P2 ; Touch-up & Clean / JV inspection /CIR /De-snag | 16.75d | 2012-09-18 | 2012-10-08 | CP2DC05501C0, CP2DC05511C0, CP2DC06101C0, CP2DC08709C0, CP2DC09305C0, CP2DC09601C0, CP2DC09701C0, CP2DC09903C0, CP2DC09907C0, CP2DC11001C0, CP2DC11071C0, CP2TS01804C0, CP2DC09503C0 |  |  |  |  | 37.49d | 4.99d | TESTING & COMMISSIONING [170 h]; Cost |  |  | CP2TS01802C0 | CB | C | P2 | TS | SC | 018 | 02 | BILL 4 | B04 | S1 | 02 | R00 | ACF07 | 018 |  |  |  |  |  |  |  |  |  |  |  |  |  |  |  |  |  |
| CP2TS01810C0 |  | CB-P2 ; Consultant's final de-snag inspection | 7d | 2012-10-14 | 2012-10-22 | CP2TS01807C0, CP3TS01810C0 |  |  |  |  | 32.5d | 25.18d | Labor General [1 h]; Cost |  |  | CP2TS01803C0 | CB | C | P2 | TS | SC | 018 | 03 | BILL 4 | B04 | S1 | 03 | R00 | ACF07 | 018 |  |  |  |  |  |  |  |  |  |  |  |  |  |  |  |  |  |
|  | 06 | **TR Room** |  | 2011-03-05 | 2012-08-23 |  |  |  |  |  |  |  |  |  |  |  |  |  |  |  |  |  |  |  |  |  |  |  |  |  |  |  |  |  |  |  |  |  |  |  |  |  |  |  |  |  |  |
| CP2TR09201C0 |  | CB-P2 ; Metal Studs (TR RM) | 30d | 2011-03-05 A | 2011-10-31 | CP2PA09201C0 SS, A10290 FS+58d | 71% | 8.7d | 2011-03-31 | 2011-05-05 | 59.4d | 0d | PARTITIONS [173 h]; PARTITIONS - Metal Studs [48 m]; Cost |  |  | CP2TR09201C0 | CB | C | P2 | TR | PT | 092 | 01 | BILL 4 | B04 | S1 | 1F | R00 | ACF06 | 092 | 0 | 0 | 0 | 0 | 313 | 885 | 35 | 2326.4 | GP | PMS |  |  |  |  |  |  |  |
| CP2TR09203C0 |  | CB-P2 ; Partitions 1st face (TR RM) | 48d | 2011-04-07 A | 2011-11-24 | CP2TR09201C0 SS+12d | 45% | 26.4d | 2011-05-10 | 2011-07-06 | 66.6d | 0d | PARTITIONS [48 m]; PARTITIONS [129 h]; Cost |  |  | CP2TR09203C0 | CB | C | P2 | TR | PT | 092 | 03 | BILL 4 | B04 | S1 | 2F | R00 | ACF06 | 092 | 0 | 0 | 0 | 0 | 314 | 886 | 10 | 2442.75 | GP | P1F | 40 | 29 |  |  |  |  |  |
| CP2TR26026C0 |  | CB-P2 ; 2nd Fix, Conduit (TR RM) | 54d | 2011-06-08 A | 2011-11-19 | CP2TR09201C0 SS+6d | 60% | 21.6d | 2011-06-08 | 2011-08-11 | 59.4d | 0d | ELECTRICAL [430.8 h]; Cost [29580.4 AED] | 29,580.43 | 17,748.26 | CP2TR26026C0 | CB | C | P2 | TR | ME | 260 | 26 | BILL 4 | B04 | S1 | 2F | R00 | ACF07 | 260 | 0 | 0 | 0 | 0 |  |  |  | 8573.91 | MEP |  | 50 | 45 | 30 | 2n |  |  |  |
| CP2TR23009C0 |  | CB-P2 ; 2nd Fix, Inst of VAV'S CHW connection (TR RM) | 54d | 2011-07-05 A | 2011-11-02 | CP2TR09201C0 SS+6d | 80% | 10.8d | 2011-10-17 | 2011-12-24 | 69d | 0d | MECHANICAL [1419.6 h]; Cost [76659.7 AED] | 76,659.7 | 61,327.76 | CP2TR23009C0 | CB | C | P2 | TR | ME | 230 | 09 | BILL 4 | B04 | S1 | 2F | R00 | ACF07 | 230 | 0 | 0 | 0 | 0 |  |  |  |  | MEP |  | 70 | 40 | 55 | 2n |  |  |  |
| CP2TR23011C0 |  | CB-P2 ; 2nd Fix, Inst of VCD's/FD's (TR RM) | 54d | 2011-07-05 A | 2011-11-19 | CP2TR09201C0 SS+6d | 60% | 21.6d | 2011-10-17 | 2011-12-24 | 69d | 0d | MECHANICAL [2648.4 h]; Cost [143058 AED] | 143,057.96 | 85,834.77 | CP2TR23011C0 | CB | C | P2 | TR | ME | 230 | 11 | BILL 4 | B04 | S1 | 2F | R00 | ACF07 | 230 |  |  |  |  |  |  |  |  | MEP |  | 60 | 50 |  | 2n |  |  |  |
| CP2TR23013C0 |  | CB-P2 ; 2nd Fix, Insulation of CHW pipe & Duct (TR RM) | 120d | 2011-07-10 A | 2011-11-21 | CP2TR23009C0 SS, CP2TR23011C0 SS | 80% | 24d | 2011-10-06 | 2012-03-03 | 69d | 9.6d | MECHANICAL [6742.8 h]; Cost [363863 AED] | 363,863.22 | 291,090.57 | CP2TR23013C0 | CB | C | P2 | TR | ME | 230 | 13 | BILL 4 | B04 | S1 | 2F | R00 | ACF07 | 230 |  |  |  |  |  |  |  |  | MEP |  | 80 | 65 | 65 | 2n |  |  |  |
| CP2TR26005C0 |  | CB-P2 ; 2nd Fix, Wiring for Power/Lighting/Emergency (TR RM) | 54d | 2011-08-10 A | 2012-04-01 | CP2TR26026C0, CP2TR26027C0 SS+6d, CP2TR09501C0 | 50% | 27d | 2012-01-04 | 2012-03-08 | 94.5d | 0d | ELECTRICAL [216 h]; Cost [15494.5 AED] | 15,494.51 | 7,747.25 | CP2TR26005C0 | CB | C | P2 | TR | ME | 260 | 05 | BILL 4 | B04 | S1 | 2F | R00 | ACF07 | 260 |  |  |  |  |  |  |  |  | MEP |  | 50 | 0 |  | 2n |  |  |  |
| CP2TR26009C0 |  | CB-P2 ; 2nd Fix, Inst of Equipment (DB, TR, SG,BUS) (TR RM) | 54d | 2011-08-10 A | 2012-03-22 | CP2TR09205C0 SS, CP2TR26005C0 SS+6d | 65% | 18.9d | 2012-01-11 | 2012-03-15 | 94.5d | 17.1d | ELECTRICAL [14013.6 h]; Cost [3188823 AED] | 3,188,823.2 | 2,072,735.08 | CP2TR26009C0 | CB | C | P2 | TR | ME | 260 | 09 | BILL 4 | B04 | S1 | 2F | R00 | ACF04 | 260 |  |  |  |  |  |  |  |  | MEP |  | 65 | 0 |  | 2n | E |  |  |
| CP2TR26027C0 |  | CB-P2 ; 2nd Fix, Wiring / Cabling (TR RM) | 54d | 2011-08-10 A | 2011-12-28 | CP2TR09201C0 SS+6d, CP2TR09203C0 | 50% | 27d | 2011-12-27 | 2012-03-01 | 111.6d | 52.2d | ELECTRICAL [216 h]; Cost [15494.5 AED] | 15,494.51 | 7,747.25 | CP2TR26027C0 | CB | C | P2 | TR | ME | 260 | 27 | BILL 4 | B04 | S1 | 2F | R00 | ACF07 | 260 |  |  |  |  | 417 | 1318 |  |  | MEP |  | 50 | 0 |  | 2n |  |  |  |
| CP2TR08101C0 |  | CB-P2 ; Door Frames (TR RM) | 18d | 2011-10-31 | 2011-11-24 | CP2TR09201C0, GNHE08101C0 |  |  |  |  | 96.3d | 36.9d | ASSORTED DOORS [2 h]; Cost |  |  | CP2TR08101C0 | CB | C | P2 | TR | DO | 081 | 01 | BILL 4 | B04 | S1 | DF | R00 | ACF06 | 081 |  |  |  |  | 316 | 20001090 |  |  |  |  |  |  |  |  |  | 08 |  |
| CP2TR01005C0 |  | CB-P2 ; 2nd, Wall Inspection by Consultant (TR RM) | 12d | 2011-11-19 | 2011-12-05 | CP2TR26026C0 |  |  |  |  | 59.4d | 0d | Labor General [0.6 h]; Cost |  |  | CP2TR01005C0 | CB | C | P2 | TR | ME | 010 | 05 | BILL 4 | B04 | S1 | WI | R00 | ACF07 | 010 |  |  |  |  |  |  |  |  | MEP |  |  |  |  | 2n |  |  |  |
| CP2TR09205C0 |  | CB-P2 ; Partitions Closing (TR RM) | 30d | 2011-12-05 | 2012-01-10 | CP2TR01005C0, CP2TR08101C0 FF, CP2TR09203C0, CAFOA09204C1 FF, CP2TR23013C0, CP2TR23009C0 |  |  |  |  | 59.4d | 0d | PARTITIONS [48 m]; PARTITIONS [181 h]; Cost |  |  | CP2TR09205C0 | CB | C | P2 | TR | PT | 092 | 05 | BILL 4 | B04 | S1 | FF | R00 | ACF06 | 092 |  |  |  |  | 315 | 887 |  |  | GP | P2F |  |  |  |  |  |  |  |
| CP2TR09901C0 |  | CB-P2 ; Wall Prime & 1st coat (TR RM) | 18d | 2012-01-10 | 2012-01-31 | CP2TR09205C0 |  |  |  |  | 59.4d | 0d | WALL PAINT [18 h]; WALL PAINT [21 m2]; Cost |  |  | CP2TR09901C0 | CB | C | P2 | TR | PA | 099 | 01 | BILL 4 | B04 | S1 | 01 | R00 | ACF06 | 099 |  |  |  |  | 360 | 20001110 |  |  |  |  |  |  |  |  |  |  |  |
| CP2TR09501C0 |  | CB-P2 ; Ceiling grid and ServiceTile (TR RM) | 24d | 2012-01-31 | 2012-02-29 | CP2TR26027C0 FF, CP2TR09901C0 FF, CP2TR09901C0 |  |  |  |  | 59.4d | 0d | CEILING GRID FOR GYPSUM [116.88 h]; CEILING GRID FOR GYPSUM [9.82 m2]; Cost |  |  | CP2TR09501C0 | CB | C | P2 | TR | CE | 095 | 01 | BILL 4 | B04 | S1 | 01 | R00 | ACF06 | 095 |  |  |  |  | 336 | 1327 |  |  |  |  |  |  |  |  |  |  | 1 |
| CP2TR09601C0 |  | CB-P2 ; Flooring (Rubber & etc) (TR RM) | 36d | 2012-02-29 | 2012-04-11 | CP2TR09501C0 |  |  |  |  | 59.4d | 0d | RUBBER FLOOR [183 m2]; RUBBER FLOOR [72 h]; Cost |  |  | CP2TR09601C0 | CB | C | P2 | TR | FF | 096 | 01 | BILL 4 | B04 | S1 | 03 | R00 | ACF06 | RF |  |  |  |  | 359 | 20001120 |  |  |  |  |  |  |  |  |  |  |  |
| CP2TR09905C0 |  | CB-P2 ; Ceiling Prime & 1st coat (TR RM) | 0d | 2012-02-29 | 2012-02-29 | CP2TR09501C0 |  |  |  |  | 171.4d | 82d | Cost |  |  | CP2TR09905C0 | CB | C | P2 | TR | PA | 099 | 05 | BILL 4 | B04 | S1 | 01 | R00 | ACF06 | 099 |  |  |  |  | 362 | 1313 |  |  |  |  |  |  |  |  |  |  |  |
| CP2TR23023C0 |  | CB-P2 ; 2nd Fix, Flexible ducts (TR RM) | 30d | 2012-02-29 | 2012-04-04 | CP2TR09205C0, CP2TR09501C0 |  |  |  |  | 95.4d | 36d | MECHANICAL [903.6 h]; Cost |  |  | CP2TR23023C0 | CB | C | P2 | TR | ME | 230 | 23 | BILL 4 | B04 | S1 | 2F | R00 | ACF07 | 230 |  |  |  |  | 412 | 20001140 |  |  | MEP |  |  |  | 40 | 2n |  |  |  |
| CP2TR23074C0 |  | CB-P2 ; Final Fix, Grilles, panels & diffusers (TR RM) | 30d | 2012-02-29 | 2012-04-04 | CP2TR09501C0 |  |  |  |  | 83.4d | 6d | MECHANICAL [1970.4 h]; Cost |  |  | CP2TR23074C0 | CB | C | P2 | TR | ME | 230 | 74 | BILL 4 | B04 | S1 | FF | R00 | ACF07 | 230 |  |  |  |  | 419 | 20001160 |  |  | MEP |  |  |  |  | FF |  |  |  |
| CP2TR26015C0 |  | CB-P2 ; Final Fix, Inst of Ceiling rose (TR RM) | 30d | 2012-02-29 | 2012-04-04 | CP2TR09501C0 |  |  |  |  | 77.4d | 0d | ELECTRICAL [123.6 h]; Cost |  |  | CP2TR26015C0 | CB | C | P2 | TR | ME | 260 | 15 | BILL 4 | B04 | S1 | FF | R00 | ACF07 | 260 |  |  |  |  |  |  |  |  | MEP |  |  |  |  | FF |  |  |  |
| CP2TR26076C0 |  | CB-P2 ; Final Fix, Lighting fittings (TR RM) | 30d | 2012-02-29 | 2012-04-04 | CP2TR09501C0 |  |  |  |  | 83.4d | 6d | ELECTRICAL [7983.6 h]; Cost |  |  | CP2TR26076C0 | CB | C | P2 | TR | ME | 260 | 76 | BILL 4 | B04 | S1 | FF | R00 | ACF07 | 260 |  |  |  |  | 420 | 20001170 |  |  | MEP |  |  |  |  | FF |  |  |  |
| CP2TR27002C0 |  | CB-P2 ; 2nd Fix, Dressing of ELV panels (TR RM) | 30d | 2012-02-29 | 2012-04-04 | CP2TR09201C0 SS+6d, CP2TR09205C0, CP2TR27020C0 SS |  |  |  |  | 83.4d | 6d | ELECTRICAL [1284 h]; Cost |  |  | CP2TR27002C0 | CB | C | P2 | TR | ME | 270 | 02 | BILL 4 | B04 | S1 | 2F | R00 | ACF07 | 270 |  |  |  |  |  |  |  |  | MEP |  |  |  |  | 2n |  |  |  |
| CP2TR27020C0 |  | CB-P2 ; 2nd Fix, Inst of ELV Equipment (Panels) (TR RM) | 30d | 2012-02-29 | 2012-04-04 | CP2TR09201C0 SS+6d, CP2TR09205C0, CP2TR09501C0 |  |  |  |  | 83.4d | 0d | ELECTRICAL [384 h]; Cost |  |  | CP2TR27020C0 | CB | C | P2 | TR | ME | 270 | 20 | BILL 4 | B04 | S1 | 2F | R00 | ACF04 | 270 |  |  |  |  |  |  |  |  | MEP |  |  |  |  | 2n | E |  |  |
| CP2TR27030C0 |  | CB-P2 ; Final Fix, Inst of ELV device (Detector/Speaker) (TR RM) | 30d | 2012-02-29 | 2012-04-04 | CP2TR09501C0 |  |  |  |  | 83.4d | 6d | ELECTRICAL [2054.4 h]; Cost |  |  | CP2TR27030C0 | CB | C | P2 | TR | ME | 270 | 30 | BILL 4 | B04 | S1 | FF | R00 | ACF07 | 270 |  |  |  |  |  |  |  |  | MEP |  |  |  |  | FF |  |  |  |
| CP2TR26013C0 |  | CB-P2 ; Final Fix, Termination & Gladding of Cables (TR RM) | 30d | 2012-03-07 | 2012-04-11 | CP2TR26015C0 SS+6d, CP2TR09501C0 |  |  |  |  | 77.4d | 0d | ELECTRICAL [826.8 h]; Cost |  |  | CP2TR26013C0 | CB | C | P2 | TR | ME | 260 | 13 | BILL 4 | B04 | S1 | FF | R00 | ACF07 | 260 |  |  |  |  |  |  |  |  | MEP |  |  |  |  | FF |  |  |  |
| CP2TR01006C0 |  | CB-P2 ; 2nd, Ceiling Inspection by Consultants (TR RM) | 12d | 2012-04-11 | 2012-04-25 | CP2TR23009C0, CP2TR23011C0, CP2TR23013C0, CP2TR09501C0, CP2TR23074C0, CP2TR26013C0, CP2TR26015C0, CP2TR26076C0, CP2TR27030C0, CP2TR26015C0 FF, CP2TR26076C0 FF, CP2TR27030C0 FF, CP2TR26009C0, CP2TR27002C0 |  |  |  |  | 77.4d | 18d | Labor General [0.6 h]; Cost |  |  | CP2TR01006C0 | CB | C | P2 | TR | ME | 010 | 06 | BILL 4 | B04 | S1 | CI | R00 | ACF07 | 010 |  |  |  |  |  |  |  |  | MEP |  |  |  |  | 2n |  |  |  |
| CP2TR08105C0 |  | CB-P2 ; Doors (TR RM) | 18d | 2012-04-11 | 2012-05-02 | CP2TR08101C0, CP2TR09901C0, CP2TR09601C0 |  |  |  |  | 103.4d | 0d | ASSORTED DOORS [10 h]; ASSORTED DOORS [1 no]; Cost |  |  | CP2TR08105C0 | CB | C | P2 | TR | DO | 081 | 05 | BILL 4 | B04 | S1 | DR | R00 | ACF06 | 081 |  |  |  |  | 317 | 1325 |  |  |  |  |  |  |  |  |  | 08 |  |
| CP2TR21115C0 |  | CB-P2 ; 2nd Fix, Gaseous Fire Suppression (TR RM) | 30d | 2012-04-11 | 2012-05-16 | CP2TR09601C0 |  |  |  |  | 59.4d | 0d | MECHANICAL [3854.4 h]; Cost |  |  | CP2TR21115C0 | CB | C | P2 | TR | ME | 211 | 15 | BILL 4 | B04 | S1 | 2F | R00 | ACF07 | 211 |  |  |  |  | 411 | 20001130 |  |  | MEP |  |  |  |  | 2n |  |  |  |
| CP2TR08709C0 |  | CB-P2 ; Ironmongery (TR RM) | 14d | 2012-05-02 | 2012-05-19 | CP2TR08105C0 |  |  |  |  | 103.4d | 44d | IRONMONGERY [30 h]; IRONMONGERY [3 no]; Cost |  |  | CP2TR08709C0 | CB | C | P2 | TR | DO | 087 | 09 | BILL 4 | B04 | S1 | IM | R00 | ACF06 | 087 |  |  |  |  | 322 | 20001100 |  |  |  |  |  |  |  |  |  | 08 |  |
| CP2TR09503C0 |  | CB-P2 ; Ceiling closure (TR RM) | 16d | 2012-05-16 | 2012-06-04 | CP2TR01006C0, CP2TR09501C0, CP2TR21115C0, CP2TR26005C0, CP2TR26026C0, CP2TR26027C0, CP2TR23023C0 |  |  |  |  | 59.4d | 0d | ASSORTED CEILING FINISH [49.2 h]; CEILING GYPSUM [3.28 h]; ASSORTED CEILING FINISH [80 m2]; CEILING GYPSUM [20 m2]; Cost |  |  | CP2TR09503C0 | CB | C | P2 | TR | CE | 095 | 03 | BILL 4 | B04 | S1 | 02 | R00 | ACF06 | 095 |  |  |  |  | 337 | 20001080 |  |  |  |  |  |  |  |  |  |  |  |
| CP2TR09903C0 |  | CB-P2 ; Wall - Final Paint (TR RM) | 12d | 2012-06-04 | 2012-06-19 | CP2TR09901C0, CP2TR09503C0 |  |  |  |  | 77.4d | 18d | WALL PAINT [10 h]; WALL PAINT [12 m2]; Cost |  |  | CP2TR09903C0 | CB | C | P2 | TR | PA | 099 | 03 | BILL 4 | B04 | S1 | 02 | R00 | ACF06 | 099 |  |  |  |  | 361 | 1312 |  |  |  |  |  |  |  |  |  |  |  |
| CP2TR09907C0 |  | CB-P2 ; Ceiling - Final paint (TR RM) | 0d | 2012-06-04 | 2012-06-04 | CP2TR09905C0, CP2TR09503C0 |  |  |  |  | 89.4d | 30d | Cost |  |  | CP2TR09907C0 | CB | C | P2 | TR | PA | 099 | 07 | BILL 4 | B04 | S1 | 02 | R00 | ACF06 | 099 |  |  |  |  | 363 | 1314 |  |  |  |  |  |  |  |  |  |  |  |
| CP2TR26017C0 |  | CB-P2 ; Final Fix, Inst of Switch/Sockets (TR RM) | 12d | 2012-06-04 | 2012-06-19 | CP2TR09901C0, CP2TR09503C0 |  |  |  |  | 59.4d | 0d | ELECTRICAL [427.2 h]; Cost |  |  | CP2TR26017C0 | CB | C | P2 | TR | ME | 260 | 17 | BILL 4 | B04 | S1 | FF | R00 | ACF07 | 260 |  |  |  |  |  |  |  |  | MEP |  |  |  |  | FF |  |  |  |
| CP2TR01802C0 |  | CB-P2 ; MEP de-snag, FIREM sign-off | 18d | 2012-06-19 | 2012-07-10 | CP2TR23074C0, CP2TR26015C0, CP2TR27030C0, CP2TR26013C0, CP2TR26017C0, CP2TR26076C0 |  |  |  |  | 59.4d | 0d | TESTING & COMMISSIONING [510 h]; Cost |  |  | CP3TR01851C0 | CB | C | P2 | TR | SC | 018 | 53 | BILL 4 | B04 | S1 | 01 | R00 | ACF07 | 018 |  |  |  |  | 396 |  |  |  |  |  |  |  |  |  |  |  |  |
| CP2TR01801C0 |  | CB-P2 ; Touch-up & Clean / JV inspection /CIR /De-snag | 24d | 2012-07-10 | 2012-08-07 | CP2CO04411C0, CP2TR01802C0, CP2TR08101C0, CP2TR08105C0, CP2TR08709C0, CP2TR09201C0, CP2TR09203C0, CP2TR09205C0, CP2TR09501C0, CP2TR09503C0, CP2TR09601C0, CP2TR09901C0, CP2TR09903C0, CP2TR09905C0, CP2TR09907C0, CP2TR23074C0, CP2TR26013C0, CP2TR26015C0, CP2TR26076C0, CP2TR27030C0 |  |  |  |  | 59.4d | 0d | TESTING & COMMISSIONING [85 h]; Cost |  |  | CP2TR01851C0 | CB | C | P2 | TR | SC | 018 | 51 | BILL 4 | B04 | S1 | 02 | R00 | ACF07 | 018 |  |  |  |  | 396 |  |  |  |  |  |  |  |  |  |  |  |  |
| CP2TR01803C0 |  | CB-P2 ; Consultant's final de-snag inspection | 12d | 2012-08-07 | 2012-08-23 | CP2TR01801C0 |  |  |  |  | 59.4d | 51.05d | Labor General [1 h]; Cost |  |  | CP3TS01803C0 | CB | C | P2 | TR | SC | 018 | 03 | BILL 4 | B04 | S1 | 03 | R00 | ACF07 | 018 |  |  |  |  |  |  |  |  |  |  |  |  |  |  |  |  |  |

| ID | WBS | Activity | Duration | Start | Finish | Predecessors | Complete | Remaining | Planned start | Planned finish | Total float | Free float | Resources | Cost | Actual cost | user_number8 | user_integer1 | user_integer2 | user_number7 | Change Order # | NEW ACTIVITY ID | change id | RENZ % COMPLETE | Claimed This Month | CCAD BUILDING(SET) | CCAD PHASE(SET) | CCAD FLOOR(SET) | CCAD ZONE(SET) | CCAD WORK(SET) | CCAD SECTION(SET) | CCAD SERIAL No.(SET) | CCAD CBS(SET) | CCAD BILL(SET) | CCAD HANDOVER(SET) | CCAD TAG(SET) | CCAD REV(SET) | CCADACF (SET) | CCAD CSA | CCAD SSCF | Act Selector % | CCAD SUB ZONE MEP(SET) | July2011 Target% Complete | P_811 | P_711 | CCAD MEQ | CCAD DIVISION(SET) | TO BE DELETED |
| --- | --- | --- | --- | --- | --- | --- | --- | --- | --- | --- | --- | --- | --- | --- | --- | --- | --- | --- | --- | --- | --- | --- | --- | --- | --- | --- | --- | --- | --- | --- | --- | --- | --- | --- | --- | --- | --- | --- | --- | --- | --- | --- | --- | --- | --- | --- | --- |
|  | 08 | **Elec Room** |  | 2011-01-22 | 2012-10-20 |  |  |  |  |  |  |  |  |  |  |  |  |  |  |  |  |  |  |  |  |  |  |  |  |  |  |  |  |  |  |  |  |  |  |  |  |  |  |  |  |  |  |
| CP2ER09201C0 |  | CB-P2 ; Metal Studs (Elec RM) | 84d | 2011-01-22 A | 2011-11-01 | CP2ER23010C0 | 71% | 24.36d | 2011-03-28 | 2011-07-05 | 34.04d | 0d | PARTITIONS [1212 h]; PARTITIONS - Metal Studs [362 m]; Cost |  |  | 0 | 0 | 0 | 0 | 313 | 1372 | CP2ER09201C0 | 35 | 16285.2 | CB | C | P2 | ER | PT | 092 | 01 | BILL 4 | B04 | S1 | 1F | R00 | ACF06 | GP | 092 | PMS |  |  |  |  |  |  |  |
| CP2ER23010C0 |  | CB-P2 ; 1st Fix, Inst. of Supports for MEP (Elec RM) | 36d | 2011-03-08 A | 2011-10-04 | CP1S103335C0, CP1S203335C0, CP2S107807C0, CP2S207808C0 | 90% | 3.6d | 2011-02-28 | 2011-04-11 | 34.04d | 0d | MECHANICAL [1596 h]; Cost [57766.2 AED] | 57,766.25 | 51,989.63 |  |  |  |  |  |  | CP2ER23010C0 | 100 |  | CB | C | P2 | ER | ME | 230 | 10 | BILL 4 | B04 | S1 | 1F | R00 | ACF04 | MEP | 230 | M1F | 1S |  |  |  |  |  |  |
| CP2ER26012C0 |  | CB-P2 ; 1st Fix, Inst of Cable Tray (Elec RM) | 120d | 2011-03-12 A | 2011-11-19 | CP2ER23010C0, CP2ER27010C0 SS+14d, CP2S207808C0 | 70% | 36d | 2011-05-14 | 2011-10-04 | 86.6d | 0d | ELECTRICAL [1714.8 h]; Cost [17044 AED] | 17,043.96 | 11,930.77 |  |  |  |  |  |  | CP2ER26012C0 | 70 |  | CB | C | P2 | ER | ME | 260 | 12 | BILL 4 | B04 | S1 | 1F | R00 | ACF04 | MEP | 260 | M1F | 1S | 95 |  |  |  |  |  |
| CP2ER23014C0 |  | CB-P2 ; 1st Fix, Inst of Ducting (Elec RM) | 200d | 2011-03-14 A | 2011-10-16 | CP2ER23010C0, CP2ER23012C0 SS+10d, CP2S207808C0 | 95% | 10d | 2011-06-11 | 2012-02-11 | 154.4d | 0d | MECHANICAL [17564.4 h]; Cost [927678 AED] | 927,677.51 | 881,293.63 |  |  |  |  |  |  | CP2ER23014C0 | 80 | 161442.6 | CB | C | P2 | ER | ME | 230 | 14 | BILL 4 | B04 | S1 | 1F | R00 | ACF04 | MEP | 230 | M1F | 1S | 95 |  |  |  |  |  |
| CP2ER26010C0 |  | CB-P2 ; 1st Fix, Inst of Trunking/Conduiting (Elec RM) | 200d | 2011-03-21 A | 2011-11-12 | CP2ER23010C0, CP2S207808C0 | 85% | 30d | 2011-04-11 | 2011-12-10 | 64.4d | 0d | ELECTRICAL [1197.6 h]; Cost [29580.4 AED] | 29,580.43 | 25,143.36 |  |  |  |  |  |  | CP2ER26010C0 | 80 | 12661.65 | CB | C | P2 | ER | ME | 260 | 10 | BILL 4 | B04 | S1 | 1F | R00 | ACF04 | MEP | 260 | M1F | 1S | 95 |  |  |  |  |  |
| CP2ER27010C0 |  | CB-P2 ; 1st Fix, Inst of Trunking for ELV system (Elec RM) | 120d | 2011-03-28 A | 2011-11-27 | CP2ER23010C0, CP2ER26010C0 SS+14d, CP2S207808C0 | 65% | 42d | 2011-04-27 | 2011-09-18 | 86.6d | 0d | ELECTRICAL [724.8 h]; Cost [24667.9 AED] | 24,667.88 | 16,034.12 |  |  |  |  |  |  | CP2ER27010C0 | 30 | 29989.05 | CB | C | P2 | ER | ME | 270 | 10 | BILL 4 | B04 | S1 | 1F | R00 | ACF04 | MEP | 270 | M1F | 1S | 98 | 98 | 95 |  |  |  |
| CP2ER09203C0 |  | CB-P2 ; Partitions 1st face (Elec RM) | 54d | 2011-04-07 A | 2011-12-12 | CP2ER09201C0 | 45% | 29.7d | 2011-05-10 | 2011-07-13 | 46.34d | 12.3d | PARTITIONS [362 m]; PARTITIONS [951 h]; Cost |  |  | 0 | 0 | 0 | 0 | 314 | 1373 | CP2ER09203C0 | 10 | 17099.55 | CB | C | P2 | ER | PT | 092 | 03 | BILL 4 | B04 | S1 | 2F | R00 | ACF06 | GP | 092 | P1F |  |  | 40 | 29 |  |  |  |
| CP2ER23026C0 |  | CB-P2 ; 2nd Fix, Insulation of CHW pipe & Duct (Elec RM) | 120d | 2011-04-11 A | 2011-11-01 | CP2ER09201C0 SS+6d, CP2ER23010C0 SS | 80% | 24d | 2011-04-11 | 2011-09-01 | 160.4d | 126.36d | MECHANICAL [6742.8 h]; Cost [363863 AED] | 363,863.22 | 291,090.57 |  |  |  |  |  |  | CP2ER23026C0 | 20 |  | CB | C | P2 | ER | ME | 230 | 26 | BILL 4 | B04 | S1 | 2F | R00 | ACF07 | MEP | 230 |  | 2n | 45 | 80 | 65 |  |  |  |
| CP2ER23012C0 |  | CB-P2 ; 1st Fix, Inst of CHW pipe (Elec RM) | 150d | 2011-04-13 A | 2011-10-22 | CP2ER23010C0, CP2ER26012C0 SS+14d, CP2S207808C0 | 90% | 15d | 2011-05-30 | 2011-11-29 | 154.4d | 0d | MECHANICAL [2966.4 h]; Cost [130782 AED] | 130,781.76 | 117,703.58 |  |  |  |  |  |  | CP2ER23012C0 | 30 | 45507.3 | CB | C | P2 | ER | ME | 230 | 12 | BILL 4 | B04 | S1 | 1F | R00 | ACF04 | MEP | 230 | M1F | 1S | 75 |  |  |  |  |  |
| CP2ER23020C0 |  | CB-P2 ; 2nd Fix, Inst of VAV'S CHW connection (Elec RM) | 90d | 2011-05-10 A | 2011-10-25 | CP2ER09201C0 SS+6d, CP2ER23010C0 | 80% | 18d | 2011-06-09 | 2011-09-26 | 166.4d | 132.36d | MECHANICAL [1419.6 h]; Cost [76659.7 AED] | 76,659.7 | 61,327.76 | 0 | 0 | 0 | 0 |  |  | CP2ER23020C0 | 10 |  | CB | C | P2 | ER | ME | 230 | 20 | BILL 4 | B04 | S1 | 2F | R00 | ACF07 | MEP | 230 |  | 2n | 25 | 70 | 40 |  |  |  |
| CP2ER27012C0 |  | CB-P2 ; 1st Fix, Wiring/ Cabling work (Elec RM) | 60d | 2011-06-07 A | 2012-01-17 | CP2ER27010C0 | 30% | 42d | 2011-07-07 | 2011-09-18 | 100.4d | 66.36d | ELECTRICAL [981.6 h]; Cost [15494.5 AED] | 15,494.51 | 4,648.35 |  |  |  |  |  |  | CP2ER27012C0 |  | 23837.95 | CB | C | P2 | ER | ME | 270 | 12 | BILL 4 | B04 | S1 | 1F | R00 | ACF04 | MEP | 270 | M1F | 1S | 45 | 65 | 35 |  |  |  |
| CP2ER21120C0 |  | CB-P2 ; 2nd Fix, Inst of Sprinkler droppers (Elec RM) | 66d | 2011-06-08 A | 2012-06-10 | CP2ER09501C0 | 50% | 33d | 2011-10-25 | 2012-01-16 | 73.04d | 39d | MECHANICAL [1404 h]; Cost [75701.9 AED] | 75,701.88 | 37,850.94 |  |  |  |  |  |  | CP2ER21120C0 |  | 27048.13 | CB | C | P2 | ER | ME | 211 | 20 | BILL 4 | B04 | S1 | 2F | R00 | ACF07 | MEP | 211 |  | 2n | 75 | 50 | 20 |  |  |  |
| CP2ER23016C0 |  | CB-P2 ; 1st Fix, Inst of VCD's/FD's (Elec RM) | 100d | 2011-06-11 A | 2011-11-12 | CP2ER23014C0 | 80% | 20d | 2011-06-11 | 2011-10-08 | 154.4d | 120.36d | MECHANICAL [3220.8 h]; Cost [143058 AED] | 143,057.96 | 114,446.37 | 0 | 0 | 0 | 0 |  |  | CP2ER23016C0 |  | 82973.64 | CB | C | P2 | ER | ME | 230 | 16 | BILL 4 | B04 | S1 | 1F | R00 | ACF04 | MEP | 230 | M1F | 1S | 75 |  |  |  |  |  |
| CP2ER23024C0 |  | CB-P2 ; 2nd Fix, Inst of VCD's/FD's (Elec RM) | 48d | 2011-06-11 A | 2011-10-27 | CP2ER23014C0 | 80% | 9.6d | 2011-06-11 | 2011-08-06 | 164.8d | 130.76d | MECHANICAL [2648.4 h]; Cost [143058 AED] | 143,057.96 | 114,446.37 | 0 | 0 | 0 | 0 |  |  | CP2ER23024C0 |  | 82973.64 | CB | C | P2 | ER | ME | 230 | 24 | BILL 4 | B04 | S1 | 2F | R00 | ACF07 | MEP | 230 |  | 2n | 75 |  |  |  |  |  |
| CP2ER26022C0 |  | CB-P2 ; 2nd Fix, Cable Pulling (Elec RM) | 42d | 2011-06-15 A | 2012-01-05 | CP2ER09201C0 SS+6d, CP2ER26012C0 | 10% | 37.8d | 2011-06-15 | 2011-08-04 | 86.6d | 52.56d | ELECTRICAL [6616.8 h]; Cost [324578 AED] | 324,577.9 | 32,457.79 |  |  |  |  |  |  | CP2ER26022C0 |  | 37650.73 | CB | C | P2 | ER | ME | 260 | 22 | BILL 4 | B04 | S1 | 2F | R00 | ACF07 | MEP | 260 |  | 2n | 25 |  |  |  |  |  |
| CP2ER26024C0 |  | CB-P2 ; 2nd Fix, Inst of Equipment (DB, TR, SG) (Elec RM) | 100d | 2011-07-10 A | 2012-04-05 | CP2ER09205C0 | 75% | 25d | 2011-11-27 | 2012-03-26 | 81.04d | 0d | ELECTRICAL [4905.6 h]; Cost [1116278 AED] | 1,116,277.83 | 837,208.38 |  |  |  |  |  |  | CP2ER26024C0 |  | 841673.65 | CB | C | P2 | ER | ME | 260 | 24 | BILL 4 | B04 | S1 | 2F | R00 | ACF04 | MEP | 260 |  | 2n | 75 |  |  | E |  |  |
| CP2ER23022C0 |  | CB-P2 ; 2nd Fix, Inst of Equipment (FCU,FAN,PUMP) (Elec RM) | 48d | 2011-08-10 A | 2012-04-16 | CP2ER09205C0 | 30% | 33.6d | 2012-01-04 | 2012-03-01 | 122.44d | 14.4d | MECHANICAL [1296 h]; Cost [294957 AED] | 294,956.89 | 88,487.07 |  |  |  |  |  |  | CP2ER23022C0 |  |  | CB | C | P2 | ER | ME | 230 | 22 | BILL 4 | B04 | S1 | 2F | R00 | ACF04 | MEP | 230 |  | 2n |  | 30 | 0 | H |  |  |
| CP2ER08101C0 |  | CB-P2 ; Metal Door Frames (Elec RM) | 42d | 2011-11-01 | 2011-12-26 | CAFWA00115M0, CP2ER09201C0, OGNMU00027S0, CAFWA00115M0 SS, GNHE08101C0 |  |  |  |  | 34.04d | 0d | METAL DOORS [304 h]; Cost |  |  |  |  |  |  | 316 | 1374 | CP2ER08101C0 |  |  | CB | C | P2 | ER | DO | 081 | 01 | BILL 4 | B04 | S1 | DF | R00 | ACF06 |  | 081 |  |  |  |  |  |  | 08 |  |
| CP2ER26020C0 |  | CB-P2 ; 2nd Fix, Wiring for Power/Lighting/Emergency (Elec RM) | 66d | 2011-11-12 | 2012-01-31 | CP2ER09201C0 SS+6d, CP2ER26010C0 |  |  |  |  | 64.4d | 30.36d | ELECTRICAL [216 h]; Cost |  |  |  |  |  |  |  |  | CP2ER26020C0 |  | 7197.39 | CB | C | P2 | ER | ME | 260 | 20 | BILL 4 | B04 | S1 | 2F | R00 | ACF07 | MEP | 260 |  | 2n | 45 | 50 | 45 |  |  |  |
| CP2ER09205C0 |  | CB-P2 ; Partitions Closing (Elec RM) | 60d | 2011-12-26 | 2012-03-07 | CAFWA00115M0, CP2ER09201C0, CP2ER09203C0, CAFWA00115M0 SS, CAFCI09201R02 FS+58d, CAFOA09204C1 FF, CP2ER26020C0 FF, CP2ER26022C0 FF, CP2ER08101C0 |  |  |  |  | 34.04d | 0d | PARTITIONS [362 m]; PARTITIONS [1230 h]; Cost |  |  |  |  |  |  |  | 1540 | CP2ER09205C0 |  |  | CB | C | P2 | ER | PT | 092 | 05 | BILL 4 | B04 | S1 | FF | R00 | ACF06 | GP | 092 | P2F |  |  |  |  |  |  |  |
| CP2ER09901C0 |  | CB-P2 ; Wall Prime & 1st coat (Elec RM) | 24d | 2012-03-07 | 2012-04-04 | CP2ER09205C0, OGNMU00057S0 |  |  |  |  | 34.04d | 0d | WALL PAINT [842 h]; WALL PAINT [1049 m2]; Cost |  |  |  |  |  |  | 328 | 1378 | CP2ER09901C0 |  |  | CB | C | P2 | ER | PA | 099 | 01 | BILL 4 | B04 | S1 | 01 | R00 | ACF06 |  | 099 |  |  |  |  |  |  |  |  |
| CP2ER27020C0 |  | CB-P2 ; 2nd Fix, Inst of ELV Equipment (Panels) (Elec RM) | 42d | 2012-03-07 | 2012-04-25 | CP2ER09205C0 |  |  |  |  | 112.04d | 26d | ELECTRICAL [384 h]; Cost |  |  |  |  |  |  |  |  | CP2ER27020C0 |  |  | CB | C | P2 | ER | ME | 270 | 20 | BILL 4 | B04 | S1 | 2F | R00 | ACF04 | MEP | 270 |  | 2n |  |  |  | E |  |  |
| CP2ER05501C0 |  | CB-P2 ; Handrails & balustrade (Elec RM) | 36d | 2012-04-04 | 2012-05-16 | CP2ER09901C0 |  |  |  |  | 140.04d | 106d | SECONDARY STEEL [359 h]; Cost |  |  |  |  |  |  |  |  | CP2ER05501C0 |  |  | CB | C | P2 | ER | SW | 055 | 01 | BILL 4 | B04 | S1 | 01 | R00 | ACF03 |  | a |  |  |  |  |  |  |  |  |
| CP2ER08105C0 |  | CB-P2 ; Metal Doors (Elec RM) | 42d | 2012-04-04 | 2012-05-23 | CP2ER08101C0, CP2ER09901C0 |  |  |  |  | 114.04d | 0d | METAL DOORS [1060 h]; METAL DOORS [106 no]; Cost |  |  |  |  |  |  | 317 | 1375 | CP2ER08105C0 |  |  | CB | C | P2 | ER | DO | 081 | 05 | BILL 4 | B04 | S1 | DR | R00 | ACF06 |  | 081 |  |  |  |  |  |  | 08 |  |
| CP2ER08106C0 |  | CB-P2 ; Access Floor (Elec RM) | 0d | 2012-04-04 | 2012-04-04 | CP2ER09901C0 |  |  |  |  | 152.04d | 44d | Cost |  |  |  |  |  |  | 317 | 1375 | CP2ER08105C0 |  |  | CB | C | P2 | ER | DO | 081 | 06 | BILL 4 | B04 | S1 | 04 | R00 | ACF06 |  | 081 |  |  |  |  |  |  | 08 | RENAME |
| CP2ER09501C0 |  | CB-P2 ; Ceiling Grid and Service Tile (Elec RM) | 24d | 2012-04-04 | 2012-05-02 | CP2ER09205C0 SS+15d, CP2ER23012C0, CP2ER23014C0, CP2ER23016C0, CP2ER23020C0, CP2ER23024C0, CP2ER23026C0, CP2ER26010C0, CP2ER26012C0, CP2ER27012C0, OGNMU00023S0, OGNMU00037S0, CP2DC09501C0 SS+6d, CP2ER09901C0 |  |  |  |  | 34.04d | 0d | CEILING GRID FOR GYPSUM [1358.73 h]; CEILING GRID FOR GYPSUM [116.42 m2]; Cost |  |  |  |  |  |  | 323 | 1408 | CP2ER09501C0 |  |  | CB | C | P2 | ER | CE | 095 | 01 | BILL 4 | B04 | S1 | 01 | R00 | ACF06 |  | 095 |  |  |  |  |  |  |  |  |
| CP2ER09903C0 |  | CB-P2 ; Wall - Final Paint (Elec RM) | 24d | 2012-04-04 | 2012-05-02 | CP2ER09901C0 |  |  |  |  | 128.04d | 20d | WALL PAINT [454 h]; WALL PAINT [565 m2]; Cost |  |  |  |  |  |  | 329 | 1379 | CP2ER09903C0 |  |  | CB | C | P2 | ER | PA | 099 | 03 | BILL 4 | B04 | S1 | 02 | R00 | ACF06 |  | 099 |  |  |  |  |  |  |  |  |
| CP2ER27032C0 |  | CB-P2 ; Final Fix, BMS connection work to Equipment (Elec RM) | 48d | 2012-04-05 | 2012-05-31 | CP2ER26024C0 |  |  |  |  | 81.04d | 47d | ELECTRICAL [57319.2 h]; Cost |  |  |  |  |  |  |  |  | CP2ER27032C0 |  |  | CB | C | P2 | ER | ME | 270 | 32 | BILL 4 | B04 | S1 | FF | R00 | ACF07 | MEP | 270 |  | FF |  |  |  |  |  |  |
| CP2ER09601C0 |  | CB-P2 ; Floor Finishes (Elec RM) | 20d | 2012-05-02 | 2012-05-26 | CP2ER09901C0, CP2ER09905C0, CP2ER23022C0, CP2ER27020C0 FF, CP2ER08106C0 FF, CP2ER09903C0 FF |  |  |  |  | 108.04d | 74d | ASSORTED FLOOR FINISH [2600 h]; ASSORTED FLOOR FINISH [1443 m2]; Cost |  |  |  |  |  |  | 326 | 1377 | CP2ER09601C0 |  |  | CB | C | P2 | ER | FF | 096 | 01 | BILL 4 | B04 | S1 | 01 | R00 | ACF06 |  | FF |  |  |  |  |  |  |  |  |
| CP2ER09905C0 |  | CB-P2 ; Ceiling Prime & 1st coat (Elec RM) | 0d | 2012-05-02 | 2012-05-02 | CP2ER09501C0 |  |  |  |  | 108.04d | 0d | Cost |  |  |  |  |  |  |  | 1544 | CP2ER09905C0 |  |  | CB | C | P2 | ER | PA | 099 | 05 | BILL 4 | B04 | S1 | 01 | R00 | ACF06 |  | 099 |  |  |  |  |  |  |  |  |
| CP2ER21113C0 |  | CB-P2 ; Final Fix, Gaseous Fire Suppression Telecom Room (Elec RM) | 48d | 2012-05-02 | 2012-06-28 | CP2ER09501C0 |  |  |  |  | 92.04d | 58d | MECHANICAL [3854.4 h]; Cost |  |  |  |  |  |  |  |  | CP2ER21113C0 |  |  | CB | C | P2 | ER | ME | 211 | 13 | BILL 4 | B04 | S1 | FF | R00 | ACF07 | MEP | 211 |  | FF |  |  |  |  |  |  |
| CP2ER21124C0 |  | CB-P2 ; 2nd Fix, Inst of Zone Control Valve (Elec RM) | 42d | 2012-05-02 | 2012-06-21 | CP2ER09501C0 |  |  |  |  | 50.04d | 0d | MECHANICAL [1209.6 h]; Cost |  |  |  |  |  |  |  |  | CP2ER21124C0 |  |  | CB | C | P2 | ER | ME | 211 | 24 | BILL 4 | B04 | S1 | 2F | R00 | ACF07 | MEP | 211 |  | 2n |  |  |  |  |  |  |
| CP2ER23032C0 |  | CB-P2 ; 2nd Fix, Inst of Flexible Duct & Plenum boxes (Elec RM) | 24d | 2012-05-02 | 2012-05-30 | CP2ER09501C0 |  |  |  |  | 34.04d | 0d | MECHANICAL [903.6 h]; Cost |  |  |  |  |  |  |  |  | CP2ER23032C0 |  |  | CB | C | P2 | ER | ME | 230 | 32 | BILL 4 | B04 | S1 | FF | R00 | ACF07 | MEP | 230 |  | FF |  |  |  |  |  |  |
| CP2ER26030C0 |  | CB-P2 ; Final Fix, Termination & Gladding of Cables (Elec RM) | 48d | 2012-05-02 | 2012-06-28 | CP2ER09501C0 |  |  |  |  | 58.04d | 24d | ELECTRICAL [826.8 h]; Cost |  |  |  |  |  |  |  |  | CP2ER26030C0 |  |  | CB | C | P2 | ER | ME | 260 | 30 | BILL 4 | B04 | S1 | FF | R00 | ACF07 | MEP | 260 |  | FF |  |  |  |  |  |  |
| CP2ER26032C0 |  | CB-P2 ; Final Fix, Inst of Ceiling rose (Elec RM) | 48d | 2012-05-02 | 2012-06-28 | CP2ER09501C0 |  |  |  |  | 52.04d | 0d | ELECTRICAL [123.6 h]; Cost |  |  |  |  |  |  |  |  | CP2ER26032C0 |  |  | CB | C | P2 | ER | ME | 260 | 32 | BILL 4 | B04 | S1 | FF | R00 | ACF07 | MEP | 260 |  | FF | 45 |  |  |  |  |  |
| CP2ER27022C0 |  | CB-P2 ; 2nd Fix, Wiring Droppers (Elec RM) | 42d | 2012-05-02 | 2012-06-21 | CP2ER09501C0 |  |  |  |  | 52.04d | 0d | ELECTRICAL [216 h]; Cost |  |  |  |  |  |  |  |  | CP2ER27022C0 |  |  | CB | C | P2 | ER | ME | 270 | 22 | BILL 4 | B04 | S1 | 2F | R00 | ACF07 | MEP | 270 |  | 2n |  |  |  |  |  |  |
| CP2ER26039C0 |  | CB-P2 ; Final Fix, Inst of Light fittings (Elec RM) | 48d | 2012-05-09 | 2012-07-05 | CP2ER09501C0, CP2ER26032C0 SS+6d |  |  |  |  | 52.04d | 18d | ELECTRICAL [7983.6 h]; Cost |  |  |  |  |  |  |  |  | CP2ER26039C0 |  |  | CB | C | P2 | ER | ME | 260 | 39 | BILL 4 | B04 | S1 | FF | R00 | ACF07 | MEP | 260 |  | FF |  |  |  |  |  |  |
| CP2ER27030C0 |  | CB-P2 ; Final Fix, Inst of ELV device (Detector/Speaker) (Elec RM) | 48d | 2012-05-09 | 2012-07-05 | CP2ER09501C0, CP2ER27022C0 SS+6d |  |  |  |  | 52.04d | 18d | ELECTRICAL [2054.4 h]; Cost |  |  |  |  |  |  |  |  | CP2ER27030C0 |  |  | CB | C | P2 | ER | ME | 270 | 30 | BILL 4 | B04 | S1 | FF | R00 | ACF07 | MEP | 270 |  | FF |  |  |  |  |  |  |
| CP2ER08709C0 |  | CB-P2 ; Ironmongery (Elec RM) | 20d | 2012-05-23 | 2012-06-17 | CP2ER08105C0, OGNMU00059S0 |  |  |  |  | 114.04d | 80d | IRONMONGERY [180 h]; IRONMONGERY [18 no]; Cost |  |  |  |  |  |  | 322 | 6230 | CP2ER08709C0 |  |  | CB | C | P2 | ER | DO | 087 | 09 | BILL 4 | B04 | S1 | IM | R00 | ACF06 |  | 087 |  |  |  |  |  |  | 08 |  |
| CP2ER23030C0 |  | CB-P2 ; Final Fix, Inst of Grilles & Diffusers (Elec RM) | 48d | 2012-05-30 | 2012-07-26 | CP2ER09501C0, CP2ER23032C0 |  |  |  |  | 34.04d | 0d | MECHANICAL [1970.4 h]; Cost |  |  |  |  |  |  |  |  | CP2ER23030C0 |  |  | CB | C | P2 | ER | ME | 230 | 30 | BILL 4 | B04 | S1 | FF | R00 | ACF07 | MEP | 230 |  | FF |  |  |  |  |  |  |
| CP2ER21109C0 |  | CB-P2 ; Final Fix, Gaseous Fire Suppression Electrical Room (Elec RM) | 48d | 2012-06-21 | 2012-08-16 | CP2ER21124C0 |  |  |  |  | 50.04d | 16d | MECHANICAL [3854.4 h]; Cost |  |  |  |  |  |  |  |  | CP2ER21109C0 |  |  | CB | C | P2 | ER | ME | 211 | 09 | BILL 4 | B04 | S1 | FF | R00 | ACF07 | MEP | 211 |  | FF |  |  |  |  |  |  |
| CP2ER21111C0 |  | CB-P2 ; Final Fix, Gaseous Fire Suppression Transformer Room (Elec RM) | 48d | 2012-06-21 | 2012-08-16 | CP2ER21124C0 |  |  |  |  | 50.04d | 16d | MECHANICAL [3854.4 h]; Cost |  |  |  |  |  |  |  |  | CP2ER21111C0 |  |  | CB | C | P2 | ER | ME | 211 | 11 | BILL 4 | B04 | S1 | FF | R00 | ACF07 | MEP | 211 |  | FF |  |  |  |  |  |  |
| CP2ER09503C0 |  | CB-P2 ; Ceiling closure (Elec RM) | 22d | 2012-07-26 | 2012-08-23 | CAFOA09503C1 FF, CP2ER09501C0, CP2ER23032C0, CP2ER26020C0, CP2ER26022C0, CP2ER27012C0, OGNMU00023S0, OGNMU00037S0, CP2ER27022C0, CP2ER21120C0, CP2ER23030C0, CP2ER26030C0, CP2ER26032C0, CP2ER26039C0, CP2ER27030C0, CP2ER27032C0, CP2ER27020C0, CP2ER08101C0 FF |  |  |  |  | 34.04d | 0d | ASSORTED CEILING FINISH [259.53 h]; CEILING GYPSUM [38.13 h]; ASSORTED CEILING FINISH [422 m2]; CEILING GYPSUM [106 m2]; Cost |  |  |  |  |  |  | 324 | 1409 | CP2ER09503C0 |  |  | CB | C | P2 | ER | CE | 095 | 03 | BILL 4 | B04 | S1 | 02 | R00 | ACF06 |  | 095 |  |  |  |  |  |  |  |  |
| CP2ER09907C0 |  | CB-P2 ; Ceiling - Final Paint (Elec RM) | 0d | 2012-08-23 | 2012-08-23 | CP2ER09905C0, CP2ER09503C0 |  |  |  |  | 58.04d | 24d | Cost |  |  |  |  |  |  |  | 1546 | CP2ER09907C0 |  |  | CB | C | P2 | ER | PA | 099 | 07 | BILL 4 | B04 | S1 | 02 | R00 | ACF06 |  | 099 |  |  |  |  |  |  |  |  |
| CP2ER22037C0 |  | CB-P2 ; Final Fix, Inst of All drain (Elec RM) | 12d | 2012-08-23 | 2012-09-06 | CP2ER09601C0, CP2ER09503C0 |  |  |  |  | 34.04d | 0d | PLUMBING [1562.4 h]; Cost |  |  |  |  |  |  |  |  | CP2ER22037C0 |  |  | CB | C | P2 | ER | ME | 220 | 37 | BILL 4 | B04 | S1 | FF | R00 | ACF07 | MEP | 220 |  | FF |  |  |  |  |  |  |
| CP2ER26034C0 |  | CB-P2 ; Final Fix, Inst of Switch/Sockets (Elec RM) | 12d | 2012-08-23 | 2012-09-06 | CP2ER09501C0, CP2ER09503C0 |  |  |  |  | 34.04d | 0d | ELECTRICAL [427.2 h]; Cost |  |  |  |  |  |  |  |  | CP2ER26034C0 |  |  | CB | C | P2 | ER | ME | 260 | 34 | BILL 4 | B04 | S1 | FF | R00 | ACF07 | MEP | 260 |  | FF |  |  |  |  |  |  |

| ID | WBS | Activity | Type | Duration | Start | Finish | Predecessors | Complete | Remaining | Planned start | Planned finish | Total float | Free float | Resources | change id | CCAD BUILDING(SET) | CCAD PHASE(SET) | CCAD FLOOR(SET) | CCAD ZONE(SET) | CCAD WORK(SET) | CCAD SECTION(SET) | CCAD SERIAL No.(SET) | CCAD CBS(SET) | CCAD BILL(SET) | CCAD HANDOVER(SET) | CCAD TAG(SET) | CCAD REV(SET) | CCADACF (SET) | CCAD SSCF | Change Order # | NEW ACTIVITY ID | RENZ % COMPLETE | CCAD DIVISION(SET) | Actual Cost | CCAD CSA | Claimed This Month | P_811 | P_711 | user_number8 | user_integer1 | user_integer2 | user_number7 |
| --- | --- | --- | --- | --- | --- | --- | --- | --- | --- | --- | --- | --- | --- | --- | --- | --- | --- | --- | --- | --- | --- | --- | --- | --- | --- | --- | --- | --- | --- | --- | --- | --- | --- | --- | --- | --- | --- | --- | --- | --- | --- | --- |
|  | 10 | **Precommissioning Tesing & snagging ( Elec Room)** |  |  | 2012-09-06 | 2012-10-20 |  |  |  |  |  |  |  |  |  |  |  |  |  |  |  |  |  |  |  |  |  |  |  |  |  |  |  |  |  |  |  |  |  |  |  |  |
| CP2TS01805C0 |  | CB-P2 ; MEP de-snag, FIREM sign-off |  | 12d | 2012-09-06 | 2012-09-20 | CP2ER23032C0, CP2ER26032C0, CP2ER21109C0, CP2ER21111C0, CP2ER21113C0, CP2ER23030C0, CP2ER26030C0, CP2ER26034C0, CP2ER26039C0, CP2ER27030C0, CP2ER27032C0, CP2ER22037C0 |  |  |  |  | 34.04d | 0d | TESTING & COMMISSIONING [1020 h]; Cost | CP2TS01801C0 | CB | C | P2 | TS | SC | 018 | 01 | BILL 4 | B04 | S1 | 01 | R00 | ACF07 | 018 |  |  |  |  |  |  |  |  |  |  |  |  |  |
| CP2TS01808C0 |  | CB-P2 ; Touch-up & Clean / JV inspection /CIR /De-snag |  | 18d | 2012-09-20 | 2012-10-11 | CP2CO04411C0, CP2ER05501C0, CP2ER08101C0, CP2ER08105C0, CP2ER08106C0, CP2ER08709C0, CP2ER09201C0, CP2ER09203C0, CP2ER09205C0, CP2ER09501C0, CP2ER09503C0, CP2ER09601C0, CP2ER09901C0, CP2ER09903C0, CP2ER09905C0, CP2ER09907C0, CP2ER21109C0, CP2ER21111C0, CP2ER21113C0, CP2ER22037C0, CP2ER23030C0, CP2ER23032C0, CP2ER26030C0, CP2ER26032C0, CP2ER26034C0, CP2ER26039C0, CP2ER27030C0, CP2ER27032C0, CP2TS01805C0 |  |  |  |  | 34.04d | 0d | TESTING & COMMISSIONING [170 h]; Cost | CP2TS01802C0 | CB | C | P2 | TS | SC | 018 | 02 | BILL 4 | B04 | S1 | 02 | R00 | ACF07 | 018 |  |  |  |  |  |  |  |  |  |  |  |  |  |
| CP2TS01811C0 |  | CB-P2 ; Consultant's final de-snag inspection |  | 7d | 2012-10-11 | 2012-10-20 | CP2TS01808C0 |  |  |  |  | 34.04d | 26.71d | Labor General [1 h]; Cost | CP2TS01803C0 | CB | C | P2 | TS | SC | 018 | 03 | BILL 4 | B04 | S1 | 03 | R00 | ACF07 | 018 |  |  |  |  |  |  |  |  |  |  |  |  |  |
|  | P1 | **Level Podium 1** |  |  | 2010-09-02 | 2012-11-14 |  |  |  |  |  |  |  |  |  |  |  |  |  |  |  |  |  |  |  |  |  |  |  |  |  |  |  |  |  |  |  |  |  |  |  |  |
|  | 01 | **Structure & Envelopment** |  |  | 2010-09-02 | 2012-04-30 |  |  |  |  |  |  |  |  |  |  |  |  |  |  |  |  |  |  |  |  |  |  |  |  |  |  |  |  |  |  |  |  |  |  |  |  |
| CP1SD03311C0 |  | CB-P1 ; Corewall concrete (Zone SD) |  | 6d | 2010-09-02 A | 2010-09-19 A | CP2SD03311C0 | 100% |  | 2011-02-14 | 2011-02-20 |  |  | CONCRETE [4968 h]; CONCRETE [125 m3]; Cost | CP1SD03311C0 | CB | C | P1 | SD | CT | 033 | 11 | BILL 4 | B04 | S1 | 04 | R00 | ACF03 | 033 | 301 | 252 | 100 | 03 |  |  |  |  |  |  |  |  |  |
| CP1SC03311C0 |  | CB-P1 ; Corewall concrete (Zone SC) |  | 5d | 2010-09-13 A | 2010-09-26 A | CP2SC03311C0 | 100% |  | 2011-02-26 | 2011-03-02 |  |  | CONCRETE [4968 h]; CONCRETE [125 m3]; Cost | CP1SC03311C0 | CB | C | P1 | SC | CT | 033 | 11 | BILL 4 | B04 | S1 | 04 | R00 | ACF03 | 033 | 301 | 100 | 100 | 03 |  |  |  |  |  |  |  |  |  |
| CP1S105101C0 |  | CB-P1 ; Erection of Structural Steel (Zone S1) |  | 16.66d | 2010-09-28 A | 2011-01-07 A | CP2S105101C0 SS+6d, CP2S105101C0 FF, CP2S105103C0 SS+3d | 100% |  | 2010-08-21 | 2010-09-08 |  |  | STRUCTURAL STEEL [5197 h]; STRUCTURAL STEEL [199 T(Fe)]; Cost | CP1S105101C0 | CB | C | P1 | S1 | ST | 051 | 01 | BILL 4 | B04 | S1 | 01 | R00 | ACF03 | 051 | 297 | 96 | 100 |  | 1479745 | ST |  |  |  |  |  |  |  |
| CP1S205101C0 |  | CB-P1 ; Erection of Structural Steel (Zone S2) |  | 8.35d | 2010-09-28 A | 2010-11-23 A | CP2S205101C0 SS+3d, CP2S205101C0 FF, CP2S205103C0 SS+4d | 100% |  | 2010-09-01 | 2010-09-12 |  |  | STRUCTURAL STEEL [1903 h]; STRUCTURAL STEEL [73 T(Fe)]; Cost | CP1S205101C0 | CB | C | P1 | S2 | ST | 051 | 01 | BILL 4 | B04 | S1 | 01 | R00 | ACF03 | 051 | 297 | 250 | 100 |  | 1961522 | ST |  |  |  |  |  |  |  |
| CP1S105103C0 |  | CB-P1 ; Alignment & welding (Zone S1) |  | 4.84d | 2010-09-29 A | 2011-01-09 A | CP1S105101C0 | 100% |  | 2010-09-12 | 2010-09-16 |  |  | STRUCTURAL STEEL [392 h]; Cost | CP1S105103C0 | CB | C | P1 | S1 | ST | 051 | 03 | BILL 4 | B04 | S1 | 02 | R00 | ACF03 | 051 | 298 | 97 | 100 |  | 164416 | ST |  |  |  |  |  |  |  |
| CP1S205103C0 |  | CB-P1 ; Alignment & welding (Zone S2) |  | 4.97d | 2010-09-29 A | 2010-12-02 A | CP1S205101C0 | 100% |  | 2010-09-13 | 2010-09-18 |  |  | STRUCTURAL STEEL [520 h]; Cost | CP1S205103C0 | CB | C | P1 | S2 | ST | 051 | 03 | BILL 4 | B04 | S1 | 02 | R00 | ACF03 | 051 | 298 | 251 | 100 |  | 217947 | ST |  |  |  |  |  |  |  |
| CP1S105305C0 |  | CB-P1 ; Metal Decking (Zone S1) |  | 15.01d | 2010-11-04 A | 2011-01-13 A | CGLS105101C0, CP1S105103C0 | 100% |  | 2010-11-18 | 2010-12-06 |  |  | METAL DECKING [2040 h]; METAL DECKING [2580 m2]; Cost | CP1S105305C0 | CB | C | P1 | S1 | ST | 053 | 05 | BILL 4 | B04 | S1 | 03 | R00 | ACF03 | 053 | 299 | 98 | 100 |  | 302976 | ST |  |  |  |  |  |  |  |
| CP1S205305C0 |  | CB-P1 ; Metal Decking (Zone S2) |  | 18.01d | 2010-11-10 A | 2010-12-04 A | CGLS205101C0, CP1S205103C0 | 100% |  | 2010-11-24 | 2010-12-16 |  |  | METAL DECKING [2704 h]; METAL DECKING [3420 m2]; Cost | CP1S205305C0 | CB | C | P1 | S2 | ST | 053 | 05 | BILL 4 | B04 | S1 | 03 | R00 | ACF03 | 053 | 299 | 253 | 100 |  | 401619 | ST |  |  |  |  |  |  |  |
| CP1S103335C0 |  | CB-P1 ; Concrete on metal decking (Zone S1) |  | 10d | 2010-12-18 A | 2010-12-20 A | CP1S105305C0 | 100% |  | 2010-12-18 | 2010-12-28 |  |  | CONCRETE [13392 h]; CONCRETE [337 m3]; Cost | CP1S103335C0 | CB | C | P1 | S1 | CT | 033 | 35 | BILL 4 | B04 | S1 | 08 | R00 | ACF03 | 033 | 302 | 101 | 100 | 03 |  |  |  |  |  |  |  |  |  |
| CP1S203335C0 |  | CB-P1 ; Concrete on metal decking (Zone S2) |  | 10d | 2010-12-20 A | 2010-12-22 A | CP1S205305C0 | 100% |  | 2010-12-25 | 2011-01-05 |  |  | CONCRETE [17808 h]; CONCRETE [448 m3]; Cost | CP1S203335C0 | CB | C | P1 | S2 | CT | 033 | 35 | BILL 4 | B04 | S1 | 08 | R00 | ACF03 | 033 | 302 | 256 | 100 | 03 |  |  |  |  |  |  |  |  |  |
| CP1CO04403C0 |  | CB-P1 ; S1 - Ex. Partitions (Common Zone) |  | 200d | 2011-01-17 A | 2011-10-11 | C01S103335C0, C01S203335C0, CP1GN00303C0 FF | 95% | 10d | 2011-03-01 | 2011-10-23 | 61.05d | 0d | PARTITIONS [98.94 m]; PARTITIONS [492.8 h]; Cost | CP1CO04403C0 | CB | C | P1 | CO | FA | 044 | 03 | BILL 4 | B04 | S1 | FS1 | R00 | ACF05 | 044 | 305 | 104 | 60 |  |  | FA | 32317.25 |  |  |  |  |  |  |
| CP1S107807C0 |  | CB-P1 ; Cementitious Fire Proofing (Zone S1) |  | 10d | 2011-02-01 A | 2011-02-20 A | CGLS103335C0 | 100% |  | 2011-02-01 | 2011-02-12 |  |  | CEMENTITIOUS FIREPROOFING [1415 h]; CEMENTITIOUS FIREPROOFING [2829 m2]; Cost | CP1S107807C0 | CB | C | P1 | S1 | ST | 078 | 07 | BILL 4 | B04 | S1 | 04 | R00 | ACF03 | 078 | 300 | 99 | 100 |  |  | ST |  |  |  |  |  |  |  |
| CP1S207808C0 |  | CB-P1 ; Cementitious Fire Proofing (Zone S2) |  | 12d | 2011-02-11 A | 2011-02-20 A | CGLS203335C0 | 100% |  | 2011-02-01 | 2011-02-14 |  |  | CEMENTITIOUS FIREPROOFING [1875 h]; CEMENTITIOUS FIREPROOFING [3750 m2]; Cost | CP1S207808C0 | CB | C | P1 | S2 | ST | 078 | 08 | BILL 4 | B04 | S1 | 04 | R00 | ACF03 | 078 | 300 | 257 | 100 |  |  | ST |  |  |  |  |  |  |  |
| CP1CO04409C0 |  | CB-P1 ; C4 - Brackets (Common Zone) |  | 18d | 2011-03-24 A | 2011-03-31 A | CR5S103335C0, CR5S203335C0 | 100% |  | 2011-03-28 | 2011-04-18 |  |  | FACADE CURTAIN WALL 4 [1407.8 h]; Cost | CP1CO04409C0 | CB | C | P1 | CO | FA | 044 | 09 | BILL 4 | B04 | S1 | FC4 | R00 | ACF05 | 044 | 309 | 106 | 100 |  |  | FA |  |  |  |  |  |  |  |
| CP1GN00303C0 |  | CB-P1 ; Temporary Enclosure | level of effort | 183.56d | 2011-04-07 A | 2012-01-30 | CP1E109203C0 SS, CP1E209203C0 SS, CP1PA09203C0 SS, CP1TR09203C0 SS | 46% | 99d | 2011-04-07 | 2011-11-14 | 183.12d | 0d | Labor General [0.6 h]; Cost |  | CB | C | P1 | GEN | FA | GEN |  |  | B04 |  | TE | R00 | ACF05 | 010 |  |  |  |  |  | FA |  | 62.7 | 48.37 |  |  |  |  |
| CP1CO04001C0 |  | CB-P1 ; Blockworks (Common Zone) |  | 35d | 2011-05-02 A | 2011-07-31 A | CP1S107807C0, CP1S207808C0 | 100% |  | 2011-05-31 | 2011-07-11 |  |  | Cost | CP1CO04001C0 | CB | C | P1 | CO | BL | 040 | 01 | BILL 4 | B04 | S1 | BL | R00 | ACF06 | 040 | 73 | 73 | 90 | 04 |  |  |  |  |  |  |  |  |  |
| CP1CO04003C0 |  | CB-P1 ; Plaster to Blockwork (Common Zone) |  | 23d | 2011-05-02 A | 2011-07-31 A | CP1CO04001C0 SS+20d | 100% |  | 2011-06-23 | 2011-07-20 |  |  | Labor General [0.5 h]; Cost | CP1CO04003C0 | CB | C | P1 | CO | BL | 040 | 03 | BILL 4 | B04 | S1 | BL | R00 | ACF06 | 040 |  |  | 90 |  |  |  |  |  |  |  |  |  |  |
| CP1CO04405C0 |  | CB-P1 ; C4 channel glass (Common Zone) |  | 72d | 2011-06-04 A | 2011-10-04 | CP1CO04409C0 | 95% | 3.6d | 2011-06-04 | 2011-08-28 | 187.8d | 0d | FACADE CURTAIN WALL 4 [1040.5 h]; FACADE CURTAIN WALL 4 [380 m2]; FACADE TOTAL QUANTITY m2 [380 m2]; Cost | CP1CO04405C0 | CB | C | P1 | CO | FA | 044 | 05 | BILL 4 | B04 | S1 | FC4 | R00 | ACF05 | 044 | 310 | 107 |  |  |  | FA | 75460.32 | 40 | 20 | 0 | 0 | 0 | 0 |
| CP1CO04411C0 |  | CB-P1 ; S1 Onyx Stone (Common Zone) |  | 66d | 2011-09-05 A | 2011-10-16 | CP1CO04403C0 | 95% | 3.3d | 2011-09-13 | 2011-12-04 | 349.2d | 46.7d | FACADE STONE PANEL 1 [642.5 h]; FACADE STONE PANEL 1 [234 m2]; FACADE TOTAL QUANTITY m2 [234 m2]; Cost | CP1CO04411C0 | CB | C | P1 | CO | FA | 044 | 11 | BILL 4 | B04 | S1 | FS1 | R00 | ACF05 | 044 | 306 | 105 |  |  |  | FA |  |  |  |  |  |  |  |
| CP1CO04401C0 |  | CB-P1 ; S2 - Bracket (Common Zone - to be S11) |  | 23d | 2012-01-04 | 2012-01-30 | C01S103335C0, C01S203335C0, CP2CO04403C0 SS+6d, CP1GN00303C0 FF |  |  |  |  | 183.12d | 0d | FACADE NATURAL STONE PANEL [0.6 h]; Cost | CP1CO04401C0 | CB | C | P1 | CO | FA | 044 | 01 | BILL 4 | B04 | S1 | FS2 | R00 | ACF05 | 044 | 303 | 102 |  |  |  | FA |  |  |  |  |  |  |  |
| CP1CO04455C0 |  | CB-P1 ; S1 Inner Side of External Partition (Common Zone) |  | 42d | 2012-01-07 | 2012-02-26 | CP1CO04403C0, CP1PA09205C0 SS |  |  |  |  | 76.63d | 54d | FACADE STONE PANEL 1 [765.9 h]; Cost | DP3CO04415C0 | CB | C | P1 | CO | FA | 044 | 15 | BILL 5 | B04 | S1 | FS1 | R00 | ACF05 | 044 |  |  |  |  |  | FA |  |  |  |  |  |  |  |
| CP1CO04407C0 |  | CB-P1 ; S2 Stone panel (Common Zone - to be S11) |  | 66d | 2012-02-13 | 2012-04-30 | CP1CO04401C0, CP2CO04409C0 SS |  |  |  |  | 179.4d | 0d | FACADE NATURAL STONE PANEL [443.6 h]; FACADE NATURAL STONE PANEL [162 m2]; FACADE TOTAL QUANTITY m2 [162 m2]; Cost | CP1CO04407C0 | CB | C | P1 | CO | FA | 044 | 07 | BILL 4 | B04 | S1 | FS2 | R00 | ACF05 | 044 | 304 | 103 |  |  |  | FA |  |  |  |  |  |  |  |

| ID | WBS | Activity | Duration | Start | Finish | Predecessors | Complete | Remaining | Planned start | Planned finish | Total float | Free float | Resources | Cost | Actual cost | user_number8 | user_integer1 | user_integer2 | user_number7 | Change Order # | NEW ACTIVITY ID | change id | RENZ % COMPLETE | Claimed This Month | P_811 | P_711 | CCAD BUILDING(SET) | CCAD PHASE(SET) | CCAD FLOOR(SET) | CCAD ZONE(SET) | CCAD WORK(SET) | CCAD SECTION(SET) | CCAD SERIAL No.(SET) | CCAD CBS(SET) | CCAD BILL(SET) | CCAD HANDOVER(SET) | CCAD TAG(SET) | CCAD REV(SET) | CCADACF (SET) | CCAD CSA | CCAD SSCF | Act Selector % | R3 Partitions | CCAD SUB ZONE MEP(SET) | July2011 Target% Complete | CCAD DIVISION(SET) | CCAD MEQ | R3 Finish |
| --- | --- | --- | --- | --- | --- | --- | --- | --- | --- | --- | --- | --- | --- | --- | --- | --- | --- | --- | --- | --- | --- | --- | --- | --- | --- | --- | --- | --- | --- | --- | --- | --- | --- | --- | --- | --- | --- | --- | --- | --- | --- | --- | --- | --- | --- | --- | --- | --- |
|  | 02 | **Exam 1** |  | 2011-02-01 | 2012-11-14 |  |  |  |  |  |  |  |  |  |  |  |  |  |  |  |  |  |  |  |  |  |  |  |  |  |  |  |  |  |  |  |  |  |  |  |  |  |  |  |  |  |  |  |
| CP1E109201C0 |  | CB-P1 ; Metal Studs (Exam- 1) | 112d | 2011-02-01 A | 2011-10-31 | CP1E123001C0, CAFCI09202R02 FS+58d | 87% | 14.56d | 2011-04-13 | 2011-08-22 | 14.94d | 0d | PARTITIONS [5774 h]; PARTITIONS - Metal Studs [949 m]; Cost |  |  | 0 | 0 | 0 | 0 | 313 | 944 | CP1E109201C0 | 56 | 53741.24 | 85 | 80 | CB | C | P1 | E1 | PT | 092 | 01 | BILL 4 | B04 | S1 | 1F | R00 | ACF06 | GP | 092 | PMS | R3 |  |  |  |  |  |
| CP1E123001C0 |  | CB-P1 ; 1st Fix, Inst. of Supports for MEP (Exam- 1) | 27d | 2011-03-21 A | 2011-10-03 | CGLS103335C0, CP1S107807C0 | 90% | 2.7d | 2011-03-20 | 2011-04-20 | 24.24d | 0d | MECHANICAL [1024.8 h]; Cost [57766.2 AED] | 57,766.25 | 51,989.63 |  |  |  |  |  |  | CP1E123001C0 | 100 |  |  |  | CB | C | P1 | E1 | ME | 230 | 01 | BILL 4 | B04 | S1 | 1F | R00 | ACF04 | MEP | 230 | M1F |  | 1S |  |  |  |  |
| CP1E121111C0 |  | CB-P1 ; 1st Fix, Inst of Sprinkler main pipe (Exam- 1) | 44d | 2011-03-22 A | 2011-10-05 | CP1E122005C0 SS+4d, CP1E123001C0, CP1S107807C0 | 95% | 2.2d | 2011-05-23 | 2011-07-14 | 52d | 0d | MECHANICAL [686.4 h]; Cost [37438.4 AED] | 37,438.4 | 35,566.48 |  |  |  |  |  |  | CP1E121111C0 | 100 |  |  |  | CB | C | P1 | E1 | ME | 211 | 11 | BILL 4 | B04 | S1 | 1F | R00 | ACF04 | MEP | 211 | M1F |  | 1S |  |  |  |  |
| CP1E123023C0 |  | CB-P1 ; 1st Fix, Inst of Main Ducting (Exam- 1) | 200d | 2011-03-22 A | 2011-11-12 | CP1E123001C0 SS+10d, CP1E123017C0 SS+7d | 96% | 8d | 2011-07-21 | 2012-03-21 | 41.89d | 7d | MECHANICAL [15576 h]; Cost [927678 AED] | 927,677.51 | 890,570.41 |  |  |  |  |  |  | CP1E123023C0 | 70 | 161442.6 |  |  | CB | C | P1 | E1 | ME | 230 | 23 | BILL 4 | B04 | S1 | 1F | R00 | ACF04 | MEP | 230 | M1F |  | 1S | 90 |  |  |  |
| CP1E122019C0 |  | CB-P1 ; 1st Fix, Inst of Drainage pipe (ceiling) (Exam- 1) | 53d | 2011-03-24 A | 2011-10-06 | CP1E123001C0, CP1E126013C0 SS+5d, CP1S107807C0 | 95% | 2.65d | 2011-05-14 | 2011-07-16 | 52d | 0d | PLUMBING [1714.8 h]; Cost [92715.9 AED] | 92,715.95 | 88,080.15 |  |  |  |  |  |  | CP1E122019C0 | 90 |  |  |  | CB | C | P1 | E1 | ME | 220 | 19 | BILL 4 | B04 | S1 | 1F | R00 | ACF04 | MEP | 220 | M1F |  | 1S | 100 |  |  |  |
| CP1E121117C0 |  | CB-P1 ; 1st Fix, Inst of Sprinkler branch pipe (Exam- 1) | 54d | 2011-03-26 A | 2011-12-10 | CP1E109201C0, CP1E121111C0, CP1E105503C0 FF+18d | 95% | 2.7d | 2011-07-16 | 2011-09-19 | 112.89d | 97.95d | MECHANICAL [1009.2 h]; Cost [55153.8 AED] | 55,153.76 | 52,396.07 |  |  |  |  |  |  | CP1E121117C0 | 90 | 6393.94 |  |  | CB | C | P1 | E1 | ME | 211 | 17 | BILL 4 | B04 | S1 | 1F | R00 | ACF04 | MEP | 211 | M1F |  | 1S |  |  |  |  |
| CP1E126001C0 |  | CB-P1 ; 1st Fix, Inst of Trunking/Conduiting (Exam- 1) | 200d | 2011-03-26 A | 2011-11-22 | CP1E123001C0, CP1S107807C0 | 80% | 40d | 2011-04-20 | 2011-12-19 | 52d | 0d | ELECTRICAL [430.8 h]; Cost [29580.4 AED] | 29,580.43 | 23,664.34 |  |  |  |  |  |  | CP1E126001C0 | 70 | 8574 | 98 | 95 | CB | C | P1 | E1 | ME | 260 | 01 | BILL 4 | B04 | S1 | 1F | R00 | ACF04 | MEP | 260 | M1F |  | 1S | 95 |  |  |  |
| CP1E126013C0 |  | CB-P1 ; 1st Fix, Inst of Cable Tray (Exam- 1) | 120d | 2011-03-26 A | 2011-12-04 | CP1E123001C0, CP1E127010C0 SS+8d, CP1S107807C0 | 60% | 48d | 2011-05-08 | 2011-09-28 | 52d | 0d | ELECTRICAL [948 h]; Cost [17044 AED] | 17,043.96 | 10,226.38 |  |  |  |  |  |  | CP1E126013C0 | 70 | 4961 | 98 | 95 | CB | C | P1 | E1 | ME | 260 | 13 | BILL 4 | B04 | S1 | 1F | R00 | ACF04 | MEP | 260 | M1F |  | 1S | 95 |  |  |  |
| CP1E127010C0 |  | CB-P1 ; 1st Fix, Inst of Trunking for ELV system (Exam- 1) | 90d | 2011-03-29 A | 2011-12-06 | CP1E123001C0, CP1E126001C0 SS+7d, CP1S107807C0 | 45% | 49.5d | 2011-04-28 | 2011-08-13 | 52d | 0d | ELECTRICAL [457.2 h]; Cost [24667.9 AED] | 24,667.88 | 11,100.54 |  |  |  |  |  |  | CP1E127010C0 | 90 | 1432.55 | 98 | 95 | CB | C | P1 | E1 | ME | 270 | 10 | BILL 4 | B04 | S1 | 1F | R00 | ACF04 | MEP | 270 | M1F |  | 1S | 98 |  |  |  |
| CP1E122007C0 |  | CB-P1 ; 1st Fix, Inst of Medical Gas pipe (Exam- 1) | 70d | 2011-04-06 A | 2011-11-05 | CP1E121111C0 SS+14d, CP1E123001C0, CP1S107807C0, MGNMI00105M0 | 60% | 28d | 2011-06-08 | 2011-09-01 | 52d | 23.86d | PLUMBING [504 h]; Cost [26046.8 AED] | 26,046.85 | 15,628.11 | 0 | 0 | 0 | 0 |  |  | CP1E122007C0 | 10 | 6032.97 | 50 | 45 | CB | C | P1 | E1 | ME | 220 | 07 | BILL 4 | B04 | S1 | 1F | R00 | ACF04 | MEP | 220 | M1F |  | 1S | 45 |  |  |  |
| CP1E109203C0 |  | CB-P1 ; Partitions 1st face (Exam- 1) | 54d | 2011-04-10 A | 2011-12-10 | CP1E109201C0, CP1E123023C0 FF, CP1E123017C0 FF, CP1E123008C0 FF | 61% | 21.06d | 2011-04-20 | 2011-06-22 | 34.89d | 19.95d | PARTITIONS [949 m]; PARTITIONS [4513 h]; Cost |  |  | 0 | 0 | 0 | 0 | 314 | 945 | CP1E109203C0 | 15 | 80611.8 | 50 | 34 | CB | C | P1 | E1 | PT | 092 | 03 | BILL 4 | B04 | S1 | 2F | R00 | ACF06 | GP | 092 | P1F |  |  |  |  |  |  |
| CP1E122011C0 |  | CB-P1 ; 2nd Fix, Drainage/Water pipe (wall) (Exam- 1) | 72d | 2011-04-14 A | 2011-12-10 | CP1E109201C0, CAFCI09201R20 FS+58d | 60% | 28.8d | 2011-04-20 | 2011-07-14 | 29.34d | 14.4d | PLUMBING [1714.8 h]; Cost [92715.9 AED] | 92,715.95 | 55,629.57 |  |  |  |  |  |  | CP1E122011C0 | 30 |  | 60 | 30 | CB | C | P1 | E1 | ME | 220 | 11 | BILL 4 | B04 | S1 | 2F | R00 | ACF07 | MEP | 220 |  |  | 2n | 45 |  |  |  |
| CP1E122005C0 |  | CB-P1 ; 1st Fix, Inst of Water supply pipe (ceiling) (Exam- 1) | 90d | 2011-05-15 A | 2011-11-13 | CP1E122019C0 SS+4d, CP1E123001C0, CP1S107807C0 | 65% | 31.5d | 2011-05-31 | 2011-09-15 | 52d | 0d | PLUMBING [1682.4 h]; Cost [90924.8 AED] | 90,924.75 | 59,101.09 |  |  |  |  |  |  | CP1E122005C0 | 30 |  |  |  | CB | C | P1 | E1 | ME | 220 | 05 | BILL 4 | B04 | S1 | 1F | R00 | ACF04 | MEP | 220 | M1F |  | 1S | 65 |  |  |  |
| CP1E123017C0 |  | CB-P1 ; 1st Fix, Inst of CHW pipe (Exam- 1) | 120d | 2011-05-15 A | 2011-12-10 | CP1E121111C0 SS+5d, CP1E123001C0, CP1S107807C0, CP1E105503C0 FF+18d | 75% | 30d | 2011-06-05 | 2011-10-25 | 34.89d | 0d | MECHANICAL [2395.2 h]; Cost [130782 AED] | 130,781.76 | 98,086.32 |  |  |  |  |  |  | CP1E123017C0 | 50 | 15169.12 |  |  | CB | C | P1 | E1 | ME | 230 | 17 | BILL 4 | B04 | S1 | 1F | R00 | ACF04 | MEP | 230 | M1F |  | 1S | 75 |  |  |  |
| CP1E126007C0 |  | CB-P1 ; 2nd Fix, Cable Pulling (Exam- 1) | 48d | 2011-06-05 A | 2011-11-17 | MGNMI00101M0 | 20% | 38.4d | 2011-06-05 | 2011-08-01 | 46.3d | 31.36d | ELECTRICAL [6616.8 h]; Cost [324578 AED] | 324,577.9 | 64,915.58 |  |  |  |  |  |  | CP1E126007C0 |  | 244729.75 |  |  | CB | C | P1 | E1 | ME | 260 | 07 | BILL 4 | B04 | S1 | 2F | R00 | ACF07 | MEP | 260 |  |  | 2n | 65 |  |  |  |
| CP1E123008C0 |  | CB-P1 ; 1st Fix, Inst of VCD's/FD's (Exam- 1) | 100d | 2011-06-21 A | 2011-12-10 | CP1E123023C0, CP1E105503C0 FF+18d | 85% | 15d | 2011-06-21 | 2011-10-19 | 34.89d | 0d | MECHANICAL [2472 h]; Cost [143058 AED] | 143,057.96 | 121,599.26 | 0 | 0 | 0 | 0 |  |  | CP1E123008C0 |  | 82973.64 |  |  | CB | C | P1 | E1 | ME | 230 | 08 | BILL 4 | B04 | S1 | 1F | R00 | ACF04 | MEP | 230 | M1F |  | 1S | 75 |  |  |  |
| CP1E123015C0 |  | CB-P1 ; 2nd Fix, Insulation of CHW pipe & Duct (Exam- 1) | 120d | 2011-07-10 A | 2012-01-08 | CP1E123009C0 SS, CP1E123017C0 SS, CP1E123023C0 SS | 80% | 24d | 2011-08-25 | 2012-01-21 | 58.89d | 43.95d | MECHANICAL [5900.4 h]; Cost [363863 AED] | 363,863.22 | 291,090.57 |  |  |  |  |  |  | CP1E123015C0 |  |  | 80 | 45 | CB | C | P1 | E1 | ME | 230 | 15 | BILL 4 | B04 | S1 | 2F | R00 | ACF07 | MEP | 230 |  |  | 2n | 45 |  |  |  |
| CP1E126009C0 |  | CB-P1 ; 2nd Fix, Inst of Wall conduites (Exam- 1) | 48d | 2011-07-10 A | 2011-12-26 | CP1E109201C0 | 10% | 43.2d | 2011-07-04 | 2011-08-29 | 14.94d | 0d | ELECTRICAL [430.8 h]; Cost [29580.4 AED] | 29,580.43 | 2,958.04 | 0 | 0 | 0 | 0 |  |  | CP1E126009C0 |  |  | 50 | 15 | CB | C | P1 | E1 | ME | 260 | 09 | BILL 4 | B04 | S1 | 2F | R00 | ACF07 | MEP | 260 |  |  | 2n | 15 |  |  |  |
| CP1E123009C0 |  | CB-P1 ; 2nd Fix, Inst of VAV'S CHW connection (Exam- 1) | 48d | 2011-07-14 A | 2012-01-03 | CP1E123017C0 | 60% | 19.2d | 2011-08-21 | 2011-10-17 | 58.89d | 0d | MECHANICAL [1419.6 h]; Cost [76659.7 AED] | 76,659.7 | 45,995.82 | 0 | 0 | 0 | 0 |  |  | CP1E123009C0 |  |  | 40 | 15 | CB | C | P1 | E1 | ME | 230 | 09 | BILL 4 | B04 | S1 | 2F | R00 | ACF07 | MEP | 230 |  |  | 2n | 55 |  |  |  |
| CP1E105503C0 |  | CB-P1 ; Ceiling Support for medical equipment (Exam- 1) | 15d | 2011-09-05 A | 2011-11-16 | CP1E109201C0 | 25% | 11.25d | 2011-10-24 | 2011-11-14 | 34.89d | 0d | SECONDARY STEEL [142 h]; Cost |  |  |  |  |  |  | 335 | 962 | CP1E105503C0 |  |  |  |  | CB | C | P1 | E1 | SW | 055 | 03 | BILL 4 | B04 | S1 | 03 | R00 | ACF03 |  | b |  |  |  |  |  |  |  |
| CP1E105511C0 |  | CB-P1 ; Wall reinforcement for MEP/Medical (Exam- 1) | 24d | 2011-10-31 | 2011-12-04 | CP1E109201C0 |  |  |  |  | 40.14d | 25.2d | SECONDARY STEEL [51 h]; Cost |  |  |  |  |  |  |  |  | CP1E105511C0 |  |  |  |  | CB | C | P1 | E1 | SW | 055 | 11 | BILL 4 | B04 | S1 | 03 | R00 | ACF03 |  | b |  |  |  |  |  |  |  |
| CP1E108103C0 |  | CB-P1 ; Door Frames (Exam- 1) | 42d | 2011-10-31 | 2011-12-25 | CP1E109201C0, GNHE08101C0 |  |  |  |  | 70.14d | 55.2d | ASSORTED DOORS [378 h]; Cost |  |  |  |  |  |  | 316 | 947 | CP1E108103C0 |  |  |  |  | CB | C | P1 | E1 | DO | 081 | 03 | BILL 4 | B04 | S1 | DF | R00 | ACF06 |  | 081 |  |  |  |  | 08 |  |  |
| CP1E122015C0 |  | CB-P1 ; 2nd Fix, Medical Gas pipe (Exam- 1) | 30d | 2011-10-31 | 2011-12-11 | CP1E109201C0, CP1E122007C0 SS |  |  |  |  | 28.14d | 13.2d | PLUMBING [504 h]; Cost |  |  |  |  |  |  |  |  | CP1E122015C0 |  |  |  |  | CB | C | P1 | E1 | ME | 220 | 15 | BILL 4 | B04 | S1 | 2F | R00 | ACF07 | MEP | 220 |  |  | 2n |  |  |  |  |
| CP1E127001C0 |  | CB-P1 ; 1st Fix, Wiring/ Cabling work (Exam- 1) | 54d | 2011-12-06 | 2012-02-09 | CP1E126001C0, CP1E126013C0, CP1E127010C0 |  |  |  |  | 62.5d | 47.56d | ELECTRICAL [216 h]; Cost |  |  |  |  |  |  |  |  | CP1E127001C0 |  | 5398.04 |  |  | CB | C | P1 | E1 | ME | 270 | 01 | BILL 4 | B04 | S1 | 1F | R00 | ACF04 | MEP | 270 | M1F |  | 1S | 35 |  |  |  |
| CP1E101005C0 |  | CB-P1 ; 2nd, Wall Inspection by Consultant (Exam- 1) | 6d | 2011-12-26 | 2012-01-03 | CP1E122011C0, CP1E122015C0, CP1E126007C0, CP1E126009C0 |  |  |  |  | 14.94d | 0d | Labor General [0.6 h]; Cost |  |  |  |  |  |  |  |  | CP1E101005C0 |  |  |  |  | CB | C | P1 | E1 | ME | 010 | 05 | BILL 4 | B04 | S1 | WI | R00 | ACF07 | MEP | 010 |  |  | 2n |  |  |  |  |
| CP1E109205C0 |  | CB-P1 ; Partitions Closing (Exam- 1) | 48d | 2012-01-03 | 2012-02-29 | CP1E101005C0, CP1E105511C0, CP1E109203C0, CP1E122005C0, CP1E122007C0, CP1E122019C0, CAFOA09204C1 FF, CP1E108103C0 FF, CP1E123015C0 FF, CP1E123009C0 FF, CAFCI09201R20 FS+58d |  |  |  |  | 14.94d | 0d | PARTITIONS [949 m]; PARTITIONS [5787 h]; Cost |  |  |  |  |  |  | 315 | 946 | CP1E109205C0 |  |  |  |  | CB | C | P1 | E1 | PT | 092 | 05 | BILL 4 | B04 | S1 | FF | R00 | ACF06 | GP | 092 | P2F | R3 |  |  |  |  |  |
| CP1E107103C0 |  | CB-P1 ; Waterproofing (Exam- 1) | 12d | 2012-02-29 | 2012-03-14 | CP1E108103C0, CP1E109205C0 |  |  |  |  | 136.86d | 0d | THERMAL & MOISTURE [312 h]; THERMAL & MOISTURE [2080 m2]; Cost |  |  |  |  |  |  | 105 | 999 | CP1E107103C0 |  |  |  |  | CB | C | P1 | E1 | FF | 071 | 03 | BILL 4 | B04 | S1 | 01 | R00 | ACF03 |  | 071 |  |  |  |  |  |  |  |
| CP1E109901C0 |  | CB-P1 ; Wall Prime & 1st coat (Exam- 1) | 30d | 2012-02-29 | 2012-04-04 | CP1CO04003C0, CP1E109205C0 |  |  |  |  | 14.94d | 0d | WALL PAINT [1957 h]; WALL PAINT [2442 m2]; Cost |  |  |  |  |  |  | 328 | 956 | CP1E109901C0 |  |  |  |  | CB | C | P1 | E1 | PA | 099 | 01 | BILL 4 | B04 | S1 | 01 | R00 | ACF06 |  | 099 |  |  |  |  |  |  |  |
| CP1E126005C0 |  | CB-P1 ; 2nd Fix, Wiring for Power/Lighting/Emergency (Exam- 1) | 42d | 2012-02-29 | 2012-04-18 | CP1E109205C0 |  |  |  |  | 104.94d | 18d | ELECTRICAL [216 h]; Cost |  |  |  |  |  |  |  |  | CP1E126005C0 |  |  |  |  | CB | C | P1 | E1 | ME | 260 | 05 | BILL 4 | B04 | S1 | 2F | R00 | ACF07 | MEP | 260 |  |  | 2n |  |  |  |  |
| CP1E126011C0 |  | CB-P1 ; 2nd Fix, Inst of Equipment (DB) (Exam- 1) | 42d | 2012-02-29 | 2012-04-18 | CP1E109205C0 |  |  |  |  | 32.94d | 18d | ELECTRICAL [1266 h]; Cost |  |  |  |  |  |  |  |  | CP1E126011C0 |  |  |  |  | CB | C | P1 | E1 | ME | 260 | 11 | BILL 4 | B04 | S1 | 2F | R00 | ACF04 | MEP | 260 |  |  | 2n |  |  | E |  |
| CP1E126053C0 |  | CB-P1 ; 2nd Fix, Wiring / Cabling (Exam- 1) | 30d | 2012-02-29 | 2012-04-04 | CP1E109205C0 |  |  |  |  | 134.94d | 120d | ELECTRICAL [216 h]; Cost |  |  |  |  |  |  | 389 | 977 | CP1E126053C0 |  |  |  |  | CB | C | P1 | E1 | ME | 260 | 53 | BILL 4 | B04 | S1 | 2F | R00 | ACF07 | MEP | 260 |  |  | 2n |  |  |  |  |
| CP1E127020C0 |  | CB-P1 ; 2nd Fix, Inst of ELV Equipment (Panels) (Exam- 1) | 42d | 2012-02-29 | 2012-04-18 | CP1E109205C0 |  |  |  |  | 122.94d | 84d | ELECTRICAL [384 h]; Cost |  |  |  |  |  |  |  |  | CP1E127020C0 |  |  |  |  | CB | C | P1 | E1 | ME | 270 | 20 | BILL 4 | B04 | S1 | 2F | R00 | ACF04 | MEP | 270 |  |  | 2n |  |  | E |  |
| CP1E109305C0 |  | CB-P1 ; Ceramic floor tile (Exam- 1) | 34.08d | 2012-03-14 | 2012-04-23 | CP1E107103C0 |  |  |  |  | 136.86d | 121.92d | CERAMIC FLOOR TILES [384 h]; CERAMIC FLOOR TILES [209 m2]; Cost |  |  |  |  |  |  | 106 | 1000 | CP1E109305C0 |  |  |  |  | CB | C | P1 | E1 | FF | 093 | 05 | BILL 4 | B04 | S1 | 02 | R00 | ACF06 |  | CT |  |  |  |  |  |  |  |
| CP1E105501C0 |  | CB-P1 ; Handrails & balustrade (Exam- 1) | 36d | 2012-04-04 | 2012-05-16 | CP1E109901C0 |  |  |  |  | 38.94d | 24d | SECONDARY STEEL [493 h]; Cost |  |  |  |  |  |  |  |  | CP1E105501C0 |  |  |  |  | CB | C | P1 | E1 | SW | 055 | 01 | BILL 4 | B04 | S1 | 01 | R00 | ACF03 |  | a |  |  |  |  |  |  |  |
| CP1E109501C0 |  | CB-P1 ; Ceiling Grid and ServiceTile (Exam- 1) | 30d | 2012-04-04 | 2012-05-09 | CP1E105503C0, CP1E109205C0 SS+15d, CP1E121117C0, CP1E123008C0, CP1E123009C0, CP1E123015C0, CP1E127001C0, CAFCI22001R02 FS+65d, CP1E126011C0 FF, CP1E109901C0 |  |  |  |  | 14.94d | 0d | CEILING GRID FOR GYPSUM [4329.43 h]; CEILING GRID FOR GYPSUM [370.42 m2]; Cost |  |  |  |  |  |  | 323 | 952 | CP1E109501C0 |  |  |  |  | CB | C | P1 | E1 | CE | 095 | 01 | BILL 4 | B04 | S1 | 01 | R00 | ACF06 |  | 095 |  |  |  |  |  |  |  |
| CP1E109601C0 |  | CB-P1 ; Flooring (Rubber & etc) (Exam- 1) | 30d | 2012-05-09 | 2012-06-13 | CP1E109901C0, CP1E109501C0, CP1E105501C0 FF |  |  |  |  | 14.94d | 0d | RUBBER FLOOR [424 h]; RUBBER FLOOR [1046 m2]; Cost |  |  |  |  |  |  | 326 | 955 | CP1E109601C0 |  |  |  |  | CB | C | P1 | E1 | FF | 096 | 01 | BILL 4 | B04 | S1 | 03 | R00 | ACF06 |  | RF |  |  |  |  |  |  | R3 |
| CP1E109903C0 |  | CB-P1 ; Wall Final Paint (Exam- 1) | 36d | 2012-05-09 | 2012-06-21 | CP1E109901C0, CP1E109905C0 |  |  |  |  | 110.94d | 66d | WALL PAINT [1055 h]; WALL PAINT [1315 m2]; Cost |  |  |  |  |  |  | 329 | 957 | CP1E109903C0 |  |  |  |  | CB | C | P1 | E1 | PA | 099 | 03 | BILL 4 | B04 | S1 | 02 | R00 | ACF06 |  | 099 |  |  |  |  |  |  |  |
| CP1E109905C0 |  | CB-P1 ; Ceiling Prime & 1st coat (Exam- 1) | 0d | 2012-05-09 | 2012-05-09 | CP1E109501C0 |  |  |  |  | 110.94d | 0d | Cost |  |  |  |  |  |  | 330 | 958 | CP1E109905C0 |  |  |  |  | CB | C | P1 | E1 | PA | 099 | 05 | BILL 4 | B04 | S1 | 01 | R00 | ACF06 |  | 099 |  |  |  |  |  |  |  |
| CP1E121115C0 |  | CB-P1 ; 2nd Fix, Inst of Sprinkler droppers (Exam- 1) | 30d | 2012-05-09 | 2012-06-13 | CP1E109501C0 |  |  |  |  | 44.94d | 0d | MECHANICAL [1404 h]; Cost |  |  |  |  |  |  |  |  | CP1E121115C0 |  |  |  |  | CB | C | P1 | E1 | ME | 211 | 15 | BILL 4 | B04 | S1 | 2F | R00 | ACF07 | MEP | 211 |  |  | 2n |  |  |  |  |
| CP1E123021C0 |  | CB-P1 ; 2nd Fix, Inst of Flexible Duct & Plenum boxes (Exam- 1) | 30d | 2012-05-09 | 2012-06-13 | CP1E109205C0, CP1E109501C0 |  |  |  |  | 44.94d | 0d | MECHANICAL [903.6 h]; Cost |  |  |  |  |  |  |  |  | CP1E123021C0 |  |  |  |  | CB | C | P1 | E1 | ME | 230 | 21 | BILL 4 | B04 | S1 | 2F | R00 | ACF07 | MEP | 230 |  |  | 2n |  |  |  |  |
| CP1E126015C0 |  | CB-P1 ; Final Fix, Termination & Gladding of Cables (Exam- 1) | 48d | 2012-05-09 | 2012-07-05 | CP1E126005C0, CP1E109501C0 |  |  |  |  | 86.94d | 72d | ELECTRICAL [826.8 h]; Cost |  |  |  |  |  |  |  |  | CP1E126015C0 |  |  |  |  | CB | C | P1 | E1 | ME | 260 | 15 | BILL 4 | B04 | S1 | FF | R00 | ACF07 | MEP | 260 |  |  | FF |  |  |  |  |
| CP1E126017C0 |  | CB-P1 ; Final Fix, Inst of Ceiling rose (Exam- 1) | 48d | 2012-05-09 | 2012-07-05 | CP1E109501C0 |  |  |  |  | 44.94d | 0d | ELECTRICAL [123.6 h]; Cost |  |  |  |  |  |  |  |  | CP1E126017C0 |  |  |  |  | CB | C | P1 | E1 | ME | 260 | 17 | BILL 4 | B04 | S1 | FF | R00 | ACF07 | MEP | 260 |  |  | FF |  |  |  |  |
| CP1E127002C0 |  | CB-P1 ; 2nd Fix, Wiring Droppers (Exam- 1) | 42d | 2012-05-09 | 2012-06-28 | CP1E109501C0 |  |  |  |  | 44.94d | 0d | ELECTRICAL [216 h]; Cost |  |  |  |  |  |  |  |  | CP1E127002C0 |  |  |  |  | CB | C | P1 | E1 | ME | 270 | 02 | BILL 4 | B04 | S1 | 2F | R00 | ACF07 | MEP | 270 |  |  | 2n |  |  |  |  |
| CP1E121113C0 |  | CB-P1 ; Final Fix, Inst of Sprinklers head/ Extinguisher (Exam- 1) | 48d | 2012-05-16 | 2012-07-12 | CP1E109501C0, CP1E121115C0 SS+6d |  |  |  |  | 44.94d | 0d | MECHANICAL [278.4 h]; Cost |  |  |  |  |  |  |  |  | CP1E121113C0 |  |  |  |  | CB | C | P1 | E1 | ME | 211 | 13 | BILL 4 | B04 | S1 | FF | R00 | ACF07 | MEP | 211 |  |  | FF |  |  |  |  |
| CP1E123019C0 |  | CB-P1 ; Final Fix, Inst of Grilles & Diffusers (Exam- 1) | 48d | 2012-05-16 | 2012-07-12 | CP1E109501C0, CP1E123021C0 SS+6d |  |  |  |  | 44.94d | 0d | MECHANICAL [1970.4 h]; Cost |  |  |  |  |  |  |  |  | CP1E123019C0 |  |  |  |  | CB | C | P1 | E1 | ME | 230 | 19 | BILL 4 | B04 | S1 | FF | R00 | ACF07 | MEP | 230 |  |  | FF |  |  |  |  |
| CP1E126003C0 |  | CB-P1 ; Final Fix, Inst of Light fittings (Exam- 1) | 48d | 2012-05-16 | 2012-07-12 | CP1E109501C0, CP1E126017C0 SS+6d |  |  |  |  | 44.94d | 0d | ELECTRICAL [7983.6 h]; Cost |  |  |  |  |  |  |  |  | CP1E126003C0 |  |  |  |  | CB | C | P1 | E1 | ME | 260 | 03 | BILL 4 | B04 | S1 | FF | R00 | ACF07 | MEP | 260 |  |  | FF |  |  |  |  |
| CP1E127030C0 |  | CB-P1 ; Final Fix, Inst of ELV device (Detector/Speaker) (Exam- 1) | 48d | 2012-05-16 | 2012-07-12 | CP1E109501C0, CP1E127002C0 SS+6d |  |  |  |  | 44.94d | 0d | ELECTRICAL [2054.4 h]; Cost |  |  |  |  |  |  |  |  | CP1E127030C0 |  |  |  |  | CB | C | P1 | E1 | ME | 270 | 30 | BILL 4 | B04 | S1 | FF | R00 | ACF07 | MEP | 270 |  |  | FF |  |  |  |  |
| CP1E106101C0 |  | CB-P1 ; Wood / caseworks (Exam- 1) | 60d | 2012-06-13 | 2012-08-26 | CP1CO04403C0, CP1E109901C0, CP1CO04405C0, CAFWA00113M0, CP1E109601C0 |  |  |  |  | 14.94d | 0d | WOOD WORK/CASEWORK [2167.22 no]; WOOD WORK/CASEWORK [8832 h]; Cost |  |  |  |  |  |  | 332 | 960 | CP1E106101C0 |  |  |  |  | CB | C | P1 | E1 | WO | 061 | 01 | BILL 4 | B04 | S1 | WW | R00 | ACF06 |  | 061 |  |  |  |  |  |  |  |
| CP1E106102C0 |  | CB-P1 ; Head Wall (Exam- 1) | 29.88d | 2012-06-13 | 2012-07-19 | CP1CO04403C0, CP1E109501C0, CP1E106101C0 SS, CAFWA00113M0 |  |  |  |  | 27.06d | 10.12d | WOOD WORK/CASEWORK [4193 h]; Cost |  |  |  |  |  |  | 332 | 960 | CP1E106102C0 |  |  |  |  | CB | C | P1 | E1 | WO | 061 | 02 | BILL 4 | B04 | S1 | WW | R00 | ACF06 |  | 061 |  |  |  |  |  |  |  |
| CP1E108107C0 |  | CB-P1 ; Doors (Exam- 1) | 42d | 2012-06-13 | 2012-08-02 | CP1E108103C0, CP1E109901C0, CP1E109601C0 |  |  |  |  | 40.86d | 0d | ASSORTED DOORS [1290 h]; ASSORTED DOORS [129 no]; Cost |  |  |  |  |  |  | 317 | 948 | CP1E108107C0 |  |  |  |  | CB | C | P1 | E1 | DO | 081 | 07 | BILL 4 | B04 | S1 | DR | R00 | ACF06 |  | 081 |  |  |  |  | 08 |  |  |
| CP1E109701C0 |  | CB-P1 ; Wall finishes (ST, WD, WC) (Exam- 1) | 36d | 2012-06-13 | 2012-07-26 | CP1E127020C0 FF, CAFCI22001R02 FS+164d, CP1E106101C0 SS |  |  |  |  | 38.94d | 0d | ASSORTED WALL FINISH [1192 h]; ASSORTED WALL FINISH [1369 m2]; Cost |  |  |  |  |  |  | 105 | 1002 | CP1E109701C0 |  |  |  |  | CB | C | P1 | E1 | WF | 097 | 01 | BILL 4 | B04 | S1 | 01 | R00 | ACF06 |  | 097 |  |  |  |  |  |  |  |
| CP1E101006C0 |  | CB-P1 ; 2nd, Ceiling Inspection by Consultants (Exam- 1) | 6d | 2012-07-12 | 2012-07-19 | CP1E121115C0, CP1E123009C0, CP1E123015C0, CP1E127002C0, CP1E109501C0, CP1E121113C0, CP1E123019C0, CP1E126003C0, CP1E126017C0, CP1E127030C0 |  |  |  |  | 44.94d | 30d | Labor General [0.6 h]; Cost |  |  |  |  |  |  |  |  | CP1E101006C0 |  |  |  |  | CB | C | P1 | E1 | ME | 010 | 06 | BILL 4 | B04 | S1 | CI | R00 | ACF07 | MEP | 010 |  |  | 2n |  |  |  |  |
| CP1E111001C0 |  | CB-P1 ; Wall Protection (WP, CG, WG, FCG) (Exam- 1) | 24d | 2012-07-26 | 2012-08-26 | CP1E109701C0, CP1E109903C0 SS |  |  |  |  | 56.94d | 42d | FF&E [51 h]; Cost |  |  |  |  |  |  | 326 | 1001 | CP1E111001C0 |  |  |  |  | CB | C | P1 | E1 | WF | 110 | 01 | BILL 4 | B04 | S1 | 03 | R00 | ACF08 |  | b |  |  |  |  |  |  |  |
| CP1E111005C0 |  | CB-P1 ; Utility belt (Exam- 1) | 30d | 2012-07-31 | 2012-09-06 | CP1E106101C0 SS+10d, CP1E109205C0, CP1E106101C0 FF+10d, CP1E106102C0 |  |  |  |  | 16.94d | 0d | FF&E [655 h]; FF&E [349.39 no]; Cost |  |  |  |  |  |  |  |  | CP1E111005C0 |  |  |  |  | CB | C | P1 | E1 | WO | 110 | 05 | BILL 4 | B04 | S1 | 05 | R00 | ACF08 |  | e |  |  |  |  |  |  |  |
| CP1E108709C0 |  | CB-P1 ; Ironmongery (Exam- 1) | 34.08d | 2012-08-02 | 2012-09-13 | CP1E108107C0 |  |  |  |  | 40.86d | 25.93d | IRONMONGERY [870 h]; IRONMONGERY [87 no]; Cost |  |  |  |  |  |  | 322 | 951 | CP1E108709C0 |  |  |  |  | CB | C | P1 | E1 | DO | 087 | 09 | BILL 4 | B04 | S1 | IM | R00 | ACF06 |  | 087 |  |  |  |  | 08 |  |  |
| CP1E109503C0 |  | CB-P1 ; Ceiling closure - ACT/Gypsum (Exam- 1) | 18d | 2012-08-26 | 2012-09-16 | CAFOA09503C1 FF, CP1E101006C0, CP1E121115C0, CP1E123021C0, CP1E126005C0, CP1E127002C0, CP1E106101C0, CP1E109701C0, CP1E126053C0 |  |  |  |  | 14.94d | 0d | ASSORTED CEILING FINISH [826.56 h]; CEILING GYPSUM [121.56 h]; ASSORTED CEILING FINISH [1344 m2]; CEILING GYPSUM [339 m2]; Cost |  |  |  |  |  |  | 324 | 953 | CP1E109503C0 |  |  |  |  | CB | C | P1 | E1 | CE | 095 | 03 | BILL 4 | B04 | S1 | 02 | R00 | ACF06 |  | 095 |  |  |  |  |  |  |  |
| CP1E111003C0 |  | CB-P1 ; FF & E (Exam- 1) | 18d | 2012-08-26 | 2012-09-16 | CP1E109601C0, CP1E106101C0 |  |  |  |  | 38.94d | 24d | FF&E [165 h]; FF&E [87.74 no]; Cost |  |  |  |  |  |  | 333 | 961 | CP1E111003C0 |  |  |  |  | CB | C | P1 | E1 | WO | 110 | 03 | BILL 4 | B04 | S1 | 04 | R00 | ACF08 |  | a |  |  |  |  |  |  |  |
| CP1E122029C0 |  | CB-P1 ; Final Fix, Medical Gas pipe (Exam- 1) | 18d | 2012-09-06 | 2012-09-27 | CP1E109501C0, CP1E122015C0, CP1E111005C0 |  |  |  |  | 16.94d | 2d | PLUMBING [504 h]; Cost |  |  |  |  |  |  |  |  | CP1E122029C0 |  |  |  |  | CB | C | P1 | E1 | ME | 220 | 29 | BILL 4 | B04 | S1 | FF | R00 | ACF07 | MEP | 220 |  |  | FF |  |  |  |  |
| CP1E109670C1 |  | CB-P1, Carpet Tile Finish (Exam-1) | 0d | 2012-09-16 | 2012-09-16 | CP1E109907C0 SS, CP1E109903C0 SS |  |  |  |  | 38.94d | 24d | Cost |  |  |  |  |  |  |  |  |  |  |  |  |  | CB | C | P1 | E1 | FF | 096 |  |  | B04 |  |  | R00 | ACF06 | CPT | CPT |  |  |  |  |  |  |  |
| CP1E109907C0 |  | CB-P1 ; Ceiling Final paint (Exam- 1) | 0d | 2012-09-16 | 2012-09-16 | CP1E109601C0, CP1E109905C0, CP1E109503C0 |  |  |  |  | 38.94d | 0d | Cost |  |  |  |  |  |  | 331 | 959 | CP1E109907C0 |  |  |  |  | CB | C | P1 | E1 | PA | 099 | 07 | BILL 4 | B04 | S1 | 02 | R00 | ACF06 |  | 099 |  |  |  |  |  |  |  |
| CP1E122021C0 |  | CB-P1 ; Final Fix, Terminate Sanitary Ware & Appliances (Exam- 1) | 12d | 2012-09-16 | 2012-09-30 | CP1E122011C0, CP1E109501C0, CP1E122025C0 SS |  |  |  |  | 14.94d | 0d | PLUMBING [1491.6 h]; Cost |  |  |  |  |  |  |  |  | CP1E122021C0 |  |  |  |  | CB | C | P1 | E1 | ME | 220 | 21 | BILL 4 | B04 | S1 | FF | R00 | ACF07 | MEP | 220 |  |  | FF |  |  |  |  |
| CP1E122025C0 |  | CB-P1 ; Final Fix, Inst of Sanitary Ware (Exam- 1) | 12d | 2012-09-16 | 2012-09-30 | CP1E109205C0, CP1E109305C0, A10230 FS+148d, CP1E109503C0 |  |  |  |  | 14.94d | 0d | PLUMBING [1491.6 h]; Cost |  |  |  |  |  |  |  |  | CP1E122025C0 |  |  |  |  | CB | C | P1 | E1 | ME | 220 | 25 | BILL 4 | B04 | S1 | FF | R00 | ACF07 | MEP | 220 |  |  | FF |  |  |  |  |
| CP1E122027C0 |  | CB-P1 ; Final Fix, Inst of All drain (Exam- 1) | 12d | 2012-09-16 | 2012-09-30 | CP1E109305C0, CP1E109503C0 |  |  |  |  | 14.94d | 0d | PLUMBING [1491.6 h]; Cost |  |  |  |  |  |  |  |  | CP1E122027C0 |  |  |  |  | CB | C | P1 | E1 | ME | 220 | 27 | BILL 4 | B04 | S1 | FF | R00 | ACF07 | MEP | 220 |  |  | FF |  |  |  |  |
| CP1E126019C0 |  | CB-P1 ; Final Fix, Inst of Switch/Sockets (Exam- 1) | 12d | 2012-09-16 | 2012-09-30 | CP1E109901C0, CP1E109503C0 |  |  |  |  | 14.94d | 0d | ELECTRICAL [427.2 h]; Cost |  |  |  |  |  |  |  |  | CP1E126019C0 |  |  |  |  | CB | C | P1 | E1 | ME | 260 | 19 | BILL 4 | B04 | S1 | FF | R00 | ACF07 | MEP | 260 |  |  | FF |  |  |  |  |

| ID | WBS | Activity | Duration | Start | Finish | Predecessors | Complete | Remaining | Planned start | Planned finish | Total float | Free float | Resources | Cost | Actual cost | change id | CCAD BUILDING(SET) | CCAD PHASE(SET) | CCAD FLOOR(SET) | CCAD ZONE(SET) | CCAD WORK(SET) | CCAD SECTION(SET) | CCAD SERIAL No.(SET) | CCAD CBS(SET) | CCAD BILL(SET) | CCAD HANDOVER(SET) | CCAD TAG(SET) | CCAD REV(SET) | CCADACF (SET) | CCAD SSCF | user_number8 | user_integer1 | user_integer2 | user_number7 | Change Order # | NEW ACTIVITY ID | RENZ % COMPLETE | Claimed This Month | P_811 | P_711 | CCAD CSA | Act Selector % | R3 Partitions | CCAD SUB ZONE MEP(SET) | July2011 Target% Complete | CCAD DIVISION(SET) | CCAD MEQ | R3 Finish |
| --- | --- | --- | --- | --- | --- | --- | --- | --- | --- | --- | --- | --- | --- | --- | --- | --- | --- | --- | --- | --- | --- | --- | --- | --- | --- | --- | --- | --- | --- | --- | --- | --- | --- | --- | --- | --- | --- | --- | --- | --- | --- | --- | --- | --- | --- | --- | --- | --- |
|  | 10 | **Precommissioning Tesing & snagging ( Exam 1)** |  | 2012-09-30 | 2012-11-14 |  |  |  |  |  |  |  |  |  |  |  |  |  |  |  |  |  |  |  |  |  |  |  |  |  |  |  |  |  |  |  |  |  |  |  |  |  |  |  |  |  |  |  |
| CP1TS01801C0 |  | CB-P1 ; MEP de-snag, FIREM sign-off | 12d | 2012-09-30 | 2012-10-14 | CP1E126015C0, CP1E122025C0, CP1E122027C0, CP1E121113C0, CP1E123019C0, CP1E122029C0, CP1E126017C0, CP1E126003C0, CP1E127030C0, CP1E122021C0, CP1E126019C0, CP1E111005C0 |  |  |  |  | 14.94d | 0d | TESTING & COMMISSIONING [2040 h]; Cost |  |  | CP1TS01801C0 | CB | C | P1 | TS | SC | 018 | 01 | BILL 4 | B04 | S1 | 01 | R00 | ACF07 | 018 |  |  |  |  |  |  |  |  |  |  |  |  |  |  |  |  |  |  |
| CP1TS01806C0 |  | CB-P1 ; Touch-up & Clean / JV inspection /CIR /De-snag | 17.3d | 2012-10-14 | 2012-11-06 | CP1E105501C0, CP1E106101C0, CP1E106102C0, CP1E108709C0, CP1E109305C0, CP1E109601C0, CP1E109701C0, CP1E109903C0, CP1E109907C0, CP1E111001C0, CP1E111003C0, CP1TS01801C0, CP1E109503C0, CP1E109670C1, CP1E209671C1 |  |  |  |  | 14.94d | 0d | TESTING & COMMISSIONING [149 h]; Cost |  |  | CP1TS01802C0 | CB | C | P1 | TS | SC | 018 | 02 | BILL 4 | B04 | S1 | 02 | R00 | ACF07 | 018 |  |  |  |  |  |  |  |  |  |  |  |  |  |  |  |  |  |  |
| CP1TS01809C0 |  | CB-P1 ; Consultant's final de-snag inspection | 7d | 2012-11-06 | 2012-11-14 | CP1TS01806C0 |  |  |  |  | 14.94d | 7.61d | Labor General [0.5 h]; Cost |  |  | CP1TS01803C0 | CB | C | P1 | TS | SC | 018 | 03 | BILL 4 | B04 | S1 | 03 | R00 | ACF07 | 018 |  |  |  |  |  |  |  |  |  |  |  |  |  |  |  |  |  |  |
|  | 03 | **Exam 2** |  | 2011-02-01 | 2012-10-24 |  |  |  |  |  |  |  |  |  |  |  |  |  |  |  |  |  |  |  |  |  |  |  |  |  |  |  |  |  |  |  |  |  |  |  |  |  |  |  |  |  |  |  |
| CP1E209201C0 |  | CB-P1 ; Metal Studs (Exam- 2) | 118d | 2011-02-01 A | 2011-11-01 | CP1E223001C0 SS, CAFCI09202R02 FS+58d | 87% | 15.34d | 2011-03-20 | 2011-08-04 | 26.61d | 0d | PARTITIONS [3926 h]; PARTITIONS - Metal Studs [646 m]; Cost |  |  | CP1E209201C0 | CB | C | P1 | E2 | PT | 092 | 01 | BILL 4 | B04 | S1 | 1F | R00 | ACF06 | 092 | 0 | 0 | 0 | 0 | 313 | 944 | 60 | 26172.7 | 85 | 80 | GP | PMS | R3 |  |  |  |  |  |
| CP1E223001C0 |  | CB-P1 ; 1st Fix, Inst. of Supports for MEP (Exam- 2) | 27d | 2011-03-21 A | 2011-10-01 | CGLS203335C0, CP1S207808C0 | 100% | 0d | 2011-02-28 | 2011-03-31 | 30.25d | 0d | MECHANICAL [1024.8 h]; Cost [57766.2 AED] | 57,766.25 | 51,989.63 | CP1E223001C0 | CB | C | P1 | E2 | ME | 230 | 01 | BILL 4 | B04 | S1 | 1F | R00 | ACF04 | 230 |  |  |  |  |  |  | 65 |  | 100 | 65 | MEP | M1F |  | 1S |  |  |  |  |
| CP1E221111C0 |  | CB-P1 ; 1st Fix, Inst of Sprinkler main pipe (Exam- 2) | 44d | 2011-03-23 A | 2011-10-03 | CP1E222019C0 SS+10d, CP1E223001C0 | 95% | 2.2d | 2011-05-15 | 2011-07-06 | 53.95d | 0d | MECHANICAL [686.4 h]; Cost [37438.4 AED] | 37,438.4 | 35,566.48 | CP1E221111C0 | CB | C | P1 | E2 | ME | 211 | 11 | BILL 4 | B04 | S1 | 1F | R00 | ACF04 | 211 |  |  |  |  |  |  | 90 | 2172.74 |  |  | MEP | M1F |  | 1S | 100 |  |  |  |
| CP1E226001C0 |  | CB-P1 ; 1st Fix, Inst of Trunking/Conduiting (Exam- 2) | 120d | 2011-03-23 A | 2011-11-21 | CP1E223001C0, CP1S207808C0 | 65% | 42d | 2011-03-31 | 2011-08-20 | 30.25d | 0d | ELECTRICAL [430.8 h]; Cost [29580.4 AED] | 29,580.43 | 19,227.28 | CP1E226001C0 | CB | C | P1 | E2 | ME | 260 | 01 | BILL 4 | B04 | S1 | 1F | R00 | ACF04 | 260 |  |  |  |  |  |  | 80 | 5144.4 |  |  | MEP | M1F |  | 1S | 95 |  |  |  |
| CP1E223023C0 |  | CB-P1 ; 1st Fix, Inst of Main Ducting (Exam- 2) | 200d | 2011-03-24 A | 2011-11-22 | CP1E223001C0, CP1E223017C0 SS+7d, CP1S207808C0 | 96% | 8d | 2011-06-04 | 2012-02-02 | 46.66d | 1d | MECHANICAL [16992 h]; Cost [927678 AED] | 927,677.51 | 890,570.41 | CP1E223023C0 | CB | C | P1 | E2 | ME | 230 | 23 | BILL 4 | B04 | S1 | 1F | R00 | ACF04 | 230 |  |  |  |  |  |  | 70 | 161442.6 |  |  | MEP | M1F |  | 1S | 90 |  |  |  |
| CP1E226013C0 |  | CB-P1 ; 1st Fix, Inst of Cable Tray (Exam- 2) | 90d | 2011-03-24 A | 2011-11-24 | CP1E223001C0, CP1E227010C0 SS+10d, CP1S207808C0 | 50% | 45d | 2011-04-24 | 2011-08-08 | 43.75d | 0d | ELECTRICAL [948 h]; Cost [17044 AED] | 17,043.96 | 8,521.98 | CP1E226013C0 | CB | C | P1 | E2 | ME | 260 | 13 | BILL 4 | B04 | S1 | 1F | R00 | ACF04 | 260 |  |  |  |  |  |  | 70 | 4961 |  |  | MEP | M1F |  | 1S | 95 |  |  |  |
| CP1E222019C0 |  | CB-P1 ; 1st Fix, Inst of Drainage pipe (ceiling) (Exam- 2) | 200d | 2011-03-25 A | 2011-10-04 | CP1E223001C0, CP1E226013C0 SS+8d, CP1S107807C0 | 98% | 4d | 2011-05-03 | 2012-01-02 | 53.95d | 0d | PLUMBING [1714.8 h]; Cost [92715.9 AED] | 92,715.95 | 90,861.63 | CP1E222019C0 | CB | C | P1 | E2 | ME | 220 | 19 | BILL 4 | B04 | S1 | 1F | R00 | ACF04 | 220 |  |  |  |  |  |  | 90 |  |  |  | MEP | M1F |  | 1S | 100 |  |  |  |
| CP1E221117C0 |  | CB-P1 ; 1st Fix, Inst of Sprinkler branch pipe (Exam- 2) | 63d | 2011-03-28 A | 2011-12-11 | CP1E209201C0, CP1E221111C0, CP1E205503C0 FF+18d | 95% | 3.15d | 2011-07-07 | 2011-09-21 | 104.16d | 77.55d | MECHANICAL [1009.2 h]; Cost [55153.8 AED] | 55,153.76 | 52,396.07 | CP1E221117C0 | CB | C | P1 | E2 | ME | 211 | 17 | BILL 4 | B04 | S1 | 1F | R00 | ACF04 | 211 |  |  |  |  |  |  | 95 | 3196.77 |  |  | MEP | M1F |  | 1S |  |  |  |  |
| CP1E227010C0 |  | CB-P1 ; 1st Fix, Inst of Trunking for ELV system (Exam- 2) | 90d | 2011-03-28 A | 2011-12-13 | CP1E223001C0, CP1E226001C0 SS+10d, CP1S107807C0 | 35% | 58.5d | 2011-04-12 | 2011-07-27 | 30.25d | 0d | ELECTRICAL [457.2 h]; Cost [24667.9 AED] | 24,667.88 | 8,633.76 | CP1E227010C0 | CB | C | P1 | E2 | ME | 270 | 10 | BILL 4 | B04 | S1 | 1F | R00 | ACF04 | 270 |  |  |  |  |  |  | 35 | 17190.6 | 95 | 80 | MEP | M1F |  | 1S | 98 |  |  |  |
| CP1E223017C0 |  | CB-P1 ; 1st Fix, Inst of CHW pipe (Exam- 2) | 150d | 2011-04-06 A | 2011-12-11 | CP1E221111C0 SS+10d, CP1E223001C0, CP1S207808C0, CP1E205503C0 FF+18d | 85% | 22.5d | 2011-05-26 | 2011-11-24 | 32.16d | 0d | MECHANICAL [2395.2 h]; Cost [130782 AED] | 130,781.76 | 111,164.49 | CP1E223017C0 | CB | C | P1 | E2 | ME | 230 | 17 | BILL 4 | B04 | S1 | 1F | R00 | ACF04 | 230 |  |  |  |  |  |  | 65 | 7584.55 |  |  | MEP | M1F |  | 1S | 78 |  |  |  |
| CP1E209203C0 |  | CB-P1 ; Partitions 1st face (Exam- 2) | 54d | 2011-04-07 A | 2011-12-11 | CP1E209201C0, CP1E223023C0 FF, CP1E223017C0 FF | 61% | 21.06d | 2011-04-20 | 2011-06-22 | 32.16d | 5.55d | PARTITIONS [646 m]; PARTITIONS [3079 h]; Cost |  |  | CP1E209203C0 | CB | C | P1 | E2 | PT | 092 | 03 | BILL 4 | B04 | S1 | 2F | R00 | ACF06 | 092 | 0 | 0 | 0 | 0 | 314 | 945 | 15 | 54962.55 | 50 | 34 | GP | P1F |  |  |  |  |  |  |
| CP1E222007C0 |  | CB-P1 ; 1st Fix, Inst of Medical Gas pipe (Exam- 2) | 70d | 2011-04-12 A | 2011-11-01 | CP1E221111C0 SS+14d, CP1E223001C0, CP1S107807C0, MGNMI00105M0 | 60% | 28d | 2011-05-31 | 2011-08-22 | 53.95d | 27.34d | PLUMBING [504 h]; Cost [26046.8 AED] | 26,046.85 | 15,628.11 | CP1E222007C0 | CB | C | P1 | E2 | ME | 220 | 07 | BILL 4 | B04 | S1 | 1F | R00 | ACF04 | 220 | 0 | 0 | 0 | 0 |  |  | 10 | 9049.47 | 55 | 45 | MEP | M1F |  | 1S | 45 |  |  |  |
| CP1E222005C0 |  | CB-P1 ; 1st Fix, Inst of Water supply pipe (ceiling) (Exam- 2) | 90d | 2011-05-01 A | 2011-11-09 | CP1E222019C0 SS+7d, CP1E223001C0, CP1S107807C0 | 65% | 31.5d | 2011-05-11 | 2011-08-25 | 57.25d | 30.64d | PLUMBING [1682.4 h]; Cost [90924.8 AED] | 90,924.75 | 59,101.09 | CP1E222005C0 | CB | C | P1 | E2 | ME | 220 | 05 | BILL 4 | B04 | S1 | 1F | R00 | ACF04 | 220 |  |  |  |  |  |  | 55 |  |  |  | MEP | M1F |  | 1S | 78 |  |  |  |
| CP1E223008C0 |  | CB-P1 ; 1st Fix, Inst of VCD's/FD's (Exam- 2) | 90d | 2011-05-03 A | 2011-12-11 | CP1E223023C0, CP1E205503C0 FF+18d | 85% | 13.5d | 2011-08-11 | 2011-12-01 | 80.16d | 53.55d | MECHANICAL [2648.4 h]; Cost [143058 AED] | 143,057.96 | 121,599.26 | CP1E223008C0 | CB | C | P1 | E2 | ME | 230 | 08 | BILL 4 | B04 | S1 | 1F | R00 | ACF04 | 230 | 0 | 0 | 0 | 0 |  |  | 10 | 49784.18 |  |  | MEP | M1F |  | 1S | 65 |  |  |  |
| CP1E223015C0 |  | CB-P1 ; 2nd Fix, Insulation of CHW pipe & Duct (Exam- 2) | 90d | 2011-05-10 A | 2012-01-18 | CP1E223009C0 SS, CP1E223017C0 SS, CP1E223023C0 SS | 65% | 31.5d | 2011-08-11 | 2011-12-01 | 72.66d | 46.05d | MECHANICAL [6742.8 h]; Cost [363863 AED] | 363,863.22 | 236,511.09 | CP1E223015C0 | CB | C | P1 | E2 | ME | 230 | 15 | BILL 4 | B04 | S1 | 2F | R00 | ACF07 | 230 |  |  |  |  |  |  | 35 |  |  |  | MEP |  |  | 2n | 65 |  |  |  |
| CP1E222015C0 |  | CB-P1 ; 2nd Fix, Medical Gas pipe (Exam- 2) | 72d | 2011-06-01 A | 2011-12-11 | CP1E209201C0, CP1E222007C0 SS | 60% | 28.8d | 2011-08-08 | 2011-11-02 | 26.61d | 0d | PLUMBING [504 h]; Cost [26046.8 AED] | 26,046.85 | 15,628.11 | CP1E222015C0 | CB | C | P1 | E2 | ME | 220 | 15 | BILL 4 | B04 | S1 | 2F | R00 | ACF07 | 220 |  |  |  |  |  |  |  | 9049.58 | 60 | 45 | MEP |  |  | 2n | 65 |  |  |  |
| CP1E226007C0 |  | CB-P1 ; 2nd Fix, Cable Pulling (Exam- 2) | 48d | 2011-06-11 A | 2012-04-01 | CP1E209205C0 | 15% | 40.8d | 2011-06-11 | 2011-08-07 | 133.61d | 97.2d | ELECTRICAL [6616.8 h]; Cost [324578 AED] | 324,577.9 | 48,686.69 | CP1E226007C0 | CB | C | P1 | E2 | ME | 260 | 07 | BILL 4 | B04 | S1 | 2F | R00 | ACF07 | 260 |  |  |  |  |  |  |  | 169428.29 |  |  | MEP |  |  | 2n | 45 |  |  |  |
| CP1E226009C0 |  | CB-P1 ; 2nd Fix, Inst of Wall conduites (Exam- 2) | 30d | 2011-06-11 A | 2011-12-08 | CP1E209201C0 | 10% | 27d | 2011-06-11 | 2011-07-17 | 28.41d | 1.8d | ELECTRICAL [430.8 h]; Cost [29580.4 AED] | 29,580.43 | 2,958.04 | CP1E226009C0 | CB | C | P1 | E2 | ME | 260 | 09 | BILL 4 | B04 | S1 | 2F | R00 | ACF07 | 260 | 0 | 0 | 0 | 0 |  |  |  | 3429.57 | 50 | 10 | MEP |  |  | 2n | 10 |  |  |  |
| CP1E223009C0 |  | CB-P1 ; 2nd Fix, Inst of VAV'S CHW connection (Exam- 2) | 48d | 2011-07-06 A | 2012-01-03 | CP1E223017C0 | 60% | 19.2d | 2011-08-25 | 2011-10-23 | 72.66d | 0d | MECHANICAL [1419.6 h]; Cost [76659.7 AED] | 76,659.7 | 45,995.82 | CP1E223009C0 | CB | C | P1 | E2 | ME | 230 | 09 | BILL 4 | B04 | S1 | 2F | R00 | ACF07 | 230 | 0 | 0 | 0 | 0 |  |  |  |  | 40 | 15 | MEP |  |  | 2n |  |  |  |  |
| CP1E222011C0 |  | CB-P1 ; 2nd Fix, Drainage/Water pipe (wall) (Exam- 2) | 60d | 2011-08-10 A | 2011-12-05 | CP1E209201C0, CAFCI09201R20 FS+58d | 60% | 24d | 2011-10-27 | 2012-01-11 | 31.41d | 4.8d | PLUMBING [1714.8 h]; Cost [92715.9 AED] | 92,715.95 | 55,629.57 | CP1E222011C0 | CB | C | P1 | E2 | ME | 220 | 11 | BILL 4 | B04 | S1 | 2F | R00 | ACF07 | 220 |  |  |  |  |  |  |  |  | 60 | 0 | MEP |  |  | 2n |  |  |  |  |
| CP1E205503C0 |  | CB-P1 ; Ceiling Support for medical equipment (Exam- 2) | 15d | 2011-09-05 A | 2011-11-17 | CP1E209201C0 | 25% | 11.25d | 2011-10-24 | 2011-11-14 | 32.16d | 0d | SECONDARY STEEL [159 h]; Cost |  |  | CP1E205503C0 | CB | C | P1 | E2 | SW | 055 | 03 | BILL 4 | B04 | S1 | 03 | R00 | ACF03 | b |  |  |  |  | 335 | 962 |  |  |  |  |  |  |  |  |  |  |  |  |
| CP1E205511C0 |  | CB-P1 ; Wall reinforcement for MEP/Medical (Exam- 2) | 24d | 2011-11-01 | 2011-12-05 | CP1E209201C0 |  |  |  |  | 37.41d | 10.8d | SECONDARY STEEL [57 h]; Cost |  |  | CP1E205511C0 | CB | C | P1 | E2 | SW | 055 | 11 | BILL 4 | B04 | S1 | 03 | R00 | ACF03 | b |  |  |  |  |  |  |  |  |  |  |  |  |  |  |  |  |  |  |
| CP1E208103C0 |  | CB-P1 ; Door Frames (Exam- 2) | 42d | 2011-11-01 | 2011-12-26 | CP1E209201C0, GNHE08101C0 |  |  |  |  | 67.41d | 40.8d | ASSORTED DOORS [258 h]; Cost |  |  | CP1E208103C0 | CB | C | P1 | E2 | DO | 081 | 03 | BILL 4 | B04 | S1 | DF | R00 | ACF06 | 081 |  |  |  |  | 316 | 947 |  |  |  |  |  |  |  |  |  | 08 |  |  |
| CP1E201005C0 |  | CB-P1 ; 2nd, Wall Inspection by Consultant (Exam- 2) | 6d | 2011-12-11 | 2011-12-18 | CP1E222011C0, CP1E222015C0, CP1E226009C0 |  |  |  |  | 26.61d | 0d | Labor General [0.6 h]; Cost |  |  | CP1E201005C0 | CB | C | P1 | E2 | ME | 010 | 05 | BILL 4 | B04 | S1 | WI | R00 | ACF07 | 010 |  |  |  |  |  |  |  |  |  |  | MEP |  |  | 2n |  |  |  |  |
| CP1E227001C0 |  | CB-P1 ; 1st Fix, Wiring/ Cabling work (Exam- 2) | 48d | 2011-12-13 | 2012-02-09 | CP1E226001C0, CP1E226013C0, CP1E227010C0 |  |  |  |  | 30.25d | 3.64d | ELECTRICAL [216 h]; Cost |  |  | CP1E227001C0 | CB | C | P1 | E2 | ME | 270 | 01 | BILL 4 | B04 | S1 | 1F | R00 | ACF04 | 270 |  |  |  |  |  |  |  | 10796.08 |  |  | MEP | M1F |  | 1S | 60 |  |  |  |
| CP1E209205C0 |  | CB-P1 ; Partitions Closing (Exam- 2) | 48d | 2011-12-18 | 2012-02-14 | CP1E201005C0, CP1E205511C0, CP1E209203C0, CP1E222005C0, CP1E222007C0, CP1E222019C0, CAFOA09204C1 FF, CP1E208103C0 FF, CP1E223008C0 FF, CP1E227001C0 FF, CAFCI09201R20 FS+58d |  |  |  |  | 26.61d | 0d | PARTITIONS [646 m]; PARTITIONS [3942 h]; Cost |  |  | CP1E209205C0 | CB | C | P1 | E2 | PT | 092 | 05 | BILL 4 | B04 | S1 | FF | R00 | ACF06 | 092 |  |  |  |  | 315 | 946 |  |  |  |  | GP | P2F | R3 |  |  |  |  |  |
| CP1E207103C0 |  | CB-P1 ; Waterproofing (Exam- 2) | 12d | 2012-02-14 | 2012-02-28 | CP1E208103C0, CP1E209205C0 |  |  |  |  | 154.41d | 0d | THERMAL & MOISTURE [216 h]; THERMAL & MOISTURE [1418 m2]; Cost |  |  | CP1E207103C0 | CB | C | P1 | E2 | FF | 071 | 03 | BILL 4 | B04 | S1 | 01 | R00 | ACF03 | 071 |  |  |  |  | 105 | 999 |  |  |  |  |  |  |  |  |  |  |  |  |
| CP1E209901C0 |  | CB-P1 ; Wall Prime & 1st coat (Exam- 2) | 24d | 2012-02-14 | 2012-03-13 | CP1E209205C0 |  |  |  |  | 26.61d | 0d | WALL PAINT [1556 h]; WALL PAINT [1941 m2]; Cost |  |  | CP1E209901C0 | CB | C | P1 | E2 | PA | 099 | 01 | BILL 4 | B04 | S1 | 01 | R00 | ACF06 | 099 |  |  |  |  | 328 | 956 |  |  |  |  |  |  |  |  |  |  |  |  |
| CP1E226005C0 |  | CB-P1 ; 2nd Fix, Wiring for Power/Lighting/Emergency (Exam- 2) | 42d | 2012-02-14 | 2012-04-03 | CP1E209205C0 |  |  |  |  | 84.41d | 18d | ELECTRICAL [216 h]; Cost |  |  | CP1E226005C0 | CB | C | P1 | E2 | ME | 260 | 05 | BILL 4 | B04 | S1 | 2F | R00 | ACF07 | 260 |  |  |  |  |  |  |  |  |  |  | MEP |  |  | 2n |  |  |  |  |
| CP1E226011C0 |  | CB-P1 ; 2nd Fix, Inst of Equipment (DB) (Exam- 2) | 42d | 2012-02-14 | 2012-04-03 | CP1E209205C0 |  |  |  |  | 44.61d | 18d | ELECTRICAL [1266 h]; Cost |  |  | CP1E226011C0 | CB | C | P1 | E2 | ME | 260 | 11 | BILL 4 | B04 | S1 | 2F | R00 | ACF04 | 260 |  |  |  |  |  |  |  |  |  |  | MEP |  |  | 2n |  |  | E |  |
| CP1E226053C0 |  | CB-P1 ; 2nd Fix, Wiring / Cabling (Exam- 2) | 30d | 2012-02-14 | 2012-03-20 | CP1E209205C0 |  |  |  |  | 150.41d | 120d | ELECTRICAL [216 h]; Cost |  |  | CP1E226053C0 | CB | C | P1 | E2 | ME | 260 | 53 | BILL 4 | B04 | S1 | 2F | R00 | ACF07 | 260 |  |  |  |  | 389 | 977 |  |  |  |  | MEP |  |  | 2n |  |  |  |  |
| CP1E227020C0 |  | CB-P1 ; 2nd Fix, Inst of ELV Equipment (Panels) (Exam- 2) | 42d | 2012-02-14 | 2012-04-03 | CP1E209205C0 |  |  |  |  | 78.41d | 48d | ELECTRICAL [384 h]; Cost |  |  | CP1E227020C0 | CB | C | P1 | E2 | ME | 270 | 20 | BILL 4 | B04 | S1 | 2F | R00 | ACF04 | 270 |  |  |  |  |  |  |  |  |  |  | MEP |  |  | 2n |  |  | E |  |
| CP1E209305C0 |  | CB-P1 ; Ceramic floor tile (Exam- 2) | 32d | 2012-02-28 | 2012-04-05 | CP1E207103C0 |  |  |  |  | 154.41d | 124d | CERAMIC FLOOR TILES [264 h]; CERAMIC FLOOR TILES [143 m2]; Cost |  |  | CP1E209305C0 | CB | C | P1 | E2 | FF | 093 | 05 | BILL 4 | B04 | S1 | 02 | R00 | ACF06 | CT |  |  |  |  | 106 | 1000 |  |  |  |  |  |  |  |  |  |  |  |  |
| CP1E205501C0 |  | CB-P1 ; Handrails & balustrade (Exam- 2) | 36d | 2012-03-13 | 2012-04-24 | CP1E209901C0 |  |  |  |  | 60.41d | 30d | SECONDARY STEEL [336 h]; Cost |  |  | CP1E205501C0 | CB | C | P1 | E2 | SW | 055 | 01 | BILL 4 | B04 | S1 | 01 | R00 | ACF03 | a |  |  |  |  |  |  |  |  |  |  |  |  |  |  |  |  |  |  |
| CP1E209501C0 |  | CB-P1 ; Ceiling Grid and Ceiling Tile (Exam- 2) | 36d | 2012-03-13 | 2012-04-24 | CP1E205503C0, CP1E209205C0 SS+15d, CP1E221117C0, CP1E223008C0, CP1E223009C0, CP1E223015C0, CP1E227001C0, CAFCI22001R02 FS+65d, CP1E226011C0 FF, CP1E209901C0 |  |  |  |  | 26.61d | 0d | CEILING GRID FOR GYPSUM [2951.22 h]; CEILING GRID FOR GYPSUM [252.49 m2]; Cost |  |  | CP1E209501C0 | CB | C | P1 | E2 | CE | 095 | 01 | BILL 4 | B04 | S1 | 01 | R00 | ACF06 | 095 |  |  |  |  | 323 | 952 |  |  |  |  |  |  |  |  |  |  |  |  |
| CP1E209601C0 |  | CB-P1 ; Flooring (Rubber & etc) (Exam- 2) | 30d | 2012-04-24 | 2012-05-29 | CP1E209901C0, CP1E209501C0, CP1E227020C0 FF, CP1E205501C0 FF |  |  |  |  | 30.41d | 0d | RUBBER FLOOR [288 h]; RUBBER FLOOR [713 m2]; Cost |  |  | CP1E209601C0 | CB | C | P1 | E2 | FF | 096 | 01 | BILL 4 | B04 | S1 | 03 | R00 | ACF06 | RF |  |  |  |  | 326 | 955 |  |  |  |  |  |  |  |  |  |  |  | R3 |
| CP1E221115C0 |  | CB-P1 ; 2nd Fix, Inst of Sprinkler droppers (Exam- 2) | 30d | 2012-04-24 | 2012-05-29 | CP1E209501C0 |  |  |  |  | 36.41d | 0d | MECHANICAL [1404 h]; Cost |  |  | CP1E221115C0 | CB | C | P1 | E2 | ME | 211 | 15 | BILL 4 | B04 | S1 | 2F | R00 | ACF07 | 211 |  |  |  |  |  |  |  |  |  |  | MEP |  |  | 2n |  |  |  |  |
| CP1E223021C0 |  | CB-P1 ; 2nd Fix, Inst of Flexible Duct & Plenum boxes (Exam- 2) | 24d | 2012-04-24 | 2012-05-22 | CP1E209205C0, CP1E209501C0 |  |  |  |  | 42.41d | 0d | MECHANICAL [903.6 h]; Cost |  |  | CP1E223021C0 | CB | C | P1 | E2 | ME | 230 | 21 | BILL 4 | B04 | S1 | 2F | R00 | ACF07 | 230 |  |  |  |  |  |  |  |  |  |  | MEP |  |  | 2n |  |  |  |  |
| CP1E226015C0 |  | CB-P1 ; Final Fix, Termination & Gladding of Cables (Exam- 2) | 48d | 2012-04-24 | 2012-06-20 | CP1E226005C0, CP1E209501C0 |  |  |  |  | 66.41d | 30d | ELECTRICAL [826.8 h]; Cost |  |  | CP1E226015C0 | CB | C | P1 | E2 | ME | 260 | 15 | BILL 4 | B04 | S1 | FF | R00 | ACF07 | 260 |  |  |  |  |  |  |  |  |  |  | MEP |  |  | FF |  |  |  |  |
| CP1E226017C0 |  | CB-P1 ; Final Fix, Inst of Ceiling rose (Exam- 2) | 48d | 2012-04-24 | 2012-06-20 | CP1E209501C0 |  |  |  |  | 60.41d | 0d | ELECTRICAL [123.6 h]; Cost |  |  | CP1E226017C0 | CB | C | P1 | E2 | ME | 260 | 17 | BILL 4 | B04 | S1 | FF | R00 | ACF07 | 260 |  |  |  |  |  |  |  |  |  |  | MEP |  |  | FF |  |  |  |  |
| CP1E227002C0 |  | CB-P1 ; 2nd Fix, Wiring Droppers (Exam- 2) | 42d | 2012-04-24 | 2012-06-12 | CP1E209501C0 |  |  |  |  | 60.41d | 0d | ELECTRICAL [216 h]; Cost |  |  | CP1E227002C0 | CB | C | P1 | E2 | ME | 270 | 02 | BILL 4 | B04 | S1 | 2F | R00 | ACF07 | 270 |  |  |  |  |  |  |  |  |  |  | MEP |  |  | 2n |  |  |  |  |
| CP1E226003C0 |  | CB-P1 ; Final Fix, Inst of Light fittings (Exam- 2) | 48d | 2012-05-01 | 2012-06-27 | CP1E226017C0 SS+6d |  |  |  |  | 60.41d | 24d | ELECTRICAL [7983.6 h]; Cost |  |  | CP1E226003C0 | CB | C | P1 | E2 | ME | 260 | 03 | BILL 4 | B04 | S1 | FF | R00 | ACF07 | 260 |  |  |  |  |  |  |  |  |  |  | MEP |  |  | FF |  |  |  |  |
| CP1E227030C0 |  | CB-P1 ; Final Fix, Inst of ELV device (Detector/Speaker) (Exam- 2) | 48d | 2012-05-01 | 2012-06-27 | CP1E209501C0, CP1E227002C0 SS+6d |  |  |  |  | 60.41d | 24d | ELECTRICAL [2054.4 h]; Cost |  |  | CP1E227030C0 | CB | C | P1 | E2 | ME | 270 | 30 | BILL 4 | B04 | S1 | FF | R00 | ACF07 | 270 |  |  |  |  |  |  |  |  |  |  | MEP |  |  | FF |  |  |  |  |
| CP1E223019C0 |  | CB-P1 ; Final Fix, Inst of Grilles & Diffusers (Exam- 2) | 48d | 2012-05-22 | 2012-07-18 | CP1E209501C0, CP1E223021C0 |  |  |  |  | 42.41d | 6d | MECHANICAL [1970.4 h]; Cost |  |  | CP1E223019C0 | CB | C | P1 | E2 | ME | 230 | 19 | BILL 4 | B04 | S1 | FF | R00 | ACF07 | 230 |  |  |  |  |  |  |  |  |  |  | MEP |  |  | FF |  |  |  |  |
| CP1E206101C0 |  | CB-P1 ; Wood / caseworks (Exam- 2) | 60d | 2012-05-29 | 2012-08-08 | CP1CO04403C0, CP1E209501C0, CP1E209901C0, CP1CO04405C0, CAFWA00113M0, CP1E209601C0 |  |  |  |  | 30.41d | 0d | WOOD WORK/CASEWORK [1506.03 no]; WOOD WORK/CASEWORK [6137 h]; Cost |  |  | CP1E206101C0 | CB | C | P1 | E2 | WO | 061 | 01 | BILL 4 | B04 | S1 | WW | R00 | ACF06 | 061 |  |  |  |  | 332 | 960 |  |  |  |  |  |  |  |  |  |  |  |  |
| CP1E206102C0 |  | CB-P1 ; Head Wall (Exam- 2) | 29.88d | 2012-05-29 | 2012-07-04 | CP1CO04403C0, CP1E209501C0, OGNMU00031S0, CP1E206101C0 SS, CAFWA00113M0 |  |  |  |  | 60.54d | 30.12d | WOOD WORK/CASEWORK [2914 h]; Cost |  |  | CP1E206102C0 | CB | C | P1 | E2 | WO | 061 | 02 | BILL 4 | B04 | S1 | WW | R00 | ACF06 | 061 |  |  |  |  | 332 | 960 |  |  |  |  |  |  |  |  |  |  |  |  |
| CP1E208107C0 |  | CB-P1 ; Doors (Exam- 2) | 42d | 2012-05-29 | 2012-07-18 | CP1E208103C0, CP1E209901C0, CP1E209601C0 |  |  |  |  | 60.41d | 0d | ASSORTED DOORS [880 h]; ASSORTED DOORS [88 no]; Cost |  |  | CP1E208107C0 | CB | C | P1 | E2 | DO | 081 | 07 | BILL 4 | B04 | S1 | DR | R00 | ACF06 | 081 |  |  |  |  | 317 | 948 |  |  |  |  |  |  |  |  |  | 08 |  |  |
| CP1E209701C0 |  | CB-P1 ; Wall finishes (ST, WD, WC) (Exam- 2) | 36d | 2012-05-29 | 2012-07-11 | CP1E227020C0 FF, CAFCI22001R02 FS+164d, CP1E206101C0 SS |  |  |  |  | 54.41d | 0d | ASSORTED WALL FINISH [1077 h]; ASSORTED WALL FINISH [1238 m2]; Cost |  |  | CP1E209701C0 | CB | C | P1 | E2 | WF | 097 | 01 | BILL 4 | B04 | S1 | 01 | R00 | ACF06 | 097 |  |  |  |  | 105 | 1002 |  |  |  |  |  |  |  |  |  |  |  |  |
| CP1E209903C0 |  | CB-P1 ; Wall Final Paint (Exam- 2) | 36d | 2012-05-29 | 2012-07-11 | CP1E209901C0, CP1E209905C0 |  |  |  |  | 96.41d | 66d | WALL PAINT [838 h]; WALL PAINT [1045 m2]; Cost |  |  | CP1E209903C0 | CB | C | P1 | E2 | PA | 099 | 03 | BILL 4 | B04 | S1 | 02 | R00 | ACF06 | 099 |  |  |  |  | 329 | 957 |  |  |  |  |  |  |  |  |  |  |  |  |
| CP1E209905C0 |  | CB-P1 ; Ceiling Prime & 1st coat (Exam- 2) | 0d | 2012-05-29 | 2012-05-29 | CP1E209501C0, CP1E209601C0 |  |  |  |  | 96.41d | 0d | Cost |  |  | CP1E209905C0 | CB | C | P1 | E2 | PA | 099 | 05 | BILL 4 | B04 | S1 | 01 | R00 | ACF06 | 099 |  |  |  |  | 330 | 958 |  |  |  |  |  |  |  |  |  |  |  |  |
| CP1E211005C0 |  | CB-P1 ; Utility belt (Exam- 2) | 30d | 2012-05-29 | 2012-07-04 | CP1E206101C0 SS, CP1E209205C0 |  |  |  |  | 36.41d | 0d | FF&E [595 h]; FF&E [316.94 no]; Cost |  |  | CP1E211005C0 | CB | C | P1 | E2 | WO | 110 | 05 | BILL 4 | B04 | S1 | 05 | R00 | ACF08 | e |  |  |  |  |  |  |  |  |  |  |  |  |  |  |  |  |  |  |
| CP1E221113C0 |  | CB-P1 ; Final Fix, Inst of Sprinklers head/ Extinguisher (Exam- 2) | 48d | 2012-05-29 | 2012-07-25 | CP1E209501C0, CP1E221115C0 |  |  |  |  | 36.41d | 0d | MECHANICAL [278.4 h]; Cost |  |  | CP1E221113C0 | CB | C | P1 | E2 | ME | 211 | 13 | BILL 4 | B04 | S1 | FF | R00 | ACF07 | 211 |  |  |  |  |  |  |  |  |  |  | MEP |  |  | FF |  |  |  |  |
| CP1E222029C0 |  | CB-P1 ; Final Fix, Medical Gas pipe (Exam- 2) | 18d | 2012-07-04 | 2012-07-25 | CP1E209501C0, CP1E222015C0, CP1E211005C0 |  |  |  |  | 36.41d | 0d | PLUMBING [504 h]; Cost |  |  | CP1E222029C0 | CB | C | P1 | E2 | ME | 220 | 29 | BILL 4 | B04 | S1 | FF | R00 | ACF07 | 220 |  |  |  |  |  |  |  |  |  |  | MEP |  |  | FF |  |  |  |  |
| CP1E211001C0 |  | CB-P1 ; Wall Protection (WP, CG, WG, FCG) (Exam- 2) | 24d | 2012-07-11 | 2012-08-08 | CP1E209701C0 |  |  |  |  | 72.41d | 42d | FF&E [46 h]; Cost |  |  | CP1E211001C0 | CB | C | P1 | E2 | WF | 110 | 01 | BILL 4 | B04 | S1 | 03 | R00 | ACF08 | b |  |  |  |  | 326 | 1001 |  |  |  |  |  |  |  |  |  |  |  |  |
| CP1E208709C0 |  | CB-P1 ; Ironmongery (Exam- 2) | 30d | 2012-07-18 | 2012-08-25 | CP1E208107C0 |  |  |  |  | 60.41d | 30d | IRONMONGERY [590 h]; IRONMONGERY [59 no]; Cost |  |  | CP1E208709C0 | CB | C | P1 | E2 | DO | 087 | 09 | BILL 4 | B04 | S1 | IM | R00 | ACF06 | 087 |  |  |  |  | 322 | 951 |  |  |  |  |  |  |  |  |  | 08 |  |  |
| CP1E201006C0 |  | CB-P1 ; 2nd, Ceiling Inspection by Consultants (Exam- 2) | 6d | 2012-07-25 | 2012-08-01 | CP1E221115C0, CP1E223009C0, CP1E223015C0, CP1E223021C0, CP1E227002C0, CP1E209501C0, CP1E221113C0, CP1E222029C0, CP1E223019C0, CP1E227030C0, CP1E226003C0, CP1E226015C0, CP1E226017C0, CP1E226007C0 |  |  |  |  | 36.41d | 6d | Labor General [0.6 h]; Cost |  |  | CP1E201006C0 | CB | C | P1 | E2 | ME | 010 | 06 | BILL 4 | B04 | S1 | CI | R00 | ACF07 | 010 |  |  |  |  |  |  |  |  |  |  | MEP |  |  | 2n |  |  |  |  |
| CP1E209503C0 |  | CB-P1 ; Ceiling closure - ACT/Gypsum (Exam- 2) | 18d | 2012-08-08 | 2012-09-01 | CAFOA09503C1 FF, CP1E201006C0, CP1E221115C0, CP1E223021C0, CP1E226005C0, CP1E227002C0, CP1E206101C0, CP1E209701C0, CP1E226053C0, CP1E206102C0 |  |  |  |  | 30.41d | 0d | ASSORTED CEILING FINISH [563.34 h]; CEILING GYPSUM [82.82 h]; ASSORTED CEILING FINISH [916 m2]; CEILING GYPSUM [231 m2]; Cost |  |  | CP1E209503C0 | CB | C | P1 | E2 | CE | 095 | 03 | BILL 4 | B04 | S1 | 02 | R00 | ACF06 | 095 |  |  |  |  | 324 | 953 |  |  |  |  |  |  |  |  |  |  |  |  |
| CP1E211003C0 |  | CB-P1 ; FF & E (Exam- 2) | 24d | 2012-08-08 | 2012-09-08 | CP1E209601C0, CP1E206101C0 |  |  |  |  | 48.41d | 18d | FF&E [149 h]; FF&E [79.18 no]; Cost |  |  | CP1E211003C0 | CB | C | P1 | E2 | WO | 110 | 03 | BILL 4 | B04 | S1 | 04 | R00 | ACF08 | a |  |  |  |  | 333 | 961 |  |  |  |  |  |  |  |  |  |  |  |  |
| CP1E209671C1 |  | CB-P1, Carpet Tile Finish (Exam-2) | 0d | 2012-09-01 | 2012-09-01 | CP1E209907C0 SS |  |  |  |  | 52.56d | 37.62d | Cost |  |  |  | CB | C | P1 | E2 | FF | 096 |  |  | B04 |  |  | R00 | ACF06 | CPT |  |  |  |  |  |  |  |  |  |  | CPT |  |  |  |  |  |  |  |
| CP1E209907C0 |  | CB-P1 ; Ceiling Final paint (Exam- 2) | 0d | 2012-09-01 | 2012-09-01 | CP1E209601C0, CP1E209905C0, CP1E209503C0 |  |  |  |  | 52.56d | 0d | Cost |  |  | CP1E209907C0 | CB | C | P1 | E2 | PA | 099 | 07 | BILL 4 | B04 | S1 | 02 | R00 | ACF06 | 099 |  |  |  |  | 331 | 959 |  |  |  |  |  |  |  |  |  |  |  |  |
| CP1E222021C0 |  | CB-P1 ; Final Fix, Terminate Sanitary Ware & Appliances (Exam- 2) | 12d | 2012-09-01 | 2012-09-15 | CP1E222011C0, CP1E222025C0 SS, CP1E223001C0 |  |  |  |  | 30.41d | 0d | PLUMBING [1491.6 h]; Cost |  |  | CP1E222021C0 | CB | C | P1 | E2 | ME | 220 | 21 | BILL 4 | B04 | S1 | FF | R00 | ACF07 | 220 |  |  |  |  |  |  |  |  |  |  | MEP |  |  | FF |  |  |  |  |
| CP1E222025C0 |  | CB-P1 ; Final Fix, Inst of Sanitary Ware (Exam- 2) | 12d | 2012-09-01 | 2012-09-15 | CP1E209205C0, CP1E209305C0, A10230 FS+148d, CP1E209503C0 |  |  |  |  | 30.41d | 0d | PLUMBING [1491.6 h]; Cost |  |  | CP1E222025C0 | CB | C | P1 | E2 | ME | 220 | 25 | BILL 4 | B04 | S1 | FF | R00 | ACF07 | 220 |  |  |  |  |  |  |  |  |  |  | MEP |  |  | FF |  |  |  |  |
| CP1E222027C0 |  | CB-P1 ; Final Fix, Inst of All drain (Exam- 2) | 12d | 2012-09-01 | 2012-09-15 | CP1E209305C0, CP1E209503C0 |  |  |  |  | 30.41d | 0d | PLUMBING [1491.6 h]; Cost |  |  | CP1E222027C0 | CB | C | P1 | E2 | ME | 220 | 27 | BILL 4 | B04 | S1 | FF | R00 | ACF07 | 220 |  |  |  |  |  |  |  |  |  |  | MEP |  |  | FF |  |  |  |  |
| CP1E226019C0 |  | CB-P1 ; Final Fix, Inst of Switch/Sockets (Exam- 2) | 12d | 2012-09-01 | 2012-09-15 | CP1E209901C0, CP1E209503C0 |  |  |  |  | 30.41d | 0d | ELECTRICAL [427.2 h]; Cost |  |  | CP1E226019C0 | CB | C | P1 | E2 | ME | 260 | 19 | BILL 4 | B04 | S1 | FF | R00 | ACF07 | 260 |  |  |  |  |  |  |  |  |  |  | MEP |  |  | FF |  |  |  |  |

| ID | WBS | Activity | Duration | Start | Finish | Predecessors | Complete | Remaining | Planned start | Planned finish | Total float | Free float | Resources | Cost | Actual cost | change id | CCAD BUILDING(SET) | CCAD PHASE(SET) | CCAD FLOOR(SET) | CCAD ZONE(SET) | CCAD WORK(SET) | CCAD SECTION(SET) | CCAD SERIAL No.(SET) | CCAD CBS(SET) | CCAD BILL(SET) | CCAD HANDOVER(SET) | CCAD TAG(SET) | CCAD REV(SET) | CCADACF (SET) | CCAD SSCF | RENZ % COMPLETE | July2011 Target% Complete | CCAD SUB ZONE MEP(SET) | CCAD CSA | Act Selector % | Claimed This Month | P_811 | P_711 | user_number8 | user_integer1 | user_integer2 | user_number7 | Change Order # | NEW ACTIVITY ID | CCAD DIVISION(SET) | CCAD MEQ | R3 Finish |
| --- | --- | --- | --- | --- | --- | --- | --- | --- | --- | --- | --- | --- | --- | --- | --- | --- | --- | --- | --- | --- | --- | --- | --- | --- | --- | --- | --- | --- | --- | --- | --- | --- | --- | --- | --- | --- | --- | --- | --- | --- | --- | --- | --- | --- | --- | --- | --- |
|  | 10 | **Precommissioning Tesing & snagging ( Exam 2)** |  | 2012-09-15 | 2012-10-24 |  |  |  |  |  |  |  |  |  |  |  |  |  |  |  |  |  |  |  |  |  |  |  |  |  |  |  |  |  |  |  |  |  |  |  |  |  |  |  |  |  |  |
| CP1TS01804C0 |  | CB-P1 ; MEP de-snag, FIREM sign-off | 12d | 2012-09-15 | 2012-09-29 | CP1E226015C0, CP1E222025C0, CP1E222027C0, CP1E221113C0, CP1E223019C0, CP1E222029C0, CP1E226017C0, CP1E226003C0, CP1E227030C0, CP1E222021C0, CP1E226019C0, CP1E211005C0 |  |  |  |  | 30.41d | 0d | TESTING & COMMISSIONING [1020 h]; Cost |  |  | CP1TS01801C0 | CB | C | P1 | TS | SC | 018 | 01 | BILL 4 | B04 | S1 | 01 | R00 | ACF07 | 018 |  |  |  |  |  |  |  |  |  |  |  |  |  |  |  |  |  |
| CP1TS01807C0 |  | CB-P1 ; Touch-up & Clean / JV inspection /CIR /De-snag | 15.45d | 2012-09-29 | 2012-10-16 | CP1E205501C0, CP1E205511C0, CP1E206101C0, CP1E206102C0, CP1E208709C0, CP1E209305C0, CP1E209601C0, CP1E209701C0, CP1E209903C0, CP1E209907C0, CP1E211001C0, CP1E211003C0, CP1TS01804C0, CP1E209503C0 |  |  |  |  | 30.41d | 0d | TESTING & COMMISSIONING [149 h]; Cost |  |  | CP1TS01802C0 | CB | C | P1 | TS | SC | 018 | 02 | BILL 4 | B04 | S1 | 02 | R00 | ACF07 | 018 |  |  |  |  |  |  |  |  |  |  |  |  |  |  |  |  |  |
| CP1TS01810C0 |  | CB-P1 ; Consultant's final de-snag inspection | 7d | 2012-10-16 | 2012-10-24 | CP1TS01807C0 |  |  |  |  | 30.41d | 23.09d | Labor General [1 h]; Cost |  |  | CP1TS01803C0 | CB | C | P1 | TS | SC | 018 | 03 | BILL 4 | B04 | S1 | 03 | R00 | ACF07 | 018 |  |  |  |  |  |  |  |  |  |  |  |  |  |  |  |  |  |
|  | 04 | **Public Area( Elev.Lobby & Corridors )** |  | 2011-01-24 | 2012-11-05 |  |  |  |  |  |  |  |  |  |  |  |  |  |  |  |  |  |  |  |  |  |  |  |  |  |  |  |  |  |  |  |  |  |  |  |  |  |  |  |  |  |  |
| CP1PA22005C0 |  | CB-P1 ; 1st Fix, Inst of Water supply pipe (ceiling) (Public Area) | 75d | 2011-01-24 A | 2011-11-10 | CP1PA22019C0 SS+10d, CP1PA23001C0, CP1S107807C0, CP1S207808C0 | 60% | 30d | 2011-05-07 | 2011-08-02 | 68.05d | 0d | PLUMBING [1682.4 h]; Cost [90924.8 AED] | 90,924.75 | 54,554.85 | CP1PA22005C0 | CB | C | P1 | PA | ME | 220 | 05 | BILL 4 | B04 | S1 | 1F | R00 | ACF04 | 220 | 55 | 60 | 1S | MEP | M1F |  |  |  |  |  |  |  |  |  |  |  |  |
| CP1PA23001C0 |  | CB-P1 ; 1st Fix, Inst. of Supports for MEP (Public Area) | 27d | 2011-02-03 A | 2011-10-03 | CGLS103335C0, CGLS203335C0, CP1S107807C0, CP1S207808C0 | 90% | 2.7d | 2011-02-16 | 2011-03-19 | 22.63d | 0d | MECHANICAL [1024.8 h]; Cost [57766.2 AED] | 57,766.25 | 51,989.63 | CP1PA23001C0 | CB | C | P1 | PA | ME | 230 | 01 | BILL 4 | B04 | S1 | 1F | R00 | ACF04 | 230 | 100 |  | 1S | MEP | M1F |  |  |  |  |  |  |  |  |  |  |  |  |
| CP1PA22019C0 |  | CB-P1 ; 1st Fix, Inst of Drainage pipe (ceiling) (Public Area) | 200d | 2011-02-06 A | 2011-10-08 | CP1PA23001C0, CP1PA26013C0 SS+10d, CP1S107807C0, CP1S107807C0 FF, CP1S207808C0, CP1S207808C0 FF | 98% | 4d | 2011-04-25 | 2011-12-22 | 68.05d | 0d | PLUMBING [1714.8 h]; Cost [92715.9 AED] | 92,715.95 | 90,861.63 | CP1PA22019C0 | CB | C | P1 | PA | ME | 220 | 19 | BILL 4 | B04 | S1 | 1F | R00 | ACF04 | 220 | 85 | 98 | 1S | MEP | M1F | 10743.1 |  |  |  |  |  |  |  |  |  |  |  |
| CP1PA21111C0 |  | CB-P1 ; 1st Fix, Inst of Sprinkler main pipe (Public Area) | 44d | 2011-02-08 A | 2011-10-05 | CP1PA22005C0 SS+12d, CP1PA23001C0, CP1S107807C0, CP1S207808C0 | 95% | 2.2d | 2011-05-21 | 2011-07-11 | 75.55d | 0d | MECHANICAL [686.4 h]; Cost [37438.4 AED] | 37,438.4 | 35,566.48 | CP1PA21111C0 | CB | C | P1 | PA | ME | 211 | 11 | BILL 4 | B04 | S1 | 1F | R00 | ACF04 | 211 | 95 |  | 1S | MEP | M1F | 2172.43 |  |  |  |  |  |  |  |  |  |  |  |
| CP1PA26001C0 |  | CB-P1 ; 1st Fix, Inst of Trunking/Conduiting (Public Area) | 90d | 2011-02-19 A | 2011-11-17 | CP1PA23001C0, CP1S107807C0, CP1S207808C0 | 60% | 36d | 2011-03-20 | 2011-07-03 | 54.55d | 0d | ELECTRICAL [430.8 h]; Cost [29580.4 AED] | 29,580.43 | 17,748.26 | CP1PA26001C0 | CB | C | P1 | PA | ME | 260 | 01 | BILL 4 | B04 | S1 | 1F | R00 | ACF04 | 260 | 70 | 98 | 1S | MEP | M1F |  | 98 | 80 |  |  |  |  |  |  |  |  |  |
| CP1PA26013C0 |  | CB-P1 ; 1st Fix, Inst of Cable Tray (Public Area) | 120d | 2011-02-19 A | 2011-11-17 | CP1PA23001C0, CP1PA27010C0 SS+7d, CP1S107807C0, CP1S207808C0 | 70% | 36d | 2011-04-13 | 2011-09-03 | 68.05d | 0d | ELECTRICAL [948 h]; Cost [17044 AED] | 17,043.96 | 11,930.77 | CP1PA26013C0 | CB | C | P1 | PA | ME | 260 | 13 | BILL 4 | B04 | S1 | 1F | R00 | ACF04 | 260 | 70 | 96 | 1S | MEP | M1F |  | 95 | 80 |  |  |  |  |  |  |  |  |  |
| CP1PA27010C0 |  | CB-P1 ; 1st Fix, Inst of Trunking for ELV system (Public Area) | 90d | 2011-02-19 A | 2011-12-06 | CP1PA23001C0, CP1PA26001C0 SS+14d, CP1S107807C0, CP1S207808C0 | 45% | 49.5d | 2011-04-05 | 2011-07-19 | 54.55d | 0d | ELECTRICAL [457.2 h]; Cost [24667.9 AED] | 24,667.88 | 11,100.54 | CP1PA27010C0 | CB | C | P1 | PA | ME | 270 | 10 | BILL 4 | B04 | S1 | 1F | R00 | ACF04 | 270 | 55 | 96 | 1S | MEP | M1F |  | 93 | 80 |  |  |  |  |  |  |  |  |  |
| CP1PA09201C0 |  | CB-P1 ; Metal Studs (Public Area) | 84d | 2011-03-05 A | 2011-10-12 | CP1PA23001C0 SS+12d | 87% | 10.92d | 2011-03-10 | 2011-06-15 | 22.63d | 0d | PARTITIONS [3031 h]; PARTITIONS - Metal Studs [497 m]; Cost |  |  | CP1PA09201C0 | CB | C | P1 | PA | PT | 092 | 01 | BILL 4 | B04 | S1 | 1F | R00 | ACF06 | 092 | 60 |  |  | GP | PMS | 20065.7 | 85 | 80 | 0 | 0 | 0 | 0 | 313 | 944 |  |  |  |
| CP1PA21117C0 |  | CB-P1 ; 1st Fix, Inst of Sprinkler branch pipe (Public Area) | 53d | 2011-03-15 A | 2011-10-16 | CP1PA09201C0, CP1PA21111C0 | 95% | 2.65d | 2011-05-26 | 2011-07-28 | 183.18d | 160.55d | MECHANICAL [1009.2 h]; Cost [55153.8 AED] | 55,153.76 | 52,396.07 | CP1PA21117C0 | CB | C | P1 | PA | ME | 211 | 17 | BILL 4 | B04 | S1 | 1F | R00 | ACF04 | 211 | 95 |  | 1S | MEP | M1F | 3197.19 |  |  |  |  |  |  |  |  |  |  |  |
| CP1PA23023C0 |  | CB-P1 ; 1st Fix, Inst of Main Ducting (Public Area) | 200d | 2011-03-19 A | 2011-10-26 | CP1PA23001C0, CP1PA23017C0 SS+10d, CP1S107807C0, CP1S207808C0 | 90% | 20d | 2011-04-19 | 2011-12-18 | 78.05d | 0d | MECHANICAL [16992 h]; Cost [927678 AED] | 927,677.51 | 834,909.76 | CP1PA23023C0 | CB | C | P1 | PA | ME | 230 | 23 | BILL 4 | B04 | S1 | 1F | R00 | ACF04 | 230 | 90 | 90 | 1S | MEP | M1F |  |  |  |  |  |  |  |  |  |  |  |  |
| CP1PA09203C0 |  | CB-P1 ; Partitions 1st face (Public Area) | 54d | 2011-04-07 A | 2011-11-09 | CP1PA09201C0, CP1PA23023C0 FF, CP1PA23017C0 FF | 61% | 21.06d | 2011-03-24 | 2011-05-25 | 68.77d | 46.14d | PARTITIONS [497 m]; PARTITIONS [2369 h]; Cost |  |  | CP1PA09203C0 | CB | C | P1 | PA | PT | 092 | 03 | BILL 4 | B04 | S1 | 2F | R00 | ACF06 | 092 | 15 |  |  | GP | P1F | 42138 | 50 | 34 | 0 | 0 | 0 | 0 | 314 | 945 |  |  |  |
| CP1PA23017C0 |  | CB-P1 ; 1st Fix, Inst of CHW pipe (Public Area) | 150d | 2011-04-12 A | 2011-10-30 | CP1PA21111C0 SS+14d, CP1PA23001C0, CP1S107807C0, CP1S207808C0 | 85% | 22.5d | 2011-04-07 | 2011-10-03 | 75.55d | 0d | MECHANICAL [2395.2 h]; Cost [130782 AED] | 130,781.76 | 111,164.49 | CP1PA23017C0 | CB | C | P1 | PA | ME | 230 | 17 | BILL 4 | B04 | S1 | 1F | R00 | ACF04 | 230 | 55 | 75 | 1S | MEP | M1F | 7584.55 |  |  |  |  |  |  |  |  |  |  |  |
| CP1PA22011C0 |  | CB-P1 ; 2nd Fix, Drainage/Water pipe (wall) (Public Area) | 150d | 2011-04-14 A | 2011-11-20 | CP1PA09201C0 | 80% | 30d | 2011-03-17 | 2011-09-11 | 33.43d | 10.8d | PLUMBING [1714.8 h]; Cost [92715.9 AED] | 92,715.95 | 74,172.76 | CP1PA22011C0 | CB | C | P1 | PA | ME | 220 | 11 | BILL 4 | B04 | S1 | 2F | R00 | ACF07 | 220 | 65 | 85 | 2n | MEP |  | 10743.1 | 80 | 75 |  |  |  |  |  |  |  |  |  |
| CP1PA01005C0 |  | CB-P1 ; 2nd, Wall Inspection by Consultant (Public Area) | 48d | 2011-05-15 A | 2012-01-07 | CP1PA22011C0, CP1PA26007C0, CP1PA26009C0, CP1PA40302C0 | 45% | 26.4d | 2011-07-27 | 2011-09-22 | 22.63d | 0d | Labor General [0.6 h]; Cost |  |  | CP1PA01005C0 | CB | C | P1 | PA | ME | 010 | 05 | BILL 4 | B04 | S1 | WI | R00 | ACF07 | 010 | 35 | 45 | 2n | MEP |  |  |  |  |  |  |  |  |  |  |  |  |  |
| CP1PA23008C0 |  | CB-P1 ; 1st Fix, Inst of VCD's/FD's (Public Area) | 90d | 2011-05-15 A | 2011-11-15 | CP1PA23023C0 | 85% | 13.5d | 2011-07-13 | 2011-10-27 | 124.55d | 101.92d | MECHANICAL [2648.4 h]; Cost [143058 AED] | 143,057.96 | 121,599.26 | CP1PA23008C0 | CB | C | P1 | PA | ME | 230 | 08 | BILL 4 | B04 | S1 | 1F | R00 | ACF04 | 230 | 30 | 45 | 1S | MEP | M1F |  | 65 | 45 | 0 | 0 | 0 | 0 |  |  |  |  |  |
| CP1PA40302C0 |  | CB-P1 ; 2nd Fix, Pneumatic tube (Public Area) | 72d | 2011-05-15 A | 2011-11-19 | CP1PA09201C0 | 60% | 28.8d | 2011-05-31 | 2011-08-23 | 34.63d | 12d | MECHANICAL [2661.6 h]; Cost [137402 AED] | 137,402.07 | 82,441.24 | CP1E140302C0 | CB | C | P1 | PA | ME | 403 | 02 | BILL 4 | B04 | S1 | 2F | R00 | ACF07 | 403 | 15 | 50 | 2n | MEP |  | 7969.34 | 60 | 50 |  |  |  |  |  |  |  |  |  |
| CP1PA26007C0 |  | CB-P1 ; 2nd Fix, Cable Pulling (Public Area) | 48d | 2011-05-31 A | 2011-11-17 | MGNMI00101M0 | 20% | 38.4d | 2011-05-31 | 2011-07-26 | 35.95d | 13.32d | ELECTRICAL [6616.8 h]; Cost [324578 AED] | 324,577.9 | 64,915.58 | CP1PA26007C0 | CB | C | P1 | PA | ME | 260 | 07 | BILL 4 | B04 | S1 | 2F | R00 | ACF07 | 260 |  | 35 | 2n | MEP |  |  |  |  |  |  |  |  |  |  |  |  |  |
| CP1PA26009C0 |  | CB-P1 ; 2nd Fix, Inst of Wall conduites (Public Area) | 48d | 2011-05-31 A | 2011-12-05 | CP1PA09201C0 | 15% | 40.8d | 2011-05-31 | 2011-07-26 | 22.63d | 0d | ELECTRICAL [430.8 h]; Cost [29580.4 AED] | 29,580.43 | 4,437.06 | CP1PA26009C0 | CB | C | P1 | PA | ME | 260 | 09 | BILL 4 | B04 | S1 | 2F | R00 | ACF07 | 260 |  | 25 | 2n | MEP |  |  | 50 | 25 | 0 | 0 | 0 | 0 |  |  |  |  |  |
| CP1PA23009C0 |  | CB-P1 ; 2nd Fix, Inst of VAV'S CHW connection (Public Area) | 72d | 2011-07-06 A | 2011-12-07 | CP1PA23017C0 | 60% | 28.8d | 2011-08-21 | 2011-11-17 | 106.75d | 0d | MECHANICAL [1419.6 h]; Cost [76659.7 AED] | 76,659.7 | 45,995.82 | CP1PA23009C0 | CB | C | P1 | PA | ME | 230 | 09 | BILL 4 | B04 | S1 | 2F | R00 | ACF07 | 230 |  | 25 | 2n | MEP |  |  | 60 | 15 |  |  |  |  |  |  |  |  |  |
| CP1PA23015C0 |  | CB-P1 ; 2nd Fix, Insulation of CHW pipe & Duct (Public Area) | 120d | 2011-07-10 A | 2011-12-01 | CP1PA23009C0 SS, CP1PA23017C0 SS, CP1PA23023C0 SS | 80% | 24d | 2011-08-25 | 2012-01-21 | 111.55d | 88.92d | MECHANICAL [6742.8 h]; Cost [363863 AED] | 363,863.22 | 291,090.57 | CP1PA23015C0 | CB | C | P1 | PA | ME | 230 | 15 | BILL 4 | B04 | S1 | 2F | R00 | ACF07 | 230 |  | 60 | 2n | MEP |  |  | 80 | 60 |  |  |  |  |  |  |  |  |  |
| CP1PA08103C0 |  | CB-P1 ; Door Frames (Public Area) | 42d | 2011-11-05 | 2011-12-29 | CP1PA09201C0 FS+20d, GNHE08101C0 |  |  |  |  | 27.83d | 5.2d | ASSORTED DOORS [193 h]; Cost |  |  | CP1PA08103C0 | CB | C | P1 | PA | DO | 081 | 03 | BILL 4 | B04 | S1 | DF | R00 | ACF06 | 081 |  |  |  |  |  |  |  |  |  |  |  |  | 316 | 947 | 08 |  |  |
| CP1PA27001C0 |  | CB-P1 ; 1st Fix, Wiring/ Cabling work (Public Area) | 54d | 2011-12-06 | 2012-02-09 | CP1PA26001C0, CP1PA26013C0, CP1PA27010C0 |  |  |  |  | 54.55d | 31.92d | ELECTRICAL [216 h]; Cost |  |  | CP1PA27001C0 | CB | C | P1 | PA | ME | 270 | 01 | BILL 4 | B04 | S1 | 1F | R00 | ACF04 | 270 |  | 20 | 1S | MEP | M1F | 4498.37 | 30 | 25 |  |  |  |  |  |  |  |  |  |
| CP1PA09205C0 |  | CB-P1 ; Partitions Closing (Public Area) | 60d | 2012-01-07 | 2012-03-18 | CP1PA01005C0, CP1PA09203C0, CP1PA22005C0, CP1PA22019C0, CAFOA09204C1 FF, CP1PA08103C0 FF, CP1PA23015C0 FF, CP1PA27001C0 FF, CP1PA23009C0 FF, CP1PA23008C0 FF, CP1PA08103C0 |  |  |  |  | 22.63d | 0d | PARTITIONS [497 m]; PARTITIONS [3020 h]; Cost |  |  | CP1PA09205C0 | CB | C | P1 | PA | PT | 092 | 05 | BILL 4 | B04 | S1 | FF | R00 | ACF06 | 092 |  |  |  | GP | P2F |  |  |  |  |  |  |  | 315 | 946 |  |  |  |
| CP1PA09901C0 |  | CB-P1 ; Wall Prime & 1st coat (Public Area) | 36d | 2012-03-18 | 2012-04-29 | CP1PA09205C0, CP1CO04455C0 FF |  |  |  |  | 22.63d | 0d | WALL PAINT [233 h]; WALL PAINT [290 m2]; Cost |  |  | CP1PA09901C0 | CB | C | P1 | PA | PA | 099 | 01 | BILL 4 | B04 | S1 | 01 | R00 | ACF06 | 099 |  |  |  |  |  |  |  |  |  |  |  |  | 328 | 956 |  |  |  |
| CP1PA26005C0 |  | CB-P1 ; 2nd Fix, Wiring for Power/Lighting/Emergency (Public Area) | 42d | 2012-03-18 | 2012-05-06 | CP1PA09205C0 |  |  |  |  | 52.63d | 0d | ELECTRICAL [216 h]; Cost |  |  | CP1PA26005C0 | CB | C | P1 | PA | ME | 260 | 05 | BILL 4 | B04 | S1 | 2F | R00 | ACF07 | 260 |  |  | 2n | MEP |  |  |  |  |  |  |  |  |  |  |  |  |  |
| CP1PA26011C0 |  | CB-P1 ; 2nd Fix, Inst of Equipment (DB) (Public Area) | 42d | 2012-03-18 | 2012-05-06 | CP1PA09205C0 |  |  |  |  | 40.63d | 18d | ELECTRICAL [1266 h]; Cost |  |  | CP1PA26011C0 | CB | C | P1 | PA | ME | 260 | 11 | BILL 4 | B04 | S1 | 2F | R00 | ACF04 | 260 |  |  | 2n | MEP |  |  |  |  |  |  |  |  |  |  |  | E |  |
| CP1PA26053C0 |  | CB-P1 ; 2nd Fix, Wiring / Cabling (Public Area) | 30d | 2012-03-18 | 2012-04-22 | CP1PA09205C0 |  |  |  |  | 118.63d | 96d | ELECTRICAL [216 h]; Cost |  |  | CP1PA26053C0 | CB | C | P1 | PA | ME | 260 | 53 | BILL 4 | B04 | S1 | 2F | R00 | ACF07 | 260 |  |  | 2n | MEP |  |  |  |  |  |  |  |  | 389 | 977 |  |  |  |
| CP1PA27020C0 |  | CB-P1 ; 2nd Fix, Inst of ELV Equipment (Panels) (Public Area) | 42d | 2012-03-18 | 2012-05-06 | CP1PA09205C0 |  |  |  |  | 76.63d | 54d | ELECTRICAL [384 h]; Cost |  |  | CP1PA27020C0 | CB | C | P1 | PA | ME | 270 | 20 | BILL 4 | B04 | S1 | 2F | R00 | ACF04 | 270 |  |  | 2n | MEP |  |  |  |  |  |  |  |  |  |  |  | E |  |
| CP1PA05501C0 |  | CB-P1 ; Handrails & balustrade (Public Area) | 36d | 2012-04-29 | 2012-06-10 | CP1PA09901C0, CAFT1405509C0, CAFT1505509C0, CAFT1105509C0, CAFT1205509C0 |  |  |  |  | 46.63d | 24d | SECONDARY STEEL [291 h]; Cost |  |  | CP1PA05501C0 | CB | C | P1 | PA | SW | 055 | 01 | BILL 4 | B04 | S1 | 01 | R00 | ACF03 | a |  |  |  |  |  |  |  |  |  |  |  |  |  |  |  |  |  |
| CP1PA09501C0 |  | CB-P1 ; Ceiling Grid and ServiceTile (Public Area) | 24d | 2012-04-29 | 2012-05-27 | CP1PA09205C0 SS+15d, CP1PA21117C0, CP1PA23008C0, CP1PA23009C0, CP1PA23015C0, CP1PA27001C0, CP1PA26011C0 FF, CP1E209501C0, CP1PA09901C0 |  |  |  |  | 22.63d | 0d | CEILING GRID FOR GYPSUM [2206.11 h]; CEILING GRID FOR GYPSUM [188.89 m2]; Cost |  |  | CP1PA09501C0 | CB | C | P1 | PA | CE | 095 | 01 | BILL 4 | B04 | S1 | 01 | R00 | ACF06 | 095 |  |  |  |  |  |  |  |  |  |  |  |  | 323 | 952 |  |  |  |
| CP1PA26015C0 |  | CB-P1 ; Final Fix, Termination & Gladding of Cables (Public Area) | 48d | 2012-05-06 | 2012-07-02 | CP1PA26005C0 |  |  |  |  | 52.63d | 25d | ELECTRICAL [826.8 h]; Cost |  |  | CP1PA26015C0 | CB | C | P1 | PA | ME | 260 | 15 | BILL 4 | B04 | S1 | FF | R00 | ACF07 | 260 |  |  | FF | MEP |  |  |  |  |  |  |  |  |  |  |  |  |  |
| CP1PA09601C0 |  | CB-P1 ; Flooring (Rubber & etc) (Public Area) | 36d | 2012-05-27 | 2012-07-09 | CP1PA09901C0, CAFCI22001R02 FS+65d, CP1PA09501C0 |  |  |  |  | 22.63d | 0d | RUBBER FLOOR [216 h]; RUBBER FLOOR [534 m2]; Cost |  |  | CP1PA09601C0 | CB | C | P1 | PA | FF | 096 | 01 | BILL 4 | B04 | S1 | 03 | R00 | ACF06 | RF |  |  |  |  |  |  |  |  |  |  |  |  | 326 | 955 |  |  | R3 |
| CP1PA09602C0 |  | CB-P1 ; Flooring (Stone) (Public Area) | 36d | 2012-05-27 | 2012-07-09 | CP1PA09901C0, CAFCI22001R02 FS+65d, CP1PA09501C0, CP1PA05501C0 FF |  |  |  |  | 22.63d | 0d | STONE FLOOR [436 m2]; STONE FLOOR [396 h]; Cost |  |  | CP1PA09601C0 | CB | C | P1 | PA | FF | 096 | 01 | BILL 4 | B04 | S1 | 09 | R00 | ACF06 | ST |  |  |  |  |  |  |  |  |  |  |  |  | 326 | 955 |  |  | R3 |
| CP1PA09903C0 |  | CB-P1 ; Wall Final Paint (Public Area) | 36d | 2012-05-27 | 2012-07-09 | CP1PA09901C0, CP1PA09905C0 |  |  |  |  | 97.63d | 66d | WALL PAINT [125 h]; WALL PAINT [156 m2]; Cost |  |  | CP1PA09903C0 | CB | C | P1 | PA | PA | 099 | 03 | BILL 4 | B04 | S1 | 02 | R00 | ACF06 | 099 |  |  |  |  |  |  |  |  |  |  |  |  | 329 | 957 |  |  |  |
| CP1PA09905C0 |  | CB-P1 ; Ceiling Prime & 1st coat (Public Area) | 0d | 2012-05-27 | 2012-05-27 | CP1PA09501C0 |  |  |  |  | 97.63d | 0d | Cost |  |  | CP1PA09905C0 | CB | C | P1 | PA | PA | 099 | 05 | BILL 4 | B04 | S1 | 01 | R00 | ACF06 | 099 |  |  |  |  |  |  |  |  |  |  |  |  | 330 | 958 |  |  |  |
| CP1PA21115C0 |  | CB-P1 ; 2nd Fix, Inst of Sprinkler droppers (Public Area) | 30d | 2012-05-27 | 2012-07-02 | CP1PA09501C0 |  |  |  |  | 52.63d | 0d | MECHANICAL [1404 h]; Cost |  |  | CP1PA21115C0 | CB | C | P1 | PA | ME | 211 | 15 | BILL 4 | B04 | S1 | 2F | R00 | ACF07 | 211 |  |  | 2n | MEP |  |  |  |  |  |  |  |  |  |  |  |  |  |
| CP1PA23021C0 |  | CB-P1 ; 2nd Fix, Inst of Flexible Duct & Plenum boxes (Public Area) | 42d | 2012-05-27 | 2012-07-16 | CP1PA09501C0 |  |  |  |  | 28.63d | 0d | MECHANICAL [903.6 h]; Cost |  |  | CP1PA23021C0 | CB | C | P1 | PA | ME | 230 | 21 | BILL 4 | B04 | S1 | 2F | R00 | ACF07 | 230 |  |  | 2n | MEP |  |  |  |  |  |  |  |  |  |  |  |  |  |
| CP1PA26017C0 |  | CB-P1 ; Final Fix, Inst of Ceiling rose (Public Area) | 48d | 2012-05-27 | 2012-07-23 | CP1PA09501C0 |  |  |  |  | 27.63d | 0d | ELECTRICAL [123.6 h]; Cost |  |  | CP1PA26017C0 | CB | C | P1 | PA | ME | 260 | 17 | BILL 4 | B04 | S1 | FF | R00 | ACF07 | 260 |  |  | FF | MEP |  |  |  |  |  |  |  |  |  |  |  |  |  |
| CP1PA27002C0 |  | CB-P1 ; 2nd Fix, Wiring Droppers (Public Area) | 42d | 2012-05-27 | 2012-07-16 | CP1PA09501C0 |  |  |  |  | 27.63d | 0d | ELECTRICAL [216 h]; Cost |  |  | CP1PA27002C0 | CB | C | P1 | PA | ME | 270 | 02 | BILL 4 | B04 | S1 | 2F | R00 | ACF07 | 270 |  |  | 2n | MEP |  |  |  |  |  |  |  |  |  |  |  |  |  |
| CP1PA40303C0 |  | CB-P1 ; Final Fix, Pneumatic Station (Public Area) | 48d | 2012-05-27 | 2012-07-23 | CP1PA09501C0 |  |  |  |  | 76.63d | 54d | MECHANICAL [2661.6 h]; Cost |  |  | CP1E140303C0 | CB | C | P1 | PA | ME | 403 | 03 | BILL 4 | B04 | S1 | FF | R00 | ACF07 | 403 |  |  | FF | MEP |  |  |  |  |  |  |  |  |  |  |  |  |  |
| CP1PA21113C0 |  | CB-P1 ; Final Fix, Inst of Sprinklers head/ Extinguisher (Public Area) | 48d | 2012-06-03 | 2012-07-30 | CP1PA09501C0, CP1PA21115C0 SS+6d |  |  |  |  | 70.63d | 48d | MECHANICAL [278.4 h]; Cost |  |  | CP1PA21113C0 | CB | C | P1 | PA | ME | 211 | 13 | BILL 4 | B04 | S1 | FF | R00 | ACF07 | 211 |  |  | FF | MEP |  |  |  |  |  |  |  |  |  |  |  |  |  |
| CP1PA23019C0 |  | CB-P1 ; Final Fix, Inst of Grilles & Diffusers (Public Area) | 48d | 2012-06-03 | 2012-07-30 | CP1PA09501C0, CP1PA23021C0 SS+6d |  |  |  |  | 28.63d | 1d | MECHANICAL [1970.4 h]; Cost |  |  | CP1PA23019C0 | CB | C | P1 | PA | ME | 230 | 19 | BILL 4 | B04 | S1 | FF | R00 | ACF07 | 230 |  |  | FF | MEP |  |  |  |  |  |  |  |  |  |  |  |  |  |
| CP1PA26003C0 |  | CB-P1 ; Final Fix, Inst of Light fittings (Public Area) | 48d | 2012-06-04 | 2012-07-31 | CP1PA09501C0, CP1PA26017C0 SS+7d |  |  |  |  | 27.63d | 0d | ELECTRICAL [7983.6 h]; Cost |  |  | CP1PA26003C0 | CB | C | P1 | PA | ME | 260 | 03 | BILL 4 | B04 | S1 | FF | R00 | ACF07 | 260 |  |  | FF | MEP |  |  |  |  |  |  |  |  |  |  |  |  |  |
| CP1PA27030C0 |  | CB-P1 ; Final Fix, Inst of ELV device (Detector/Speaker) (Public Area) | 48d | 2012-06-04 | 2012-07-31 | CP1PA09501C0, CP1PA27002C0 SS+7d |  |  |  |  | 27.63d | 0d | ELECTRICAL [2054.4 h]; Cost |  |  | CP1PA27030C0 | CB | C | P1 | PA | ME | 270 | 30 | BILL 4 | B04 | S1 | FF | R00 | ACF07 | 270 |  |  | FF | MEP |  |  |  |  |  |  |  |  |  |  |  |  |  |
| CP1PA08107C0 |  | CB-P1 ; Doors (Public Area) | 42d | 2012-07-09 | 2012-08-29 | CP1PA08103C0, CP1PA09901C0, CP1PA09601C0, CP1PA09602C0 |  |  |  |  | 27.63d | 0d | ASSORTED DOORS [660 h]; ASSORTED DOORS [66 no]; Cost |  |  | CP1PA08107C0 | CB | C | P1 | PA | DO | 081 | 07 | BILL 4 | B04 | S1 | DR | R00 | ACF06 | 081 |  |  |  |  |  |  |  |  |  |  |  |  | 317 | 948 | 08 |  |  |
| CP1PA09701C0 |  | CB-P1 ; Wall finishes (ST, WD, WC) (Public Area) | 30d | 2012-07-09 | 2012-08-13 | CP1PA27020C0, CP1PA09601C0, CP1PA09602C0 |  |  |  |  | 22.63d | 0d | ASSORTED WALL FINISH [239 h]; ASSORTED WALL FINISH [273 m2]; Cost |  |  | CP1PA09701C0 | CB | C | P1 | PA | WF | 097 | 01 | BILL 4 | B04 | S1 | 01 | R00 | ACF06 | 097 |  |  |  |  |  |  |  |  |  |  |  |  | 105 | 1002 |  |  |  |
| CP1PA01006C0 |  | CB-P1 ; 2nd, Ceiling Inspection by Consultants (Public Area) | 6d | 2012-07-31 | 2012-08-07 | CP1PA21115C0, CP1PA23009C0, CP1PA23015C0, CP1PA27002C0, CP1PA09501C0, CP1PA23019C0, CP1PA26003C0, CP1PA26017C0, CP1PA27030C0, CP1PA26015C0 |  |  |  |  | 27.63d | 5d | Labor General [0.6 h]; Cost |  |  | CP1PA01006C0 | CB | C | P1 | PA | ME | 010 | 06 | BILL 4 | B04 | S1 | CI | R00 | ACF07 | 010 |  |  | 2n | MEP |  |  |  |  |  |  |  |  |  |  |  |  |  |
| CP1PA09503C0 |  | CB-P1 ; Ceiling closure - ACT/Gypsum (Public Area) | 24d | 2012-08-13 | 2012-09-12 | CAFOA09503C1 FF, CP1PA01006C0, CP1PA21115C0, CP1PA23021C0, CP1PA26005C0, CP1PA27002C0, CP1PA09701C0, CP1PA26053C0 |  |  |  |  | 22.63d | 0d | ASSORTED CEILING FINISH [421.27 h]; CEILING GYPSUM [61.91 h]; ASSORTED CEILING FINISH [685 m2]; CEILING GYPSUM [173 m2]; Cost |  |  | CP1PA09503C0 | CB | C | P1 | PA | CE | 095 | 03 | BILL 4 | B04 | S1 | 02 | R00 | ACF06 | 095 |  |  |  |  |  |  |  |  |  |  |  |  | 324 | 953 |  |  |  |
| CP1PA11001C0 |  | CB-P1 ; Wall Protection (WP, CG, WG, FCG) (Public Area) | 24d | 2012-08-13 | 2012-09-12 | CP1PA09701C0, CP1PA09903C0 SS, OGNMU00063S0 |  |  |  |  | 43.63d | 21d | FF&E [9 h]; Cost |  |  | CP1PA11001C0 | CB | C | P1 | PA | WF | 110 | 01 | BILL 4 | B04 | S1 | 03 | R00 | ACF08 | b |  |  |  |  |  |  |  |  |  |  |  |  | 326 | 1001 |  |  |  |
| CP1PA11009C0 |  | CB-P1 ; Signage (Public Area) | 16d | 2012-08-13 | 2012-09-03 | CP1PA09701C0, OGNMU00071S0 |  |  |  |  | 51.63d | 29d | SIGNAGES [353 h]; SIGNAGES [353.28 no]; Cost |  |  | CP1PA11009C0 | CB | C | P1 | PA | SA | 110 | 09 | BILL 4 | B04 | S1 | 09 | R00 | ACF08 | c |  |  |  |  |  |  |  |  |  |  |  |  | 322 | 951 | 08 |  |  |
| CP1PA08709C0 |  | CB-P1 ; Ironmongery (Public Area) | 28d | 2012-08-29 | 2012-10-01 | CP1PA08107C0 |  |  |  |  | 27.63d | 5d | IRONMONGERY [450 h]; IRONMONGERY [45 no]; Cost |  |  | CP1PA08709C0 | CB | C | P1 | PA | DO | 087 | 09 | BILL 4 | B04 | S1 | IM | R00 | ACF06 | 087 |  |  |  |  |  |  |  |  |  |  |  |  | 322 | 951 | 08 |  |  |
| CP1PA09907C0 |  | CB-P1 ; Ceiling Final paint (Public Area) | 0d | 2012-09-12 | 2012-09-12 | CP1PA09601C0, CP1PA09905C0, CP1PA09602C0, CP1PA09503C0 |  |  |  |  | 43.63d | 21d | Cost |  |  | CP1PA09907C0 | CB | C | P1 | PA | PA | 099 | 07 | BILL 4 | B04 | S1 | 02 | R00 | ACF06 | 099 |  |  |  |  |  |  |  |  |  |  |  |  | 331 | 959 |  |  |  |
| CP1PA26019C0 |  | CB-P1 ; Final Fix, Inst of Switch/Sockets (Public Area) | 12d | 2012-09-12 | 2012-09-26 | CP1PA09901C0, CP1PA09503C0 |  |  |  |  | 22.63d | 0d | ELECTRICAL [427.2 h]; Cost |  |  | CP1PA26019C0 | CB | C | P1 | PA | ME | 260 | 19 | BILL 4 | B04 | S1 | FF | R00 | ACF07 | 260 |  |  | FF | MEP |  |  |  |  |  |  |  |  |  |  |  |  |  |

| ID | WBS | Activity | Duration | Start | Finish | Predecessors | Complete | Remaining | Planned start | Planned finish | Total float | Free float | Resources | Cost | Actual cost | change id | CCAD BUILDING(SET) | CCAD PHASE(SET) | CCAD FLOOR(SET) | CCAD ZONE(SET) | CCAD WORK(SET) | CCAD SECTION(SET) | CCAD SERIAL No.(SET) | CCAD CBS(SET) | CCAD BILL(SET) | CCAD HANDOVER(SET) | CCAD TAG(SET) | CCAD REV(SET) | CCADACF (SET) | CCAD SSCF | user_number8 | user_integer1 | user_integer2 | user_number7 | Change Order # | NEW ACTIVITY ID | RENZ % COMPLETE | Claimed This Month | P_811 | P_711 | CCAD CSA | Act Selector % | July2011 Target% Complete | CCAD SUB ZONE MEP(SET) | CCAD MEQ | CCAD DIVISION(SET) | IDDD |
| --- | --- | --- | --- | --- | --- | --- | --- | --- | --- | --- | --- | --- | --- | --- | --- | --- | --- | --- | --- | --- | --- | --- | --- | --- | --- | --- | --- | --- | --- | --- | --- | --- | --- | --- | --- | --- | --- | --- | --- | --- | --- | --- | --- | --- | --- | --- | --- |
|  | 10 | **Precommissioning Tesing & snagging ( Public Area)** |  | 2012-09-26 | 2012-11-05 |  |  |  |  |  |  |  |  |  |  |  |  |  |  |  |  |  |  |  |  |  |  |  |  |  |  |  |  |  |  |  |  |  |  |  |  |  |  |  |  |  |  |
| CP1TS01805C0 |  | CB-P1 ; MEP de-snag, FIREM sign-off | 9d | 2012-09-26 | 2012-10-07 | CP1PA26015C0, CP1PA40303C0, CP1PA21113C0, CP1PA23019C0, CP1PA26017C0, CP1PA26003C0, CP1PA27030C0, CP1PA26019C0 |  |  |  |  | 22.63d | 0d | TESTING & COMMISSIONING [1020 h]; Cost |  |  | CP1TS01801C0 | CB | C | P1 | TS | SC | 018 | 01 | BILL 4 | B04 | S1 | 01 | R00 | ACF07 | 018 |  |  |  |  |  |  |  |  |  |  |  |  |  |  |  |  |  |
| CP1TS01808C0 |  | CB-P1 ; Touch-up & Clean / JV inspection /CIR /De-snag | 16.25d | 2012-10-07 | 2012-10-25 | CP1PA08709C0, CP1PA09601C0, CP1PA09701C0, CP1PA09903C0, CP1PA09907C0, CP1PA11001C0, CP1PA11009C0, CP1TS01805C0, CP1PA05501C0, CP1PA09602C0, CP1PA09503C0 |  |  |  |  | 22.63d | 0d | TESTING & COMMISSIONING [149 h]; Cost |  |  | CP1TS01802C0 | CB | C | P1 | TS | SC | 018 | 02 | BILL 4 | B04 | S1 | 02 | R00 | ACF07 | 018 |  |  |  |  |  |  |  |  |  |  |  |  |  |  |  |  |  |
| CP1TS01811C0 |  | CB-P1 ; Consultant's final de-snag inspection | 7d | 2012-10-25 | 2012-11-05 | CP1TS01808C0 |  |  |  |  | 22.63d | 15.3d | Labor General [1 h]; Cost |  |  | CP1TS01803C0 | CB | C | P1 | TS | SC | 018 | 03 | BILL 4 | B04 | S1 | 03 | R00 | ACF07 | 018 |  |  |  |  |  |  |  |  |  |  |  |  |  |  |  |  |  |
|  | 06 | **TR Room** |  | 2011-03-29 | 2012-09-23 |  |  |  |  |  |  |  |  |  |  |  |  |  |  |  |  |  |  |  |  |  |  |  |  |  |  |  |  |  |  |  |  |  |  |  |  |  |  |  |  |  |  |
| CP1TR09201C0 |  | CB-P1 ; Metal Studs (TR RM) | 18d | 2011-03-29 A | 2011-10-31 | CP1PA09201C0, A10290 FS+65d | 87% | 2.34d | 2011-03-24 | 2011-04-13 | 17.4d | 0d | PARTITIONS [404 h]; PARTITIONS - Metal Studs [67 m]; Cost |  |  | CP1TR09201C0 | CB | C | P1 | TR | PT | 092 | 01 | BILL 4 | B04 | S1 | 1F | R00 | ACF06 | 092 | 0 | 0 | 0 | 0 | 313 | 885 | 35 | 9160.55 | 85 | 80 | GP | PMS |  |  |  |  |  |
| CP1TR09203C0 |  | CB-P1 ; Partitions 1st face (TR RM) | 40d | 2011-04-26 A | 2011-11-19 | CP1TR09201C0 SS+12d | 61% | 15.6d | 2011-04-07 | 2011-05-23 | 35.4d | 18d | PARTITIONS [67 m]; PARTITIONS [306 h]; Cost |  |  | CP1TR09203C0 | CB | C | P1 | TR | PT | 092 | 03 | BILL 4 | B04 | S1 | 2F | R00 | ACF06 | 092 | 0 | 0 | 0 | 0 | 314 | 886 | 10 | 7328.4 | 50 | 34 | GP | P1F |  |  |  |  |  |
| CP1TR26026C0 |  | CB-P1 ; 2nd Fix, Conduit (TR RM) | 54d | 2011-05-15 A | 2011-11-27 | CP1TR09201C0 SS+6d | 60% | 21.6d | 2011-06-11 | 2011-08-13 | 17.4d | 0d | ELECTRICAL [430.8 h]; Cost [29580.4 AED] | 29,580.43 | 17,748.26 | CP1TR26026C0 | CB | C | P1 | TR | ME | 260 | 26 | BILL 4 | B04 | S1 | 2F | R00 | ACF07 | 260 | 0 | 0 | 0 | 0 |  |  | 10 | 8573.91 | 50 | 45 | MEP |  | 45 | 2n |  |  |  |
| CP1TR23011C0 |  | CB-P1 ; 2nd Fix, Inst of VCD's/FD's (TR RM) | 54d | 2011-06-15 A | 2011-11-10 | CP1TR09201C0 SS+6d | 85% | 8.1d | 2011-08-14 | 2011-10-17 | 27d | 0d | MECHANICAL [2648.4 h]; Cost [143058 AED] | 143,057.96 | 121,599.26 | CP1TR23011C0 | CB | C | P1 | TR | ME | 230 | 11 | BILL 4 | B04 | S1 | 2F | R00 | ACF07 | 230 | 0 | 0 | 0 | 0 |  |  |  | 16594.73 | 50 | 35 | MEP |  | 35 | 2n |  |  |  |
| CP1TR23013C0 |  | CB-P1 ; 2nd Fix, Insulation of CHW pipe & Duct (TR RM) | 120d | 2011-07-10 A | 2011-11-29 | CP1TR23009C0 SS, CP1TR23011C0 SS | 80% | 24d | 2011-09-28 | 2012-02-23 | 27d | 9.6d | MECHANICAL [6742.8 h]; Cost [363863 AED] | 363,863.22 | 291,090.57 | CP1TR23013C0 | CB | C | P1 | TR | ME | 230 | 13 | BILL 4 | B04 | S1 | 2F | R00 | ACF07 | 230 |  |  |  |  |  |  |  |  | 80 | 65 | MEP |  | 65 | 2n |  |  |  |
| CP1TR23009C0 |  | CB-P1 ; 2nd Fix, Inst of VAV'S CHW connection (TR RM) | 54d | 2011-07-13 A | 2011-11-27 | CP1TR09201C0 SS+6d | 60% | 21.6d | 2011-10-08 | 2011-12-15 | 27d | 0d | MECHANICAL [1419.6 h]; Cost [76659.7 AED] | 76,659.7 | 45,995.82 | CP1TR23009C0 | CB | C | P1 | TR | ME | 230 | 09 | BILL 4 | B04 | S1 | 2F | R00 | ACF07 | 230 |  |  |  |  |  |  |  |  | 60 | 15 | MEP |  | 35 | 2n |  |  |  |
| CP1TR26009C0 |  | CB-P1 ; 2nd Fix, Inst of Equipment (DB, TR, SG,BUS) (TR RM) | 54d | 2011-09-05 A | 2012-01-30 | CP1TR09201C0 SS+6d, CP1TR09205C0 SS | 25% | 40.5d | 2011-11-27 | 2012-01-31 | 148.9d | 115.5d | ELECTRICAL [14013.6 h]; Cost [3188823 AED] | 3,188,823.2 | 797,205.8 | CP1TR26009C0 | CB | C | P1 | TR | ME | 260 | 09 | BILL 4 | B04 | S1 | 2F | R00 | ACF04 | 260 |  |  |  |  |  |  |  |  |  |  | MEP |  |  | 2n | E |  |  |
| CP1TR08101C0 |  | CB-P1 ; Door Frames (TR RM) | 18d | 2011-11-10 | 2011-12-04 | CP1TR09201C0 FS+6d, GNHE08101C0 |  |  |  |  | 54.66d | 37.26d | ASSORTED DOORS [3 h]; Cost |  |  | CP1TR08101C0 | CB | C | P1 | TR | DO | 081 | 01 | BILL 4 | B04 | S1 | DF | R00 | ACF06 | 081 |  |  |  |  | 316 | 20001090 |  |  |  |  |  |  |  |  |  | 08 |  |
| CP1TR01005C0 |  | CB-P1 ; 2nd, Wall Inspection by Consultant (TR RM) | 12d | 2011-11-27 | 2011-12-12 | CP1TR26026C0 |  |  |  |  | 17.4d | 0d | Labor General [0.6 h]; Cost |  |  | CP1TR01005C0 | CB | C | P1 | TR | ME | 010 | 05 | BILL 4 | B04 | S1 | WI | R00 | ACF07 | 010 |  |  |  |  |  |  |  |  |  |  | MEP |  |  | 2n |  |  |  |
| CP1TR09205C0 |  | CB-P1 ; Partitions Closing (TR RM) | 30d | 2011-12-12 | 2012-01-17 | CP1TR01005C0, CP1TR09201C0, CP1TR09203C0, CAFOA09204C1 FF, CP1TR08101C0 FF, CP1TR23009C0 FF, CP1TR23013C0, CP1TR23011C0 FF |  |  |  |  | 17.4d | 0d | PARTITIONS [67 m]; PARTITIONS [398 h]; Cost |  |  | CP1TR09205C0 | CB | C | P1 | TR | PT | 092 | 05 | BILL 4 | B04 | S1 | FF | R00 | ACF06 | 092 |  |  |  |  | 315 | 887 |  |  |  |  | GP | P2F |  |  |  |  |  |
| CP1TR09901C0 |  | CB-P1 ; Wall Prime & 1st coat (TR RM) | 18d | 2012-01-17 | 2012-02-08 | CP1TR09205C0 |  |  |  |  | 33.4d | 0d | WALL PAINT [31 h]; WALL PAINT [37 m2]; Cost |  |  | CP1TR09901C0 | CB | C | P1 | TR | PA | 099 | 01 | BILL 4 | B04 | S1 | 01 | R00 | ACF06 | 099 |  |  |  |  | 360 | 20001110 |  |  |  |  |  |  |  |  |  |  |  |
| CP1TR26027C0 |  | CB-P1 ; 2nd Fix, Wiring / Cabling (TR RM) | 30d | 2012-01-17 | 2012-02-22 | CP1TR09205C0 |  |  |  |  | 105.4d | 36d | ELECTRICAL [216 h]; Cost |  |  | CP1TR26027C0 | CB | C | P1 | TR | ME | 260 | 27 | BILL 4 | B04 | S1 | 2F | R00 | ACF07 | 260 |  |  |  |  | 417 | 1318 |  |  |  |  | MEP |  | 20 | 2n |  |  |  |
| CP1TR09501C0 |  | CB-P1 ; Ceiling grid and ServiceTile (TR RM) | 24d | 2012-02-08 | 2012-03-07 | CP1TR09205C0 SS+15d, CP1TR09901C0 |  |  |  |  | 33.4d | 0d | CEILING GRID FOR GYPSUM [185.06 h]; CEILING GRID FOR GYPSUM [16 m2]; Cost |  |  | CP1TR09501C0 | CB | C | P1 | TR | CE | 095 | 01 | BILL 4 | B04 | S1 | 01 | R00 | ACF06 | 095 |  |  |  |  | 336 | 1327 |  |  |  |  |  |  |  |  |  |  | 1 |
| CP1TR01006C0 |  | CB-P1 ; 2nd, Ceiling Inspection by Consultants (TR RM) | 12d | 2012-03-07 | 2012-03-21 | CP1TR23009C0, CP1TR23011C0, CP1TR23013C0, CP1TR09501C0 |  |  |  |  | 87.4d | 54d | Labor General [0.6 h]; Cost |  |  | CP1TR01006C0 | CB | C | P1 | TR | ME | 010 | 06 | BILL 4 | B04 | S1 | CI | R00 | ACF07 | 010 |  |  |  |  |  |  |  |  |  |  | MEP |  |  | 2n |  |  |  |
| CP1TR09601C0 |  | CB-P1 ; Flooring (Rubber & etc) (TR RM) | 36d | 2012-03-07 | 2012-04-18 | CP1TR09501C0 |  |  |  |  | 33.4d | 0d | RUBBER FLOOR [298 m2]; RUBBER FLOOR [120 h]; Cost |  |  | CP1TR09601C0 | CB | C | P1 | TR | FF | 096 | 01 | BILL 4 | B04 | S1 | 03 | R00 | ACF06 | RF |  |  |  |  | 359 | 20001120 |  |  |  |  |  |  |  |  |  |  |  |
| CP1TR23023C0 |  | CB-P1 ; 2nd Fix, Flexible ducts (TR RM) | 30d | 2012-03-07 | 2012-04-11 | CP1TR09205C0, CP1TR09501C0 |  |  |  |  | 69.4d | 36d | MECHANICAL [903.6 h]; Cost |  |  | CP1TR23023C0 | CB | C | P1 | TR | ME | 230 | 23 | BILL 4 | B04 | S1 | 2F | R00 | ACF07 | 230 |  |  |  |  | 412 | 20001140 |  |  |  |  | MEP |  |  | 2n |  |  |  |
| CP1TR26005C0 |  | CB-P1 ; 2nd Fix, Wiring for Power/Lighting/Emergency (TR RM) | 30d | 2012-03-07 | 2012-04-11 | CP1TR26026C0, CP1TR26027C0 SS+6d, CP1TR09501C0 |  |  |  |  | 69.4d | 36d | ELECTRICAL [216 h]; Cost |  |  | CP1TR26005C0 | CB | C | P1 | TR | ME | 260 | 05 | BILL 4 | B04 | S1 | 2F | R00 | ACF07 | 260 |  |  |  |  |  |  |  |  |  |  | MEP |  | 20 | 2n |  |  |  |
| CP1TR27020C0 |  | CB-P1 ; 2nd Fix, Inst of ELV Equipment (Panels) (TR RM) | 30d | 2012-03-07 | 2012-04-11 | CP1TR09201C0 SS+6d, CP1TR09205C0, CP1TR09501C0 |  |  |  |  | 91.4d | 0d | ELECTRICAL [384 h]; Cost |  |  | CP1TR27020C0 | CB | C | P1 | TR | ME | 270 | 20 | BILL 4 | B04 | S1 | 2F | R00 | ACF04 | 270 |  |  |  |  |  |  |  |  |  |  | MEP |  |  | 2n | E |  |  |
| CP1TR27002C0 |  | CB-P1 ; 2nd Fix, Dressing of ELV panels (TR RM) | 30d | 2012-04-11 | 2012-05-16 | CP1TR09201C0 SS+6d, CP1TR09205C0, CP1TR27020C0 |  |  |  |  | 91.4d | 24d | ELECTRICAL [1284 h]; Cost |  |  | CP1TR27002C0 | CB | C | P1 | TR | ME | 270 | 02 | BILL 4 | B04 | S1 | 2F | R00 | ACF07 | 270 |  |  |  |  |  |  |  |  |  |  | MEP |  |  | 2n |  |  |  |
| CP1TR08105C0 |  | CB-P1 ; Doors (TR RM) | 18d | 2012-04-18 | 2012-05-09 | CP1TR08101C0, CP1TR09901C0, CP1TR09601C0 |  |  |  |  | 95.4d | 0d | ASSORTED DOORS [10 h]; ASSORTED DOORS [1 no]; Cost |  |  | CP1TR08105C0 | CB | C | P1 | TR | DO | 081 | 05 | BILL 4 | B04 | S1 | DR | R00 | ACF06 | 081 |  |  |  |  | 317 | 1325 |  |  |  |  |  |  |  |  |  | 08 |  |
| CP1TR21115C0 |  | CB-P1 ; 2nd Fix, Gaseous Fire Suppression (TR RM) | 30d | 2012-04-18 | 2012-05-23 | CP1TR09601C0 |  |  |  |  | 33.4d | 0d | MECHANICAL [3854.4 h]; Cost |  |  | CP1TR21115C0 | CB | C | P1 | TR | ME | 211 | 15 | BILL 4 | B04 | S1 | 2F | R00 | ACF07 | 211 |  |  |  |  | 411 | 20001130 |  |  |  |  | MEP |  |  | 2n |  |  |  |
| CP1TR08709C0 |  | CB-P1 ; Ironmongery (TR RM) | 16d | 2012-05-09 | 2012-05-28 | CP1TR08105C0 |  |  |  |  | 95.4d | 62d | IRONMONGERY [60 h]; IRONMONGERY [6 no]; Cost |  |  | CP1TR08709C0 | CB | C | P1 | TR | DO | 087 | 09 | BILL 4 | B04 | S1 | IM | R00 | ACF06 | 087 |  |  |  |  | 322 | 20001100 |  |  |  |  |  |  |  |  |  | 08 |  |
| CP1TR09503C0 |  | CB-P1 ; Ceiling closure (TR RM) | 18d | 2012-05-23 | 2012-06-13 | CP1TR01006C0, CP1TR09501C0, CP1TR21115C0, CP1TR26005C0, CP1TR26026C0, CP1TR26027C0, CP1TR23023C0 |  |  |  |  | 33.4d | 0d | ASSORTED CEILING FINISH [80.56 h]; CEILING GYPSUM [5.33 h]; ASSORTED CEILING FINISH [131 m2]; CEILING GYPSUM [33 m2]; Cost |  |  | CP1TR09503C0 | CB | C | P1 | TR | CE | 095 | 03 | BILL 4 | B04 | S1 | 02 | R00 | ACF06 | 095 |  |  |  |  | 337 | 20001080 |  |  |  |  |  |  |  |  |  |  |  |
| CP1TR09903C0 |  | CB-P1 ; Wall - Final Paint (TR RM) | 12d | 2012-06-13 | 2012-06-28 | CP1TR09503C0, CP1TR09901C0 |  |  |  |  | 69.4d | 36d | WALL PAINT [17 h]; WALL PAINT [20 m2]; Cost |  |  | CP1TR09903C0 | CB | C | P1 | TR | PA | 099 | 03 | BILL 4 | B04 | S1 | 02 | R00 | ACF06 | 099 |  |  |  |  | 361 | 1312 |  |  |  |  |  |  |  |  |  |  |  |
| CP1TR09905C0 |  | CB-P1 ; Ceiling Prime & 1st coat (TR RM) | 0d | 2012-06-13 | 2012-06-13 | CP1TR09503C0 |  |  |  |  | 67.4d | 0d | Cost |  |  | CP1TR09905C0 | CB | C | P1 | TR | PA | 099 | 05 | BILL 4 | B04 | S1 | 01 | R00 | ACF06 | 099 |  |  |  |  | 362 | 1313 |  |  |  |  |  |  |  |  |  |  |  |
| CP1TR09907C0 |  | CB-P1 ; Ceiling - Final paint (TR RM) | 0d | 2012-06-13 | 2012-06-13 | CP1TR09905C0, CP1TR27002C0 FF |  |  |  |  | 67.4d | 0d | Cost |  |  | CP1TR09907C0 | CB | C | P1 | TR | PA | 099 | 07 | BILL 4 | B04 | S1 | 02 | R00 | ACF06 | 099 |  |  |  |  | 363 | 1314 |  |  |  |  |  |  |  |  |  |  |  |
| CP1TR23074C0 |  | CB-P1 ; Final Fix, Grilles, panels & diffusers (TR RM) | 30d | 2012-06-13 | 2012-07-19 | CP1TR09503C0 |  |  |  |  | 33.4d | 0d | MECHANICAL [1970.4 h]; Cost |  |  | CP1TR23074C0 | CB | C | P1 | TR | ME | 230 | 74 | BILL 4 | B04 | S1 | FF | R00 | ACF07 | 230 |  |  |  |  | 419 | 20001160 |  |  |  |  | MEP |  |  | FF |  |  |  |
| CP1TR26013C0 |  | CB-P1 ; Final Fix, Termination & Gladding of Cables (TR RM) | 30d | 2012-06-13 | 2012-07-19 | CP1TR09503C0, CP1TR26015C0 SS, CP1TR26009C0 |  |  |  |  | 33.4d | 0d | ELECTRICAL [826.8 h]; Cost |  |  | CP1TR26013C0 | CB | C | P1 | TR | ME | 260 | 13 | BILL 4 | B04 | S1 | FF | R00 | ACF07 | 260 |  |  |  |  |  |  |  |  |  |  | MEP |  |  | FF |  |  |  |
| CP1TR26015C0 |  | CB-P1 ; Final Fix, Inst of Ceiling rose (TR RM) | 30d | 2012-06-13 | 2012-07-19 | CP1TR09503C0 |  |  |  |  | 33.4d | 0d | ELECTRICAL [123.6 h]; Cost |  |  | CP1TR26015C0 | CB | C | P1 | TR | ME | 260 | 15 | BILL 4 | B04 | S1 | FF | R00 | ACF07 | 260 |  |  |  |  |  |  |  |  |  |  | MEP |  |  | FF |  |  |  |
| CP1TR26017C0 |  | CB-P1 ; Final Fix, Inst of Switch/Sockets (TR RM) | 12d | 2012-06-13 | 2012-06-28 | CP1TR09503C0, CP1TR09901C0, CP1TR26013C0 SS |  |  |  |  | 33.4d | 0d | ELECTRICAL [427.2 h]; Cost |  |  | CP1TR26017C0 | CB | C | P1 | TR | ME | 260 | 17 | BILL 4 | B04 | S1 | FF | R00 | ACF07 | 260 |  |  |  |  |  |  |  |  |  |  | MEP |  |  | FF |  |  |  |
| CP1TR26076C0 |  | CB-P1 ; Final Fix, Lighting fittings (TR RM) | 30d | 2012-06-13 | 2012-07-19 | CP1TR09503C0, CP1TR26017C0 SS |  |  |  |  | 33.4d | 0d | ELECTRICAL [7983.6 h]; Cost |  |  | CP1TR26076C0 | CB | C | P1 | TR | ME | 260 | 76 | BILL 4 | B04 | S1 | FF | R00 | ACF07 | 260 |  |  |  |  | 420 | 20001170 |  |  |  |  | MEP |  |  | FF |  |  |  |
| CP1TR27030C0 |  | CB-P1 ; Final Fix, Inst of ELV device (Detector/Speaker) (TR RM) | 30d | 2012-06-13 | 2012-07-19 | CP1TR09503C0 |  |  |  |  | 33.4d | 0d | ELECTRICAL [2054.4 h]; Cost |  |  | CP1TR27030C0 | CB | C | P1 | TR | ME | 270 | 30 | BILL 4 | B04 | S1 | FF | R00 | ACF07 | 270 |  |  |  |  |  |  |  |  |  |  | MEP |  |  | FF |  |  |  |
| CP1TR01802C0 |  | CB-P1 ; MEP de-snag, FIREM sign-off | 18d | 2012-07-19 | 2012-08-09 | CP1TR23074C0, CP1TR26015C0, CP1TR27030C0, CP1TR26013C0, CP1TR26017C0, CP1TR26076C0 |  |  |  |  | 33.4d | 0d | TESTING & COMMISSIONING [510 h]; Cost |  |  | CP3TR01851C0 | CB | C | P1 | TR | SC | 018 | 53 | BILL 4 | B04 | S1 | 01 | R00 | ACF07 | 018 |  |  |  |  | 396 |  |  |  |  |  |  |  |  |  |  |  |  |
| CP1TR01801C0 |  | CB-P1 ; Touch-up & Clean / JV inspection /CIR /De-snag | 24d | 2012-08-09 | 2012-09-09 | CP1TR01802C0, CP1TR08709C0, CP1TR09601C0, CP1TR09903C0, CP1TR09907C0 |  |  |  |  | 33.4d | 0d | TESTING & COMMISSIONING [85 h]; Cost |  |  | CP1TR01851C0 | CB | C | P1 | TR | SC | 018 | 51 | BILL 4 | B04 | S1 | 02 | R00 | ACF07 | 018 |  |  |  |  | 396 |  |  |  |  |  |  |  |  |  |  |  |  |
| CP1TR01803C0 |  | CB-P1 ; Consultant's final de-snag inspection | 12d | 2012-09-09 | 2012-09-23 | CP1TR01801C0 |  |  |  |  | 33.4d | 25.05d | Labor General [1 h]; Cost |  |  | CP3TS01803C0 | CB | C | P1 | TR | SC | 018 | 03 | BILL 4 | B04 | S1 | 03 | R00 | ACF07 | 018 |  |  |  |  |  |  |  |  |  |  |  |  |  |  |  |  |  |

| ID | WBS | Activity | Type | Duration | Start | Finish | Predecessors | Complete | Remaining | Planned start | Planned finish | Total float | Free float | Constraint | Resources | Change Order # | NEW ACTIVITY ID | change id | RENZ % COMPLETE | CCAD BUILDING(SET) | CCAD PHASE(SET) | CCAD DIVISION(SET) | CCAD FLOOR(SET) | CCAD ZONE(SET) | CCAD WORK(SET) | CCAD SECTION(SET) | CCAD SERIAL No.(SET) | CCAD CBS(SET) | CCAD BILL(SET) | CCAD HANDOVER(SET) | CCAD TAG(SET) | CCAD REV(SET) | CCADACF (SET) | CCAD SSCF | Actual Cost | CCAD CSA | Claimed This Month | P_811 | P_711 | user_number8 | user_integer1 | user_integer2 | user_number7 |
| --- | --- | --- | --- | --- | --- | --- | --- | --- | --- | --- | --- | --- | --- | --- | --- | --- | --- | --- | --- | --- | --- | --- | --- | --- | --- | --- | --- | --- | --- | --- | --- | --- | --- | --- | --- | --- | --- | --- | --- | --- | --- | --- | --- |
|  | GL | **Ground Level** |  |  | 2010-09-16 | 2012-11-21 |  |  |  |  |  |  |  |  |  |  |  |  |  |  |  |  |  |  |  |  |  |  |  |  |  |  |  |  |  |  |  |  |  |  |  |  |  |
|  | 01 | **Structure & Envelopment** |  |  | 2010-09-16 | 2012-04-30 |  |  |  |  |  |  |  |  |  |  |  |  |  |  |  |  |  |  |  |  |  |  |  |  |  |  |  |  |  |  |  |  |  |  |  |  |  |
| CGLSD03311C0 |  | CB-GL ; Corewall concrete (Zone SD) |  | 6d | 2010-09-16 A | 2010-09-28 A | CP1SD03311C0 | 100% |  | 2010-11-01 | 2010-11-07 |  |  |  | CONCRETE [4968 h]; CONCRETE [125 m3]; Cost | 301 | 278 | CGLSD03311C0 | 100 | CB | C | 03 | GL | SD | CT | 033 | 11 | BILL 4 | B04 | S1 | 04 | R00 | ACF03 | 033 |  |  |  |  |  |  |  |  |  |
| CGLS105101C0 |  | CB-GL ; Erection of Structural Steel (Zone S1) |  | 12.96d | 2010-09-21 A | 2011-01-08 A | CGLSC03311C0, CP1S105101C0, CP1S105103C0 | 100% |  | 2010-09-21 | 2010-10-05 |  |  |  | STRUCTURAL STEEL [4575 h]; STRUCTURAL STEEL [175 T(Fe)]; Cost | 297 | 270 | CGLS105101C0 | 100 | CB | C |  | GL | S1 | ST | 051 | 01 | BILL 4 | B04 | S1 | 01 | R00 | ACF03 | 051 | 1773028 | ST |  |  |  |  |  |  |  |
| CGLSC03311C0 |  | CB-GL ; Corewall concrete (Zone SC) |  | 5d | 2010-09-23 A | 2010-10-05 A | CP1SC03311C0 | 100% |  | 2011-03-03 | 2011-03-08 |  |  |  | CONCRETE [4968 h]; CONCRETE [125 m3]; Cost | 301 | 274 | CGLSC03311C0 | 100 | CB | C | 03 | GL | SC | CT | 033 | 11 | BILL 4 | B04 | S1 | 04 | R00 | ACF03 | 033 |  |  |  |  |  |  |  |  |  |
| CGLS205101C0 |  | CB-GL ; Erection of Structural Steel (Zone S2) |  | 12.95d | 2010-09-26 A | 2010-12-04 A | CGLSD03311C0, CP1S205101C0, CP1S205103C0 | 100% |  | 2010-09-21 | 2010-10-05 |  |  |  | STRUCTURAL STEEL [6870 h]; STRUCTURAL STEEL [264 T(Fe)]; Cost | 297 | 276 | CGLS205101C0 | 100 | CB | C |  | GL | S2 | ST | 051 | 01 | BILL 4 | B04 | S1 | 01 | R00 | ACF03 | 051 | 2350292 | ST |  |  |  |  |  |  |  |
| CGLS105103C0 |  | CB-GL ; Alignment & welding (Zone S1) |  | 4.99d | 2010-09-29 A | 2011-01-09 A | CGLS105101C0 | 100% |  | 2010-10-07 | 2010-10-12 |  |  |  | STRUCTURAL STEEL [472 h]; Cost | 298 | 271 | CGLS105103C0 | 100 | CB | C |  | GL | S1 | ST | 051 | 03 | BILL 4 | B04 | S1 | 02 | R00 | ACF03 | 051 | 197003 | ST |  |  |  |  |  |  |  |
| CGLS205103C0 |  | CB-GL ; Alignment & welding (Zone S2) |  | 4.98d | 2010-09-29 A | 2010-12-12 A | CGLS205101C0 | 100% |  | 2010-10-07 | 2010-10-12 |  |  |  | STRUCTURAL STEEL [624 h]; Cost | 298 | 277 | CGLS205103C0 | 100 | CB | C |  | GL | S2 | ST | 051 | 03 | BILL 4 | B04 | S1 | 02 | R00 | ACF03 | 051 | 261144 | ST |  |  |  |  |  |  |  |
| CGLS105305C0 |  | CB-GL ; Metal Decking (Zone S1) |  | 15d | 2010-11-30 A | 2011-01-26 A | C01S105101C0, CGLS105103C0 | 100% |  | 2011-01-15 | 2011-02-01 |  |  |  | METAL DECKING [2038 h]; METAL DECKING [2580 m2]; Cost | 299 | 272 | CGLS105305C0 | 100 | CB | C |  | GL | S1 | ST | 053 | 05 | BILL 4 | B04 | S1 | 03 | R00 | ACF03 | 053 | 302975.64 | ST |  |  |  |  |  |  |  |
| CGLS205305C0 |  | CB-GL ; Metal Decking (Zone S2) |  | 18d | 2010-12-08 A | 2010-12-26 A | C01S205101C0, CGLS205103C0 | 100% |  | 2011-01-02 | 2011-01-22 |  |  |  | METAL DECKING [2702 h]; METAL DECKING [3420 m2]; Cost | 299 | 279 | CGLS205305C0 | 100 | CB | C |  | GL | S2 | ST | 053 | 05 | BILL 4 | B04 | S1 | 03 | R00 | ACF03 | 053 | 401618.88 | ST |  |  |  |  |  |  |  |
| CGLS103335C0 |  | CB-GL ; Concrete on metal decking (Zone S1) |  | 10d | 2010-12-26 A | 2011-02-05 A | CGLS105305C0 | 100% |  | 2011-01-03 | 2011-01-15 |  |  |  | CONCRETE [13392 h]; CONCRETE [337 m3]; Cost | 302 | 275 | CGLS103335C0 | 100 | CB | C | 03 | GL | S1 | CT | 033 | 35 | BILL 4 | B04 | S1 | 08 | R00 | ACF03 | 033 |  |  |  |  |  |  |  |  |  |
| CGLS203335C0 |  | CB-GL ; Concrete on metal decking (Zone S2) |  | 10d | 2010-12-28 A | 2011-02-05 A | CGLS205305C0 | 100% |  | 2011-01-04 | 2011-01-16 |  |  |  | CONCRETE [17808 h]; CONCRETE [448 m3]; Cost | 302 | 280 | CGLS203335C0 | 100 | CB | C | 03 | GL | S2 | CT | 033 | 35 | BILL 4 | B04 | S1 | 08 | R00 | ACF03 | 033 |  |  |  |  |  |  |  |  |  |
| CGLS107807C0 |  | CB-GL ; Cementitious Fire Proofing (Zone S1) |  | 10d | 2011-02-15 A | 2011-06-02 A | C01S103335C0 | 100% |  | 2011-02-02 | 2011-02-13 |  |  |  | CEMENTITIOUS FIREPROOFING [1415 h]; CEMENTITIOUS FIREPROOFING [2829 m2]; Cost | 300 | 273 | CGLS107807C0 | 98 | CB | C |  | GL | S1 | ST | 078 | 07 | BILL 4 | B04 | S1 | 04 | R00 | ACF03 | 078 |  | ST | 4894.22 |  |  |  |  |  |  |
| CGLS207808C0 |  | CB-GL ; Cementitious Fire Proofing (Zone S2) |  | 12d | 2011-02-16 A | 2011-06-02 A | C01S203335C0 | 100% |  | 2011-02-02 | 2011-02-15 |  |  |  | CEMENTITIOUS FIREPROOFING [1875 h]; CEMENTITIOUS FIREPROOFING [3750 m2]; Cost | 300 | 281 | CGLS207808C0 | 98 | CB | C |  | GL | S2 | ST | 078 | 08 | BILL 4 | B04 | S1 | 04 | R00 | ACF03 | 078 |  | ST | 6487.15 |  |  |  |  |  |  |
| CGLCO04411C0 |  | CB-GL ; C4 - Brackets (Common Zone) |  | 18d | 2011-04-02 A | 2011-04-20 A | CP1CO04409C0 | 100% |  | 2011-04-10 | 2011-05-01 |  |  |  | FACADE CURTAIN WALL 4 [927 h]; Cost | 434 | 172 | CGLCO04411C0 | 100 | CB | C |  | GL | CO | FA | 044 | 11 | BILL 4 | B04 | S1 | FC4 | R00 | ACF05 | 044 |  | FA |  |  |  |  |  |  |  |
| CGLGN00404C0 |  | CB-GL ; Temporary Enclosure | level of effort | 179.56d | 2011-04-12 A | 2012-02-08 | CGLE109203C0 SS, CGLE209203C0 SS, CGLPA09203C0 SS, CGLPU09203C0 SS, CGLTR09203C0 SS | 41% | 105.88d | 2011-04-12 | 2011-11-14 | 183.12d | 0d |  | Labor General [0.6 h]; Cost |  |  |  |  | CB | C |  | GL | GEN | FA | GEN |  |  | B04 |  | TE | R00 | ACF05 | 010 |  | FA |  | 61.33 | 46.67 |  |  |  |  |
| CGLCO04401C0 |  | CB-GL ; S1 - Ex. partitions (Common Zone) |  | 23.88d | 2011-04-14 A | 2011-08-30 A | C02S103335C0, C02S203335C0, CP1CO04403C0, CGLGN00404C0 FF | 100% |  | 2011-04-30 | 2011-05-26 |  |  |  | PARTITIONS [152.6 m]; PARTITIONS [760.2 h]; Cost | 436 | 174 | CGLCO04401C0 | 30 | CB | C |  | GL | CO | FA | 044 | 01 | BILL 4 | B04 | S1 | FS1 | R00 | ACF05 | 044 |  | FA |  | 100 | 30 |  |  |  |  |
| CGLCO04413C0 |  | CB-GL ; C4 channel glass (Common Zone) |  | 72d | 2011-07-10 A | 2011-10-09 | CGLCO04411C0, CP1CO04405C0 SS | 90% | 7.2d | 2011-07-17 | 2011-10-11 | 187.8d | 175.4d |  | FACADE CURTAIN WALL 4 [655 h]; FACADE CURTAIN WALL 4 [240 m2]; FACADE TOTAL QUANTITY m2 [240 m2]; Cost | 441 | 178 | CGLCO04413C0 |  | CB | C |  | GL | CO | FA | 044 | 13 | BILL 4 | B04 | S1 | FC4 | R00 | ACF05 | 044 |  | FA |  |  |  | 0 | 0 | 0 | 0 |
| CGLCO04455C0 |  | CB-GL ; S1 Inner Side of External Partition (Common Zone) |  | 42d | 2011-12-26 | 2012-02-15 | CGLCO04401C0, CGLPA09205C0 SS |  |  |  |  | 65.15d | 54d |  | FACADE STONE PANEL 1 [423.4 h]; Cost |  |  | DP3CO04415C0 |  | CB | C |  | GL | CO | FA | 044 | 15 | BILL 5 | B04 | S1 | FS1 | R00 | ACF05 | 044 |  | FA |  |  |  |  |  |  |  |
| CGLCO04403C0 |  | CB-GL ; C3 - Bracket, mullion & transom (Common Zone) |  | 42d | 2012-01-05 | 2012-02-23 | CR5S103335C0, CR5S203335C0, CGLCO04403C03 |  |  |  |  | 45d | 0d |  | FACADE CURTAIN WALL 3 [402.6 h]; Cost | 440 | 177 | CGLCO04403C0 |  | CB | C |  | GL | CO | FA | 044 | 03 | BILL 4 | B04 | S1 | FC3 | R00 | ACF05 | 044 |  | FA |  |  |  |  |  |  |  |
| CGLCO04403C03 |  | CB-GL ; C3 - Bracket, mullion & transom (Common Zone) | milestone | 0d | 2012-01-05 | 2012-01-05 | MGNMI00101M0 |  |  |  |  | 45d | 0d | start on or after 2012-01-05 |  | 440 | 177 | CGLCO04403C0 |  | CB | C |  | GL | CO | FA | 044 | 03 | BILL 4 | B04 | S1 | FC3 | R00 | ACF05 | 044 |  |  |  |  |  |  |  |  |  |
| CGLCO04405C0 |  | CB-GL ; C3 single glass (Common Zone) |  | 40d | 2012-01-11 | 2012-02-27 | CGLCO04403C0 SS+5d, CGLCO04403C0 FF |  |  |  |  | 73d | 0d |  | FACADE CURTAIN WALL 3 [800 h]; FACADE CURTAIN WALL 3 [293 m2]; FACADE TOTAL QUANTITY m2 [293 m2]; Cost | 435 | 173 | CGLCO04405C0 |  | CB | C |  | GL | CO | FA | 044 | 05 | BILL 4 | B04 | S1 | FC3 | R00 | ACF05 | 044 |  | FA |  |  |  |  |  |  |  |
| CGLCO04407C0 |  | CB-GL ; S2 - Bracket (Common Zone - to be S11) |  | 23.88d | 2012-01-11 | 2012-02-08 | C04SC03311C0, C04SD03311C0, CP1CO04401C0 SS+6d, CR5S103335C0, CR5S203335C0, CGLGN00404C0 FF |  |  |  |  | 183.12d | 3.73d |  | Labor General [0.6 h]; Cost | 438 | 176 | CGLCO04407C0 |  | CB | C |  | GL | CO | FA | 044 | 07 | BILL 4 | B04 | S1 | FS2 | R00 | ACF05 | 044 |  | FA |  |  |  |  |  |  |  |
| CGLCO04408C0 |  | CB-GL ; S2 Stone panel (Common Zone - to be S11) |  | 66d | 2012-02-13 | 2012-04-30 | CGLCO04407C0, CP1CO04407C0 SS |  |  |  |  | 179.4d | 172.07d |  | Labor General [0.6 h]; Cost | 304 | 103 | CP1CO04407C0 |  | CB | C |  | GL | CO | FA | 044 | 07 | BILL 4 | B04 | S1 | FS2 | R00 | ACF05 | 044 |  | FA |  |  |  |  |  |  |  |
| CGLCO04409C0 |  | CB-GL ; S1 Onyx Stone (Common Zone) |  | 24d | 2012-02-28 | 2012-03-26 | CGLCO04401C0, CGLCO04405C0 |  |  |  |  | 185d | 172.6d |  | FACADE STONE PANEL 1 [974.1 h]; FACADE STONE PANEL 1 [356 m2]; FACADE TOTAL QUANTITY m2 [356 m2]; Cost | 437 | 175 | CGLCO04409C0 |  | CB | C |  | GL | CO | FA | 044 | 09 | BILL 4 | B04 | S1 | FS1 | R00 | ACF05 | 044 |  | FA |  |  |  |  |  |  |  |

| ID | WBS | Activity | Duration | Start | Finish | Predecessors | Complete | Remaining | Planned start | Planned finish | Total float | Free float | Resources | Cost | Actual cost | user_number8 | user_integer1 | user_integer2 | user_number7 | Change Order # | NEW ACTIVITY ID | change id | RENZ % COMPLETE | Claimed This Month | CCAD BUILDING(SET) | CCAD PHASE(SET) | CCAD FLOOR(SET) | CCAD ZONE(SET) | CCAD WORK(SET) | CCAD SECTION(SET) | CCAD SERIAL No.(SET) | CCAD CBS(SET) | CCAD BILL(SET) | CCAD HANDOVER(SET) | CCAD TAG(SET) | CCAD REV(SET) | CCADACF (SET) | CCAD CSA | CCAD SSCF | Act Selector % | R3 Partitions | CCAD SUB ZONE MEP(SET) | July2011 Target% Complete | P_811 | P_711 | PERCENT COMPLETE | CCAD DIVISION(SET) | CCAD MEQ | R3 Finish |
| --- | --- | --- | --- | --- | --- | --- | --- | --- | --- | --- | --- | --- | --- | --- | --- | --- | --- | --- | --- | --- | --- | --- | --- | --- | --- | --- | --- | --- | --- | --- | --- | --- | --- | --- | --- | --- | --- | --- | --- | --- | --- | --- | --- | --- | --- | --- | --- | --- | --- |
|  | 02 | **Exam 1** |  | 2011-03-05 | 2012-11-18 |  |  |  |  |  |  |  |  |  |  |  |  |  |  |  |  |  |  |  |  |  |  |  |  |  |  |  |  |  |  |  |  |  |  |  |  |  |  |  |  |  |  |  |  |
| CGLE109201C0 |  | CB-GL ; Metal Studs (Exam- 1) | 84d | 2011-03-05 A | 2011-10-19 | CGLE123001C0, CAFCI09202R02 FS+57d | 95% | 4.2d | 2011-04-14 | 2011-07-23 | 15d | 0d | PARTITIONS [3984 h]; PARTITIONS - Metal Studs [483 m]; Cost |  |  | 0 | 0 | 0 | 0 | 313 | 944 | CGLE109201C0 | 35 | 92500.1 | CB | C | GL | E1 | PT | 092 | 01 | BILL 4 | B04 | S1 | 1F | R00 | ACF06 | GP | 092 | PMS | R3 |  |  |  |  |  |  |  |  |
| CGLE123001C0 |  | CB-GL ; 1st Fix, Inst. of Supports for MEP (Exam- 1) | 27d | 2011-03-15 A | 2011-10-03 | C01S103335C0, CGLS107807C0 | 90% | 2.7d | 2011-03-02 | 2011-04-02 | 18.5d | 0d | MECHANICAL [1024.8 h]; Cost [57766.2 AED] | 57,766.25 | 51,989.63 |  |  |  |  |  |  | CGLE123001C0 | 95 | 6155.13 | CB | C | GL | E1 | ME | 230 | 01 | BILL 4 | B04 | S1 | 1F | R00 | ACF04 | MEP | 230 | M1F |  | 1S |  |  |  |  |  |  |  |
| CGLE121111C0 |  | CB-GL ; 1st Fix, Inst of Sprinkler main pipe (Exam- 1) | 200d | 2011-03-17 A | 2011-10-15 | BLZHC01567C0, CGLE122005C0 SS+6d, CGLE123001C0, CGLS107807C0 | 95% | 10d | 2011-05-01 | 2011-12-28 | 18.5d | 0d | MECHANICAL [686.4 h]; Cost [37438.4 AED] | 37,438.4 | 35,566.48 |  |  |  |  |  |  | CGLE121111C0 | 95 |  | CB | C | GL | E1 | ME | 211 | 11 | BILL 4 | B04 | S1 | 1F | R00 | ACF04 | MEP | 211 | M1F |  | 1S | 95 |  |  |  |  |  |  |
| CGLE126013C0 |  | CB-GL ; 1st Fix, Inst of Cable Tray (Exam- 1) | 90d | 2011-03-19 A | 2011-12-06 | CGLE123001C0, CGLE127010C0 SS+6d, CGLS107807C0 | 45% | 49.5d | 2011-04-10 | 2011-07-24 | 18.5d | 0d | ELECTRICAL [4921.2 h]; Cost [17044 AED] | 17,043.96 | 7,669.78 |  |  |  |  |  |  | CGLE126013C0 | 40 | 83920.8 | CB | C | GL | E1 | ME | 260 | 13 | BILL 4 | B04 | S1 | 1F | R00 | ACF04 | MEP | 260 | M1F |  | 1S | 75 | 90 | 70 |  |  |  |  |
| CGLE122019C0 |  | CB-GL ; 1st Fix, Inst of Drainage pipe (ceiling) (Exam- 1) | 200d | 2011-03-20 A | 2011-10-26 | BLZHC01567C0, CGLE123001C0, CGLE126013C0 SS+6d, CGLS107807C0 | 90% | 20d | 2011-04-17 | 2011-12-14 | 18.5d | 0d | PLUMBING [1714.8 h]; Cost [92715.9 AED] | 92,715.95 | 83,444.36 |  |  |  |  |  |  | CGLE122019C0 | 95 |  | CB | C | GL | E1 | ME | 220 | 19 | BILL 4 | B04 | S1 | 1F | R00 | ACF04 | MEP | 220 | M1F |  | 1S | 95 | 98 | 95 | 90 |  |  |  |
| CGLE126001C0 |  | CB-GL ; 1st Fix, Inst of Trunking/Conduiting (Exam- 1) | 90d | 2011-03-26 A | 2011-11-20 | CGLS107807C0 | 55% | 40.5d | 2011-03-02 | 2011-06-14 | 21.2d | 2.7d | ELECTRICAL [4404 h]; Cost [29580.4 AED] | 29,580.43 | 16,269.23 |  |  |  |  |  |  | CGLE126001C0 | 30 | 147093.5 | CB | C | GL | E1 | ME | 260 | 01 | BILL 4 | B04 | S1 | 1F | R00 | ACF04 | MEP | 260 | M1F |  | 1S | 80 | 90 | 80 |  |  |  |  |
| CGLE127010C0 |  | CB-GL ; 1st Fix, Inst of Trunking for ELV system (Exam- 1) | 90d | 2011-03-28 A | 2011-11-29 | CGLE123001C0, CGLE126001C0 SS+12d, CGLS107807C0 | 50% | 45d | 2011-04-03 | 2011-07-17 | 18.5d | 0d | ELECTRICAL [1843.2 h]; Cost [24667.9 AED] | 24,667.88 | 12,333.94 |  |  |  |  |  |  | CGLE127010C0 | 30 |  | CB | C | GL | E1 | ME | 270 | 10 | BILL 4 | B04 | S1 | 1F | R00 | ACF04 | MEP | 270 | M1F |  | 1S | 85 |  |  |  |  |  |  |
| CGLE123023C0 |  | CB-GL ; 1st Fix, Inst of Main Ducting (Exam- 1) | 200d | 2011-04-16 A | 2011-10-30 | BLZHC01567C0, CGLE123001C0, CGLE123017C0 SS+6d, CGLS107807C0 | 96% | 8d | 2011-05-15 | 2012-01-12 | 49.25d | 0d | MECHANICAL [16992 h]; Cost [927678 AED] | 927,677.51 | 890,570.41 |  |  |  |  |  |  | CGLE123023C0 | 90 |  | CB | C | GL | E1 | ME | 230 | 23 | BILL 4 | B04 | S1 | 1F | R00 | ACF04 | MEP | 230 | M1F |  | 1S | 95 |  |  |  |  |  |  |
| CGLE121117C0 |  | CB-GL ; 1st Fix, Inst of Sprinkler branch pipe (Exam- 1) | 200d | 2011-04-19 A | 2011-11-20 | CGLE109201C0, CGLE121111C0, CGLE105503C0 FF+18d | 95% | 10d | 2011-06-22 | 2012-02-21 | 34.75d | 17.82d | MECHANICAL [1009.2 h]; Cost [55153.8 AED] | 55,153.76 | 52,396.07 |  |  |  |  |  |  | CGLE121117C0 | 95 |  | CB | C | GL | E1 | ME | 211 | 17 | BILL 4 | B04 | S1 | 1F | R00 | ACF04 | MEP | 211 | M1F |  | 1S | 95 |  |  |  |  |  |  |
| CGLE109203C0 |  | CB-GL ; Partitions 1st face (Exam- 1) | 54d | 2011-04-20 A | 2011-12-13 | CGLE109201C0, CGLE123023C0 FF, CGLE123017C0, CGLE121117C0 FF | 67% | 17.82d | 2011-04-28 | 2011-07-02 | 16.93d | 1.93d | PARTITIONS [483 m]; PARTITIONS [3111 h]; Cost |  |  | 0 | 0 | 0 | 0 | 314 | 945 | CGLE109203C0 | 15 | 74000 | CB | C | GL | E1 | PT | 092 | 03 | BILL 4 | B04 | S1 | 2F | R00 | ACF06 | GP | 092 | P1F |  |  |  | 55 | 41 |  |  |  |  |
| CGLE122005C0 |  | CB-GL ; 1st Fix, Inst of Water supply pipe (ceiling) (Exam- 1) | 60d | 2011-05-02 A | 2011-11-21 | BLZHC01567C0, CGLE122019C0 SS+6d, CGLE123001C0, CGLS107807C0 | 35% | 39d | 2011-06-01 | 2011-08-11 | 18.5d | 0d | PLUMBING [1682.4 h]; Cost [90924.8 AED] | 90,924.75 | 31,823.66 |  |  |  |  |  |  | CGLE122005C0 | 35 |  | CB | C | GL | E1 | ME | 220 | 05 | BILL 4 | B04 | S1 | 1F | R00 | ACF04 | MEP | 220 | M1F |  | 1S | 64 |  |  |  |  |  |  |
| CGLE122011C0 |  | CB-GL ; 2nd Fix, Drainage/Water pipe (wall) (Exam- 1) | 200d | 2011-05-15 A | 2011-11-23 | CGLE109201C0, CAFCI09201R20 FS+65d | 90% | 20d | 2011-06-13 | 2012-02-13 | 25d | 10d | PLUMBING [2510.4 h]; Cost [92715.9 AED] | 92,715.95 | 83,444.36 |  |  |  |  |  |  | CGLE122011C0 | 60 |  | CB | C | GL | E1 | ME | 220 | 11 | BILL 4 | B04 | S1 | 2F | R00 | ACF07 | MEP | 220 |  |  | 2n | 75 |  |  | 90 |  |  |  |
| CGLE123017C0 |  | CB-GL ; 1st Fix, Inst of CHW pipe (Exam- 1) | 150d | 2011-05-15 A | 2011-11-20 | BLZHC01567C0, CGLE121111C0 SS+6d, CGLE123001C0, CGLS107807C0, CGLE105503C0 FF+18d | 85% | 22.5d | 2011-06-08 | 2011-12-10 | 16.93d | 0d | MECHANICAL [2395.2 h]; Cost [130782 AED] | 130,781.76 | 111,164.49 |  |  |  |  |  |  | CGLE123017C0 | 20 |  | CB | C | GL | E1 | ME | 230 | 17 | BILL 4 | B04 | S1 | 1F | R00 | ACF04 | MEP | 230 | M1F |  | 1S | 75 |  |  |  |  |  |  |
| CGLE123015C0 |  | CB-GL ; 2nd Fix, Insulation of CHW pipe & Duct (Exam- 1) | 120d | 2011-06-07 A | 2011-12-20 | CGLE123009C0 SS, CGLE123017C0 SS, CGLE123023C0 SS | 80% | 24d | 2011-08-18 | 2012-01-15 | 94.75d | 79.75d | MECHANICAL [8664 h]; Cost [363863 AED] | 363,863.22 | 291,090.57 |  |  |  |  |  |  | CGLE123015C0 |  | 232338.46 | CB | C | GL | E1 | ME | 230 | 15 | BILL 4 | B04 | S1 | 2F | R00 | ACF07 | MEP | 230 |  |  | 2n | 65 | 80 | 65 |  |  |  |  |
| CGLE123009C0 |  | CB-GL ; 2nd Fix, Inst of VAV'S CHW connection (Exam- 1) | 72d | 2011-07-06 A | 2011-12-08 | CGLE123017C0 | 80% | 14.4d | 2011-09-13 | 2011-12-11 | 94.75d | 0d | MECHANICAL [3340.8 h]; Cost [76659.7 AED] | 76,659.7 | 61,327.76 | 0 | 0 | 0 | 0 |  |  | CGLE123009C0 |  |  | CB | C | GL | E1 | ME | 230 | 09 | BILL 4 | B04 | S1 | 2F | R00 | ACF07 | MEP | 230 |  |  | 2n | 25 | 60 | 15 |  |  |  |  |
| CGLE123008C0 |  | CB-GL ; 1st Fix, Inst of VCD's/FD's (Exam- 1) | 70d | 2011-07-10 A | 2011-12-15 | CGLE123023C0, CGLE105503C0 FF+18d | 50% | 35d | 2011-07-07 | 2011-09-29 | 68.25d | 53.25d | MECHANICAL [2648.4 h]; Cost [143058 AED] | 143,057.96 | 71,528.98 |  |  |  |  |  |  | CGLE123008C0 |  |  | CB | C | GL | E1 | ME | 230 | 08 | BILL 4 | B04 | S1 | 1F | R00 | ACF04 | MEP | 230 | M1F |  | 1S | 45 | 50 | 45 |  |  |  |  |
| CGLE105503C0 |  | CB-GL ; Ceiling Support for medical equipment (Exam- 1) | 15.12d | 2011-08-09 A | 2011-10-26 | CGLE109201C0 | 60% | 6.05d | 2011-12-08 | 2011-12-26 | 16.93d | 0d | SECONDARY STEEL [138 h]; STRUCTURAL STEEL [11 T(Fe)]; Cost |  |  |  |  |  |  | 335 | 962 | CGLE105503C0 |  |  | CB | C | GL | E1 | SW | 055 | 03 | BILL 4 | B04 | S1 | 03 | R00 | ACF03 |  | b |  |  |  |  | 60 | 0 |  |  |  |  |
| CGLE122007C0 |  | CB-GL ; 1st Fix, Inst of Medical Gas pipe (Exam- 1) | 48d | 2011-08-10 A | 2011-12-05 | BLZHC01567C0, CGLE121111C0, CGLE123001C0, CGLS107807C0 | 20% | 38.4d | 2011-08-02 | 2011-09-29 | 18.5d | 3.5d | PLUMBING [504 h]; Cost [26046.8 AED] | 26,046.85 | 5,209.37 |  |  |  |  |  |  | CGLE122007C0 |  |  | CB | C | GL | E1 | ME | 220 | 07 | BILL 4 | B04 | S1 | 1F | R00 | ACF04 | MEP | 220 | M1F |  | 1S | 35 | 20 | 0 |  |  |  |  |
| CGLE126009C0 |  | CB-GL ; 2nd Fix, Inst of Wall conduites (Exam- 1) | 42d | 2011-08-10 A | 2011-12-01 | CGLE109201C0 | 20% | 33.6d | 2011-11-03 | 2011-12-27 | 19.2d | 4.2d | ELECTRICAL [430.8 h]; Cost [29580.4 AED] | 29,580.43 | 5,916.09 |  |  |  |  |  |  | CGLE126009C0 |  |  | CB | C | GL | E1 | ME | 260 | 09 | BILL 4 | B04 | S1 | 2F | R00 | ACF07 | MEP | 260 |  |  | 2n | 15 | 50 | 0 |  |  |  |  |
| CGLE122015C0 |  | CB-GL ; 2nd Fix, Medical Gas pipe (Exam- 1) | 42d | 2011-09-05 A | 2011-12-07 | CGLE109201C0, CGLE122007C0 SS | 10% | 37.8d | 2011-09-13 | 2011-10-31 | 15d | 0d | PLUMBING [1299.6 h]; Cost [26046.8 AED] | 26,046.85 | 2,604.69 |  |  |  |  |  |  | CGLE122015C0 |  |  | CB | C | GL | E1 | ME | 220 | 15 | BILL 4 | B04 | S1 | 2F | R00 | ACF07 | MEP | 220 |  |  | 2n | 10 |  |  |  |  |  |  |
| CGLE105511C0 |  | CB-GL ; Wall reinforcement for MEP/Medical (Exam- 1) | 24.12d | 2011-10-19 | 2011-11-20 | CGLE109201C0 |  |  |  |  | 34.67d | 19.68d | SECONDARY STEEL [49 h]; Cost |  |  |  |  |  |  |  |  | CGLE105511C0 |  |  | CB | C | GL | E1 | SW | 055 | 11 | BILL 4 | B04 | S1 | 03 | R00 | ACF03 |  | b |  |  |  |  |  |  |  |  |  |  |
| CGLE108103C0 |  | CB-GL ; Door Frames (Exam- 1) | 42d | 2011-11-12 | 2012-01-02 | CGLE109201C0, GNHE08101C0 FS+79d |  |  |  |  | 54d | 39d | ASSORTED DOORS [236 h]; Cost |  |  |  |  |  |  | 316 | 947 | CGLE108103C0 |  |  | CB | C | GL | E1 | DO | 081 | 03 | BILL 4 | B04 | S1 | DF | R00 | ACF06 |  | 081 |  |  |  |  |  |  |  | 08 |  |  |
| CGLE127001C0 |  | CB-GL ; 1st Fix, Wiring/ Cabling work (Exam- 1) | 60d | 2011-12-06 | 2012-02-16 | CGLE126001C0, CGLE126013C0, CGLE127010C0 SS |  |  |  |  | 46.8d | 31.8d | ELECTRICAL [4189.2 h]; Cost |  |  |  |  |  |  |  |  | CGLE127001C0 |  | 55576.91 | CB | C | GL | E1 | ME | 270 | 01 | BILL 4 | B04 | S1 | 1F | R00 | ACF04 | MEP | 270 | M1F |  | 1S | 25 | 35 | 25 |  |  |  |  |
| CGLE101005C0 |  | CB-GL ; 2nd, Wall Inspection by Consultant (Exam- 1) | 6d | 2011-12-08 | 2011-12-14 | CGLE122011C0, CGLE122015C0, CGLE126009C0 |  |  |  |  | 15d | 0d | Labor General [0.6 h]; Cost |  |  |  |  |  |  |  |  | CGLE101005C0 |  |  | CB | C | GL | E1 | ME | 010 | 05 | BILL 4 | B04 | S1 | WI | R00 | ACF07 | MEP | 010 |  |  | 2n | 25 |  |  |  |  |  |  |
| CGLE109205C0 |  | CB-GL ; Partitions Closing (Exam- 1) | 54d | 2011-12-15 | 2012-02-18 | CGLE101005C0, CGLE105511C0, CGLE109203C0, CGLE122005C0, CGLE122007C0, CGLE122019C0, CAFOA09204C1 FF, CGLE108103C0 FF, CGLE123008C0 FF, CAFCI09201R20 FS+65d |  |  |  |  | 15d | 0d | PARTITIONS [483 m]; PARTITIONS [3997 h]; Cost |  |  |  |  |  |  | 315 | 946 | CGLE109205C0 |  |  | CB | C | GL | E1 | PT | 092 | 05 | BILL 4 | B04 | S1 | FF | R00 | ACF06 | GP | 092 | P2F | R3 |  |  |  |  |  |  |  |  |
| CGLE107103C0 |  | CB-GL ; Waterproofing (Exam- 1) | 12d | 2012-02-19 | 2012-03-03 | CGLE108103C0, CGLE109205C0 |  |  |  |  | 67d | 0d | THERMAL & MOISTURE [200 h]; THERMAL & MOISTURE [1304 m2]; Cost |  |  |  |  |  |  | 105 | 999 | CGLE107103C0 |  |  | CB | C | GL | E1 | FF | 071 | 03 | BILL 4 | B04 | S1 | 01 | R00 | ACF03 |  | 071 |  |  |  |  |  |  |  |  |  |  |
| CGLE109901C0 |  | CB-GL ; Wall Prime & 1st coat (Exam- 1) | 30d | 2012-02-19 | 2012-03-24 | CGLE109205C0 |  |  |  |  | 15d | 0d | WALL PAINT [1646 h]; WALL PAINT [2053 m2]; Cost |  |  |  |  |  |  | 328 | 956 | CGLE109901C0 |  |  | CB | C | GL | E1 | PA | 099 | 01 | BILL 4 | B04 | S1 | 01 | R00 | ACF06 |  | 099 |  |  |  |  |  |  |  |  |  |  |
| CGLE126005C0 |  | CB-GL ; 2nd Fix, Wiring for Power/Lighting/Emergency (Exam- 1) | 42d | 2012-02-19 | 2012-04-07 | CGLE109205C0 |  |  |  |  | 115d | 0d | ELECTRICAL [216 h]; Cost |  |  |  |  |  |  |  |  | CGLE126005C0 |  |  | CB | C | GL | E1 | ME | 260 | 05 | BILL 4 | B04 | S1 | 2F | R00 | ACF07 | MEP | 260 |  |  | 2n |  |  |  |  |  |  |  |
| CGLE126007C0 |  | CB-GL ; 2nd Fix, Cable Pulling (Exam- 1) | 48d | 2012-02-19 | 2012-04-14 | CGLE109201C0 SS+6d, CGLE109205C0 |  |  |  |  | 127d | 114.6d | ELECTRICAL [6616.8 h]; Cost |  |  |  |  |  |  |  |  | CGLE126007C0 |  | 150602.92 | CB | C | GL | E1 | ME | 260 | 07 | BILL 4 | B04 | S1 | 2F | R00 | ACF07 | MEP | 260 |  |  | 2n | 45 |  |  |  |  |  |  |
| CGLE126011C0 |  | CB-GL ; 2nd Fix, Inst of Equipment (DB) (Exam- 1) | 42d | 2012-02-19 | 2012-04-07 | CGLE109205C0 |  |  |  |  | 39d | 24d | ELECTRICAL [1266 h]; Cost |  |  |  |  |  |  |  |  | CGLE126011C0 |  |  | CB | C | GL | E1 | ME | 260 | 11 | BILL 4 | B04 | S1 | 2F | R00 | ACF04 | MEP | 260 |  |  | 2n |  |  |  |  |  | E |  |
| CGLE126053C0 |  | CB-GL ; 2nd Fix, Wiring / Cabling (Exam- 1) | 30d | 2012-02-19 | 2012-03-24 | CGLE109205C0 |  |  |  |  | 145d | 132.6d | ELECTRICAL [216 h]; Cost |  |  |  |  |  |  | 389 | 977 | CGLE126053C0 |  |  | CB | C | GL | E1 | ME | 260 | 53 | BILL 4 | B04 | S1 | 2F | R00 | ACF07 | MEP | 260 |  |  | 2n |  |  |  |  |  |  |  |
| CGLE127020C0 |  | CB-GL ; 2nd Fix, Inst of ELV Equipment (Panels) (Exam- 1) | 42d | 2012-02-19 | 2012-04-07 | CGLE109205C0 |  |  |  |  | 133d | 62.6d | ELECTRICAL [384 h]; Cost |  |  |  |  |  |  |  |  | CGLE127020C0 |  |  | CB | C | GL | E1 | ME | 270 | 20 | BILL 4 | B04 | S1 | 2F | R00 | ACF04 | MEP | 270 |  |  | 2n |  |  |  |  |  | E |  |
| CGLE109305C0 |  | CB-GL ; Ceramic floor tile (Exam- 1) | 30d | 2012-03-04 | 2012-04-07 | CGLE107103C0 |  |  |  |  | 67d | 0d | CERAMIC FLOOR TILES [232 h]; CERAMIC FLOOR TILES [128 m2]; Cost |  |  |  |  |  |  | 106 | 1000 | CGLE109305C0 |  |  | CB | C | GL | E1 | FF | 093 | 05 | BILL 4 | B04 | S1 | 02 | R00 | ACF06 |  | CT |  |  |  |  |  |  |  |  |  |  |
| CGLE105501C0 |  | CB-GL ; Handrails & balustrade (Exam- 1) | 36d | 2012-03-25 | 2012-05-05 | CGLE109901C0 |  |  |  |  | 77d | 36d | SECONDARY STEEL [318 h]; Cost |  |  |  |  |  |  |  |  | CGLE105501C0 |  |  | CB | C | GL | E1 | SW | 055 | 01 | BILL 4 | B04 | S1 | 01 | R00 | ACF03 |  | a |  |  |  |  |  |  |  |  |  |  |
| CGLE109501C0 |  | CB-GL ; Ceiling Grid and ServiceTile (Exam- 1) | 36d | 2012-03-25 | 2012-05-05 | CGLE105503C0, CGLE121117C0, CGLE123008C0, CGLE123009C0, CGLE123015C0, CGLE127001C0, CAFCI22001R02 FS+79d, CGLE126011C0 FF, CGLE109901C0 |  |  |  |  | 15d | 0d | CEILING GRID FOR GYPSUM [2771.03 h]; CEILING GRID FOR GYPSUM [237.1 m2]; Cost |  |  |  |  |  |  | 323 | 952 | CGLE109501C0 |  |  | CB | C | GL | E1 | CE | 095 | 01 | BILL 4 | B04 | S1 | 01 | R00 | ACF06 |  | 095 |  |  |  |  |  |  |  |  |  | R3 |
| CGLE122025C0 |  | CB-GL ; Final Fix, Inst of Sanitary Ware (Exam- 1) | 48d | 2012-04-08 | 2012-06-02 | CGLE109205C0, CGLE109305C0, A10230 FS+148d |  |  |  |  | 67d | 0d | PLUMBING [1633.2 h]; Cost |  |  |  |  |  |  |  |  | CGLE122025C0 |  |  | CB | C | GL | E1 | ME | 220 | 25 | BILL 4 | B04 | S1 | FF | R00 | ACF07 | MEP | 220 |  |  | FF |  |  |  |  |  |  |  |
| CGLE126015C0 |  | CB-GL ; Final Fix, Termination & Gladding of Cables (Exam- 1) | 48d | 2012-04-08 | 2012-06-02 | CGLE126005C0 |  |  |  |  | 115d | 102.6d | ELECTRICAL [826.8 h]; Cost |  |  |  |  |  |  |  |  | CGLE126015C0 |  |  | CB | C | GL | E1 | ME | 260 | 15 | BILL 4 | B04 | S1 | FF | R00 | ACF07 | MEP | 260 |  |  | FF |  |  |  |  |  |  |  |
| CGLE109601C0 |  | CB-GL ; Flooring (Rubber & etc) (Exam- 1) | 36d | 2012-05-06 | 2012-06-17 | CGLE109901C0, CVTVT14305C0 FF, CGLE109501C0, CGLE105501C0 FF |  |  |  |  | 41d | 0d | RUBBER FLOOR [264 h]; RUBBER FLOOR [662 m2]; Cost |  |  |  |  |  |  | 326 | 955 | CGLE109601C0 |  |  | CB | C | GL | E1 | FF | 096 | 01 | BILL 4 | B04 | S1 | 03 | R00 | ACF06 |  | RF |  |  |  |  |  |  |  |  |  |  |
| CGLE109903C0 |  | CB-GL ; Wall Final Paint (Exam- 1) | 36d | 2012-05-06 | 2012-06-17 | CGLE109901C0, CGLE109905C0 |  |  |  |  | 115d | 38.6d | WALL PAINT [886 h]; WALL PAINT [1105 m2]; Cost |  |  |  |  |  |  | 329 | 957 | CGLE109903C0 |  |  | CB | C | GL | E1 | PA | 099 | 03 | BILL 4 | B04 | S1 | 02 | R00 | ACF06 |  | 099 |  |  |  |  |  |  |  |  |  |  |
| CGLE109905C0 |  | CB-GL ; Ceiling Prime & 1st coat (Exam- 1) | 0d | 2012-05-06 | 2012-05-06 | CGLE109501C0 |  |  |  |  | 115d | 0d | Cost |  |  |  |  |  |  | 330 | 958 | CGLE109905C0 |  |  | CB | C | GL | E1 | PA | 099 | 05 | BILL 4 | B04 | S1 | 01 | R00 | ACF06 |  | 099 |  |  |  |  |  |  |  |  |  |  |
| CGLE121115C0 |  | CB-GL ; 2nd Fix, Inst of Sprinkler droppers (Exam- 1) | 30d | 2012-05-06 | 2012-06-09 | CGLE109501C0 |  |  |  |  | 49d | 0d | MECHANICAL [2052 h]; Cost |  |  |  |  |  |  |  |  | CGLE121115C0 |  |  | CB | C | GL | E1 | ME | 211 | 15 | BILL 4 | B04 | S1 | 2F | R00 | ACF07 | MEP | 211 |  |  | 2n |  |  |  |  |  |  |  |
| CGLE123021C0 |  | CB-GL ; 2nd Fix, Inst of Flexible Duct & Plenum boxes (Exam- 1) | 42d | 2012-05-06 | 2012-06-24 | CGLE109205C0, CGLE109501C0 |  |  |  |  | 49d | 0d | MECHANICAL [2824.8 h]; Cost |  |  |  |  |  |  |  |  | CGLE123021C0 |  |  | CB | C | GL | E1 | ME | 230 | 21 | BILL 4 | B04 | S1 | 2F | R00 | ACF07 | MEP | 230 |  |  | 2n |  |  |  |  |  |  |  |
| CGLE126017C0 |  | CB-GL ; Final Fix, Inst of Ceiling rose (Exam- 1) | 48d | 2012-05-06 | 2012-07-01 | CGLE109501C0 |  |  |  |  | 49d | 0d | ELECTRICAL [123.6 h]; Cost |  |  |  |  |  |  |  |  | CGLE126017C0 |  |  | CB | C | GL | E1 | ME | 260 | 17 | BILL 4 | B04 | S1 | FF | R00 | ACF07 | MEP | 260 |  |  | FF |  |  |  |  |  |  |  |
| CGLE127002C0 |  | CB-GL ; 2nd Fix, Wiring Droppers (Exam- 1) | 42d | 2012-05-06 | 2012-06-24 | CGLE109501C0 |  |  |  |  | 49d | 9.6d | ELECTRICAL [216 h]; Cost |  |  |  |  |  |  |  |  | CGLE127002C0 |  |  | CB | C | GL | E1 | ME | 270 | 02 | BILL 4 | B04 | S1 | 2F | R00 | ACF07 | MEP | 270 |  |  | 2n |  |  |  |  |  |  |  |
| CGLE106101C0 |  | CB-GL ; Wood / caseworks (Exam- 1) | 60d | 2012-05-08 | 2012-07-18 | CGLCO04401C0, CGLE109501C0, CGLCO04405C0, CGLCO04413C0, CAFWA00113M0, CAFCI22001R02 FS+184d, A10370 |  |  |  |  | 12.4d | 0d | WOOD WORK/CASEWORK [1454.61 no]; WOOD WORK/CASEWORK [5928 h]; Cost |  |  |  |  |  |  | 332 | 960 | CGLE106101C0 |  |  | CB | C | GL | E1 | WO | 061 | 01 | BILL 4 | B04 | S1 | WW | R00 | ACF06 |  | 061 |  |  |  |  |  |  |  |  |  | R3 |
| CGLE106102C0 |  | CB-GL ; Head Wall (Exam- 1) | 29.88d | 2012-05-08 | 2012-06-12 | CGLCO04401C0, CGLE109501C0, CGLE106101C0 SS, CAFWA00113M0, CAFCI22001R02 FS+184d |  |  |  |  | 76.53d | 64.12d | WOOD WORK/CASEWORK [2513 h]; Cost |  |  |  |  |  |  | 332 | 960 | CGLE106102C0 |  |  | CB | C | GL | E1 | WO | 061 | 02 | BILL 4 | B04 | S1 | WW | R00 | ACF06 |  | 061 |  |  |  |  |  |  |  |  |  | R3 |
| CGLE109701C0 |  | CB-GL ; Wall finishes (ST, WD, WC) (Exam- 1) | 36d | 2012-05-08 | 2012-06-20 | CGLE127020C0 FF, CAFCI22001R02 FS+164d, CGLE106101C0 SS |  |  |  |  | 70.4d | 0d | ASSORTED WALL FINISH [1232 h]; ASSORTED WALL FINISH [1416 m2]; Cost |  |  |  |  |  |  | 105 | 1002 | CGLE109701C0 |  |  | CB | C | GL | E1 | WF | 097 | 01 | BILL 4 | B04 | S1 | 01 | R00 | ACF06 |  | 097 |  |  |  |  |  |  |  |  |  |  |
| CGLE121113C0 |  | CB-GL ; Final Fix, Inst of Sprinklers head/ Extinguisher (Exam- 1) | 48d | 2012-05-13 | 2012-07-08 | CGLE109501C0, CGLE121115C0 SS+6d |  |  |  |  | 49d | 36.6d | MECHANICAL [278.4 h]; Cost |  |  |  |  |  |  |  |  | CGLE121113C0 |  |  | CB | C | GL | E1 | ME | 211 | 13 | BILL 4 | B04 | S1 | FF | R00 | ACF07 | MEP | 211 |  |  | FF |  |  |  |  |  |  |  |
| CGLE126003C0 |  | CB-GL ; Final Fix, Inst of Light fittings (Exam- 1) | 48d | 2012-05-13 | 2012-07-08 | CGLE109501C0, CGLE126017C0 SS+6d |  |  |  |  | 49d | 36.6d | ELECTRICAL [7983.6 h]; Cost |  |  |  |  |  |  |  |  | CGLE126003C0 |  |  | CB | C | GL | E1 | ME | 260 | 03 | BILL 4 | B04 | S1 | FF | R00 | ACF07 | MEP | 260 |  |  | FF |  |  |  |  |  |  |  |
| CGLE127030C0 |  | CB-GL ; Final Fix, Inst of ELV device (Detector/Speaker) (Exam- 1) | 48d | 2012-05-23 | 2012-07-19 | CGLTR27002C0, CGLE127002C0 SS+6d |  |  |  |  | 39.4d | 27d | ELECTRICAL [2054.4 h]; Cost |  |  |  |  |  |  |  |  | CGLE127030C0 |  |  | CB | C | GL | E1 | ME | 270 | 30 | BILL 4 | B04 | S1 | FF | R00 | ACF07 | MEP | 270 |  |  | FF |  |  |  |  |  |  |  |
| CGLE122021C0 |  | CB-GL ; Final Fix, Terminate Sanitary Ware & Appliances (Exam- 1) | 48d | 2012-06-03 | 2012-07-29 | CGLE122011C0, CGLE122025C0 |  |  |  |  | 67d | 54.6d | PLUMBING [1633.2 h]; Cost |  |  |  |  |  |  |  |  | CGLE122021C0 |  |  | CB | C | GL | E1 | ME | 220 | 21 | BILL 4 | B04 | S1 | FF | R00 | ACF07 | MEP | 220 |  |  | FF |  |  |  |  |  |  |  |
| CGLE108107C0 |  | CB-GL ; Doors (Exam- 1) | 42d | 2012-06-18 | 2012-08-05 | CGLE108103C0, CGLE109901C0, CGLE109601C0 |  |  |  |  | 41d | 0d | ASSORTED DOORS [810 h]; ASSORTED DOORS [81 no]; Cost |  |  |  |  |  |  | 317 | 948 | CGLE108107C0 |  |  | CB | C | GL | E1 | DO | 081 | 07 | BILL 4 | B04 | S1 | DR | R00 | ACF06 |  | 081 |  |  |  |  |  |  |  | 08 |  |  |
| CGLE111001C0 |  | CB-GL ; Wall Protection (WP, CG, WG, FCG) (Exam- 1) | 24d | 2012-06-20 | 2012-07-18 | CGLE109701C0, CGLE109903C0 SS |  |  |  |  | 88.4d | 76d | FF&E [49 h]; Cost |  |  |  |  |  |  | 326 | 1001 | CGLE111001C0 |  |  | CB | C | GL | E1 | WF | 110 | 01 | BILL 4 | B04 | S1 | 03 | R00 | ACF08 |  | b |  |  |  |  |  |  |  |  |  |  |
| CGLE123019C0 |  | CB-GL ; Final Fix, Inst of Grilles & Diffusers (Exam- 1) | 48d | 2012-06-25 | 2012-08-21 | CGLE109501C0, CGLE123021C0 |  |  |  |  | 49d | 36.6d | MECHANICAL [1970.4 h]; Cost |  |  |  |  |  |  |  |  | CGLE123019C0 |  |  | CB | C | GL | E1 | ME | 230 | 19 | BILL 4 | B04 | S1 | FF | R00 | ACF07 | MEP | 230 |  |  | FF |  |  |  |  |  |  |  |
| CGLE111005C0 |  | CB-GL ; Utility belt (Exam- 1) | 30d | 2012-06-25 | 2012-07-30 | CGLE106101C0 SS+10d, CGLE109205C0, CGLE106101C0 FF+10d |  |  |  |  | 12.4d | 0d | FF&E [662 h]; FF&E [353.16 no]; Cost |  |  |  |  |  |  |  |  | CGLE111005C0 |  |  | CB | C | GL | E1 | WO | 110 | 05 | BILL 4 | B04 | S1 | 05 | R00 | ACF08 |  | e |  |  |  |  |  |  |  |  |  |  |
| CGLE111003C0 |  | CB-GL ; FF & E (Exam- 1) | 24d | 2012-07-18 | 2012-08-15 | CGLE109601C0, CGLE106101C0 |  |  |  |  | 64.4d | 52d | FF&E [157 h]; FF&E [83.26 no]; Cost |  |  |  |  |  |  | 333 | 961 | CGLE111003C0 |  |  | CB | C | GL | E1 | WO | 110 | 03 | BILL 4 | B04 | S1 | 04 | R00 | ACF08 |  | a |  |  |  |  |  |  |  |  |  |  |
| CGLE122029C0 |  | CB-GL ; Final Fix, Medical Gas pipe (Exam- 1) | 18d | 2012-07-30 | 2012-08-22 | CGLE109501C0, CGLE111005C0 |  |  |  |  | 12.4d | 0d | PLUMBING [504 h]; Cost |  |  |  |  |  |  |  |  | CGLE122029C0 |  |  | CB | C | GL | E1 | ME | 220 | 29 | BILL 4 | B04 | S1 | FF | R00 | ACF07 | MEP | 220 |  |  | FF |  |  |  |  |  |  |  |
| CGLE108709C0 |  | CB-GL ; Ironmongery (Exam- 1) | 32d | 2012-08-06 | 2012-09-13 | CGLE108107C0 |  |  |  |  | 41d | 28.6d | IRONMONGERY [600 h]; IRONMONGERY [60 no]; Cost |  |  |  |  |  |  | 322 | 951 | CGLE108709C0 |  |  | CB | C | GL | E1 | DO | 087 | 09 | BILL 4 | B04 | S1 | IM | R00 | ACF06 |  | 087 |  |  |  |  |  |  |  | 08 |  |  |
| CGLE101006C0 |  | CB-GL ; 2nd, Ceiling Inspection by Consultants (Exam- 1) | 6d | 2012-08-22 | 2012-08-29 | CGLE121115C0, CGLE123009C0, CGLE123015C0, CGLE127002C0, CGLE109501C0, CGLE121113C0, CGLE122029C0, CGLE126017C0, CGLE126003C0, CGLE127030C0 |  |  |  |  | 12.4d | 0d | Labor General [0.6 h]; Cost |  |  |  |  |  |  |  |  | CGLE101006C0 |  |  | CB | C | GL | E1 | ME | 010 | 06 | BILL 4 | B04 | S1 | CI | R00 | ACF07 | MEP | 010 |  |  | 2n |  |  |  |  |  |  |  |
| CGLE109503C0 |  | CB-GL ; Ceiling closure - ACT/Gypsum (Exam- 1) | 18d | 2012-08-29 | 2012-09-19 | CAFOA09503C1 FF, CGLE101006C0, CGLE121115C0, CGLE126005C0, CGLE127002C0, CGLE106101C0, CGLE109701C0, CGLE106102C0, CGLE123021C0, CGLE126053C0, CGLE126007C0, CV10GL09502R2 FF |  |  |  |  | 12.4d | 0d | ASSORTED CEILING FINISH [528.9 h]; CEILING GYPSUM [77.69 h]; ASSORTED CEILING FINISH [860 m2]; CEILING GYPSUM [217 m2]; Cost |  |  |  |  |  |  | 324 | 953 | CGLE109503C0 |  |  | CB | C | GL | E1 | CE | 095 | 03 | BILL 4 | B04 | S1 | 02 | R00 | ACF06 |  | 095 |  |  |  |  |  |  |  |  |  | R3 |
| CGLE109672C1 |  | CB-GL, Carpet Tile Finish (Exam-1 Offices/Conference) | 0d | 2012-09-19 | 2012-09-19 | CGLE109903C0 SS, CGLE109907C0 SS |  |  |  |  | 36.4d | 24d | Cost |  |  |  |  |  |  |  |  |  |  |  | CB | C | GL | E1 | FF | 096 |  |  | B04 |  |  | R00 | ACF06 | CPT | CPT |  |  |  |  |  |  |  |  |  |  |
| CGLE109907C0 |  | CB-GL ; Ceiling Final paint (Exam- 1) | 0d | 2012-09-19 | 2012-09-19 | CGLE109601C0, CGLE109905C0, CGLE109503C0 |  |  |  |  | 36.4d | 0d | Cost |  |  |  |  |  |  | 331 | 959 | CGLE109907C0 |  |  | CB | C | GL | E1 | PA | 099 | 07 | BILL 4 | B04 | S1 | 02 | R00 | ACF06 |  | 099 |  |  |  |  |  |  |  |  |  |  |
| CGLE122027C0 |  | CB-GL ; Final Fix, Inst of All drain (Exam- 1) | 18d | 2012-09-19 | 2012-10-10 | CGLE109305C0, CGLE109503C0 |  |  |  |  | 18.4d | 6d | PLUMBING [1633.2 h]; Cost |  |  |  |  |  |  |  |  | CGLE122027C0 |  |  | CB | C | GL | E1 | ME | 220 | 27 | BILL 4 | B04 | S1 | FF | R00 | ACF07 | MEP | 220 |  |  | FF |  |  |  |  |  |  |  |
| CGLE126019C0 |  | CB-GL ; Final Fix, Inst of Switch/Sockets (Exam- 1) | 12d | 2012-09-19 | 2012-10-03 | CGLE109901C0, CGLE109503C0 |  |  |  |  | 12.4d | 0d | ELECTRICAL [427.2 h]; Cost |  |  |  |  |  |  |  |  | CGLE126019C0 |  |  | CB | C | GL | E1 | ME | 260 | 19 | BILL 4 | B04 | S1 | FF | R00 | ACF07 | MEP | 260 |  |  | FF |  |  |  |  |  |  |  |

| ID | WBS | Activity | Duration | Start | Finish | Predecessors | Complete | Remaining | Planned start | Planned finish | Total float | Free float | Resources | Cost | Actual cost | change id | CCAD BUILDING(SET) | CCAD PHASE(SET) | CCAD FLOOR(SET) | CCAD ZONE(SET) | CCAD WORK(SET) | CCAD SECTION(SET) | CCAD SERIAL No.(SET) | CCAD CBS(SET) | CCAD BILL(SET) | CCAD HANDOVER(SET) | CCAD TAG(SET) | CCAD REV(SET) | CCADACF (SET) | CCAD SSCF | user_number8 | user_integer1 | user_integer2 | user_number7 | Change Order # | NEW ACTIVITY ID | RENZ % COMPLETE | Claimed This Month | CCAD CSA | Act Selector % | R3 Partitions | CCAD SUB ZONE MEP(SET) | July2011 Target% Complete | P_811 | P_711 | PERCENT COMPLETE | CCAD DIVISION(SET) | CCAD MEQ |
| --- | --- | --- | --- | --- | --- | --- | --- | --- | --- | --- | --- | --- | --- | --- | --- | --- | --- | --- | --- | --- | --- | --- | --- | --- | --- | --- | --- | --- | --- | --- | --- | --- | --- | --- | --- | --- | --- | --- | --- | --- | --- | --- | --- | --- | --- | --- | --- | --- |
|  | 10 | **Precommissioning Tesing & snagging (Exam 1)** |  | 2012-10-03 | 2012-11-18 |  |  |  |  |  |  |  |  |  |  |  |  |  |  |  |  |  |  |  |  |  |  |  |  |  |  |  |  |  |  |  |  |  |  |  |  |  |  |  |  |  |  |  |
| CGLTS01801C0 |  | CB-GL ; MEP de-snag, FIREM sign-off | 12d | 2012-10-03 | 2012-10-17 | CGLE122025C0, CGLE126015C0, CGLE121113C0, CGLE123019C0, CGLE122029C0, CGLE126017C0, CGLE126003C0, CGLE127030C0, CGLE122021C0, CGLE126019C0, CGLE111005C0 |  |  |  |  | 12.4d | 0d | TESTING & COMMISSIONING [2040 h]; Cost |  |  | CGLTS01801C0 | CB | C | GL | TS | SC | 018 | 01 | BILL 4 | B04 | S1 | 01 | R00 | ACF07 | 018 |  |  |  |  |  |  |  |  |  |  |  |  |  |  |  |  |  |  |
| CGLTS01810C0 |  | CB-GL ; Touch-up & Clean / JV inspection /CIR /De-snag | 17d | 2012-10-17 | 2012-11-08 | CGLCO04401C0, CGLCO04403C0, CGLCO04405C0, CGLCO04409C0, CGLCO04411C0, CGLCO04413C0, CGLE105501C0, CGLE105511C0, CGLE106101C0, CGLE106102C0, CGLE107103C0, CGLE108103C0, CGLE108107C0, CGLE108709C0, CGLE109201C0, CGLE109203C0, CGLE109205C0, CGLE109305C0, CGLE109501C0, CGLE109503C0, CGLE109601C0, CGLE109701C0, CGLE109901C0, CGLE109903C0, CGLE109905C0, CGLE109907C0, CGLE111001C0, CGLE111003C0, CGLE111005C0, CGLE121113C0, CGLE122021C0, CGLE122025C0, CGLE122027C0, CGLE122029C0, CGLE123019C0, CGLE126003C0, CGLE126015C0, CGLE126017C0, CGLE126019C0, CGLE127030C0, CGLTS01801C0, CGLE109672C1, CGLE209673C1 |  |  |  |  | 12.4d | 0d | TESTING & COMMISSIONING [149 h]; Cost |  |  | CGLTS01802C0 | CB | C | GL | TS | SC | 018 | 02 | BILL 4 | B04 | S1 | 02 | R00 | ACF07 | 018 |  |  |  |  |  |  |  |  |  |  |  |  |  |  |  |  |  |  |
| CGLTS01817C0 |  | CB-GL ; Consultant's final de-snag inspection | 7d | 2012-11-08 | 2012-11-18 | CGLTS01810C0 |  |  |  |  | 12.4d | 5.08d | Labor General [0.5 h]; Cost |  |  | CGLTS01803C0 | CB | C | GL | TS | SC | 018 | 03 | BILL 4 | B04 | S1 | 03 | R00 | ACF07 | 018 |  |  |  |  |  |  |  |  |  |  |  |  |  |  |  |  |  |  |
|  | 03 | **Exam 2** |  | 2011-03-05 | 2012-11-21 |  |  |  |  |  |  |  |  |  |  |  |  |  |  |  |  |  |  |  |  |  |  |  |  |  |  |  |  |  |  |  |  |  |  |  |  |  |  |  |  |  |  |  |
| CGLE209201C0 |  | CB-GL ; Metal Studs (Exam- 2) | 84d | 2011-03-05 A | 2011-10-19 | CGLE223001C0, CAFCI09202R02 FS+57d | 95% | 4.2d | 2011-04-21 | 2011-07-30 | 9.88d | 0d | PARTITIONS [3291 h]; PARTITIONS - Metal Studs [399 m]; Cost |  |  | CGLE209201C0 | CB | C | GL | E2 | PT | 092 | 01 | BILL 4 | B04 | S1 | 1F | R00 | ACF06 | 092 | 0 | 0 | 0 | 0 | 313 | 944 | 35 | 76540.45 | GP | PMS | R3 |  |  |  |  |  |  |  |
| CGLE223001C0 |  | CB-GL ; 1st Fix, Inst. of Supports for MEP (Exam- 2) | 27d | 2011-03-15 A | 2011-10-03 | C01S203335C0, CGLS207808C0 | 90% | 2.7d | 2011-03-02 | 2011-04-03 | 16.48d | 0d | MECHANICAL [1024.8 h]; Cost [57766.2 AED] | 57,766.25 | 51,989.63 | CGLE223001C0 | CB | C | GL | E2 | ME | 230 | 01 | BILL 4 | B04 | S1 | 1F | R00 | ACF04 | 230 |  |  |  |  |  |  | 95 | 3350.44 | MEP | M1F |  | 1S |  |  |  |  |  |  |
| CGLE221111C0 |  | CB-GL ; 1st Fix, Inst of Sprinkler main pipe (Exam- 2) | 44d | 2011-03-17 A | 2011-10-05 | BLZHC01566C0, CGLE222005C0 SS+8d, CGLE223001C0, CGLS207808C0 | 95% | 2.2d | 2011-05-17 | 2011-07-09 | 22.77d | 0d | MECHANICAL [686.4 h]; Cost [37438.4 AED] | 37,438.4 | 35,566.48 | CGLE221111C0 | CB | C | GL | E2 | ME | 211 | 11 | BILL 4 | B04 | S1 | 1F | R00 | ACF04 | 211 |  |  |  |  |  |  | 80 | 2172.45 | MEP | M1F |  | 1S | 98 | 100 | 95 |  |  |  |
| CGLE226001C0 |  | CB-GL ; 1st Fix, Inst of Trunking/Conduiting (Exam- 2) | 90d | 2011-03-20 A | 2011-12-06 | CGLE223001C0, CGLS207808C0 | 45% | 49.5d | 2011-04-03 | 2011-07-18 | 16.48d | 0d | ELECTRICAL [4404 h]; Cost [29580.4 AED] | 29,580.43 | 13,311.19 | CGLE226001C0 | CB | C | GL | E2 | ME | 260 | 01 | BILL 4 | B04 | S1 | 1F | R00 | ACF04 | 260 |  |  |  |  |  |  | 50 | 117674.8 | MEP | M1F |  | 1S | 98 |  |  |  |  |  |
| CGLE222019C0 |  | CB-GL ; 1st Fix, Inst of Drainage pipe (ceiling) (Exam- 2) | 200d | 2011-03-21 A | 2011-10-08 | BLZHC01566C0, CGLE223001C0, CGLE226013C0 SS+9d, CGLS207808C0 | 98% | 4d | 2011-05-02 | 2011-12-31 | 22.77d | 0d | PLUMBING [1714.8 h]; Cost [92715.9 AED] | 92,715.95 | 90,861.63 | CGLE222019C0 | CB | C | GL | E2 | ME | 220 | 19 | BILL 4 | B04 | S1 | 1F | R00 | ACF04 | 220 |  |  |  |  |  |  | 95 |  | MEP | M1F |  | 1S | 98 |  |  |  |  |  |
| CGLE227010C0 |  | CB-GL ; 1st Fix, Inst of Trunking for ELV system (Exam- 2) | 78d | 2011-03-23 A | 2011-12-07 | CGLE223001C0, CGLE226001C0 SS+9d, CGLS207808C0 | 35% | 50.7d | 2011-04-13 | 2011-07-14 | 16.48d | 0d | ELECTRICAL [1843.2 h]; Cost [24667.9 AED] | 24,667.88 | 8,633.76 | CGLE227010C0 | CB | C | GL | E2 | ME | 270 | 10 | BILL 4 | B04 | S1 | 1F | R00 | ACF04 | 270 |  |  |  |  |  |  | 45 |  | MEP | M1F |  | 1S | 98 | 65 | 60 |  |  |  |
| CGLE226013C0 |  | CB-GL ; 1st Fix, Inst of Cable Tray (Exam- 2) | 90d | 2011-03-26 A | 2011-12-11 | CGLE223001C0, CGLE227010C0 SS+7d, CGLS207808C0 | 40% | 54d | 2011-04-21 | 2011-08-06 | 22.77d | 0d | ELECTRICAL [4921.2 h]; Cost [17044 AED] | 17,043.96 | 6,817.58 | CGLE226013C0 | CB | C | GL | E2 | ME | 260 | 13 | BILL 4 | B04 | S1 | 1F | R00 | ACF04 | 260 |  |  |  |  |  |  | 60 |  | MEP | M1F |  | 1S | 98 | 90 | 70 |  |  |  |
| CGLE209203C0 |  | CB-GL ; Partitions 1st face (Exam- 2) | 54d | 2011-04-23 A | 2011-11-13 | CGLE209201C0, CGLE223023C0 FF | 67% | 17.82d | 2011-05-05 | 2011-07-09 | 35.85d | 25.98d | PARTITIONS [399 m]; PARTITIONS [2579 h]; Cost |  |  | CGLE209203C0 | CB | C | GL | E2 | PT | 092 | 03 | BILL 4 | B04 | S1 | 2F | R00 | ACF06 | 092 | 0 | 0 | 0 | 0 | 314 | 945 | 15 | 61232.4 | GP | P1F |  |  |  | 55 | 41 |  |  |  |
| CGLE222005C0 |  | CB-GL ; 1st Fix, Inst of Water supply pipe (ceiling) (Exam- 2) | 54d | 2011-05-04 A | 2011-11-20 | BLZHC01566C0, CGLE222019C0 SS+5d, CGLE223001C0, CGLS207808C0 | 30% | 37.8d | 2011-06-04 | 2011-08-07 | 22.77d | 0d | PLUMBING [1682.4 h]; Cost [90924.8 AED] | 90,924.75 | 27,277.42 | CGLE222005C0 | CB | C | GL | E2 | ME | 220 | 05 | BILL 4 | B04 | S1 | 1F | R00 | ACF04 | 220 |  |  |  |  |  |  | 15 |  | MEP | M1F |  | 1S | 50 | 30 | 15 |  |  |  |
| CGLE221117C0 |  | CB-GL ; 1st Fix, Inst of Sprinkler branch pipe (Exam- 2) | 200d | 2011-05-15 A | 2011-11-20 | CGLE209201C0, CGLE221111C0, CGLE205503C0 FF+18d | 90% | 20d | 2011-07-06 | 2012-03-06 | 89.62d | 79.75d | MECHANICAL [1009.2 h]; Cost [55153.8 AED] | 55,153.76 | 49,638.38 | CGLE221117C0 | CB | C | GL | E2 | ME | 211 | 17 | BILL 4 | B04 | S1 | 1F | R00 | ACF04 | 211 |  |  |  |  |  |  | 70 |  | MEP | M1F |  | 1S | 98 |  |  | 90 |  |  |
| CGLE223017C0 |  | CB-GL ; 1st Fix, Inst of CHW pipe (Exam- 2) | 120d | 2011-05-15 A | 2011-11-20 | CGLE221111C0 SS+8d, CGLE223001C0, CGLS207808C0, CGLE205503C0 FF+18d | 75% | 30d | 2011-06-13 | 2011-11-03 | 15.22d | 0d | MECHANICAL [2395.2 h]; Cost [130782 AED] | 130,781.76 | 98,086.32 | CGLE223017C0 | CB | C | GL | E2 | ME | 230 | 17 | BILL 4 | B04 | S1 | 1F | R00 | ACF04 | 230 |  |  |  |  |  |  | 40 |  | MEP | M1F |  | 1S | 90 |  |  |  |  |  |
| CGLE223023C0 |  | CB-GL ; 1st Fix, Inst of Main Ducting (Exam- 2) | 200d | 2011-05-15 A | 2011-10-22 | BLZHC01566C0, CGLE223001C0, CGLE223017C0 SS+7d, CGLS207808C0 | 96% | 8d | 2011-06-21 | 2012-02-21 | 51.62d | 0d | MECHANICAL [16992 h]; Cost [927678 AED] | 927,677.51 | 890,570.41 | CGLE223023C0 | CB | C | GL | E2 | ME | 230 | 23 | BILL 4 | B04 | S1 | 1F | R00 | ACF04 | 230 |  |  |  |  |  |  | 40 | 484327.84 | MEP | M1F |  | 1S | 90 |  |  |  |  |  |
| CGLE226009C0 |  | CB-GL ; 2nd Fix, Inst of Wall conduites (Exam- 2) | 42d | 2011-06-09 A | 2011-12-07 | CGLE209201C0 | 10% | 37.8d | 2011-06-09 | 2011-07-30 | 9.88d | 0d | ELECTRICAL [430.8 h]; Cost [29580.4 AED] | 29,580.43 | 2,958.04 | CGLE226009C0 | CB | C | GL | E2 | ME | 260 | 09 | BILL 4 | B04 | S1 | 2F | R00 | ACF07 | 260 |  |  |  |  |  |  |  | 3429.57 | MEP |  |  | 2n | 20 | 50 | 20 |  |  |  |
| CGLE223009C0 |  | CB-GL ; 2nd Fix, Inst of VAV'S CHW connection (Exam- 2) | 72d | 2011-07-04 A | 2011-12-08 | CGLE223017C0 | 80% | 14.4d | 2011-09-03 | 2011-11-29 | 15.22d | 0d | MECHANICAL [3340.8 h]; Cost [76659.7 AED] | 76,659.7 | 61,327.76 | CGLE223009C0 | CB | C | GL | E2 | ME | 230 | 09 | BILL 4 | B04 | S1 | 2F | R00 | ACF07 | 230 | 0 | 0 | 0 | 0 |  |  |  |  | MEP |  |  | 2n | 35 | 60 | 15 |  |  |  |
| CGLE223008C0 |  | CB-GL ; 1st Fix, Inst of VCD's/FD's (Exam- 2) | 60d | 2011-07-10 A | 2011-12-08 | CGLE223023C0, CGLE205503C0 FF+18d | 40% | 36d | 2011-07-12 | 2011-09-22 | 75.62d | 65.75d | MECHANICAL [2648.4 h]; Cost [143058 AED] | 143,057.96 | 57,223.18 | CGLE223008C0 | CB | C | GL | E2 | ME | 230 | 08 | BILL 4 | B04 | S1 | 1F | R00 | ACF04 | 230 |  |  |  |  |  |  |  |  | MEP | M1F |  | 1S | 40 |  |  |  |  |  |
| CGLE223015C0 |  | CB-GL ; 2nd Fix, Insulation of CHW pipe & Duct (Exam- 2) | 120d | 2011-07-10 A | 2011-12-20 | CGLE223009C0 SS, CGLE223017C0 SS, CGLE223023C0 SS | 80% | 24d | 2011-09-07 | 2012-01-31 | 65.62d | 55.75d | MECHANICAL [8664 h]; Cost [363863 AED] | 363,863.22 | 291,090.57 | CGLE223015C0 | CB | C | GL | E2 | ME | 230 | 15 | BILL 4 | B04 | S1 | 2F | R00 | ACF07 | 230 |  |  |  |  |  |  |  |  | MEP |  |  | 2n | 25 | 80 | 65 |  |  |  |
| CGLE205503C0 |  | CB-GL ; Ceiling Support for medical equipment (Exam- 2) | 15.12d | 2011-08-08 A | 2011-10-26 | CGLE209201C0 | 60% | 6.05d | 2011-12-08 | 2011-12-26 | 15.22d | 0d | SECONDARY STEEL [163 h]; STRUCTURAL STEEL [12 T(Fe)]; Cost |  |  | CGLE205503C0 | CB | C | GL | E2 | SW | 055 | 03 | BILL 4 | B04 | S1 | 03 | R00 | ACF03 | b |  |  |  |  | 335 | 962 |  |  |  |  |  |  |  | 60 | 0 |  |  |  |
| CGLE222007C0 |  | CB-GL ; 1st Fix, Inst of Medical Gas pipe (Exam- 2) | 48d | 2011-08-10 A | 2011-11-21 | BLZHC01566C0, CGLE221111C0 SS+14d, CGLE223001C0, CGLS207808C0 | 20% | 38.4d | 2011-07-31 | 2011-09-26 | 23.38d | 13.5d | PLUMBING [504 h]; Cost [26046.8 AED] | 26,046.85 | 5,209.37 | CGLE222007C0 | CB | C | GL | E2 | ME | 220 | 07 | BILL 4 | B04 | S1 | 1F | R00 | ACF04 | 220 |  |  |  |  |  |  |  |  | MEP | M1F |  | 1S | 50 | 20 | 0 |  |  |  |
| CGLE222011C0 |  | CB-GL ; 2nd Fix, Drainage/Water pipe (wall) (Exam- 2) | 72d | 2011-08-10 A | 2011-12-06 | CGLE209201C0, CAFCI09201R20 FS+65d | 60% | 28.8d | 2011-11-03 | 2012-02-01 | 11.07d | 1.2d | PLUMBING [2510.4 h]; Cost [92715.9 AED] | 92,715.95 | 55,629.57 | CGLE222011C0 | CB | C | GL | E2 | ME | 220 | 11 | BILL 4 | B04 | S1 | 2F | R00 | ACF07 | 220 |  |  |  |  |  |  |  |  | MEP |  |  | 2n | 35 | 60 | 0 |  |  |  |
| CGLE222015C0 |  | CB-GL ; 2nd Fix, Medical Gas pipe (Exam- 2) | 42d | 2011-09-05 A | 2011-12-07 | CGLE209201C0, CGLE222007C0 SS | 10% | 37.8d | 2011-09-13 | 2011-10-31 | 9.88d | 0d | PLUMBING [1299.6 h]; Cost [26046.8 AED] | 26,046.85 | 2,604.69 | CGLE222015C0 | CB | C | GL | E2 | ME | 220 | 15 | BILL 4 | B04 | S1 | 2F | R00 | ACF07 | 220 |  |  |  |  |  |  |  |  | MEP |  |  | 2n | 35 |  |  |  |  |  |
| CGLE205511C0 |  | CB-GL ; Wall reinforcement for MEP/Medical (Exam- 2) | 24.12d | 2011-10-19 | 2011-11-20 | CGLE209201C0 |  |  |  |  | 29.55d | 19.68d | SECONDARY STEEL [36 h]; Cost |  |  | CGLE205511C0 | CB | C | GL | E2 | SW | 055 | 11 | BILL 4 | B04 | S1 | 03 | R00 | ACF03 | b |  |  |  |  |  |  |  |  |  |  |  |  |  |  |  |  |  |  |
| CGLE208103C0 |  | CB-GL ; Door Frames (Exam- 2) | 42d | 2011-11-12 | 2012-01-02 | CGLE209201C0, GNHE08101C0 FS+79d |  |  |  |  | 54.88d | 45d | ASSORTED DOORS [196 h]; Cost |  |  | CGLE208103C0 | CB | C | GL | E2 | DO | 081 | 03 | BILL 4 | B04 | S1 | DF | R00 | ACF06 | 081 |  |  |  |  | 316 | 947 |  |  |  |  |  |  |  |  |  |  | 08 |  |
| CGLE201005C0 |  | CB-GL ; 2nd, Wall Inspection by Consultant (Exam- 2) | 6d | 2011-12-08 | 2011-12-14 | CGLE222011C0, CGLE222015C0, CGLE226009C0 |  |  |  |  | 9.88d | 0d | Labor General [0.6 h]; Cost |  |  | CGLE201005C0 | CB | C | GL | E2 | ME | 010 | 05 | BILL 4 | B04 | S1 | WI | R00 | ACF07 | 010 |  |  |  |  |  |  |  |  | MEP |  |  | 2n | 25 |  |  |  |  |  |
| CGLE227001C0 |  | CB-GL ; 1st Fix, Wiring/ Cabling work (Exam- 2) | 60d | 2011-12-11 | 2012-02-21 | CGLE226001C0, CGLE226013C0, CGLE227010C0 SS |  |  |  |  | 49.17d | 39.3d | ELECTRICAL [4189.2 h]; Cost |  |  | CGLE227001C0 | CB | C | GL | E2 | ME | 270 | 01 | BILL 4 | B04 | S1 | 1F | R00 | ACF04 | 270 |  |  |  |  |  |  |  |  | MEP | M1F |  | 1S | 25 | 35 | 0 |  |  |  |
| CGLE209205C0 |  | CB-GL ; Partitions Closing (Exam- 2) | 60d | 2011-12-15 | 2012-02-25 | CGLE201005C0, CGLE205511C0, CGLE208103C0 FF, CGLE209203C0, CGLE222005C0, CGLE222007C0, CGLE222019C0, CGLE227010C0, CAFOA09204C1 FF, CGLE221117C0 FF, CGLE223008C0 FF, CGLE223015C0 FF, CGLE223009C0, CAFCI09201R20 FS+65d |  |  |  |  | 9.88d | 0d | PARTITIONS [399 m]; PARTITIONS [3291 h]; Cost |  |  | CGLE209205C0 | CB | C | GL | E2 | PT | 092 | 05 | BILL 4 | B04 | S1 | FF | R00 | ACF06 | 092 |  |  |  |  | 315 | 946 |  |  | GP | P2F | R3 |  |  |  |  |  |  |  |
| CGLE207103C0 |  | CB-GL ; Waterproofing (Exam- 2) | 12d | 2012-02-26 | 2012-03-10 | CGLE208103C0, CGLE209205C0 |  |  |  |  | 63.88d | 0d | THERMAL & MOISTURE [168 h]; THERMAL & MOISTURE [1082 m2]; Cost |  |  | CGLE207103C0 | CB | C | GL | E2 | FF | 071 | 03 | BILL 4 | B04 | S1 | 01 | R00 | ACF03 | 071 |  |  |  |  | 105 | 999 |  |  |  |  |  |  |  |  |  |  |  |  |
| CGLE209901C0 |  | CB-GL ; Wall Prime & 1st coat (Exam- 2) | 36d | 2012-02-26 | 2012-04-07 | CGLE209205C0 |  |  |  |  | 9.88d | 0d | WALL PAINT [1359 h]; WALL PAINT [1695 m2]; Cost |  |  | CGLE209901C0 | CB | C | GL | E2 | PA | 099 | 01 | BILL 4 | B04 | S1 | 01 | R00 | ACF06 | 099 |  |  |  |  | 328 | 956 |  |  |  |  |  |  |  |  |  |  |  |  |
| CGLE226005C0 |  | CB-GL ; 2nd Fix, Wiring for Power/Lighting/Emergency (Exam- 2) | 36d | 2012-02-26 | 2012-04-07 | CGLE209205C0 |  |  |  |  | 75.88d | 0d | ELECTRICAL [216 h]; Cost |  |  | CGLE226005C0 | CB | C | GL | E2 | ME | 260 | 05 | BILL 4 | B04 | S1 | 2F | R00 | ACF07 | 260 |  |  |  |  |  |  |  |  | MEP |  |  | 2n |  |  |  |  |  |  |
| CGLE226007C0 |  | CB-GL ; 2nd Fix, Cable Pulling (Exam- 2) | 48d | 2012-02-26 | 2012-04-21 | CGLE209201C0 SS+6d, CGLE209205C0 |  |  |  |  | 117.88d | 108d | ELECTRICAL [6616.8 h]; Cost |  |  | CGLE226007C0 | CB | C | GL | E2 | ME | 260 | 07 | BILL 4 | B04 | S1 | 2F | R00 | ACF07 | 260 |  |  |  |  |  |  |  | 75301.46 | MEP |  |  | 2n | 20 |  |  |  |  |  |
| CGLE226011C0 |  | CB-GL ; 2nd Fix, Inst of Equipment (DB) (Exam- 2) | 36d | 2012-02-26 | 2012-04-07 | CGLE209205C0 |  |  |  |  | 45.88d | 36d | ELECTRICAL [1266 h]; Cost |  |  | CGLE226011C0 | CB | C | GL | E2 | ME | 260 | 11 | BILL 4 | B04 | S1 | 2F | R00 | ACF04 | 260 |  |  |  |  |  |  |  |  | MEP |  |  | 2n |  |  |  |  |  | E |
| CGLE226053C0 |  | CB-GL ; 2nd Fix, Wiring / Cabling (Exam- 2) | 30d | 2012-02-26 | 2012-03-31 | CGLE209205C0 |  |  |  |  | 135.88d | 126d | ELECTRICAL [216 h]; Cost |  |  | CGLE226053C0 | CB | C | GL | E2 | ME | 260 | 53 | BILL 4 | B04 | S1 | 2F | R00 | ACF07 | 260 |  |  |  |  | 389 | 977 |  |  | MEP |  |  | 2n |  |  |  |  |  |  |
| CGLE227020C0 |  | CB-GL ; 2nd Fix, Inst of ELV Equipment (Panels) (Exam- 2) | 36d | 2012-02-26 | 2012-04-07 | CGLE209205C0 |  |  |  |  | 69.75d | 36d | ELECTRICAL [384 h]; Cost |  |  | CGLE227020C0 | CB | C | GL | E2 | ME | 270 | 20 | BILL 4 | B04 | S1 | 2F | R00 | ACF04 | 270 |  |  |  |  |  |  |  |  | MEP |  |  | 2n |  |  |  |  |  | E |
| CGLE209305C0 |  | CB-GL ; Ceramic floor tile (Exam- 2) | 30d | 2012-03-11 | 2012-04-14 | CGLE207103C0 |  |  |  |  | 63.88d | 0d | CERAMIC FLOOR TILES [192 h]; CERAMIC FLOOR TILES [106 m2]; Cost |  |  | CGLE209305C0 | CB | C | GL | E2 | FF | 093 | 05 | BILL 4 | B04 | S1 | 02 | R00 | ACF06 | CT |  |  |  |  | 106 | 1000 |  |  |  |  |  |  |  |  |  |  |  |  |
| CGLE205501C0 |  | CB-GL ; Handrails & balustrade (Exam- 2) | 36d | 2012-04-08 | 2012-05-19 | CGLE209901C0 |  |  |  |  | 33.75d | 0d | SECONDARY STEEL [263 h]; Cost |  |  | CGLE205501C0 | CB | C | GL | E2 | SW | 055 | 01 | BILL 4 | B04 | S1 | 01 | R00 | ACF03 | a |  |  |  |  |  |  |  |  |  |  |  |  |  |  |  |  |  |  |
| CGLE209501C0 |  | CB-GL ; Ceiling Grid and ServiceTile (Exam- 2) | 36d | 2012-04-08 | 2012-05-19 | CGLE205503C0, CGLE209205C0 SS+15d, CGLE221117C0, CGLE223008C0, CGLE223009C0, CGLE223015C0, CGLE227001C0, CGLE226011C0 FF, CGLE209901C0 |  |  |  |  | 9.88d | 0d | CEILING GRID FOR GYPSUM [2298.64 h]; CEILING GRID FOR GYPSUM [196.7 m2]; Cost |  |  | CGLE209501C0 | CB | C | GL | E2 | CE | 095 | 01 | BILL 4 | B04 | S1 | 01 | R00 | ACF06 | 095 |  |  |  |  | 323 | 952 |  |  |  |  |  |  |  |  |  |  |  |  |
| CGLE226015C0 |  | CB-GL ; Final Fix, Termination & Gladding of Cables (Exam- 2) | 48d | 2012-04-08 | 2012-06-02 | CGLE226005C0 |  |  |  |  | 75.88d | 66d | ELECTRICAL [826.8 h]; Cost |  |  | CGLE226015C0 | CB | C | GL | E2 | ME | 260 | 15 | BILL 4 | B04 | S1 | FF | R00 | ACF07 | 260 |  |  |  |  |  |  |  |  | MEP |  |  | FF |  |  |  |  |  |  |
| CGLE222025C0 |  | CB-GL ; Final Fix, Inst of Sanitary Ware (Exam- 2) | 48d | 2012-04-15 | 2012-06-09 | CGLE209205C0, CGLE209305C0, A10230 FS+148d |  |  |  |  | 63.88d | 0d | PLUMBING [1633.2 h]; Cost |  |  | CGLE222025C0 | CB | C | GL | E2 | ME | 220 | 25 | BILL 4 | B04 | S1 | FF | R00 | ACF07 | 220 |  |  |  |  |  |  |  |  | MEP |  |  | FF |  |  |  |  |  |  |
| CGLE206101C0 |  | CB-GL ; Wood / caseworks (Exam- 2) | 60d | 2012-05-20 | 2012-07-29 | CGLCO04401C0, CGLE209501C0, CGLE209901C0, CGLCO04405C0, CGLCO04413C0, CAFWA00113M0, CAFCI22001R02 FS+184d, A10370 |  |  |  |  | 15.88d | 0d | WOOD WORK/CASEWORK [1110.79 no]; WOOD WORK/CASEWORK [4527 h]; Cost |  |  | CGLE206101C0 | CB | C | GL | E2 | WO | 061 | 01 | BILL 4 | B04 | S1 | WW | R00 | ACF06 | 061 |  |  |  |  | 332 | 960 |  |  |  |  |  |  |  |  |  |  |  |  |
| CGLE206102C0 |  | CB-GL ; Head Wall (Exam- 2) | 29.88d | 2012-05-20 | 2012-06-24 | CGLCO04401C0, CGLE209501C0, CGLE206101C0 SS, CAFWA00113M0 |  |  |  |  | 111.88d | 102d | WOOD WORK/CASEWORK [2056 h]; Cost |  |  | CGLE206102C0 | CB | C | GL | E2 | WO | 061 | 02 | BILL 4 | B04 | S1 | WW | R00 | ACF06 | 061 |  |  |  |  | 332 | 960 |  |  |  |  |  |  |  |  |  |  |  |  |
| CGLE209601C0 |  | CB-GL ; Flooring (Rubber & etc) (Exam- 2) | 36d | 2012-05-20 | 2012-07-01 | CGLE209901C0, CVTVT14305C0 FF, CGLE209501C0, CGLE227020C0, CGLE205501C0 |  |  |  |  | 33.75d | 0d | RUBBER FLOOR [224 h]; RUBBER FLOOR [550 m2]; Cost |  |  | CGLE209601C0 | CB | C | GL | E2 | FF | 096 | 01 | BILL 4 | B04 | S1 | 03 | R00 | ACF06 | RF |  |  |  |  | 326 | 955 |  |  |  |  |  |  |  |  |  |  |  |  |
| CGLE209701C0 |  | CB-GL ; Wall finishes (ST, WD, WC) (Exam- 2) | 36d | 2012-05-20 | 2012-07-01 | CGLE227020C0 FF, CAFCI22001R02 FS+164d, CGLE206101C0 SS |  |  |  |  | 57.88d | 0d | ASSORTED WALL FINISH [1032 h]; ASSORTED WALL FINISH [1185 m2]; Cost |  |  | CGLE209701C0 | CB | C | GL | E2 | WF | 097 | 01 | BILL 4 | B04 | S1 | 01 | R00 | ACF06 | 097 |  |  |  |  | 105 | 1002 |  |  |  |  |  |  |  |  |  |  |  |  |
| CGLE209903C0 |  | CB-GL ; Wall Final Paint (Exam- 2) | 36d | 2012-05-20 | 2012-07-01 | CGLE209901C0, CGLE209905C0 |  |  |  |  | 117.75d | 36d | WALL PAINT [731 h]; WALL PAINT [912 m2]; Cost |  |  | CGLE209903C0 | CB | C | GL | E2 | PA | 099 | 03 | BILL 4 | B04 | S1 | 02 | R00 | ACF06 | 099 |  |  |  |  | 329 | 957 |  |  |  |  |  |  |  |  |  |  |  |  |
| CGLE209905C0 |  | CB-GL ; Ceiling Prime & 1st coat (Exam- 2) | 0d | 2012-05-20 | 2012-05-20 | CGLE209501C0 |  |  |  |  | 117.75d | 0d | Cost |  |  | CGLE209905C0 | CB | C | GL | E2 | PA | 099 | 05 | BILL 4 | B04 | S1 | 01 | R00 | ACF06 | 099 |  |  |  |  | 330 | 958 |  |  |  |  |  |  |  |  |  |  |  |  |
| CGLE221115C0 |  | CB-GL ; 2nd Fix, Inst of Sprinkler droppers (Exam- 2) | 30d | 2012-05-20 | 2012-06-24 | CGLE209501C0 |  |  |  |  | 9.88d | 0d | MECHANICAL [2052 h]; Cost |  |  | CGLE221115C0 | CB | C | GL | E2 | ME | 211 | 15 | BILL 4 | B04 | S1 | 2F | R00 | ACF07 | 211 |  |  |  |  |  |  |  |  | MEP |  |  | 2n |  |  |  |  |  |  |
| CGLE223021C0 |  | CB-GL ; 2nd Fix, Inst of Flexible Duct & Plenum boxes (Exam- 2) | 36d | 2012-05-20 | 2012-07-01 | CGLE209205C0, CGLE209501C0 |  |  |  |  | 33.88d | 0d | MECHANICAL [2824.8 h]; Cost |  |  | CGLE223021C0 | CB | C | GL | E2 | ME | 230 | 21 | BILL 4 | B04 | S1 | 2F | R00 | ACF07 | 230 |  |  |  |  |  |  |  |  | MEP |  |  | 2n |  |  |  |  |  |  |
| CGLE226017C0 |  | CB-GL ; Final Fix, Inst of Ceiling rose (Exam- 2) | 48d | 2012-05-20 | 2012-07-15 | CGLE209501C0 |  |  |  |  | 33.88d | 0d | ELECTRICAL [123.6 h]; Cost |  |  | CGLE226017C0 | CB | C | GL | E2 | ME | 260 | 17 | BILL 4 | B04 | S1 | FF | R00 | ACF07 | 260 |  |  |  |  |  |  |  |  | MEP |  |  | FF |  |  |  |  |  |  |
| CGLE227002C0 |  | CB-GL ; 2nd Fix, Wiring Droppers (Exam- 2) | 42d | 2012-05-20 | 2012-07-08 | CGLE209501C0 |  |  |  |  | 33.88d | 0d | ELECTRICAL [216 h]; Cost |  |  | CGLE227002C0 | CB | C | GL | E2 | ME | 270 | 02 | BILL 4 | B04 | S1 | 2F | R00 | ACF07 | 270 |  |  |  |  |  |  |  |  | MEP |  |  | 2n |  |  |  |  |  |  |
| CGLE223019C0 |  | CB-GL ; Final Fix, Inst of Grilles & Diffusers (Exam- 2) | 48d | 2012-05-27 | 2012-07-22 | CGLE209501C0, CGLE223021C0 SS+6d |  |  |  |  | 33.88d | 24d | MECHANICAL [1970.4 h]; Cost |  |  | CGLE223019C0 | CB | C | GL | E2 | ME | 230 | 19 | BILL 4 | B04 | S1 | FF | R00 | ACF07 | 230 |  |  |  |  |  |  |  |  | MEP |  |  | FF |  |  |  |  |  |  |
| CGLE226003C0 |  | CB-GL ; Final Fix, Inst of Light fittings (Exam- 2) | 48d | 2012-05-27 | 2012-07-22 | CGLE226017C0 SS+6d |  |  |  |  | 33.88d | 24d | ELECTRICAL [7983.6 h]; Cost |  |  | CGLE226003C0 | CB | C | GL | E2 | ME | 260 | 03 | BILL 4 | B04 | S1 | FF | R00 | ACF07 | 260 |  |  |  |  |  |  |  |  | MEP |  |  | FF |  |  |  |  |  |  |
| CGLE227030C0 |  | CB-GL ; Final Fix, Inst of ELV device (Detector/Speaker) (Exam- 2) | 48d | 2012-05-27 | 2012-07-22 | CGLE209501C0, CGLE227002C0 SS+6d |  |  |  |  | 33.88d | 24d | ELECTRICAL [2054.4 h]; Cost |  |  | CGLE227030C0 | CB | C | GL | E2 | ME | 270 | 30 | BILL 4 | B04 | S1 | FF | R00 | ACF07 | 270 |  |  |  |  |  |  |  |  | MEP |  |  | FF |  |  |  |  |  |  |
| CGLE222021C0 |  | CB-GL ; Final Fix, Terminate Sanitary Ware & Appliances (Exam- 2) | 48d | 2012-06-10 | 2012-08-05 | CGLE222011C0, CGLE222025C0 |  |  |  |  | 63.88d | 54d | PLUMBING [1633.2 h]; Cost |  |  | CGLE222021C0 | CB | C | GL | E2 | ME | 220 | 21 | BILL 4 | B04 | S1 | FF | R00 | ACF07 | 220 |  |  |  |  |  |  |  |  | MEP |  |  | FF |  |  |  |  |  |  |
| CGLE211005C0 |  | CB-GL ; Utility belt (Exam- 2) | 30d | 2012-06-25 | 2012-07-29 | CGLE209205C0, CGLE206101C0 SS, CGLE206101C0 FF |  |  |  |  | 15.88d | 0d | FF&E [588 h]; FF&E [313.18 no]; Cost |  |  | CGLE211005C0 | CB | C | GL | E2 | WO | 110 | 05 | BILL 4 | B04 | S1 | 05 | R00 | ACF08 | e |  |  |  |  |  |  |  |  |  |  |  |  |  |  |  |  |  |  |
| CGLE221113C0 |  | CB-GL ; Final Fix, Inst of Sprinklers head/ Extinguisher (Exam- 2) | 48d | 2012-06-25 | 2012-08-21 | CGLE209501C0, CGLE221115C0 |  |  |  |  | 9.88d | 0d | MECHANICAL [278.4 h]; Cost |  |  | CGLE221113C0 | CB | C | GL | E2 | ME | 211 | 13 | BILL 4 | B04 | S1 | FF | R00 | ACF07 | 211 |  |  |  |  |  |  |  |  | MEP |  |  | FF |  |  |  |  |  |  |
| CGLE208107C0 |  | CB-GL ; Doors (Exam- 2) | 42d | 2012-07-02 | 2012-08-21 | CGLE208103C0, CGLE209901C0, CGLE209601C0 |  |  |  |  | 33.75d | 0d | ASSORTED DOORS [670 h]; ASSORTED DOORS [67 no]; Cost |  |  | CGLE208107C0 | CB | C | GL | E2 | DO | 081 | 07 | BILL 4 | B04 | S1 | DR | R00 | ACF06 | 081 |  |  |  |  | 317 | 948 |  |  |  |  |  |  |  |  |  |  | 08 |  |
| CGLE211001C0 |  | CB-GL ; Wall Protection (WP, CG, WG, FCG) (Exam- 2) | 24d | 2012-07-02 | 2012-07-29 | CGLE209701C0, CGLE209903C0 SS |  |  |  |  | 81.75d | 71.88d | FF&E [42 h]; Cost |  |  | CGLE211001C0 | CB | C | GL | E2 | WF | 110 | 01 | BILL 4 | B04 | S1 | 03 | R00 | ACF08 | b |  |  |  |  | 326 | 1001 |  |  |  |  |  |  |  |  |  |  |  |  |
| CGLE211003C0 |  | CB-GL ; FF & E (Exam- 2) | 24d | 2012-07-30 | 2012-08-28 | CGLE209601C0, CGLE206101C0 |  |  |  |  | 57.75d | 47.88d | FF&E [136 h]; FF&E [72.27 no]; Cost |  |  | CGLE211003C0 | CB | C | GL | E2 | WO | 110 | 03 | BILL 4 | B04 | S1 | 04 | R00 | ACF08 | a |  |  |  |  | 333 | 961 |  |  |  |  |  |  |  |  |  |  |  |  |
| CGLE222029C0 |  | CB-GL ; Final Fix, Medical Gas pipe (Exam- 2) | 12d | 2012-07-30 | 2012-08-12 | CGLE209501C0, CGLE211005C0 |  |  |  |  | 15.88d | 6d | PLUMBING [504 h]; Cost |  |  | CGLE222029C0 | CB | C | GL | E2 | ME | 220 | 29 | BILL 4 | B04 | S1 | FF | R00 | ACF07 | 220 |  |  |  |  |  |  |  |  | MEP |  |  | FF |  |  |  |  |  |  |
| CGLE201006C0 |  | CB-GL ; 2nd, Ceiling Inspection by Consultants (Exam- 2) | 6d | 2012-08-22 | 2012-08-28 | CGLE221115C0, CGLE223009C0, CGLE223015C0, CGLE227002C0, CGLE209501C0, CGLE221113C0, CGLE222029C0, CGLE223019C0, CGLE226017C0, CGLE227030C0, CGLE226015C0, CGLE226003C0 |  |  |  |  | 9.88d | 0d | Labor General [0.6 h]; Cost |  |  | CGLE201006C0 | CB | C | GL | E2 | ME | 010 | 06 | BILL 4 | B04 | S1 | CI | R00 | ACF07 | 010 |  |  |  |  |  |  |  |  | MEP |  |  | 2n |  |  |  |  |  |  |
| CGLE208709C0 |  | CB-GL ; Ironmongery (Exam- 2) | 30d | 2012-08-22 | 2012-09-25 | CGLE208107C0 |  |  |  |  | 33.75d | 23.88d | IRONMONGERY [500 h]; IRONMONGERY [50 no]; Cost |  |  | CGLE208709C0 | CB | C | GL | E2 | DO | 087 | 09 | BILL 4 | B04 | S1 | IM | R00 | ACF06 | 087 |  |  |  |  | 322 | 951 |  |  |  |  |  |  |  |  |  |  | 08 |  |
| CGLE209503C0 |  | CB-GL ; Ceiling closure - ACT/Gypsum (Exam- 2) | 18d | 2012-08-29 | 2012-09-18 | CAFOA09503C1 FF, CGLE201006C0, CGLE221115C0, CGLE226005C0, CGLE227002C0, CGLE206101C0, CGLE209701C0, CGLE223021C0, CGLE226053C0, CGLE226007C0 |  |  |  |  | 9.88d | 0d | ASSORTED CEILING FINISH [439.11 h]; CEILING GYPSUM [64.58 h]; ASSORTED CEILING FINISH [714 m2]; CEILING GYPSUM [180 m2]; Cost |  |  | CGLE209503C0 | CB | C | GL | E2 | CE | 095 | 03 | BILL 4 | B04 | S1 | 02 | R00 | ACF06 | 095 |  |  |  |  | 324 | 953 |  |  |  |  |  |  |  |  |  |  |  |  |
| CGLE209673C1 |  | CB-GL, Carpet Tile Finish (Exam-2 Offices/Conference) | 0d | 2012-09-19 | 2012-09-19 | CGLE209903C0 SS, CGLE209907C0 SS |  |  |  |  | 37d | 24.6d | Cost |  |  |  | CB | C | GL | E2 | FF | 096 |  |  | B04 |  |  | R00 | ACF06 | CPT |  |  |  |  |  |  |  |  | CPT |  |  |  |  |  |  |  |  |  |
| CGLE209907C0 |  | CB-GL ; Ceiling Final paint (Exam- 2) | 0d | 2012-09-19 | 2012-09-19 | CGLE209601C0, CGLE209905C0, CGLE209503C0 |  |  |  |  | 37d | 0d | Cost |  |  | CGLE209907C0 | CB | C | GL | E2 | PA | 099 | 07 | BILL 4 | B04 | S1 | 02 | R00 | ACF06 | 099 |  |  |  |  | 331 | 959 |  |  |  |  |  |  |  |  |  |  |  |  |
| CGLE222027C0 |  | CB-GL ; Final Fix, Inst of All drain (Exam- 2) | 18d | 2012-09-19 | 2012-10-09 | CGLE209305C0, CGLE209503C0 |  |  |  |  | 9.88d | 0d | PLUMBING [1633.2 h]; Cost |  |  | CGLE222027C0 | CB | C | GL | E2 | ME | 220 | 27 | BILL 4 | B04 | S1 | FF | R00 | ACF07 | 220 |  |  |  |  |  |  |  |  | MEP |  |  | FF |  |  |  |  |  |  |
| CGLE226019C0 |  | CB-GL ; Final Fix, Inst of Switch/Sockets (Exam- 2) | 12d | 2012-09-19 | 2012-10-02 | CGLE209901C0, CGLE209503C0 |  |  |  |  | 15.88d | 6d | ELECTRICAL [427.2 h]; Cost |  |  | CGLE226019C0 | CB | C | GL | E2 | ME | 260 | 19 | BILL 4 | B04 | S1 | FF | R00 | ACF07 | 260 |  |  |  |  |  |  |  |  | MEP |  |  | FF |  |  |  |  |  |  |

| ID | WBS | Activity | Duration | Start | Finish | Predecessors | Complete | Remaining | Planned start | Planned finish | Total float | Free float | Resources | Cost | Actual cost | change id | CCAD BUILDING(SET) | CCAD PHASE(SET) | CCAD FLOOR(SET) | CCAD ZONE(SET) | CCAD WORK(SET) | CCAD SECTION(SET) | CCAD SERIAL No.(SET) | CCAD CBS(SET) | CCAD BILL(SET) | CCAD HANDOVER(SET) | CCAD TAG(SET) | CCAD REV(SET) | CCADACF (SET) | CCAD SSCF | user_number8 | user_integer1 | user_integer2 | user_number7 | Change Order # | NEW ACTIVITY ID | RENZ % COMPLETE | Claimed This Month | CCAD CSA | Act Selector % | CCAD SUB ZONE MEP(SET) | PERCENT COMPLETE | July2011 Target% Complete | P_811 | P_711 | CCAD DIVISION(SET) | CCAD MEQ | R3 Finish |
| --- | --- | --- | --- | --- | --- | --- | --- | --- | --- | --- | --- | --- | --- | --- | --- | --- | --- | --- | --- | --- | --- | --- | --- | --- | --- | --- | --- | --- | --- | --- | --- | --- | --- | --- | --- | --- | --- | --- | --- | --- | --- | --- | --- | --- | --- | --- | --- | --- |
|  | 10 | **Precommissioning Tesing & snagging (Exam 2)** |  | 2012-10-10 | 2012-11-21 |  |  |  |  |  |  |  |  |  |  |  |  |  |  |  |  |  |  |  |  |  |  |  |  |  |  |  |  |  |  |  |  |  |  |  |  |  |  |  |  |  |  |  |
| CGLTS01804C0 |  | CB-GL ; MEP de-snag, FIREM sign-off | 11.88d | 2012-10-10 | 2012-10-23 | CGLE222025C0, CGLE222027C0, CGLE226015C0, CGLE221113C0, CGLE223019C0, CGLE222029C0, CGLE226017C0, CGLE226003C0, CGLE227030C0, CGLE222021C0, CGLE226019C0, CGLE211005C0 |  |  |  |  | 9.88d | 0d | TESTING & COMMISSIONING [1020 h]; Cost |  |  | CGLTS01801C0 | CB | C | GL | TS | SC | 018 | 01 | BILL 4 | B04 | S1 | 01 | R00 | ACF07 | 018 |  |  |  |  |  |  |  |  |  |  |  |  |  |  |  |  |  |  |
| CGLTS01811C0 |  | CB-GL ; Touch-up & Clean / JV inspection /CIR /De-snag | 14.25d | 2012-10-23 | 2012-11-12 | CGLE211001C0, CGLE211003C0, CGLTS01804C0, CGLE205501C0, CGLE208709C0, CGLE206102C0, CGLE209503C0 |  |  |  |  | 9.88d | 0d | TESTING & COMMISSIONING [149 h]; Cost |  |  | CGLTS01802C0 | CB | C | GL | TS | SC | 018 | 02 | BILL 4 | B04 | S1 | 02 | R00 | ACF07 | 018 |  |  |  |  |  |  |  |  |  |  |  |  |  |  |  |  |  |  |
| CGLTS01818C0 |  | CB-GL ; Consultant's final de-snag inspection | 7d | 2012-11-12 | 2012-11-21 | CGLTS01811C0 |  |  |  |  | 9.88d | 2.55d | Labor General [1 h]; Cost |  |  | CGLTS01803C0 | CB | C | GL | TS | SC | 018 | 03 | BILL 4 | B04 | S1 | 03 | R00 | ACF07 | 018 |  |  |  |  |  |  |  |  |  |  |  |  |  |  |  |  |  |  |
|  | 04 | **Public Area ( Elev.Lobby & Corridors )** |  | 2011-03-05 | 2012-11-19 |  |  |  |  |  |  |  |  |  |  |  |  |  |  |  |  |  |  |  |  |  |  |  |  |  |  |  |  |  |  |  |  |  |  |  |  |  |  |  |  |  |  |  |
| CGLPA09201C0 |  | CB-GL ; Metal Studs (Public Area) | 84d | 2011-03-05 A | 2011-10-05 | CGLPA23001C0 SS+12d | 95% | 4.2d | 2011-03-31 | 2011-07-09 | 11.15d | 0d | PARTITIONS [3320 h]; PARTITIONS - Metal Studs [403 m]; Cost |  |  | CGLPA09201C0 | CB | C | GL | PA | PT | 092 | 01 | BILL 4 | B04 | S1 | 1F | R00 | ACF06 | 092 | 0 | 0 | 0 | 0 | 313 | 944 | 30 | 88219.2 | GP | PMS |  |  |  |  |  |  |  |  |
| CGLPA23001C0 |  | CB-GL ; 1st Fix, Inst. of Supports for MEP (Public Area) | 27d | 2011-03-15 A | 2011-10-03 | C01S103335C0, C01S203335C0, CGLS107807C0, CGLS207808C0 | 90% | 2.7d | 2011-03-02 | 2011-04-03 | 11.15d | 0d | MECHANICAL [1024.8 h]; Cost [57766.2 AED] | 57,766.25 | 51,989.63 | CGLPA23001C0 | CB | C | GL | PA | ME | 230 | 01 | BILL 4 | B04 | S1 | 1F | R00 | ACF04 | 230 |  |  |  |  |  |  | 100 |  | MEP | M1F | 1S |  |  |  |  |  |  |  |
| CGLPA21111C0 |  | CB-GL ; 1st Fix, Inst of Sprinkler main pipe (Public Area) | 200d | 2011-03-17 A | 2011-10-26 | CGLPA22005C0 SS+12d, CGLPA23001C0, CGLS107807C0, CGLS207808C0 | 90% | 20d | 2011-06-09 | 2012-02-09 | 40.05d | 0d | MECHANICAL [686.4 h]; Cost [37438.4 AED] | 37,438.4 | 33,694.56 | CGLPA21111C0 | CB | C | GL | PA | ME | 211 | 11 | BILL 4 | B04 | S1 | 1F | R00 | ACF04 | 211 |  |  |  |  |  |  | 70 |  | MEP | M1F | 1S | 90 | 98 |  |  |  |  |  |
| CGLPA22019C0 |  | CB-GL ; 1st Fix, Inst of Drainage pipe (ceiling) (Public Area) | 200d | 2011-03-23 A | 2011-10-08 | CGLPA23001C0, CGLPA26013C0 SS+12d, CGLS107807C0, CGLS207808C0 | 98% | 4d | 2011-05-15 | 2012-01-14 | 40.05d | 0d | PLUMBING [1714.8 h]; Cost [92715.9 AED] | 92,715.95 | 90,861.63 | CGLPA22019C0 | CB | C | GL | PA | ME | 220 | 19 | BILL 4 | B04 | S1 | 1F | R00 | ACF04 | 220 |  |  |  |  |  |  | 95 |  | MEP | M1F | 1S |  | 98 |  |  |  |  |  |
| CGLPA26013C0 |  | CB-GL ; 1st Fix, Inst of Cable Tray (Public Area) | 90d | 2011-03-23 A | 2011-12-11 | CGLPA23001C0, CGLPA27010C0 SS+10d, CGLS107807C0, CGLS207808C0 | 40% | 54d | 2011-05-01 | 2011-08-15 | 40.05d | 0d | ELECTRICAL [4921.2 h]; Cost [17044 AED] | 17,043.96 | 6,817.58 | CGLPA26013C0 | CB | C | GL | PA | ME | 260 | 13 | BILL 4 | B04 | S1 | 1F | R00 | ACF04 | 260 |  |  |  |  |  |  | 40 | 153854.8 | MEP | M1F | 1S |  | 98 | 85 | 80 |  |  |  |
| CGLPA26001C0 |  | CB-GL ; 1st Fix, Inst of Trunking/Conduiting (Public Area) | 90d | 2011-03-29 A | 2011-12-11 | CGLPA23001C0, CGLS107807C0, CGLS207808C0 | 40% | 54d | 2011-04-03 | 2011-07-18 | 40.05d | 0d | ELECTRICAL [4404 h]; Cost [29580.4 AED] | 29,580.43 | 11,832.17 | CGLPA26001C0 | CB | C | GL | PA | ME | 260 | 01 | BILL 4 | B04 | S1 | 1F | R00 | ACF04 | 260 |  |  |  |  |  |  | 30 | 191221.63 | MEP | M1F | 1S |  | 98 | 85 | 70 |  |  |  |
| CGLPA27010C0 |  | CB-GL ; 1st Fix, Inst of Trunking for ELV system (Public Area) | 90d | 2011-03-29 A | 2011-12-27 | CGLPA23001C0, CGLPA26001C0 SS+14d, CGLS107807C0, CGLS207808C0 | 25% | 67.5d | 2011-04-19 | 2011-08-03 | 40.05d | 0d | ELECTRICAL [1843.2 h]; Cost [24667.9 AED] | 24,667.88 | 6,166.97 | CGLPA27010C0 | CB | C | GL | PA | ME | 270 | 10 | BILL 4 | B04 | S1 | 1F | R00 | ACF04 | 270 |  |  |  |  |  |  | 35 | 53699.4 | MEP | M1F | 1S |  | 85 |  |  |  |  |  |
| CGLPA09203C0 |  | CB-GL ; Partitions 1st face (Public Area) | 54d | 2011-04-19 A | 2011-10-26 | CGLPA09201C0 | 67% | 17.82d | 2011-04-14 | 2011-06-16 | 58.73d | 47.58d | PARTITIONS [403 m]; PARTITIONS [2595 h]; Cost |  |  | CGLPA09203C0 | CB | C | GL | PA | PT | 092 | 03 | BILL 4 | B04 | S1 | 2F | R00 | ACF06 | 092 | 0 | 0 | 0 | 0 | 314 | 945 | 15 | 61753.6 | GP | P1F |  |  |  | 55 | 41 |  |  |  |
| CGLPA23023C0 |  | CB-GL ; 1st Fix, Inst of Main Ducting (Public Area) | 200d | 2011-04-19 A | 2011-10-12 | CGLPA23001C0, CGLPA23017C0 SS+7d, CGLS107807C0, CGLS207808C0 | 96% | 8d | 2011-07-03 | 2012-03-03 | 70.05d | 0d | MECHANICAL [16992 h]; Cost [927678 AED] | 927,677.51 | 890,570.41 | CGLPA23023C0 | CB | C | GL | PA | ME | 230 | 23 | BILL 4 | B04 | S1 | 1F | R00 | ACF04 | 230 |  |  |  |  |  |  | 40 | 484327.8 | MEP | M1F | 1S |  | 85 |  |  |  |  |  |
| CGLPA21117C0 |  | CB-GL ; 1st Fix, Inst of Sprinkler branch pipe (Public Area) | 180d | 2011-04-27 A | 2011-11-20 | CGLPA09201C0, CGLPA21111C0 | 90% | 18d | 2011-08-02 | 2012-03-10 | 40.05d | 28.9d | MECHANICAL [1009.2 h]; Cost [55153.8 AED] | 55,153.76 | 49,638.38 | CGLPA21117C0 | CB | C | GL | PA | ME | 211 | 17 | BILL 4 | B04 | S1 | 1F | R00 | ACF04 | 211 |  |  |  |  |  |  | 75 | -9590.25 | MEP | M1F | 1S |  | 90 |  |  |  |  |  |
| CGLPA22011C0 |  | CB-GL ; 2nd Fix, Drainage/Water pipe (wall) (Public Area) | 72d | 2011-04-28 A | 2011-11-10 | CGLPA09201C0 | 60% | 28.8d | 2011-04-07 | 2011-07-02 | 41.75d | 30.6d | PLUMBING [2510.4 h]; Cost [92715.9 AED] | 92,715.95 | 55,629.57 | CGLPA22011C0 | CB | C | GL | PA | ME | 220 | 11 | BILL 4 | B04 | S1 | 2F | R00 | ACF07 | 220 |  |  |  |  |  |  | 55 |  | MEP |  | 2n |  | 60 |  |  |  |  |  |
| CGLPA40302C0 |  | CB-GL ; 2nd Fix, Pneumatic tube (Public Area) | 66d | 2011-05-09 A | 2011-11-16 | CGLPA09201C0 | 50% | 33d | 2011-06-01 | 2011-08-18 | 37.55d | 26.4d | MECHANICAL [3274.8 h]; Cost [137402 AED] | 137,402.07 | 68,701.04 | CGLE140302C0 | CB | C | GL | PA | ME | 403 | 02 | BILL 4 | B04 | S1 | 2F | R00 | ACF07 | 403 |  |  |  |  |  |  | 10 |  | MEP |  | 2n |  | 45 | 50 | 45 |  |  |  |
| CGLPA23017C0 |  | CB-GL ; 1st Fix, Inst of CHW pipe (Public Area) | 120d | 2011-05-23 A | 2011-11-10 | CGLPA21111C0 SS+12d, CGLPA23001C0, CGLS107807C0, CGLS207808C0 | 75% | 30d | 2011-06-22 | 2011-11-16 | 70.05d | 0d | MECHANICAL [2395.2 h]; Cost [130782 AED] | 130,781.76 | 98,086.32 | CGLPA23017C0 | CB | C | GL | PA | ME | 230 | 17 | BILL 4 | B04 | S1 | 1F | R00 | ACF04 | 230 |  |  |  |  |  |  | 50 |  | MEP | M1F | 1S |  | 75 |  |  |  |  |  |
| CGLPA26009C0 |  | CB-GL ; 2nd Fix, Inst of Wall conduites (Public Area) | 66d | 2011-05-31 A | 2011-12-19 | CGLPA09201C0 | 10% | 59.4d | 2011-05-31 | 2011-08-17 | 11.15d | 0d | ELECTRICAL [430.8 h]; Cost [29580.4 AED] | 29,580.43 | 2,958.04 | CGLPA26009C0 | CB | C | GL | PA | ME | 260 | 09 | BILL 4 | B04 | S1 | 2F | R00 | ACF07 | 260 |  |  |  |  |  |  |  |  | MEP |  | 2n |  | 35 | 50 | 35 |  |  |  |
| CGLPA23009C0 |  | CB-GL ; 2nd Fix, Inst of VAV'S CHW connection (Public Area) | 48d | 2011-07-05 A | 2011-11-22 | CGLPA23017C0 | 80% | 9.6d | 2011-08-25 | 2011-10-23 | 132.05d | 0d | MECHANICAL [3340.8 h]; Cost [76659.7 AED] | 76,659.7 | 61,327.76 | CGLPA23009C0 | CB | C | GL | PA | ME | 230 | 09 | BILL 4 | B04 | S1 | 2F | R00 | ACF07 | 230 | 0 | 0 | 0 | 0 |  |  |  |  | MEP |  | 2n |  | 25 | 40 | 15 |  |  |  |
| CGLPA22005C0 |  | CB-GL ; 1st Fix, Inst of Water supply pipe (ceiling) (Public Area) | 54d | 2011-07-10 A | 2011-11-20 | CGLPA22019C0 SS+10d, CGLPA23001C0, CGLS107807C0, CGLS207808C0 | 30% | 37.8d | 2011-06-30 | 2011-09-03 | 40.05d | 0d | PLUMBING [1682.4 h]; Cost [90924.8 AED] | 90,924.75 | 27,277.42 | CGLPA22005C0 | CB | C | GL | PA | ME | 220 | 05 | BILL 4 | B04 | S1 | 1F | R00 | ACF04 | 220 |  |  |  |  |  |  |  |  | MEP | M1F | 1S |  | 45 | 30 | 20 |  |  |  |
| CGLPA23008C0 |  | CB-GL ; 1st Fix, Inst of VCD's/FD's (Public Area) | 70d | 2011-07-10 A | 2011-11-27 | CGLPA23023C0 | 50% | 35d | 2011-08-01 | 2011-10-24 | 143.05d | 119.9d | MECHANICAL [2648.4 h]; Cost [143058 AED] | 143,057.96 | 71,528.98 | CGLPA23008C0 | CB | C | GL | PA | ME | 230 | 08 | BILL 4 | B04 | S1 | 1F | R00 | ACF04 | 230 |  |  |  |  |  |  |  |  | MEP | M1F | 1S |  | 45 | 50 | 45 |  |  |  |
| CGLPA23015C0 |  | CB-GL ; 2nd Fix, Insulation of CHW pipe & Duct (Public Area) | 120d | 2011-07-10 A | 2011-12-11 | CGLPA23009C0 SS, CGLPA23017C0 SS, CGLPA23023C0 SS | 80% | 24d | 2011-09-15 | 2012-02-11 | 132.05d | 108.9d | MECHANICAL [8664 h]; Cost [363863 AED] | 363,863.22 | 291,090.57 | CGLPA23015C0 | CB | C | GL | PA | ME | 230 | 15 | BILL 4 | B04 | S1 | 2F | R00 | ACF07 | 230 |  |  |  |  |  |  |  |  | MEP |  | 2n |  | 25 | 80 | 50 |  |  |  |
| CGLPA08103C0 |  | CB-GL ; Door Frames (Public Area) | 42d | 2011-11-12 | 2012-01-02 | CGLPA09201C0, GNHE08101C0 FS+79d |  |  |  |  | 65.75d | 54.6d | ASSORTED DOORS [198 h]; Cost |  |  | CGLPA08103C0 | CB | C | GL | PA | DO | 081 | 03 | BILL 4 | B04 | S1 | DF | R00 | ACF06 | 081 |  |  |  |  | 316 | 947 |  |  |  |  |  |  |  |  |  | 08 |  |  |
| CGLPA27001C0 |  | CB-GL ; 1st Fix, Wiring/ Cabling work (Public Area) | 60d | 2011-12-11 | 2012-02-21 | CGLPA26001C0, CGLPA26013C0, CGLPA27010C0 SS |  |  |  |  | 72.05d | 48.9d | ELECTRICAL [4189.2 h]; Cost |  |  | CGLPA27001C0 | CB | C | GL | PA | ME | 270 | 01 | BILL 4 | B04 | S1 | 1F | R00 | ACF04 | 270 |  |  |  |  |  |  |  | 111153.82 | MEP | M1F | 1S |  | 45 |  |  |  |  |  |
| CGLPA01005C0 |  | CB-GL ; 2nd, Wall Inspection by Consultant (Public Area) | 6d | 2011-12-19 | 2011-12-26 | CGLPA22011C0, CGLPA26009C0, CGLPA40302C0 |  |  |  |  | 11.15d | 0d | Labor General [0.6 h]; Cost |  |  | CGLPA01005C0 | CB | C | GL | PA | ME | 010 | 05 | BILL 4 | B04 | S1 | WI | R00 | ACF07 | 010 |  |  |  |  |  |  |  |  | MEP |  | 2n |  |  |  |  |  |  |  |
| CGLPA09205C0 |  | CB-GL ; Partitions Closing (Public Area) | 60d | 2011-12-26 | 2012-03-07 | CGLPA01005C0, CGLPA08103C0 FF, CGLPA09203C0, CGLPA22005C0 SS+40d, CGLPA22019C0, CAFOA09204C1 FF, CGLPA23023C0, CGLPA21111C0 FF, CGLPA23017C0 FF, CGLPA21117C0 |  |  |  |  | 11.15d | 0d | PARTITIONS [403 m]; PARTITIONS [3327 h]; Cost |  |  | CGLPA09205C0 | CB | C | GL | PA | PT | 092 | 05 | BILL 4 | B04 | S1 | FF | R00 | ACF06 | 092 |  |  |  |  | 315 | 946 |  |  | GP | P2F |  |  |  |  |  |  |  |  |
| CGLPA09901C0 |  | CB-GL ; Wall Prime & 1st coat (Public Area) | 36d | 2012-03-07 | 2012-04-18 | CGLPA09205C0, CGLCO04455C0 FF |  |  |  |  | 11.15d | 0d | WALL PAINT [955 h]; WALL PAINT [1192 m2]; Cost |  |  | CGLPA09901C0 | CB | C | GL | PA | PA | 099 | 01 | BILL 4 | B04 | S1 | 01 | R00 | ACF06 | 099 |  |  |  |  | 328 | 956 |  |  |  |  |  |  |  |  |  |  |  |  |
| CGLPA26005C0 |  | CB-GL ; 2nd Fix, Wiring for Power/Lighting/Emergency (Public Area) | 42d | 2012-03-07 | 2012-04-25 | CGLPA09205C0 |  |  |  |  | 59.15d | 18d | ELECTRICAL [216 h]; Cost |  |  | CGLPA26005C0 | CB | C | GL | PA | ME | 260 | 05 | BILL 4 | B04 | S1 | 2F | R00 | ACF07 | 260 |  |  |  |  |  |  |  |  | MEP |  | 2n |  | 25 |  |  |  |  |  |
| CGLPA26007C0 |  | CB-GL ; 2nd Fix, Cable Pulling (Public Area) | 48d | 2012-03-07 | 2012-05-02 | CGLPA09205C0 |  |  |  |  | 107.15d | 96d | ELECTRICAL [6616.8 h]; Cost |  |  | CGLPA26007C0 | CB | C | GL | PA | ME | 260 | 07 | BILL 4 | B04 | S1 | 2F | R00 | ACF07 | 260 |  |  |  |  |  |  |  |  | MEP |  | 2n |  | 35 |  |  |  |  |  |
| CGLPA26011C0 |  | CB-GL ; 2nd Fix, Inst of Equipment (DB) (Public Area) | 42d | 2012-03-07 | 2012-04-25 | CGLPA09205C0 |  |  |  |  | 41.15d | 18d | ELECTRICAL [1266 h]; Cost |  |  | CGLPA26011C0 | CB | C | GL | PA | ME | 260 | 11 | BILL 4 | B04 | S1 | 2F | R00 | ACF04 | 260 |  |  |  |  |  |  |  |  | MEP |  | 2n |  |  |  |  |  | E |  |
| CGLPA26053C0 |  | CB-GL ; 2nd Fix, Wiring / Cabling (Public Area) | 30d | 2012-03-07 | 2012-04-11 | CGLPA09205C0 |  |  |  |  | 125.15d | 114d | ELECTRICAL [216 h]; Cost |  |  | CGLPA26053C0 | CB | C | GL | PA | ME | 260 | 53 | BILL 4 | B04 | S1 | 2F | R00 | ACF07 | 260 |  |  |  |  | 389 | 977 |  |  | MEP |  | 2n |  | 15 |  |  |  |  |  |
| CGLPA27020C0 |  | CB-GL ; 2nd Fix, Inst of ELV Equipment (Panels) (Public Area) | 42d | 2012-03-07 | 2012-04-25 | CGLPA09205C0 |  |  |  |  | 77.15d | 66d | ELECTRICAL [484.8 h]; Cost |  |  | CGLPA27020C0 | CB | C | GL | PA | ME | 270 | 20 | BILL 4 | B04 | S1 | 2F | R00 | ACF04 | 270 |  |  |  |  |  |  |  |  | MEP |  | 2n |  |  |  |  |  | E |  |
| CGLPA05501C0 |  | CB-GL ; Handrails & balustrade (Public Area) | 36d | 2012-04-18 | 2012-05-30 | CGLPA09901C0, CAFT1405509C0, CAFT1505509C0, CAFT1105509C0, CAFT1205509C0 |  |  |  |  | 11.15d | 0d | SECONDARY STEEL [310 h]; Cost |  |  | CGLPA05501C0 | CB | C | GL | PA | SW | 055 | 01 | BILL 4 | B04 | S1 | 01 | R00 | ACF03 | a |  |  |  |  |  |  |  |  |  |  |  |  |  |  |  |  |  |  |
| CGLPA09501C0 |  | CB-GL ; Ceiling Grid and ServiceTile (Public Area) | 24d | 2012-04-18 | 2012-05-16 | CGLPA09205C0 SS+15d, CGLPA21117C0, CGLPA23008C0, CGLPA23009C0, CGLPA23015C0, CGLPA27001C0, CGLPA26011C0 FF, CGLPA09901C0 |  |  |  |  | 23.15d | 0d | CEILING GRID FOR GYPSUM [2318.12 h]; CEILING GRID FOR GYPSUM [198.21 m2]; Cost |  |  | CGLPA09501C0 | CB | C | GL | PA | CE | 095 | 01 | BILL 4 | B04 | S1 | 01 | R00 | ACF06 | 095 |  |  |  |  | 323 | 952 |  |  |  |  |  |  |  |  |  |  |  |  |
| CGLPA09601C0 |  | CB-GL ; Flooring (Rubber & etc) (Public Area) | 36d | 2012-05-16 | 2012-06-28 | CGLPA09901C0, CVTVT14305C0 FF, CAFCI22001R02 FS+79d, CGLPA09501C0 |  |  |  |  | 23.15d | 12d | RUBBER FLOOR [224 h]; RUBBER FLOOR [554 m2]; Cost |  |  | CGLPA09601C0 | CB | C | GL | PA | FF | 096 | 01 | BILL 4 | B04 | S1 | 03 | R00 | ACF06 | RF |  |  |  |  | 326 | 955 |  |  |  |  |  |  |  |  |  |  |  | R3 |
| CGLPA09903C0 |  | CB-GL ; Wall Final Paint (Public Area) | 36d | 2012-05-16 | 2012-06-28 | CGLPA09901C0, CGLPA09905C0 |  |  |  |  | 104.9d | 84d | WALL PAINT [515 h]; WALL PAINT [642 m2]; Cost |  |  | CGLPA09903C0 | CB | C | GL | PA | PA | 099 | 03 | BILL 4 | B04 | S1 | 02 | R00 | ACF06 | 099 |  |  |  |  | 329 | 957 |  |  |  |  |  |  |  |  |  |  |  |  |
| CGLPA09905C0 |  | CB-GL ; Ceiling Prime & 1st coat (Public Area) | 0d | 2012-05-16 | 2012-05-16 | CGLPA09501C0 |  |  |  |  | 104.9d | 0d | Cost |  |  | CGLPA09905C0 | CB | C | GL | PA | PA | 099 | 05 | BILL 4 | B04 | S1 | 01 | R00 | ACF06 | 099 |  |  |  |  | 330 | 958 |  |  |  |  |  |  |  |  |  |  |  |  |
| CGLPA21115C0 |  | CB-GL ; 2nd Fix, Inst of Sprinkler droppers (Public Area) | 30d | 2012-05-16 | 2012-06-21 | CGLPA09501C0 |  |  |  |  | 35.15d | 0d | MECHANICAL [2052 h]; Cost |  |  | CGLPA21115C0 | CB | C | GL | PA | ME | 211 | 15 | BILL 4 | B04 | S1 | 2F | R00 | ACF07 | 211 |  |  |  |  |  |  |  |  | MEP |  | 2n |  |  |  |  |  |  |  |
| CGLPA23021C0 |  | CB-GL ; 2nd Fix, Inst of Flexible Duct & Plenum boxes (Public Area) | 42d | 2012-05-16 | 2012-07-05 | CGLPA09205C0, CGLPA09501C0 |  |  |  |  | 35.15d | 0d | MECHANICAL [2824.8 h]; Cost |  |  | CGLPA23021C0 | CB | C | GL | PA | ME | 230 | 21 | BILL 4 | B04 | S1 | 2F | R00 | ACF07 | 230 |  |  |  |  |  |  |  |  | MEP |  | 2n |  |  |  |  |  |  |  |
| CGLPA26015C0 |  | CB-GL ; Final Fix, Termination & Gladding of Cables (Public Area) | 48d | 2012-05-16 | 2012-07-12 | CGLPA26005C0, CGLPA09501C0 |  |  |  |  | 41.15d | 7d | ELECTRICAL [4482 h]; Cost |  |  | CGLPA26015C0 | CB | C | GL | PA | ME | 260 | 15 | BILL 4 | B04 | S1 | FF | R00 | ACF07 | 260 |  |  |  |  |  |  |  |  | MEP |  | FF |  |  |  |  |  |  |  |
| CGLPA26017C0 |  | CB-GL ; Final Fix, Inst of Ceiling rose (Public Area) | 48d | 2012-05-16 | 2012-07-12 | CGLPA09501C0 |  |  |  |  | 34.15d | 0d | ELECTRICAL [123.6 h]; Cost |  |  | CGLPA26017C0 | CB | C | GL | PA | ME | 260 | 17 | BILL 4 | B04 | S1 | FF | R00 | ACF07 | 260 |  |  |  |  |  |  |  |  | MEP |  | FF |  |  |  |  |  |  |  |
| CGLPA27002C0 |  | CB-GL ; 2nd Fix, Wiring Droppers (Public Area) | 42d | 2012-05-16 | 2012-07-05 | CGLPA09501C0 |  |  |  |  | 34.15d | 0d | ELECTRICAL [216 h]; Cost |  |  | CGLPA27002C0 | CB | C | GL | PA | ME | 270 | 02 | BILL 4 | B04 | S1 | 2F | R00 | ACF07 | 270 |  |  |  |  |  |  |  |  | MEP |  | 2n |  |  |  |  |  |  |  |
| CGLPA40303C0 |  | CB-GL ; Final Fix, Pneumatic Station (Public Area) | 48d | 2012-05-16 | 2012-07-12 | CGLPA09501C0 |  |  |  |  | 41.15d | 7d | MECHANICAL [2661.6 h]; Cost |  |  | CGLE140303C0 | CB | C | GL | PA | ME | 403 | 03 | BILL 4 | B04 | S1 | FF | R00 | ACF07 | 403 |  |  |  |  |  |  |  |  | MEP |  | FF |  |  |  |  |  |  |  |
| CGLPA21113C0 |  | CB-GL ; Final Fix, Inst of Sprinklers head/ Extinguisher (Public Area) | 48d | 2012-05-23 | 2012-07-19 | CGLPA09501C0, CGLPA21115C0 SS+6d |  |  |  |  | 35.15d | 1d | MECHANICAL [1462.8 h]; Cost |  |  | CGLPA21113C0 | CB | C | GL | PA | ME | 211 | 13 | BILL 4 | B04 | S1 | FF | R00 | ACF07 | 211 |  |  |  |  |  |  |  |  | MEP |  | FF |  |  |  |  |  |  |  |
| CGLPA23019C0 |  | CB-GL ; Final Fix, Inst of Grilles & Diffusers (Public Area) | 48d | 2012-05-23 | 2012-07-19 | CGLPA09501C0, CGLPA23021C0 SS+6d |  |  |  |  | 35.15d | 1d | MECHANICAL [5652 h]; Cost |  |  | CGLPA23019C0 | CB | C | GL | PA | ME | 230 | 19 | BILL 4 | B04 | S1 | FF | R00 | ACF07 | 230 |  |  |  |  |  |  |  |  | MEP |  | FF |  |  |  |  |  |  |  |
| CGLPA26003C0 |  | CB-GL ; Final Fix, Inst of Light fittings (Public Area) | 48d | 2012-05-24 | 2012-07-21 | CGLPA09501C0, CGLPA26017C0 SS+7d |  |  |  |  | 34.15d | 0d | ELECTRICAL [7983.6 h]; Cost |  |  | CGLPA26003C0 | CB | C | GL | PA | ME | 260 | 03 | BILL 4 | B04 | S1 | FF | R00 | ACF07 | 260 |  |  |  |  |  |  |  |  | MEP |  | FF |  |  |  |  |  |  |  |
| CGLPA27030C0 |  | CB-GL ; Final Fix, Inst of ELV device (Detector/Speaker) (Public Area) | 48d | 2012-05-24 | 2012-07-21 | CGLPA09501C0, CGLPA27002C0 SS+7d |  |  |  |  | 34.15d | 0d | ELECTRICAL [2054.4 h]; Cost |  |  | CGLPA27030C0 | CB | C | GL | PA | ME | 270 | 30 | BILL 4 | B04 | S1 | FF | R00 | ACF07 | 270 |  |  |  |  |  |  |  |  | MEP |  | FF |  |  |  |  |  |  |  |
| CGLPA09602C0 |  | CB-GL ; Flooring (Stone) (Public Area) | 36d | 2012-05-30 | 2012-07-12 | CGLPA09901C0, CVTVT14305C0 FF, CAFCI22001R02 FS+79d, CGLPA09501C0, CGLPA05501C0, A10410 |  |  |  |  | 11.15d | 0d | STONE FLOOR [1324 h]; STONE FLOOR [1471 m2]; Cost |  |  | CGLPA09601C0 | CB | C | GL | PA | FF | 096 | 01 | BILL 4 | B04 | S1 | 09 | R00 | ACF06 | ST |  |  |  |  | 326 | 955 |  |  |  |  |  |  |  |  |  |  |  | R3 |
| CGLPA08107C0 |  | CB-GL ; Doors (Public Area) | 36d | 2012-07-12 | 2012-08-26 | CGLPA08103C0, CGLPA09901C0, CGLPA09601C0, CGLPA09602C0 |  |  |  |  | 38.9d | 0d | ASSORTED DOORS [670 h]; ASSORTED DOORS [67 no]; Cost |  |  | CGLPA08107C0 | CB | C | GL | PA | DO | 081 | 07 | BILL 4 | B04 | S1 | DR | R00 | ACF06 | 081 |  |  |  |  | 317 | 948 |  |  |  |  |  |  |  |  |  | 08 |  |  |
| CGLPA09701C0 |  | CB-GL ; Wall finishes (ST, WD, WC) (Public Area) | 36d | 2012-07-12 | 2012-08-26 | CGLPA27020C0, CGLPA09601C0, CGLPA09602C0 |  |  |  |  | 11.15d | 0d | ASSORTED WALL FINISH [545 h]; ASSORTED WALL FINISH [626 m2]; Cost |  |  | CGLPA09701C0 | CB | C | GL | PA | WF | 097 | 01 | BILL 4 | B04 | S1 | 01 | R00 | ACF06 | 097 |  |  |  |  | 105 | 1002 |  |  |  |  |  |  |  |  |  |  |  |  |
| CGLPA01006C0 |  | CB-GL ; 2nd, Ceiling Inspection by Consultants (Public Area) | 6d | 2012-07-21 | 2012-07-28 | CGLPA21115C0, CGLPA23009C0, CGLPA23015C0, CGLPA27002C0, CGLPA09501C0, CGLPA21113C0, CGLPA23019C0, CGLPA26003C0, CGLPA26017C0, CGLPA27030C0, CGLPA40303C0, CGLPA26015C0 |  |  |  |  | 34.15d | 23d | Labor General [0.6 h]; Cost |  |  | CGLPA01006C0 | CB | C | GL | PA | ME | 010 | 06 | BILL 4 | B04 | S1 | CI | R00 | ACF07 | 010 |  |  |  |  |  |  |  |  | MEP |  | 2n |  |  |  |  |  |  |  |
| CGLPA08709C0 |  | CB-GL ; Ironmongery (Public Area) | 18d | 2012-08-26 | 2012-09-16 | CGLPA08107C0 |  |  |  |  | 38.9d | 27.75d | IRONMONGERY [500 h]; IRONMONGERY [50 no]; Cost |  |  | CGLPA08709C0 | CB | C | GL | PA | DO | 087 | 09 | BILL 4 | B04 | S1 | IM | R00 | ACF06 | 087 |  |  |  |  | 322 | 951 |  |  |  |  |  |  |  |  |  | 08 |  |  |
| CGLPA09503C0 |  | CB-GL ; Ceiling closure - ACT/Gypsum (Public Area) | 24d | 2012-08-26 | 2012-09-23 | CAFOA09503C1 FF, CGLPA01006C0, CGLPA21115C0, CGLPA26005C0, CGLPA27002C0, CGLPA09701C0, CGLPA23021C0, CGLPA26053C0, CGLPA26007C0 |  |  |  |  | 11.15d | 0d | ASSORTED CEILING FINISH [442.19 h]; CEILING GYPSUM [64.98 h]; ASSORTED CEILING FINISH [719 m2]; CEILING GYPSUM [181 m2]; Cost |  |  | CGLPA09503C0 | CB | C | GL | PA | CE | 095 | 03 | BILL 4 | B04 | S1 | 02 | R00 | ACF06 | 095 |  |  |  |  | 324 | 953 |  |  |  |  |  |  |  |  |  |  |  |  |
| CGLPA11001C0 |  | CB-GL ; Wall Protection (WP, CG, WG, FCG) (Public Area) | 24d | 2012-08-26 | 2012-09-23 | CGLPA09701C0, CGLPA09903C0 SS |  |  |  |  | 32.9d | 21.75d | FF&E [21 h]; Cost |  |  | CGLPA11001C0 | CB | C | GL | PA | WF | 110 | 01 | BILL 4 | B04 | S1 | 03 | R00 | ACF08 | b |  |  |  |  | 326 | 1001 |  |  |  |  |  |  |  |  |  |  |  |  |
| CGLPA11009C0 |  | CB-GL ; Signage (Public Area) | 12.75d | 2012-08-26 | 2012-09-10 | CGLPA09701C0 |  |  |  |  | 44.15d | 33d | SIGNAGES [353 h]; SIGNAGES [353.28 no]; Cost |  |  | CGLPA11009C0 | CB | C | GL | PA | SA | 110 | 09 | BILL 4 | B04 | S1 | 09 | R00 | ACF08 | c |  |  |  |  | 322 | 951 |  |  |  |  |  |  |  |  |  | 08 |  |  |
| CGLPA09907C0 |  | CB-GL ; Ceiling Final paint (Public Area) | 0d | 2012-09-23 | 2012-09-23 | CGLPA09601C0, CGLPA09905C0, CGLPA09602C0, CGLPA09503C0 |  |  |  |  | 32.9d | 21.75d | Cost |  |  | CGLPA09907C0 | CB | C | GL | PA | PA | 099 | 07 | BILL 4 | B04 | S1 | 02 | R00 | ACF06 | 099 |  |  |  |  | 331 | 959 |  |  |  |  |  |  |  |  |  |  |  |  |
| CGLPA26019C0 |  | CB-GL ; Final Fix, Inst of Switch/Sockets (Public Area) | 12d | 2012-09-23 | 2012-10-07 | CGLPA09901C0, CGLPA09501C0, CGLPA09503C0 |  |  |  |  | 11.15d | 0d | ELECTRICAL [427.2 h]; Cost |  |  | CGLPA26019C0 | CB | C | GL | PA | ME | 260 | 19 | BILL 4 | B04 | S1 | FF | R00 | ACF07 | 260 |  |  |  |  |  |  |  |  | MEP |  | FF |  |  |  |  |  |  |  |

| ID | WBS | Activity | Duration | Start | Finish | Predecessors | Complete | Remaining | Planned start | Planned finish | Total float | Free float | Resources | Cost | Actual cost | change id | CCAD BUILDING(SET) | CCAD PHASE(SET) | CCAD FLOOR(SET) | CCAD ZONE(SET) | CCAD WORK(SET) | CCAD SECTION(SET) | CCAD SERIAL No.(SET) | CCAD CBS(SET) | CCAD BILL(SET) | CCAD HANDOVER(SET) | CCAD TAG(SET) | CCAD REV(SET) | CCADACF (SET) | CCAD SSCF | user_number8 | user_integer1 | user_integer2 | user_number7 | Change Order # | NEW ACTIVITY ID | RENZ % COMPLETE | Claimed This Month | CCAD CSA | Act Selector % | R3 Partitions | CCAD SUB ZONE MEP(SET) | July2011 Target% Complete | P_811 | P_711 | PERCENT COMPLETE | CCAD DIVISION(SET) | CCAD MEQ |
| --- | --- | --- | --- | --- | --- | --- | --- | --- | --- | --- | --- | --- | --- | --- | --- | --- | --- | --- | --- | --- | --- | --- | --- | --- | --- | --- | --- | --- | --- | --- | --- | --- | --- | --- | --- | --- | --- | --- | --- | --- | --- | --- | --- | --- | --- | --- | --- | --- |
|  | 10 | **Precommissioning Tesing & snagging (Public Area)** |  | 2012-10-07 | 2012-11-19 |  |  |  |  |  |  |  |  |  |  |  |  |  |  |  |  |  |  |  |  |  |  |  |  |  |  |  |  |  |  |  |  |  |  |  |  |  |  |  |  |  |  |  |
| CGLTS01805C0 |  | CB-GL ; MEP de-snag, FIREM sign-off | 9.75d | 2012-10-07 | 2012-10-18 | CGLPA26015C0, CGLPA40303C0, CGLPA21113C0, CGLPA23019C0, CGLPA26017C0, CGLPA26003C0, CGLPA27030C0, CGLPA26019C0, DGLCO04434C0, D01CO04434C0, D02CO04434C0, D03CO04434C0 |  |  |  |  | 11.15d | 0d | TESTING & COMMISSIONING [1020 h]; Cost |  |  | CGLTS01801C0 | CB | C | GL | TS | SC | 018 | 01 | BILL 4 | B04 | S1 | 01 | R00 | ACF07 | 018 |  |  |  |  |  |  |  |  |  |  |  |  |  |  |  |  |  |  |
| CGLTS01812C0 |  | CB-GL ; Touch-up & Clean / JV inspection /CIR /De-snag | 17.5d | 2012-10-18 | 2012-11-10 | CGLPA08709C0, CGLPA09701C0, CGLPA09903C0, CGLPA09907C0, CGLPA11001C0, CGLPA11009C0, CGLTS01805C0, CGLPA05501C0, CGLPA09503C0 |  |  |  |  | 11.15d | 0d | TESTING & COMMISSIONING [149 h]; Cost |  |  | CGLTS01802C0 | CB | C | GL | TS | SC | 018 | 02 | BILL 4 | B04 | S1 | 02 | R00 | ACF07 | 018 |  |  |  |  |  |  |  |  |  |  |  |  |  |  |  |  |  |  |
| CGLTS01819C0 |  | CB-GL ; Consultant's final de-snag inspection | 7d | 2012-11-10 | 2012-11-19 | CGLTS01812C0 |  |  |  |  | 11.15d | 3.83d | Labor General [1 h]; Cost |  |  | CGLTS01803C0 | CB | C | GL | TS | SC | 018 | 03 | BILL 4 | B04 | S1 | 03 | R00 | ACF07 | 018 |  |  |  |  |  |  |  |  |  |  |  |  |  |  |  |  |  |  |
|  | 05 | **Pick up sales STN / AMB Resist / TLT** |  | 2011-03-15 | 2012-11-18 |  |  |  |  |  |  |  |  |  |  |  |  |  |  |  |  |  |  |  |  |  |  |  |  |  |  |  |  |  |  |  |  |  |  |  |  |  |  |  |  |  |  |  |
| CGLPU09201C0 |  | CB-GL ; Metal Studs (Pick Up STN/TLT) | 84d | 2011-03-15 A | 2011-10-19 | CGLPU23001C0, CAFCI09202R02 FS+57d | 95% | 4.2d | 2011-04-28 | 2011-08-06 | 12.3d | 0d | PARTITIONS [2858 h]; PARTITIONS - Metal Studs [346 m]; Cost |  |  | CGLPU09201C0 | CB | C | GL | PU | PT | 092 | 01 | BILL 4 | B04 | S1 | 1F | R00 | ACF06 | 092 | 0 | 0 | 0 | 0 | 313 | 944 | 35 | 66443.65 | GP | PMS | R3 |  |  |  |  |  |  |  |
| CGLPU23001C0 |  | CB-GL ; 1st Fix, Inst. of Supports for MEP (Pick Up STN/TLT) | 27d | 2011-03-18 A | 2011-10-02 | C01S103335C0, C01S203335C0, CGLS107807C0, CGLS207808C0 | 95% | 1.35d | 2011-03-02 | 2011-04-03 | 22.95d | 0d | MECHANICAL [1024.8 h]; Cost [57766.2 AED] | 57,766.25 | 54,877.94 | CGLPU23001C0 | CB | C | GL | PU | ME | 230 | 01 | BILL 4 | B04 | S1 | 1F | R00 | ACF04 | 230 |  |  |  |  |  |  | 100 |  | MEP | M1F |  | 1S |  |  |  |  |  |  |
| CGLPU26013C0 |  | CB-GL ; 1st Fix, Inst of Cable Tray (Pick Up STN/TLT) | 90d | 2011-03-19 A | 2011-12-20 | CGLPU23001C0, CGLPU27010C0 SS+5d, CGLS207808C0 | 30% | 63d | 2011-04-17 | 2011-08-01 | 35.15d | 0d | ELECTRICAL [4921.2 h]; Cost [17044 AED] | 17,043.96 | 5,113.19 | CGLPU26013C0 | CB | C | GL | PU | ME | 260 | 13 | BILL 4 | B04 | S1 | 1F | R00 | ACF04 | 260 |  |  |  |  |  |  | 30 | 181828.4 | MEP | M1F |  | 1S | 95 | 85 | 80 |  |  |  |
| CGLPU22019C0 |  | CB-GL ; 1st Fix, Inst of Drainage pipe (ceiling) (Pick Up STN/TLT) | 200d | 2011-03-20 A | 2011-10-25 | BLZHC01566C0, CGLPU23001C0, CGLPU26013C0 SS+5d, CGLS207808C0 | 90% | 20d | 2011-04-23 | 2011-12-21 | 35.15d | 0d | PLUMBING [1714.8 h]; Cost [92715.9 AED] | 92,715.95 | 83,444.36 | CGLPU22019C0 | CB | C | GL | PU | ME | 220 | 19 | BILL 4 | B04 | S1 | 1F | R00 | ACF04 | 220 |  |  |  |  |  |  | 80 | 10743.1 | MEP | M1F |  | 1S | 95 | 98 | 97 | 90 |  |  |
| CGLPU26001C0 |  | CB-GL ; 1st Fix, Inst of Trunking/Conduiting (Pick Up STN/TLT) | 78d | 2011-03-21 A | 2011-12-19 | CGLPU23001C0, CGLS207808C0 | 20% | 62.4d | 2011-04-03 | 2011-07-04 | 35.15d | 0d | ELECTRICAL [4404 h]; Cost [29580.4 AED] | 29,580.43 | 5,916.09 | CGLPU26001C0 | CB | C | GL | PU | ME | 260 | 01 | BILL 4 | B04 | S1 | 1F | R00 | ACF04 | 260 |  |  |  |  |  |  | 30 | 191221.55 | MEP | M1F |  | 1S | 95 | 90 | 70 |  |  |  |
| CGLPU21111C0 |  | CB-GL ; 1st Fix, Inst of Sprinkler main pipe (Pick Up STN/TLT) | 200d | 2011-03-28 A | 2011-10-25 | BLZHC01566C0, CGLPU22005C0 SS+14d, CGLPU23001C0 | 90% | 20d | 2011-05-15 | 2012-01-14 | 35.15d | 0d | MECHANICAL [686.4 h]; Cost [37438.4 AED] | 37,438.4 | 33,694.56 | CGLPU21111C0 | CB | C | GL | PU | ME | 211 | 11 | BILL 4 | B04 | S1 | 1F | R00 | ACF04 | 211 |  |  |  |  |  |  | 70 | 6517.35 | MEP | M1F |  | 1S | 95 |  |  | 90 |  |  |
| CGLPU27010C0 |  | CB-GL ; 1st Fix, Inst of Trunking for ELV system (Pick Up STN/TLT) | 90d | 2011-03-28 A | 2012-01-05 | CGLPU23001C0, CGLPU26001C0 SS+7d, CGLS207808C0 | 15% | 76.5d | 2011-04-11 | 2011-07-26 | 35.15d | 0d | ELECTRICAL [1843.2 h]; Cost [24667.9 AED] | 24,667.88 | 3,700.18 | CGLPU27010C0 | CB | C | GL | PU | ME | 270 | 10 | BILL 4 | B04 | S1 | 1F | R00 | ACF04 | 270 |  |  |  |  |  |  | 30 | 77565.8 | MEP | M1F |  | 1S | 95 |  |  |  |  |  |
| CGLPU09203C0 |  | CB-GL ; Partitions 1st face (Pick Up STN/TLT) | 54d | 2011-04-12 A | 2011-11-21 | CGLPU09201C0, CGLPU23023C0 FF, CGLPU21117C0 FF, CGLPU23017C0 FF | 67% | 17.82d | 2011-05-12 | 2011-07-16 | 35.15d | 22.85d | PARTITIONS [346 m]; PARTITIONS [2240 h]; Cost |  |  | CGLPU09203C0 | CB | C | GL | PU | PT | 092 | 03 | BILL 4 | B04 | S1 | 2F | R00 | ACF06 | 092 | 0 | 0 | 0 | 0 | 314 | 945 | 15 | 53155 | GP | P1F |  |  |  | 55 | 41 |  |  |  |
| CGLPU23023C0 |  | CB-GL ; 1st Fix, Inst of Main Ducting (Pick Up STN/TLT) | 200d | 2011-04-18 A | 2011-10-25 | BLZHC01566C0, CGLPU23001C0, CGLPU23017C0 SS+7d, CGLS207808C0 | 90% | 20d | 2011-06-04 | 2012-02-02 | 55.15d | 0d | MECHANICAL [16992 h]; Cost [927678 AED] | 927,677.51 | 834,909.76 | CGLPU23023C0 | CB | C | GL | PU | ME | 230 | 23 | BILL 4 | B04 | S1 | 1F | R00 | ACF04 | 230 |  |  |  |  |  |  | 50 | 376699.4 | MEP | M1F |  | 1S | 90 |  |  |  |  |  |
| CGLPU21117C0 |  | CB-GL ; 1st Fix, Inst of Sprinkler branch pipe (Pick Up STN/TLT) | 200d | 2011-04-20 A | 2011-11-21 | CGLPU09201C0, CGLPU21111C0 | 90% | 20d | 2011-07-07 | 2012-03-07 | 35.15d | 0d | MECHANICAL [1009.2 h]; Cost [55153.8 AED] | 55,153.76 | 49,638.38 | CGLPU21117C0 | CB | C | GL | PU | ME | 211 | 17 | BILL 4 | B04 | S1 | 1F | R00 | ACF04 | 211 |  |  |  |  |  |  | 45 | 9590.25 | MEP | M1F |  | 1S | 95 |  |  | 90 |  |  |
| CGLPU22005C0 |  | CB-GL ; 1st Fix, Inst of Water supply pipe (ceiling) (Pick Up STN/TLT) | 70d | 2011-07-10 A | 2011-11-15 | BLZHC01566C0, CGLPU22019C0 SS+5d, CGLPU23001C0, CGLS207808C0 | 50% | 35d | 2011-06-30 | 2011-09-21 | 35.15d | 0d | PLUMBING [1682.4 h]; Cost [90924.8 AED] | 90,924.75 | 45,462.37 | CGLPU22005C0 | CB | C | GL | PU | ME | 220 | 05 | BILL 4 | B04 | S1 | 1F | R00 | ACF04 | 220 |  |  |  |  |  |  |  |  | MEP | M1F |  | 1S | 25 | 50 | 25 |  |  |  |
| CGLPU23008C0 |  | CB-GL ; 1st Fix, Inst of VCD's/FD's (Pick Up STN/TLT) | 70d | 2011-07-10 A | 2011-12-11 | CGLPU23023C0 | 50% | 35d | 2011-08-06 | 2011-10-29 | 80.15d | 67.85d | MECHANICAL [2648.4 h]; Cost [143058 AED] | 143,057.96 | 71,528.98 | CGLPU23008C0 | CB | C | GL | PU | ME | 230 | 08 | BILL 4 | B04 | S1 | 1F | R00 | ACF04 | 230 |  |  |  |  |  |  |  |  | MEP | M1F |  | 1S | 45 | 50 | 45 |  |  |  |
| CGLPU23017C0 |  | CB-GL ; 1st Fix, Inst of CHW pipe (Pick Up STN/TLT) | 70d | 2011-07-10 A | 2011-11-15 | BLZHC01566C0, CGLPU21111C0 SS+10d, CGLPU23001C0, CGLS207808C0 | 50% | 35d | 2011-07-17 | 2011-10-08 | 40.15d | 0d | MECHANICAL [2395.2 h]; Cost [130782 AED] | 130,781.76 | 65,390.88 | CGLPU23017C0 | CB | C | GL | PU | ME | 230 | 17 | BILL 4 | B04 | S1 | 1F | R00 | ACF04 | 230 |  |  |  |  |  |  |  |  | MEP | M1F |  | 1S | 45 | 50 | 40 |  |  |  |
| CGLPU23009C0 |  | CB-GL ; 2nd Fix, Inst of VAV'S CHW connection (Pick Up STN/TLT) | 60d | 2011-07-13 A | 2011-11-30 | CGLPU23017C0 | 80% | 12d | 2011-09-24 | 2011-12-07 | 112.15d | 0d | MECHANICAL [3340.8 h]; Cost [76659.7 AED] | 76,659.7 | 61,327.76 | CGLPU23009C0 | CB | C | GL | PU | ME | 230 | 09 | BILL 4 | B04 | S1 | 2F | R00 | ACF07 | 230 | 0 | 0 | 0 | 0 |  |  |  |  | MEP |  |  | 2n | 25 | 40 | 15 |  |  |  |
| CGLPU22011C0 |  | CB-GL ; 2nd Fix, Drainage/Water pipe (wall) (Pick Up STN/TLT) | 72d | 2011-08-10 A | 2011-11-24 | CGLPU09201C0 | 60% | 28.8d | 2011-11-03 | 2012-02-01 | 25.5d | 13.2d | PLUMBING [2510.4 h]; Cost [92715.9 AED] | 92,715.95 | 55,629.57 | CGLPU22011C0 | CB | C | GL | PU | ME | 220 | 11 | BILL 4 | B04 | S1 | 2F | R00 | ACF07 | 220 |  |  |  |  |  |  |  |  | MEP |  |  | 2n | 25 | 60 | 0 |  |  |  |
| CGLPU23015C0 |  | CB-GL ; 2nd Fix, Insulation of CHW pipe & Duct (Pick Up STN/TLT) | 120d | 2011-08-10 A | 2011-12-15 | CGLPU23009C0 SS, CGLPU23017C0 SS, CGLPU23023C0 SS | 80% | 24d | 2011-10-02 | 2012-02-27 | 112.15d | 99.85d | MECHANICAL [8664 h]; Cost [363863 AED] | 363,863.22 | 291,090.57 | CGLPU23015C0 | CB | C | GL | PU | ME | 230 | 15 | BILL 4 | B04 | S1 | 2F | R00 | ACF07 | 230 |  |  |  |  |  |  |  |  | MEP |  |  | 2n |  | 80 | 0 |  |  |  |
| CGLPU05511C0 |  | CB-GL ; Wall reinforcement for MEP (Pick Up STN/TLT) | 24.12d | 2011-10-19 | 2011-11-20 | CGLPU09201C0 |  |  |  |  | 36.17d | 23.88d | SECONDARY STEEL [22 h]; Cost |  |  | CGLPU05511C0 | CB | C | GL | PU | SW | 055 | 11 | BILL 4 | B04 | S1 | 07 | R00 | ACF03 | b |  |  |  |  |  |  |  |  |  |  |  |  |  |  |  |  |  |  |
| CGLPU26009C0 |  | CB-GL ; 2nd Fix, Inst of Wall conduites (Pick Up STN/TLT) | 42d | 2011-10-19 | 2011-12-13 | CGLPU09201C0 |  |  |  |  | 12.3d | 0d | ELECTRICAL [430.8 h]; Cost |  |  | CGLPU26009C0 | CB | C | GL | PU | ME | 260 | 09 | BILL 4 | B04 | S1 | 2F | R00 | ACF07 | 260 |  |  |  |  |  |  |  | 6859.13 | MEP |  |  | 2n | 25 | 50 | 25 |  |  |  |
| CGLPU08103C0 |  | CB-GL ; Door Frames (Pick Up STN/TLT) | 42d | 2011-11-12 | 2012-01-02 | CGLPU09201C0, GNHE08101C0 FS+79d |  |  |  |  | 61.5d | 49.2d | ASSORTED DOORS [170 h]; Cost |  |  | CGLPU08103C0 | CB | C | GL | PU | DO | 081 | 03 | BILL 4 | B04 | S1 | DF | R00 | ACF06 | 081 |  |  |  |  | 316 | 947 |  |  |  |  |  |  |  |  |  |  | 08 |  |
| CGLPU01005C0 |  | CB-GL ; 2nd, Wall Inspection by Consultant (Pick Up STN/TLT) | 6d | 2011-12-13 | 2011-12-20 | CGLPU22011C0, CGLPU26009C0 |  |  |  |  | 12.3d | 0d | Labor General [0.6 h]; Cost |  |  | CGLPU01005C0 | CB | C | GL | PU | ME | 010 | 05 | BILL 4 | B04 | S1 | WI | R00 | ACF07 | 010 |  |  |  |  |  |  |  |  | MEP |  |  | 2n | 25 |  |  |  |  |  |
| CGLPU09205C0 |  | CB-GL ; Partitions Closing (Pick Up STN/TLT) | 60d | 2011-12-20 | 2012-03-01 | CGLPU01005C0, CGLPU05511C0, CGLPU08103C0 FF, CGLPU09203C0, CGLPU22005C0, CGLPU22019C0, CAFCI09201R02 FS+72d, CAFOA09204C1 FF, CGLPU21111C0 FF, CGLPU23008C0 FF |  |  |  |  | 12.3d | 0d | PARTITIONS [346 m]; PARTITIONS [2857 h]; Cost |  |  | CGLPU09205C0 | CB | C | GL | PU | PT | 092 | 05 | BILL 4 | B04 | S1 | FF | R00 | ACF06 | 092 |  |  |  |  | 315 | 946 |  |  | GP | P2F | R3 |  |  |  |  |  |  |  |
| CGLPU27001C0 |  | CB-GL ; 1st Fix, Wiring/ Cabling work (Pick Up STN/TLT) | 60d | 2011-12-20 | 2012-03-01 | CGLPU26001C0, CGLPU26013C0, CGLPU27010C0 SS |  |  |  |  | 48.15d | 35.85d | ELECTRICAL [4189.2 h]; Cost |  |  | CGLPU27001C0 | CB | C | GL | PU | ME | 270 | 01 | BILL 4 | B04 | S1 | 1F | R00 | ACF04 | 270 |  |  |  |  |  |  |  | 55576.91 | MEP | M1F |  | 1S | 45 | 35 | 20 |  |  |  |
| CGLPU07103C0 |  | CB-GL ; Waterproofing (Pick Up STN/TLT) | 11.88d | 2012-03-01 | 2012-03-15 | CGLPU08103C0, CGLPU09205C0 |  |  |  |  | 62.42d | 0d | THERMAL & MOISTURE [144 h]; THERMAL & MOISTURE [937 m2]; Cost |  |  | CGLPU07103C0 | CB | C | GL | PU | FF | 071 | 03 | BILL 4 | B04 | S1 | 01 | R00 | ACF03 | 071 |  |  |  |  | 105 | 999 |  |  |  |  |  |  |  |  |  |  |  |  |
| CGLPU09901C0 |  | CB-GL ; Wall Prime & 1st coat (Pick Up STN/TLT) | 36d | 2012-03-01 | 2012-04-12 | CGLPU09205C0 |  |  |  |  | 12.3d | 0d | WALL PAINT [443 h]; WALL PAINT [552 m2]; Cost |  |  | CGLPU09901C0 | CB | C | GL | PU | PA | 099 | 01 | BILL 4 | B04 | S1 | 01 | R00 | ACF06 | 099 |  |  |  |  | 328 | 956 |  |  |  |  |  |  |  |  |  |  |  |  |
| CGLPU26005C0 |  | CB-GL ; 2nd Fix, Wiring for Power/Lighting/Emergency (Pick Up STN/TLT) | 42d | 2012-03-01 | 2012-04-19 | CGLPU09205C0 |  |  |  |  | 60.3d | 0d | ELECTRICAL [216 h]; Cost |  |  | CGLPU26005C0 | CB | C | GL | PU | ME | 260 | 05 | BILL 4 | B04 | S1 | 2F | R00 | ACF07 | 260 |  |  |  |  |  |  |  |  | MEP |  |  | 2n |  |  |  |  |  |  |
| CGLPU26007C0 |  | CB-GL ; 2nd Fix, Cable Pulling (Pick Up STN/TLT) | 42d | 2012-03-01 | 2012-04-19 | CGLPU09201C0 SS+6d, CGLPU09205C0 |  |  |  |  | 114.3d | 102d | ELECTRICAL [6616.8 h]; Cost |  |  | CGLPU26007C0 | CB | C | GL | PU | ME | 260 | 07 | BILL 4 | B04 | S1 | 2F | R00 | ACF07 | 260 |  |  |  |  |  |  |  |  | MEP |  |  | 2n | 45 |  |  |  |  |  |
| CGLPU26011C0 |  | CB-GL ; 2nd Fix, Inst of Equipment (DB) (Pick Up STN/TLT) | 42d | 2012-03-01 | 2012-04-19 | CGLPU09205C0 |  |  |  |  | 42.3d | 30d | ELECTRICAL [1266 h]; Cost |  |  | CGLPU26011C0 | CB | C | GL | PU | ME | 260 | 11 | BILL 4 | B04 | S1 | 2F | R00 | ACF04 | 260 |  |  |  |  |  |  |  |  | MEP |  |  | 2n |  |  |  |  |  | E |
| CGLPU26053C0 |  | CB-GL ; 2nd Fix, Wiring / Cabling (Pick Up STN/TLT) | 42d | 2012-03-01 | 2012-04-19 | CGLPU09205C0 |  |  |  |  | 114.3d | 102d | ELECTRICAL [216 h]; Cost |  |  | CGLPU26053C0 | CB | C | GL | PU | ME | 260 | 53 | BILL 4 | B04 | S1 | 2F | R00 | ACF07 | 260 |  |  |  |  | 389 | 977 |  |  | MEP |  |  | 2n |  |  |  |  |  |  |
| CGLPU27020C0 |  | CB-GL ; 2nd Fix, Inst of ELV Equipment (Panels) (Pick Up STN/TLT) | 42d | 2012-03-01 | 2012-04-19 | CGLPU09205C0 |  |  |  |  | 78.3d | 66d | ELECTRICAL [384 h]; Cost |  |  | CGLPU27020C0 | CB | C | GL | PU | ME | 270 | 20 | BILL 4 | B04 | S1 | 2F | R00 | ACF04 | 270 |  |  |  |  |  |  |  |  | MEP |  |  | 2n |  |  |  |  |  | E |
| CGLPU09305C0 |  | CB-GL ; Ceramic floor tile (Pick Up STN/TLT) | 28d | 2012-03-15 | 2012-04-17 | CGLPU07103C0 |  |  |  |  | 62.42d | 0d | CERAMIC FLOOR TILES [168 h]; CERAMIC FLOOR TILES [92 m2]; Cost |  |  | CGLPU09305C0 | CB | C | GL | PU | FF | 093 | 05 | BILL 4 | B04 | S1 | 02 | R00 | ACF06 | CT |  |  |  |  | 106 | 1000 |  |  |  |  |  |  |  |  |  |  |  |  |
| CGLPU05501C0 |  | CB-GL ; Handrails & balustrade (Pick Up STN/TLT) | 36d | 2012-04-12 | 2012-05-24 | CGLPU09901C0 |  |  |  |  | 48.3d | 36d | SECONDARY STEEL [229 h]; Cost |  |  | CGLPU05501C0 | CB | C | GL | PU | SW | 055 | 01 | BILL 4 | B04 | S1 | 01 | R00 | ACF03 | a |  |  |  |  |  |  |  |  |  |  |  |  |  |  |  |  |  |  |
| CGLPU09501C0 |  | CB-GL ; Ceiling Grid and Service Tile (Pick Up STN/TLT) | 36d | 2012-04-12 | 2012-05-24 | CGLPU09205C0 SS+15d, CGLPU21117C0, CGLPU23008C0, CGLPU23009C0, CGLPU23015C0, CGLPU27001C0, CGLPU26011C0 FF, CGLPU09901C0 |  |  |  |  | 12.3d | 0d | CEILING GRID FOR GYPSUM [1991.83 h]; CEILING GRID FOR GYPSUM [170.32 m2]; Cost |  |  | CGLPU09501C0 | CB | C | GL | PU | CE | 095 | 01 | BILL 4 | B04 | S1 | 01 | R00 | ACF06 | 095 |  |  |  |  | 323 | 952 |  |  |  |  |  |  |  |  |  |  |  |  |
| CGLPU22025C0 |  | CB-GL ; Final Fix, Inst of Sanitary Ware (Pick Up STN/TLT) | 48d | 2012-04-17 | 2012-06-12 | CGLPU09205C0, CGLPU09305C0, A10230 FS+148d |  |  |  |  | 62.42d | 0d | PLUMBING [1633.2 h]; Cost |  |  | CGLPU22025C0 | CB | C | GL | PU | ME | 220 | 25 | BILL 4 | B04 | S1 | FF | R00 | ACF07 | 220 |  |  |  |  |  |  |  |  | MEP |  |  | FF |  |  |  |  |  |  |
| CGLPU26015C0 |  | CB-GL ; Final Fix, Termination & Gladding of Cables (Pick Up STN/TLT) | 48d | 2012-04-19 | 2012-06-14 | CGLPU26005C0 |  |  |  |  | 60.3d | 36d | ELECTRICAL [826.8 h]; Cost |  |  | CGLPU26015C0 | CB | C | GL | PU | ME | 260 | 15 | BILL 4 | B04 | S1 | FF | R00 | ACF07 | 260 |  |  |  |  |  |  |  |  | MEP |  |  | FF |  |  |  |  |  |  |
| CGLPU06101C0 |  | CB-GL ; Wood / caseworks (Pick Up STN/TLT) | 60d | 2012-05-24 | 2012-08-04 | CGLCO04401C0, CGLPU09501C0, CGLPU09901C0, CGLCO04405C0, CGLCO04413C0, CAFWA00113M0 |  |  |  |  | 48.3d | 36d | WOOD WORK/CASEWORK [79.34 no]; WOOD WORK/CASEWORK [324 h]; Cost |  |  | CGLPU06101C0 | CB | C | GL | PU | WO | 061 | 01 | BILL 4 | B04 | S1 | WW | R00 | ACF06 | 061 |  |  |  |  | 332 | 960 |  |  |  |  |  |  |  |  |  |  |  |  |
| CGLPU09601C0 |  | CB-GL ; Flooring (Rubber & etc) (Pick Up STN/TLT) | 36d | 2012-05-24 | 2012-07-07 | CGLPU09901C0, CVTVT14305C0 FF, CGLPU09501C0, CGLPU05501C0 FF |  |  |  |  | 12.3d | 0d | RUBBER FLOOR [192 h]; RUBBER FLOOR [476 m2]; Cost |  |  | CGLPU09601C0 | CB | C | GL | PU | FF | 096 | 01 | BILL 4 | B04 | S1 | 03 | R00 | ACF06 | RF |  |  |  |  | 326 | 955 |  |  |  |  |  |  |  |  |  |  |  |  |
| CGLPU09903C0 |  | CB-GL ; Wall Final Paint (Pick Up STN/TLT) | 36d | 2012-05-24 | 2012-07-07 | CGLPU09901C0, CGLPU09905C0 |  |  |  |  | 102.3d | 72d | WALL PAINT [239 h]; WALL PAINT [297 m2]; Cost |  |  | CGLPU09903C0 | CB | C | GL | PU | PA | 099 | 03 | BILL 4 | B04 | S1 | 02 | R00 | ACF06 | 099 |  |  |  |  | 329 | 957 |  |  |  |  |  |  |  |  |  |  |  |  |
| CGLPU09905C0 |  | CB-GL ; Ceiling Prime & 1st coat (Pick Up STN/TLT) | 0d | 2012-05-24 | 2012-05-24 | CGLPU09501C0 |  |  |  |  | 102.3d | 0d | Cost |  |  | CGLPU09905C0 | CB | C | GL | PU | PA | 099 | 05 | BILL 4 | B04 | S1 | 01 | R00 | ACF06 | 099 |  |  |  |  | 330 | 958 |  |  |  |  |  |  |  |  |  |  |  |  |
| CGLPU21115C0 |  | CB-GL ; 2nd Fix, Inst of Sprinkler droppers (Pick Up STN/TLT) | 30d | 2012-05-24 | 2012-06-30 | CGLPU09501C0 |  |  |  |  | 24.3d | 0d | MECHANICAL [2052 h]; Cost |  |  | CGLPU21115C0 | CB | C | GL | PU | ME | 211 | 15 | BILL 4 | B04 | S1 | 2F | R00 | ACF07 | 211 |  |  |  |  |  |  |  |  | MEP |  |  | 2n |  |  |  |  |  |  |
| CGLPU23021C0 |  | CB-GL ; 2nd Fix, Inst of Flexible Duct & Plenum boxes (Pick Up STN/TLT) | 42d | 2012-05-24 | 2012-07-14 | CGLPU09205C0, CGLPU09501C0 |  |  |  |  | 24.3d | 0d | MECHANICAL [2824.8 h]; Cost |  |  | CGLPU23021C0 | CB | C | GL | PU | ME | 230 | 21 | BILL 4 | B04 | S1 | 2F | R00 | ACF07 | 230 |  |  |  |  |  |  |  |  | MEP |  |  | 2n |  |  |  |  |  |  |
| CGLPU26017C0 |  | CB-GL ; Final Fix, Inst of Ceiling rose (Pick Up STN/TLT) | 48d | 2012-05-24 | 2012-07-21 | CGLPU09501C0 |  |  |  |  | 30.3d | 0d | ELECTRICAL [123.6 h]; Cost |  |  | CGLPU26017C0 | CB | C | GL | PU | ME | 260 | 17 | BILL 4 | B04 | S1 | FF | R00 | ACF07 | 260 |  |  |  |  |  |  |  |  | MEP |  |  | FF |  |  |  |  |  |  |
| CGLPU27002C0 |  | CB-GL ; 2nd Fix, Wiring Droppers (Pick Up STN/TLT) | 42d | 2012-05-24 | 2012-07-14 | CGLPU09501C0 |  |  |  |  | 24.3d | 0d | ELECTRICAL [216 h]; Cost |  |  | CGLPU27002C0 | CB | C | GL | PU | ME | 270 | 02 | BILL 4 | B04 | S1 | 2F | R00 | ACF07 | 270 |  |  |  |  |  |  |  |  | MEP |  |  | 2n |  |  |  |  |  |  |
| CGLPU21113C0 |  | CB-GL ; Final Fix, Inst of Sprinklers head/ Extinguisher (Pick Up STN/TLT) | 48d | 2012-05-31 | 2012-07-28 | CGLPU09501C0, CGLPU21115C0 SS+6d |  |  |  |  | 24.3d | 0d | MECHANICAL [278.4 h]; Cost |  |  | CGLPU21113C0 | CB | C | GL | PU | ME | 211 | 13 | BILL 4 | B04 | S1 | FF | R00 | ACF07 | 211 |  |  |  |  |  |  |  |  | MEP |  |  | FF |  |  |  |  |  |  |
| CGLPU23019C0 |  | CB-GL ; Final Fix, Inst of Grilles & Diffusers (Pick Up STN/TLT) | 48d | 2012-05-31 | 2012-07-28 | CGLPU09501C0, CGLPU23021C0 SS+6d |  |  |  |  | 24.3d | 0d | MECHANICAL [1970.4 h]; Cost |  |  | CGLPU23019C0 | CB | C | GL | PU | ME | 230 | 19 | BILL 4 | B04 | S1 | FF | R00 | ACF07 | 230 |  |  |  |  |  |  |  |  | MEP |  |  | FF |  |  |  |  |  |  |
| CGLPU26003C0 |  | CB-GL ; Final Fix, Inst of Light fittings (Pick Up STN/TLT) | 48d | 2012-05-31 | 2012-07-28 | CGLPU09501C0, CGLPU26017C0 SS+6d |  |  |  |  | 72.3d | 60d | ELECTRICAL [7983.6 h]; Cost |  |  | CGLPU26003C0 | CB | C | GL | PU | ME | 260 | 03 | BILL 4 | B04 | S1 | FF | R00 | ACF07 | 260 |  |  |  |  |  |  |  |  | MEP |  |  | FF |  |  |  |  |  |  |
| CGLPU27030C0 |  | CB-GL ; Final Fix, Inst of ELV device (Detector/Speaker) (Pick Up STN/TLT) | 48d | 2012-05-31 | 2012-07-28 | CGLPU09501C0, CGLPU27002C0 SS+6d |  |  |  |  | 24.3d | 0d | ELECTRICAL [2054.4 h]; Cost |  |  | CGLPU27030C0 | CB | C | GL | PU | ME | 270 | 30 | BILL 4 | B04 | S1 | FF | R00 | ACF07 | 270 |  |  |  |  |  |  |  |  | MEP |  |  | FF |  |  |  |  |  |  |
| CGLPU22021C0 |  | CB-GL ; Final Fix, Terminate Sanitary Ware & Appliances (Pick Up STN/TLT) | 48d | 2012-06-12 | 2012-08-08 | CGLPU22011C0, CGLPU22025C0 |  |  |  |  | 62.42d | 50.12d | PLUMBING [1633.2 h]; Cost |  |  | CGLPU22021C0 | CB | C | GL | PU | ME | 220 | 21 | BILL 4 | B04 | S1 | FF | R00 | ACF07 | 220 |  |  |  |  |  |  |  |  | MEP |  |  | FF |  |  |  |  |  |  |
| CGLPU08107C0 |  | CB-GL ; Doors (Pick Up STN/TLT) | 42d | 2012-07-07 | 2012-08-27 | CGLPU08103C0, CGLPU09901C0, CGLPU09601C0 |  |  |  |  | 42.3d | 0d | ASSORTED DOORS [580 h]; ASSORTED DOORS [58 no]; Cost |  |  | CGLPU08107C0 | CB | C | GL | PU | DO | 081 | 07 | BILL 4 | B04 | S1 | DR | R00 | ACF06 | 081 |  |  |  |  | 317 | 948 |  |  |  |  |  |  |  |  |  |  | 08 |  |
| CGLPU09701C0 |  | CB-GL ; Wall finishes (ST, WD, WC) (Pick Up STN/TLT) | 36d | 2012-07-07 | 2012-08-18 | CGLPU27020C0, CAFCI22001R02 FS+164d, CGLPU06101C0 SS, CGLPU09601C0 |  |  |  |  | 12.3d | 0d | ASSORTED WALL FINISH [58 h]; ASSORTED WALL FINISH [66 m2]; Cost |  |  | CGLPU09701C0 | CB | C | GL | PU | WF | 097 | 01 | BILL 4 | B04 | S1 | 01 | R00 | ACF06 | 097 |  |  |  |  | 105 | 1002 |  |  |  |  |  |  |  |  |  |  |  |  |
| CGLPU01006C0 |  | CB-GL ; 2nd, Ceiling Inspection by Consultants (Pick Up STN/TLT) | 6d | 2012-07-28 | 2012-08-04 | CGLPU21115C0, CGLPU23009C0, CGLPU23015C0, CGLPU27002C0, CGLPU09501C0, CGLPU21113C0, CGLPU23019C0, CGLPU26017C0, CGLPU27030C0, CGLPU26015C0 |  |  |  |  | 24.3d | 12d | Labor General [0.6 h]; Cost |  |  | CGLPU01006C0 | CB | C | GL | PU | ME | 010 | 06 | BILL 4 | B04 | S1 | CI | R00 | ACF07 | 010 |  |  |  |  |  |  |  |  | MEP |  |  | 2n |  |  |  |  |  |  |
| CGLPU09503C0 |  | CB-GL ; Ceiling closure - ACT/Gypsum (Pick Up STN/TLT) | 24d | 2012-08-18 | 2012-09-17 | CAFOA09503C1 FF, CGLPU01006C0, CGLPU21115C0, CGLPU23021C0, CGLPU26005C0, CGLPU27002C0, CGLPU09701C0, CGLPU26053C0, CGLPU26007C0 |  |  |  |  | 12.3d | 0d | ASSORTED CEILING FINISH [380.07 h]; CEILING GYPSUM [55.97 h]; ASSORTED CEILING FINISH [618 m2]; CEILING GYPSUM [156 m2]; Cost |  |  | CGLPU09503C0 | CB | C | GL | PU | CE | 095 | 03 | BILL 4 | B04 | S1 | 02 | R00 | ACF06 | 095 |  |  |  |  | 324 | 953 |  |  |  |  |  |  |  |  |  |  |  |  |
| CGLPU11001C0 |  | CB-GL ; Wall Protection (WP, CG, WG, FCG) (Pick Up STN/TLT) | 24d | 2012-08-18 | 2012-09-17 | CGLPU09701C0, CGLPU09903C0 SS |  |  |  |  | 42.3d | 30d | FF&E [2 h]; Cost |  |  | CGLPU11001C0 | CB | C | GL | PU | WF | 110 | 01 | BILL 4 | B04 | S1 | 03 | R00 | ACF08 | b |  |  |  |  | 326 | 1001 |  |  |  |  |  |  |  |  |  |  |  |  |
| CGLPU08709C0 |  | CB-GL ; Ironmongery (Pick Up STN/TLT) | 18d | 2012-08-27 | 2012-09-17 | CGLPU08107C0 |  |  |  |  | 42.3d | 30d | IRONMONGERY [430 h]; IRONMONGERY [43 no]; Cost |  |  | CGLPU08709C0 | CB | C | GL | PU | DO | 087 | 09 | BILL 4 | B04 | S1 | IM | R00 | ACF06 | 087 |  |  |  |  | 322 | 951 |  |  |  |  |  |  |  |  |  |  | 08 |  |
| CGLPU09907C0 |  | CB-GL ; Ceiling Final paint (Pick Up STN/TLT) | 0d | 2012-09-17 | 2012-09-17 | CGLPU09601C0, CGLPU09905C0, CGLPU09503C0 |  |  |  |  | 42.3d | 30d | Cost |  |  | CGLPU09907C0 | CB | C | GL | PU | PA | 099 | 07 | BILL 4 | B04 | S1 | 02 | R00 | ACF06 | 099 |  |  |  |  | 331 | 959 |  |  |  |  |  |  |  |  |  |  |  |  |
| CGLPU11003C0 |  | CB-GL ; FF & E (Pick Up STN/TLT) | 24d | 2012-09-17 | 2012-10-15 | CGLPU09601C0, CGLPU09503C0 |  |  |  |  | 18.3d | 6d | FF&E [4 h]; FF&E [1.57 no]; Cost |  |  | CGLPU11003C0 | CB | C | GL | PU | WO | 110 | 03 | BILL 4 | B04 | S1 | 04 | R00 | ACF08 | a |  |  |  |  | 333 | 961 |  |  |  |  |  |  |  |  |  |  |  |  |
| CGLPU22027C0 |  | CB-GL ; Final Fix, Inst of All drain (Pick Up STN/TLT) | 18d | 2012-09-17 | 2012-10-08 | CGLPU09305C0, CGLPU09503C0 |  |  |  |  | 12.3d | 0d | PLUMBING [1633.2 h]; Cost |  |  | CGLPU22027C0 | CB | C | GL | PU | ME | 220 | 27 | BILL 4 | B04 | S1 | FF | R00 | ACF07 | 220 |  |  |  |  |  |  |  |  | MEP |  |  | FF |  |  |  |  |  |  |
| CGLPU26019C0 |  | CB-GL ; Final Fix, Inst of Switch/Sockets (Pick Up STN/TLT) | 12d | 2012-09-17 | 2012-10-01 | CGLPU09901C0, CGLPU09503C0 |  |  |  |  | 18.3d | 6d | ELECTRICAL [427.2 h]; Cost |  |  | CGLPU26019C0 | CB | C | GL | PU | ME | 260 | 19 | BILL 4 | B04 | S1 | FF | R00 | ACF07 | 260 |  |  |  |  |  |  |  |  | MEP |  |  | FF |  |  |  |  |  |  |

| ID | WBS | Activity | Duration | Start | Finish | Predecessors | Complete | Remaining | Planned start | Planned finish | Total float | Free float | Resources | Cost | Actual cost | change id | CCAD BUILDING(SET) | CCAD PHASE(SET) | CCAD FLOOR(SET) | CCAD ZONE(SET) | CCAD WORK(SET) | CCAD SECTION(SET) | CCAD SERIAL No.(SET) | CCAD CBS(SET) | CCAD BILL(SET) | CCAD HANDOVER(SET) | CCAD TAG(SET) | CCAD REV(SET) | CCADACF (SET) | CCAD SSCF | user_number8 | user_integer1 | user_integer2 | user_number7 | Change Order # | NEW ACTIVITY ID | RENZ % COMPLETE | CCAD CSA | Act Selector % | Claimed This Month | P_811 | P_711 | July2011 Target% Complete | CCAD SUB ZONE MEP(SET) | CCAD MEQ | CCAD DIVISION(SET) | IDDD |
| --- | --- | --- | --- | --- | --- | --- | --- | --- | --- | --- | --- | --- | --- | --- | --- | --- | --- | --- | --- | --- | --- | --- | --- | --- | --- | --- | --- | --- | --- | --- | --- | --- | --- | --- | --- | --- | --- | --- | --- | --- | --- | --- | --- | --- | --- | --- | --- |
|  | 10 | **Precommissioning Tesing & snagging (Pick up sales STN / AMB Resist / TLT)** |  | 2012-10-08 | 2012-11-18 |  |  |  |  |  |  |  |  |  |  |  |  |  |  |  |  |  |  |  |  |  |  |  |  |  |  |  |  |  |  |  |  |  |  |  |  |  |  |  |  |  |  |
| CGLTS01806C0 |  | CB-GL ; MEP de-snag, FIREM sign-off | 12d | 2012-10-08 | 2012-10-22 | CGLPU22025C0, CGLPU22027C0, CGLPU26015C0, CGLPU22021C0, CGLPU21113C0, CGLPU23019C0, CGLPU26017C0, CGLPU26003C0, CGLPU27030C0, CGLPU26019C0 |  |  |  |  | 12.3d | 0d | TESTING & COMMISSIONING [1020 h]; Cost |  |  | CGLTS01801C0 | CB | C | GL | TS | SC | 018 | 01 | BILL 4 | B04 | S1 | 01 | R00 | ACF07 | 018 |  |  |  |  |  |  |  |  |  |  |  |  |  |  |  |  |  |
| CGLTS01813C0 |  | CB-GL ; Touch-up & Clean / JV inspection /CIR /De-snag | 13.5d | 2012-10-22 | 2012-11-08 | CGLPU06101C0, CGLPU09701C0, CGLPU09903C0, CGLPU09907C0, CGLPU11001C0, CGLPU11003C0, CGLTS01806C0, CGLPU05501C0, CGLPU08709C0, CGLPU09503C0 |  |  |  |  | 12.3d | 0d | TESTING & COMMISSIONING [149 h]; Cost |  |  | CGLTS01802C0 | CB | C | GL | TS | SC | 018 | 02 | BILL 4 | B04 | S1 | 02 | R00 | ACF07 | 018 |  |  |  |  |  |  |  |  |  |  |  |  |  |  |  |  |  |
| CGLTS01820C0 |  | CB-GL ; Consultant's final de-snag inspection | 7d | 2012-11-08 | 2012-11-18 | CGLTS01813C0 |  |  |  |  | 12.3d | 4.97d | Labor General [1 h]; Cost |  |  | CGLTS01803C0 | CB | C | GL | TS | SC | 018 | 03 | BILL 4 | B04 | S1 | 03 | R00 | ACF07 | 018 |  |  |  |  |  |  |  |  |  |  |  |  |  |  |  |  |  |
|  | 06 | **TR Room** |  | 2011-03-05 | 2012-08-16 |  |  |  |  |  |  |  |  |  |  |  |  |  |  |  |  |  |  |  |  |  |  |  |  |  |  |  |  |  |  |  |  |  |  |  |  |  |  |  |  |  |  |
| CGLTR09201C0 |  | CB-GL ; Metal Studs (TR RM) | 18d | 2011-03-05 A | 2011-10-29 | CGLPA09201C0, A10290 FS+65d | 95% | 0.9d | 2011-04-14 | 2011-05-05 | 41.16d | 0d | PARTITIONS [549 h]; PARTITIONS - Metal Studs [67 m]; Cost |  |  | CGLTR09201C0 | CB | C | GL | TR | PT | 092 | 01 | BILL 4 | B04 | S1 | 1F | R00 | ACF06 | 092 | 0 | 0 | 0 | 0 | 313 | 885 | 40 | GP | PMS |  |  |  |  |  |  |  |  |
| CGLTR09203C0 |  | CB-GL ; Partitions 1st face (TR RM) | 48d | 2011-04-13 A | 2011-11-19 | CGLTR09201C0 SS+12d | 67% | 15.84d | 2011-04-28 | 2011-06-23 | 41.16d | 23.76d | PARTITIONS [67 m]; PARTITIONS [435 h]; Cost |  |  | CGLTR09203C0 | CB | C | GL | TR | PT | 092 | 03 | BILL 4 | B04 | S1 | 2F | R00 | ACF06 | 092 | 0 | 0 | 0 | 0 | 314 | 886 | 15 | GP | P1F | 10422.6 | 55 | 41 |  |  |  |  |  |
| CGLTR26026C0 |  | CB-GL ; 2nd Fix, Conduit (TR RM) | 54d | 2011-06-09 A | 2011-10-31 | MGNMI00101M0 | 50% | 27d | 2011-06-09 | 2011-08-13 | 42d | 0d | ELECTRICAL [430.8 h]; Cost [29580.4 AED] | 29,580.43 | 14,790.21 | CGLTR26026C0 | CB | C | GL | TR | ME | 260 | 26 | BILL 4 | B04 | S1 | 2F | R00 | ACF07 | 260 |  |  |  |  |  |  |  | MEP |  | 6859.13 | 50 | 25 | 25 | 2n |  |  |  |
| CGLTR23009C0 |  | CB-GL ; 2nd Fix, Inst of VAV'S CHW connection (TR RM) | 36d | 2011-07-05 A | 2011-11-10 | CGLTR09201C0 | 80% | 7.2d | 2011-10-11 | 2011-11-24 | 62.1d | 0d | MECHANICAL [3340.8 h]; Cost [76659.7 AED] | 76,659.7 | 61,327.76 | CGLTR23009C0 | CB | C | GL | TR | ME | 230 | 09 | BILL 4 | B04 | S1 | 2F | R00 | ACF07 | 230 | 0 | 0 | 0 | 0 |  |  |  | MEP |  |  | 40 | 15 | 25 | 2n |  |  |  |
| CGLTR23011C0 |  | CB-GL ; 2nd Fix, Inst of VCD's/FD's (TR RM) | 36d | 2011-07-10 A | 2011-11-24 | CGLTR09201C0, AGLER05501R02 FF, CGLER05501R02 FF, GGLER05501R02 FF, IGLER05501R02 FF, TGLER05501R02 FF, SGLER05501R02 FF | 45% | 19.8d | 2011-09-11 | 2011-10-22 | 62.1d | 0d | MECHANICAL [4570.8 h]; Cost [143058 AED] | 143,057.96 | 64,376.08 | CGLTR23011C0 | CB | C | GL | TR | ME | 230 | 11 | BILL 4 | B04 | S1 | 2F | R00 | ACF07 | 230 |  |  |  |  |  |  |  | MEP |  |  | 45 | 35 | 25 | 2n |  |  |  |
| CGLTR23013C0 |  | CB-GL ; 2nd Fix, Insulation of CHW pipe & Duct (TR RM) | 120d | 2011-07-10 A | 2011-11-30 | CGLTR23009C0 SS, CGLTR23011C0 SS | 80% | 24d | 2011-10-02 | 2012-02-26 | 62.1d | 44.7d | MECHANICAL [8664 h]; Cost [363863 AED] | 363,863.22 | 291,090.57 | CGLTR23013C0 | CB | C | GL | TR | ME | 230 | 13 | BILL 4 | B04 | S1 | 2F | R00 | ACF07 | 230 |  |  |  |  |  |  |  | MEP |  |  | 80 | 65 | 15 | 2n |  |  |  |
| CGLTR26009C0 |  | CB-GL ; 2nd Fix, Inst of Equipment (DB, TR, SG,BUS) (TR RM) | 54d | 2011-07-10 A | 2012-02-07 | CGLTR09201C0, CGLTR09205C0 SS | 25% | 40.5d | 2011-09-25 | 2011-11-30 | 104.9d | 31.5d | ELECTRICAL [14013.6 h]; Cost [3188823 AED] | 3,188,823.2 | 797,205.8 | CGLTR26009C0 | CB | C | GL | TR | ME | 260 | 09 | BILL 4 | B04 | S1 | 2F | R00 | ACF04 | 260 |  |  |  |  |  |  |  | MEP |  |  |  |  | 25 | 2n | E |  |  |
| CGLTR01005C0 |  | CB-GL ; 2nd, Wall Inspection by Consultant (TR RM) | 12d | 2011-11-01 | 2011-11-17 | CGLTR26026C0 |  |  |  |  | 42d | 24.6d | Labor General [0.6 h]; Cost |  |  | CGLTR01005C0 | CB | C | GL | TR | ME | 010 | 05 | BILL 4 | B04 | S1 | WI | R00 | ACF07 | 010 |  |  |  |  |  |  |  | MEP |  |  |  |  |  | 2n |  |  |  |
| CGLTR08101C0 |  | CB-GL ; Door Frames (TR RM) | 18d | 2011-11-12 | 2011-12-04 | CGLTR09201C0, GNHE08101C0 FS+79d |  |  |  |  | 60d | 42.6d | ASSORTED DOORS [4 h]; Cost |  |  | CGLTR08101C0 | CB | C | GL | TR | DO | 081 | 01 | BILL 4 | B04 | S1 | DF | R00 | ACF06 | 081 |  |  |  |  | 316 | 20001090 |  |  |  |  |  |  |  |  |  | 08 |  |
| CGLTR09205C0 |  | CB-GL ; Partitions Closing (TR RM) | 30d | 2011-12-19 | 2012-01-24 | CGLTR01005C0, CGLTR08101C0 FF, CGLTR09201C0, CGLTR09203C0, CAFOA09204C1 FF, CP1TR09205C0 SS+6d, CGLTR23011C0 FF, CGLTR23009C0 FF, CGLTR23013C0 FF |  |  |  |  | 17.4d | 0d | PARTITIONS [67 m]; PARTITIONS [561 h]; Cost |  |  | CGLTR09205C0 | CB | C | GL | TR | PT | 092 | 05 | BILL 4 | B04 | S1 | FF | R00 | ACF06 | 092 |  |  |  |  | 315 | 887 |  | GP | P2F |  |  |  |  |  |  |  |  |
| CGLTR09901C0 |  | CB-GL ; Wall Prime & 1st coat (TR RM) | 18d | 2012-01-24 | 2012-02-15 | CGLTR09205C0 |  |  |  |  | 39.4d | 0d | WALL PAINT [41 h]; WALL PAINT [49 m2]; Cost |  |  | CGLTR09901C0 | CB | C | GL | TR | PA | 099 | 01 | BILL 4 | B04 | S1 | 01 | R00 | ACF06 | 099 |  |  |  |  | 360 | 20001110 |  |  |  |  |  |  |  |  |  |  |  |
| CGLTR26027C0 |  | CB-GL ; 2nd Fix, Wiring / Cabling (TR RM) | 30d | 2012-01-24 | 2012-02-29 | CGLTR09205C0 |  |  |  |  | 109.4d | 0d | ELECTRICAL [216 h]; Cost |  |  | CGLTR26027C0 | CB | C | GL | TR | ME | 260 | 27 | BILL 4 | B04 | S1 | 2F | R00 | ACF07 | 260 |  |  |  |  | 417 | 1318 |  | MEP |  |  |  |  | 25 | 2n |  |  |  |
| CGLTR26005C0 |  | CB-GL ; 2nd Fix, Wiring for Power/Lighting/Emergency (TR RM) | 30d | 2012-01-31 | 2012-03-07 | CGLTR09201C0, CGLTR09205C0, CGLTR26026C0, CGLTR26027C0 SS+6d |  |  |  |  | 109.4d | 36d | ELECTRICAL [216 h]; Cost |  |  | CGLTR26005C0 | CB | C | GL | TR | ME | 260 | 05 | BILL 4 | B04 | S1 | 2F | R00 | ACF07 | 260 |  |  |  |  |  |  |  | MEP |  |  |  |  | 25 | 2n |  |  |  |
| CGLTR09501C0 |  | CB-GL ; Ceiling grid and ServiceTile (TR RM) | 24d | 2012-02-15 | 2012-03-14 | CGLTR09205C0 SS+15d, CGLTR09901C0 |  |  |  |  | 39.4d | 0d | CEILING GRID FOR GYPSUM [262.98 h]; CEILING GRID FOR GYPSUM [22.31 m2]; Cost |  |  | CGLTR09501C0 | CB | C | GL | TR | CE | 095 | 01 | BILL 4 | B04 | S1 | 01 | R00 | ACF06 | 095 |  |  |  |  | 336 | 1327 |  |  |  |  |  |  |  |  |  |  | 1 |
| CGLTR01006C0 |  | CB-GL ; 2nd, Ceiling Inspection by Consultants (TR RM) | 12d | 2012-03-14 | 2012-03-28 | CGLTR23009C0, CGLTR23011C0, CGLTR23013C0, CGLTR09501C0 |  |  |  |  | 91.4d | 18d | Labor General [0.6 h]; Cost |  |  | CGLTR01006C0 | CB | C | GL | TR | ME | 010 | 06 | BILL 4 | B04 | S1 | CI | R00 | ACF07 | 010 |  |  |  |  |  |  |  | MEP |  |  |  |  |  | 2n |  |  |  |
| CGLTR09601C0 |  | CB-GL ; Floor Finishes (TR RM) | 12d | 2012-03-14 | 2012-03-28 | CVTVT14305C0 FF, CGLTR09501C0, CGLTR26009C0, CGLTR09901C0 FF |  |  |  |  | 73.4d | 0d | ASSORTED FLOOR FINISH [752 h]; ASSORTED FLOOR FINISH [415 m2]; Cost |  |  | CGLTR09601C0 | CB | C | GL | TR | FF | 096 | 01 | BILL 4 | B04 | S1 | 01 | R00 | ACF06 | FF |  |  |  |  | 359 | 20001120 |  |  |  |  |  |  |  |  |  |  |  |
| CGLTR09905C0 |  | CB-GL ; Ceiling Prime & 1st coat (TR RM) | 0d | 2012-03-14 | 2012-03-14 | CGLTR09501C0 |  |  |  |  | 159.4d | 92d | Cost |  |  | CGLTR09905C0 | CB | C | GL | TR | PA | 099 | 05 | BILL 4 | B04 | S1 | 01 | R00 | ACF06 | 099 |  |  |  |  | 362 | 1313 |  |  |  |  |  |  |  |  |  |  |  |
| CGLTR23023C0 |  | CB-GL ; 2nd Fix, Flexible ducts (TR RM) | 30d | 2012-03-14 | 2012-04-18 | CGLTR09205C0, CGLTR09501C0 |  |  |  |  | 73.4d | 0d | MECHANICAL [2824.8 h]; Cost |  |  | CGLTR23023C0 | CB | C | GL | TR | ME | 230 | 23 | BILL 4 | B04 | S1 | 2F | R00 | ACF07 | 230 |  |  |  |  | 412 | 20001140 |  | MEP |  |  |  |  |  | 2n |  |  |  |
| CGLTR27020C0 |  | CB-GL ; 2nd Fix, Inst of ELV Equipment (Panels) (TR RM) | 30d | 2012-03-14 | 2012-04-18 | CGLTR09201C0, CGLTR09205C0, CGLTR09501C0 |  |  |  |  | 39.4d | 0d | ELECTRICAL [384 h]; Cost |  |  | CGLTR27020C0 | CB | C | GL | TR | ME | 270 | 20 | BILL 4 | B04 | S1 | 2F | R00 | ACF04 | 270 |  |  |  |  |  |  |  | MEP |  |  |  |  | 25 | 2n | E |  |  |
| CGLTR08105C0 |  | CB-GL ; Doors (TR RM) | 18d | 2012-03-28 | 2012-04-18 | CGLTR08101C0, CGLTR09901C0, CGLTR09601C0 |  |  |  |  | 111.4d | 0d | ASSORTED DOORS [10 h]; ASSORTED DOORS [1 no]; Cost |  |  | CGLTR08105C0 | CB | C | GL | TR | DO | 081 | 05 | BILL 4 | B04 | S1 | DR | R00 | ACF06 | 081 |  |  |  |  | 317 | 1325 |  |  |  |  |  |  |  |  |  | 08 |  |
| CGLTR21115C0 |  | CB-GL ; 2nd Fix, Gaseous Fire Suppression (TR RM) | 18d | 2012-03-28 | 2012-04-18 | CGLTR09601C0 |  |  |  |  | 73.4d | 0d | MECHANICAL [4502.4 h]; Cost |  |  | CGLTR21115C0 | CB | C | GL | TR | ME | 211 | 15 | BILL 4 | B04 | S1 | 2F | R00 | ACF07 | 211 |  |  |  |  | 411 | 20001130 |  | MEP |  |  |  |  |  | 2n |  |  |  |
| CGLTR08709C0 |  | CB-GL ; Ironmongery (TR RM) | 18d | 2012-04-18 | 2012-05-09 | CGLTR08105C0 |  |  |  |  | 111.4d | 48d | IRONMONGERY [80 h]; IRONMONGERY [8 no]; Cost |  |  | CGLTR08709C0 | CB | C | GL | TR | DO | 087 | 09 | BILL 4 | B04 | S1 | IM | R00 | ACF06 | 087 |  |  |  |  | 322 | 20001100 |  |  |  |  |  |  |  |  |  | 08 |  |
| CGLTR09503C0 |  | CB-GL ; Ceiling closure (TR RM) | 20d | 2012-04-18 | 2012-05-12 | CGLTR01006C0, CGLTR09501C0, CGLTR21115C0, CGLTR26005C0, CGLTR26026C0, CGLTR26027C0, CGLTR23023C0 |  |  |  |  | 73.4d | 0d | ASSORTED CEILING FINISH [111.93 h]; CEILING GYPSUM [7.38 h]; ASSORTED CEILING FINISH [182 m2]; CEILING GYPSUM [46 m2]; Cost |  |  | CGLTR09503C0 | CB | C | GL | TR | CE | 095 | 03 | BILL 4 | B04 | S1 | 02 | R00 | ACF06 | 095 |  |  |  |  | 337 | 20001080 |  |  |  |  |  |  |  |  |  |  |  |
| CGLTR27002C0 |  | CB-GL ; 2nd Fix, Dressing of ELV panels (TR RM) | 30d | 2012-04-18 | 2012-05-23 | CGLTR09201C0, CGLTR09205C0, CGLTR27020C0 |  |  |  |  | 39.4d | 0d | ELECTRICAL [1284 h]; Cost |  |  | CGLTR27002C0 | CB | C | GL | TR | ME | 270 | 02 | BILL 4 | B04 | S1 | 2F | R00 | ACF07 | 270 |  |  |  |  |  |  |  | MEP |  |  |  |  |  | 2n |  |  |  |
| CGLTR09903C0 |  | CB-GL ; Wall - Final Paint (TR RM) | 12d | 2012-05-12 | 2012-05-26 | CGLTR09503C0, CGLTR09901C0 |  |  |  |  | 97.4d | 34d | WALL PAINT [21 h]; WALL PAINT [26 m2]; Cost |  |  | CGLTR09903C0 | CB | C | GL | TR | PA | 099 | 03 | BILL 4 | B04 | S1 | 02 | R00 | ACF06 | 099 |  |  |  |  | 361 | 1312 |  |  |  |  |  |  |  |  |  |  |  |
| CGLTR23074C0 |  | CB-GL ; Final Fix, Grilles, panels & diffusers (TR RM) | 18d | 2012-05-12 | 2012-06-02 | CGLTR09503C0 |  |  |  |  | 73.4d | 10d | MECHANICAL [1970.4 h]; Cost |  |  | CGLTR23074C0 | CB | C | GL | TR | ME | 230 | 74 | BILL 4 | B04 | S1 | FF | R00 | ACF07 | 230 |  |  |  |  | 419 | 20001160 |  | MEP |  |  |  |  |  | FF |  |  |  |
| CGLTR26013C0 |  | CB-GL ; Final Fix, Termination & Gladding of Cables (TR RM) | 18d | 2012-05-12 | 2012-06-02 | CGLTR09503C0, CGLTR26015C0 SS, CGLTR26009C0 |  |  |  |  | 73.4d | 0d | ELECTRICAL [826.8 h]; Cost |  |  | CGLTR26013C0 | CB | C | GL | TR | ME | 260 | 13 | BILL 4 | B04 | S1 | FF | R00 | ACF07 | 260 |  |  |  |  |  |  |  | MEP |  |  |  |  |  | FF |  |  |  |
| CGLTR26015C0 |  | CB-GL ; Final Fix, Inst of Ceiling rose (TR RM) | 18d | 2012-05-12 | 2012-06-02 | CGLTR09503C0 |  |  |  |  | 73.4d | 0d | ELECTRICAL [123.6 h]; Cost |  |  | CGLTR26015C0 | CB | C | GL | TR | ME | 260 | 15 | BILL 4 | B04 | S1 | FF | R00 | ACF07 | 260 |  |  |  |  |  |  |  | MEP |  |  |  |  |  | FF |  |  |  |
| CGLTR26017C0 |  | CB-GL ; Final Fix, Inst of Switch/Sockets (TR RM) | 12d | 2012-05-12 | 2012-05-26 | CGLTR09503C0, CGLTR09901C0, CGLTR26013C0 SS |  |  |  |  | 73.4d | 0d | ELECTRICAL [427.2 h]; Cost |  |  | CGLTR26017C0 | CB | C | GL | TR | ME | 260 | 17 | BILL 4 | B04 | S1 | FF | R00 | ACF07 | 260 |  |  |  |  |  |  |  | MEP |  |  |  |  |  | FF |  |  |  |
| CGLTR26076C0 |  | CB-GL ; Final Fix, Lighting fittings (TR RM) | 18d | 2012-05-12 | 2012-06-02 | CGLTR09503C0, CGLTR26017C0 SS |  |  |  |  | 73.4d | 10d | ELECTRICAL [7983.6 h]; Cost |  |  | CGLTR26076C0 | CB | C | GL | TR | ME | 260 | 76 | BILL 4 | B04 | S1 | FF | R00 | ACF07 | 260 |  |  |  |  | 420 | 20001170 |  | MEP |  |  |  |  |  | FF |  |  |  |
| CGLTR27030C0 |  | CB-GL ; Final Fix, Inst of ELV device (Detector/Speaker) (TR RM) | 18d | 2012-05-23 | 2012-06-13 | CGLTR09503C0, CGLTR27002C0 |  |  |  |  | 63.4d | 0d | ELECTRICAL [2054.4 h]; Cost |  |  | CGLTR27030C0 | CB | C | GL | TR | ME | 270 | 30 | BILL 4 | B04 | S1 | FF | R00 | ACF07 | 270 |  |  |  |  |  |  |  | MEP |  |  |  |  |  | FF |  |  |  |
| CGLTR01802C0 |  | CB-GL ;MEP de-snag, FIREM sign-off | 18d | 2012-06-13 | 2012-07-05 | CGLTR23074C0, CGLTR26015C0, CGLTR27030C0, CGLTR26013C0, CGLTR26017C0, CGLTR26076C0 |  |  |  |  | 63.4d | 0d | TESTING & COMMISSIONING [510 h]; Cost |  |  | CP3TR01851C0 | CB | C | GL | TR | SC | 018 | 53 | BILL 4 | B04 | S1 | 01 | R00 | ACF07 | 018 |  |  |  |  | 396 |  |  |  |  |  |  |  |  |  |  |  |  |
| CGLTR09907C0 |  | CB-GL ; Ceiling - Final paint (TR RM) | 0d | 2012-07-01 | 2012-07-01 | CGLTR09905C0, CP1TR09907C0 SS+14d |  |  |  |  | 67.4d | 4d | Cost |  |  | CGLTR09907C0 | CB | C | GL | TR | PA | 099 | 07 | BILL 4 | B04 | S1 | 02 | R00 | ACF06 | 099 |  |  |  |  | 363 | 1314 |  |  |  |  |  |  |  |  |  |  |  |
| CGLTR01801C0 |  | CB-GL ; Touch-up & Clean / JV inspection /CIR /De-snag | 24d | 2012-07-05 | 2012-08-02 | CGLTR01802C0, CGLTR08709C0, CGLTR09601C0, CGLTR09903C0, CGLTR09907C0 |  |  |  |  | 63.4d | 0d | TESTING & COMMISSIONING [85 h]; Cost |  |  | CGLTR01851C0 | CB | C | GL | TR | SC | 018 | 51 | BILL 4 | B04 | S1 | 02 | R00 | ACF07 | 018 |  |  |  |  | 396 |  |  |  |  |  |  |  |  |  |  |  |  |
| CGLTR01803C0 |  | CB-GL ; Consultant's final de-snag inspection | 12d | 2012-08-02 | 2012-08-16 | CGLTR01801C0 |  |  |  |  | 63.4d | 55.05d | Labor General [1 h]; Cost |  |  | CP3TS01803C0 | CB | C | GL | TR | SC | 018 | 03 | BILL 4 | B04 | S1 | 03 | R00 | ACF07 | 018 |  |  |  |  |  |  |  |  |  |  |  |  |  |  |  |  |  |

| ID | WBS | Activity | Type | Duration | Start | Finish | Predecessors | Complete | Remaining | Planned start | Planned finish | Total float | Free float | Resources | Cost | Actual cost | Change Order # | NEW ACTIVITY ID | change id | RENZ % COMPLETE | CCAD BUILDING(SET) | CCAD PHASE(SET) | CCAD DIVISION(SET) | CCAD FLOOR(SET) | CCAD ZONE(SET) | CCAD WORK(SET) | CCAD SECTION(SET) | CCAD SERIAL No.(SET) | CCAD CBS(SET) | CCAD BILL(SET) | CCAD HANDOVER(SET) | CCAD TAG(SET) | CCAD REV(SET) | CCADACF (SET) | CCAD SSCF | Actual Cost | CCAD CSA | Claimed This Month | P_811 | P_711 | user_number8 | user_integer1 | user_integer2 | user_number7 | CCAD SUB ZONE MEP(SET) | Act Selector % | July2011 Target% Complete | PERCENT COMPLETE | U% | R3 Partitions | CCAD MEQ | R3 Finish |
| --- | --- | --- | --- | --- | --- | --- | --- | --- | --- | --- | --- | --- | --- | --- | --- | --- | --- | --- | --- | --- | --- | --- | --- | --- | --- | --- | --- | --- | --- | --- | --- | --- | --- | --- | --- | --- | --- | --- | --- | --- | --- | --- | --- | --- | --- | --- | --- | --- | --- | --- | --- | --- |
|  | 01 | **Level 1** |  |  | 2010-10-02 | 2012-11-19 |  |  |  |  |  |  |  |  |  |  |  |  |  |  |  |  |  |  |  |  |  |  |  |  |  |  |  |  |  |  |  |  |  |  |  |  |  |  |  |  |  |  |  |  |  |  |
|  | 01 | **Structure & Envelopment** |  |  | 2010-10-02 | 2012-02-25 |  |  |  |  |  |  |  |  |  |  |  |  |  |  |  |  |  |  |  |  |  |  |  |  |  |  |  |  |  |  |  |  |  |  |  |  |  |  |  |  |  |  |  |  |  |  |
| C01SC03311C0 |  | CB-01 ; Corewall concrete (Zone SC) |  | 6d | 2010-10-02 A | 2010-10-13 A | CGLSC03311C0 | 100% |  | 2010-11-01 | 2010-11-07 |  |  | CONCRETE [4968 h]; CONCRETE [125 m3]; Cost |  |  | 301 | 286 | C01SC03311C0 | 100 | CB | C | 03 | 01 | SC | CT | 033 | 11 | BILL 4 | B04 | S1 | 04 | R00 | ACF03 | 033 |  |  |  |  |  |  |  |  |  |  |  |  |  |  |  |  |  |
| C01SD03311C0 |  | CB-01 ; Corewall concrete (Zone SD) |  | 6d | 2010-10-07 A | 2010-10-07 A | CGLSD03311C0 | 100% |  | 2010-11-08 | 2010-11-14 |  |  | CONCRETE [4968 h]; CONCRETE [125 m3]; Cost |  |  | 301 | 290 | C01SD03311C0 | 100 | CB | C | 03 | 01 | SD | CT | 033 | 11 | BILL 4 | B04 | S1 | 04 | R00 | ACF03 | 033 |  |  |  |  |  |  |  |  |  |  |  |  |  |  |  |  |  |
| C01S105101C0 |  | CB-01 ; Erection of Structural Steel (Zone S1) |  | 8.33d | 2010-11-02 A | 2011-01-20 A | C01SC03311C0, CGLS105101C0, CGLS105103C0 | 100% |  | 2010-11-24 | 2010-12-04 |  |  | STRUCTURAL STEEL [5197 h]; STRUCTURAL STEEL [200 T(Fe)]; Cost |  |  | 297 | 282 | C01S105101C0 | 100 | CB | C |  | 01 | S1 | ST | 051 | 01 | BILL 4 | B04 | S1 | 01 | R00 | ACF03 | 051 | 1773028 | ST |  |  |  |  |  |  |  |  |  |  |  |  |  |  |  |
| C01S105103C0 |  | CB-01 ; Alignment & welding (Zone S1) |  | 5d | 2010-11-06 A | 2011-01-28 A | C01S105101C0 | 100% |  | 2010-12-05 | 2010-12-12 |  |  | STRUCTURAL STEEL [472 h]; Cost |  |  | 298 | 283 | C01S105103C0 | 100 | CB | C |  | 01 | S1 | ST | 051 | 03 | BILL 4 | B04 | S1 | 02 | R00 | ACF03 | 051 | 197003 | ST |  |  |  |  |  |  |  |  |  |  |  |  |  |  |  |
| C01S205101C0 |  | CB-01 ; Erection of Structural Steel (Zone S2) |  | 13d | 2010-11-08 A | 2010-12-07 A | C01SD03311C0, CGLS205101C0, CGLS205103C0 | 100% |  | 2010-11-30 | 2010-12-16 |  |  | STRUCTURAL STEEL [7344 h]; STRUCTURAL STEEL [282 T(Fe)]; Cost |  |  | 297 | 288 | C01S205101C0 | 100 | CB | C |  | 01 | S2 | ST | 051 | 01 | BILL 4 | B04 | S1 | 01 | R00 | ACF03 | 051 | 2350292 | ST |  |  |  |  |  |  |  |  |  |  |  |  |  |  |  |
| C01S205103C0 |  | CB-01 ; Alignment & welding (Zone S2) |  | 5d | 2010-11-14 A | 2010-12-23 A | C01S205101C0 | 100% |  | 2010-12-18 | 2010-12-23 |  |  | STRUCTURAL STEEL [624 h]; Cost |  |  | 298 | 289 | C01S205103C0 | 100 | CB | C |  | 01 | S2 | ST | 051 | 03 | BILL 4 | B04 | S1 | 02 | R00 | ACF03 | 051 | 261144 | ST |  |  |  |  |  |  |  |  |  |  |  |  |  |  |  |
| C01S105305C0 |  | CB-01 ; Metal Decking (Zone S1) |  | 15d | 2010-12-13 A | 2011-01-29 A | C01S105103C0, C02S105101C0 | 100% |  | 2011-01-22 | 2011-02-08 |  |  | METAL DECKING [2038 h]; METAL DECKING [2580 m2]; Cost |  |  | 299 | 284 | C01S105305C0 | 100 | CB | C |  | 01 | S1 | ST | 053 | 05 | BILL 4 | B04 | S1 | 03 | R00 | ACF03 | 053 | 302975.64 | ST |  |  |  |  |  |  |  |  |  |  |  |  |  |  |  |
| C01S205305C0 |  | CB-01 ; Metal Decking (Zone S2) |  | 18d | 2010-12-19 A | 2011-01-13 A | C01S205103C0, C02S205101C0 | 100% |  | 2011-01-02 | 2011-01-22 |  |  | METAL DECKING [2702 h]; METAL DECKING [3420 m2]; Cost |  |  | 299 | 291 | C01S205305C0 | 100 | CB | C |  | 01 | S2 | ST | 053 | 05 | BILL 4 | B04 | S1 | 03 | R00 | ACF03 | 053 | 401618.88 | ST |  |  |  |  |  |  |  |  |  |  |  |  |  |  |  |
| C01S103335C0 |  | CB-01 ; Concrete on metal decking (Zone S1) |  | 10.12d | 2010-12-28 A | 2011-05-25 A | C01S105305C0 | 100% |  | 2011-01-06 | 2011-01-18 |  |  | CONCRETE [13392 h]; CONCRETE [337 m3]; Cost |  |  | 302 | 287 | C01S103335C0 | 100 | CB | C | 03 | 01 | S1 | CT | 033 | 35 | BILL 4 | B04 | S1 | 08 | R00 | ACF03 | 033 |  |  |  |  |  |  |  |  |  |  |  |  |  |  |  |  |  |
| C01S203335C0 |  | CB-01 ; Concrete on metal decking (Zone S2) |  | 10d | 2011-01-05 A | 2011-04-25 A | C01S205305C0 | 100% |  | 2011-01-03 | 2011-01-15 |  |  | CONCRETE [17808 h]; CONCRETE [448 m3]; Cost |  |  | 302 | 292 | C01S203335C0 | 100 | CB | C | 03 | 01 | S2 | CT | 033 | 35 | BILL 4 | B04 | S1 | 08 | R00 | ACF03 | 033 |  |  |  |  |  |  |  |  |  |  |  |  |  |  |  |  |  |
| C01S107807C0 |  | CB-01 ; Cementitious Fire Proofing (Zone S1) |  | 10d | 2011-03-02 A | 2011-06-05 A | C02S103335C0 | 100% |  | 2011-03-02 | 2011-03-14 |  |  | CEMENTITIOUS FIREPROOFING [1415 h]; CEMENTITIOUS FIREPROOFING [2829 m2]; Cost |  |  | 300 | 285 | C01S107807C0 | 95 | CB | C |  | 01 | S1 | ST | 078 | 07 | BILL 4 | B04 | S1 | 04 | R00 | ACF03 | 078 |  | ST | 12234.96 |  |  |  |  |  |  |  |  |  |  |  |  |  |  |
| C01S207808C0 |  | CB-01 ; Cementitious Fire Proofing (Zone S2) |  | 12d | 2011-03-03 A | 2011-06-05 A | C02S203335C0 | 100% |  | 2011-03-03 | 2011-03-17 |  |  | CEMENTITIOUS FIREPROOFING [1875 h]; CEMENTITIOUS FIREPROOFING [3750 m2]; Cost |  |  | 300 | 293 | C01S207808C0 | 95 | CB | C |  | 01 | S2 | ST | 078 | 08 | BILL 4 | B04 | S1 | 04 | R00 | ACF03 | 078 |  | ST | 16218.44 |  |  |  |  |  |  |  |  |  |  |  |  |  |  |
| C01CO04409C0 |  | CB-01 ; S1- Ex. Partitions (Common Zone) |  | 200d | 2011-03-19 A | 2011-10-23 | C03S103335C0, C03S203335C0, CGLCO04401C0, OGNMU00067S0, C01GN00505C0 FF | 95% | 10d | 2011-07-02 | 2012-03-01 | 61.05d | 0d | FACADE STONE PANEL 1 [1239.4 h]; FACADE STONE PANEL 1 [453 m2]; FACADE TOTAL QUANTITY m2 [453 m2]; Cost |  |  | 565 | 181 | C01CO04409C0 | 50 | CB | C |  | 01 | CO | FA | 044 | 09 | BILL 4 | B04 | S1 | FS1 | R00 | ACF05 | 044 |  | FA | 39606.86 | 95 | 60 |  |  |  |  |  |  |  |  |  |  |  |  |
| C01GN00505C0 |  | CB-01 ; Temporary Enclosure | level of effort | 17.4d | 2011-04-04 A | 2011-10-23 | C01E109203C0 SS, C01E209203C0 SS, C01PA09203C0 SS, C01LW09203C0 SS, C01TR09203C0 SS |  | 20d | 2011-04-04 | 2011-04-24 | 61.05d | 0d | Labor General [0.6 h]; Cost |  |  |  |  |  |  | CB | C |  | 01 | GEN | FA | GEN |  |  | B04 |  | TE | R00 | ACF05 | 010 |  | FA |  | 87.93 | 0 |  |  |  |  |  |  |  |  |  |  |  |  |
| C01CO04411C0 |  | CB-01 ; S1 Onyx Stone (Common Zone) |  | 66d | 2011-08-10 A | 2011-10-19 | C01CO04409C0 SS | 90% | 6.6d | 2011-08-29 | 2011-11-20 | 345.9d | 43.4d | FACADE STONE PANEL 1 [1239.4 h]; FACADE STONE PANEL 1 [453 m2]; FACADE TOTAL QUANTITY m2 [453 m2]; Cost |  |  | 566 | 182 | C01CO04411C0 |  | CB | C |  | 01 | CO | FA | 044 | 11 | BILL 4 | B04 | S1 | FS1 | R00 | ACF05 | 044 |  | FA |  | 25 | 0 | 0 | 0 | 0 | 0 |  |  |  |  |  |  |  |  |
| C01CO04455C0 |  | CB-01 ; S1 Inner Side of External Partition (Common Zone) |  | 48d | 2011-12-28 | 2012-02-25 | C01CO04409C0, C01PA09205C0 SS, C01E209205C0 SS, C01E109205C0 SS |  |  |  |  | 69.85d | 41.48d | FACADE TOTAL QUANTITY m2 [1014 m2]; FACADE BACK PAINTED BUTT GLAZED [464 m2]; FACADE GLASS BOX [550 m2]; FACADE STONE PANEL 1 [3284 h]; Cost |  |  |  |  | DP3CO04415C0 |  | CB | C |  | 01 | CO | FA | 044 | 15 | BILL 5 | B04 | S1 | FS1 | R00 | ACF05 | 044 |  | FA |  |  |  |  |  |  |  |  |  |  |  |  |  |  |  |
|  | 02 | **Exam 1** |  |  | 2011-03-24 | 2012-11-19 |  |  |  |  |  |  |  |  |  |  |  |  |  |  |  |  |  |  |  |  |  |  |  |  |  |  |  |  |  |  |  |  |  |  |  |  |  |  |  |  |  |  |  |  |  |  |
| C01E123001C0 |  | CB-01 ; 1st Fix, Inst. of Supports for MEP (Exam- 1) |  | 27d | 2011-03-24 A | 2011-05-30 A | C01S107807C0, C02S103335C0 | 100% |  | 2011-03-14 | 2011-04-14 |  |  | MECHANICAL [1024.8 h]; Cost [57766.2 AED] | 57,766.25 | 57,766.25 |  |  | C01E123001C0 | 100 | CB | C |  | 01 | E1 | ME | 230 | 01 | BILL 4 | B04 | S1 | 1F | R00 | ACF04 | 230 |  | MEP |  |  |  |  |  |  |  | 1S | M1F |  |  |  |  |  |  |
| C01E122019C0 |  | CB-01 ; 1st Fix, Inst of Drainage pipe (ceiling) (Exam- 1) |  | 200d | 2011-03-26 A | 2011-10-04 | C01E123001C0, C01E126013C0 SS+8d, C01S107807C0 | 98% | 4d | 2011-05-03 | 2012-01-02 | 38.8d | 0d | PLUMBING [1714.8 h]; Cost [92715.9 AED] | 92,715.95 | 90,861.63 |  |  | C01E122019C0 | 75 | CB | C |  | 01 | E1 | ME | 220 | 19 | BILL 4 | B04 | S1 | 1F | R00 | ACF04 | 220 |  | MEP | 10743.1 |  |  |  |  |  |  | 1S | M1F | 98 |  |  |  |  |  |
| C01E121111C0 |  | CB-01 ; 1st Fix, Inst of Sprinkler main pipe (Exam- 1) |  | 200d | 2011-03-27 A | 2011-10-23 | C01E122005C0 SS+8d, C01E123001C0, C01S107807C0 | 90% | 20d | 2011-05-22 | 2012-01-21 | 38.8d | 0d | MECHANICAL [686.4 h]; Cost [37438.4 AED] | 37,438.4 | 33,694.56 |  |  | C01E121111C0 | 65 | CB | C |  | 01 | E1 | ME | 211 | 11 | BILL 4 | B04 | S1 | 1F | R00 | ACF04 | 211 |  | MEP |  |  |  |  |  |  |  | 1S | M1F | 95 | 90 |  |  |  |  |
| C01E126001C0 |  | CB-01 ; 1st Fix, Inst of Trunking/Conduiting (Exam- 1) |  | 200d | 2011-03-27 A | 2011-10-11 | C01E123001C0 SS+10d, C01S107807C0 | 95% | 10d | 2011-03-26 | 2011-11-21 | 38.8d | 0d | ELECTRICAL [430.8 h]; Cost [29580.4 AED] | 29,580.43 | 28,101.4 |  |  | C01E126001C0 | 30 | CB | C |  | 01 | E1 | ME | 260 | 01 | BILL 4 | B04 | S1 | 1F | R00 | ACF04 | 260 |  | MEP | 20577.6 | 95 | 90 |  |  |  |  | 1S | M1F | 95 |  |  |  |  |  |
| C01E126013C0 |  | CB-01 ; 1st Fix, Inst of Cable Tray (Exam- 1) |  | 150d | 2011-03-29 A | 2011-10-17 | C01E123001C0, C01E127010C0 SS+8d, C01S107807C0 | 90% | 15d | 2011-04-24 | 2011-10-19 | 38.8d | 0d | ELECTRICAL [948 h]; Cost [17044 AED] | 17,043.96 | 15,339.56 |  |  | C01E126013C0 | 30 | CB | C |  | 01 | E1 | ME | 260 | 13 | BILL 4 | B04 | S1 | 1F | R00 | ACF04 | 260 |  | MEP | 9922 | 90 | 80 |  |  |  |  | 1S | M1F | 85 |  |  |  |  |  |
| C01E127010C0 |  | CB-01 ; 1st Fix, Inst of Trunking for ELV system (Exam- 1) |  | 150d | 2011-03-30 A | 2011-10-26 | C01E123001C0, C01E126001C0 SS+10d, C01S107807C0 | 85% | 22.5d | 2011-04-14 | 2011-10-10 | 38.8d | 0d | ELECTRICAL [457.2 h]; Cost [24667.9 AED] | 24,667.88 | 20,967.69 |  |  | C01E127010C0 | 25 | CB | C |  | 01 | E1 | ME | 270 | 10 | BILL 4 | B04 | S1 | 1F | R00 | ACF04 | 270 |  | MEP | 15758.05 |  |  |  |  |  |  | 1S | M1F | 85 |  |  |  |  |  |
| C01E121117C0 |  | CB-01 ; 1st Fix, Inst of Sprinkler branch pipe (Exam- 1) |  | 200d | 2011-04-05 A | 2011-12-06 | C01E109201C0, C01E121111C0, C01E105503C0 FF+18d | 90% | 20d | 2011-07-14 | 2012-03-14 | 90.58d | 78.9d | MECHANICAL [1009.2 h]; Cost [55153.8 AED] | 55,153.76 | 49,638.38 |  |  | C01E121117C0 | 30 | CB | C |  | 01 | E1 | ME | 211 | 17 | BILL 4 | B04 | S1 | 1F | R00 | ACF04 | 211 |  | MEP | 12787 |  |  |  |  |  |  | 1S | M1F | 95 | 90 |  |  |  |  |
| C01E109203C0 |  | CB-01 ; Partitions 1st face (Exam- 1) |  | 54d | 2011-04-06 A | 2011-12-06 | C01E109201C0, C01E123023C0 FF, C01E123017C0 FF | 80% | 10.8d | 2011-05-08 | 2011-07-10 | 30.58d | 18.9d | PARTITIONS [730 m]; PARTITIONS [3288 h]; Cost |  |  | 314 | 945 | C01E109203C0 | 8 | CB | C |  | 01 | E1 | PT | 092 | 03 | BILL 4 | B04 | S1 | 2F | R00 | ACF06 | 092 |  | GP | 27370.56 | 55 | 27 | 0 | 0 | 0 | 0 |  | P1F |  |  | 70 |  |  |  |
| C01E109201C0 |  | CB-01 ; Metal Studs (Exam- 1) |  | 84d | 2011-04-12 A | 2011-11-01 | C01E123001C0, CAFCI09202R02 FS+57d | 82% | 15.12d | 2011-04-24 | 2011-07-31 | 11.68d | 0d | PARTITIONS [4215 h]; PARTITIONS - Metal Studs [730 m]; Cost |  |  | 313 | 944 | C01E109201C0 | 45 | CB | C |  | 01 | E1 | PT | 092 | 01 | BILL 4 | B04 | S1 | 1F | R00 | ACF06 | 092 |  | GP | 41893.65 | 70 | 65 | 0 | 0 | 0 | 0 |  | PMS |  |  |  | R3 |  |  |
| C01E127001C0 |  | CB-01 ; 1st Fix, Wiring/ Cabling work (Exam- 1) |  | 54d | 2011-06-08 A | 2011-12-15 | C01E126001C0, C01E126013C0, C01E127010C0 | 30% | 37.8d | 2011-07-21 | 2011-09-25 | 82.9d | 71.22d | ELECTRICAL [216 h]; Cost [15494.5 AED] | 15,494.51 | 4,648.35 |  |  | C01E127001C0 |  | CB | C |  | 01 | E1 | ME | 270 | 01 | BILL 4 | B04 | S1 | 1F | R00 | ACF04 | 270 |  | MEP | 2699.02 | 30 | 15 |  |  |  |  | 1S | M1F | 15 |  |  |  |  |  |
| C01E122011C0 |  | CB-01 ; 2nd Fix, Drainage/Water pipe (wall) (Exam- 1) |  | 66d | 2011-06-08 A | 2011-12-18 | C01E109201C0, CAFCI09201R20 FS+72d | 50% | 33d | 2011-06-08 | 2011-08-25 | 14.2d | 2.52d | PLUMBING [1714.8 h]; Cost [92715.9 AED] | 92,715.95 | 46,357.98 |  |  | C01E122011C0 |  | CB | C |  | 01 | E1 | ME | 220 | 11 | BILL 4 | B04 | S1 | 2F | R00 | ACF07 | 220 |  | MEP | 75201.6 | 50 | 30 |  |  |  |  | 2n |  | 75 |  |  |  |  |  |
| C01E122007C0 |  | CB-01 ; 1st Fix, Inst of Medical Gas pipe (Exam- 1) |  | 60d | 2011-06-09 A | 2011-11-14 | C01E121111C0 SS+14d, C01E123001C0, C01S107807C0 | 40% | 36d | 2011-06-09 | 2011-08-20 | 38.8d | 27.12d | PLUMBING [504 h]; Cost [26046.8 AED] | 26,046.85 | 10,418.74 |  |  | C01E122007C0 |  | CB | C |  | 01 | E1 | ME | 220 | 07 | BILL 4 | B04 | S1 | 1F | R00 | ACF04 | 220 |  | MEP | 10557.84 | 40 | 35 |  |  |  |  | 1S | M1F | 45 |  |  |  |  |  |
| C01E122005C0 |  | CB-01 ; 1st Fix, Inst of Water supply pipe (ceiling) (Exam- 1) |  | 54d | 2011-07-10 A | 2011-11-16 | C01E122019C0 SS+8d, C01E123001C0, C01S107807C0 | 30% | 37.8d | 2011-06-30 | 2011-09-03 | 38.8d | 0d | PLUMBING [1682.4 h]; Cost [90924.8 AED] | 90,924.75 | 27,277.42 |  |  | C01E122005C0 |  | CB | C |  | 01 | E1 | ME | 220 | 05 | BILL 4 | B04 | S1 | 1F | R00 | ACF04 | 220 |  | MEP |  | 30 | 20 |  |  |  |  | 1S | M1F | 35 |  |  |  |  |  |
| C01E123008C0 |  | CB-01 ; 1st Fix, Inst of VCD's/FD's (Exam- 1) |  | 48d | 2011-07-10 A | 2011-12-11 | C01E123023C0 SS, C01E105503C0 FF+18d | 20% | 38.4d | 2011-10-16 | 2011-12-15 | 123.18d | 111.5d | MECHANICAL [2648.4 h]; Cost [143058 AED] | 143,057.96 | 28,611.59 |  |  | C01E123008C0 |  | CB | C |  | 01 | E1 | ME | 230 | 08 | BILL 4 | B04 | S1 | 1F | R00 | ACF04 | 230 |  | MEP |  |  |  |  |  |  |  | 1S | M1F | 50 |  |  |  |  |  |
| C01E123017C0 |  | CB-01 ; 1st Fix, Inst of CHW pipe (Exam- 1) |  | 70d | 2011-07-10 A | 2011-12-06 | C01E121111C0 SS+7d, C01E123001C0, C01S107807C0, C01E105503C0 FF+18d | 50% | 35d | 2011-07-10 | 2011-10-01 | 30.58d | 0d | MECHANICAL [2395.2 h]; Cost [130782 AED] | 130,781.76 | 65,390.88 |  |  | C01E123017C0 |  | CB | C |  | 01 | E1 | ME | 230 | 17 | BILL 4 | B04 | S1 | 1F | R00 | ACF04 | 230 |  | MEP |  |  |  |  |  |  |  | 1S | M1F | 65 |  |  |  |  |  |
| C01E123023C0 |  | CB-01 ; 1st Fix, Inst of Main Ducting (Exam- 1) |  | 200d | 2011-07-10 A | 2011-11-29 | C01E123001C0, C01E123017C0 SS+10d, C01S107807C0 | 85% | 30d | 2011-07-21 | 2012-03-20 | 35.58d | 0d | MECHANICAL [16992 h]; Cost [927678 AED] | 927,677.51 | 788,525.88 |  |  | C01E123023C0 |  | CB | C |  | 01 | E1 | ME | 230 | 23 | BILL 4 | B04 | S1 | 1F | R00 | ACF04 | 230 |  | MEP |  |  |  |  |  |  |  | 1S | M1F | 85 |  |  |  |  |  |
| C01E126009C0 |  | CB-01 ; 2nd Fix, Inst of Wall conduites (Exam- 1) |  | 60d | 2011-07-10 A | 2011-12-15 | C01E109201C0 | 45% | 33d | 2011-07-05 | 2011-09-15 | 17.08d | 5.4d | ELECTRICAL [430.8 h]; Cost [29580.4 AED] | 29,580.43 | 13,311.19 |  |  | C01E126009C0 |  | CB | C |  | 01 | E1 | ME | 260 | 09 | BILL 4 | B04 | S1 | 2F | R00 | ACF07 | 260 |  | MEP |  | 45 | 40 |  |  |  |  | 2n |  | 45 |  |  |  |  |  |
| C01E123015C0 |  | CB-01 ; 2nd Fix, Insulation of CHW pipe & Duct (Exam- 1) |  | 72d | 2011-08-02 A | 2012-01-10 | C01E123009C0 SS, C01E123017C0 SS, C01E123023C0 SS | 60% | 28.8d | 2011-10-02 | 2011-12-31 | 61.78d | 50.1d | MECHANICAL [6742.8 h]; Cost [363863 AED] | 363,863.22 | 218,317.93 |  |  | C01E123015C0 |  | CB | C |  | 01 | E1 | ME | 230 | 15 | BILL 4 | B04 | S1 | 2F | R00 | ACF07 | 230 |  | MEP |  | 60 | 0 |  |  |  |  | 2n |  |  |  |  |  |  |  |
| C01E122015C0 |  | CB-01 ; 2nd Fix, Medical Gas pipe (Exam- 1) |  | 48d | 2011-08-10 A | 2011-12-21 | C01E109201C0, C01E122007C0 SS | 20% | 38.4d | 2011-11-10 | 2012-01-09 | 11.68d | 0d | PLUMBING [504 h]; Cost [26046.8 AED] | 26,046.85 | 5,209.37 |  |  | C01E122015C0 |  | CB | C |  | 01 | E1 | ME | 220 | 15 | BILL 4 | B04 | S1 | 2F | R00 | ACF07 | 220 |  | MEP |  | 20 | 0 |  |  |  |  | 2n |  |  |  |  |  |  |  |
| C01E123009C0 |  | CB-01 ; 2nd Fix, Inst of VAV'S CHW connection (Exam- 1) |  | 42d | 2011-08-10 A | 2012-01-18 | C01E123017C0 | 15% | 35.7d | 2011-08-25 | 2011-10-16 | 61.78d | 0d | MECHANICAL [1419.6 h]; Cost [76659.7 AED] | 76,659.7 | 11,498.95 |  |  | C01E123009C0 |  | CB | C |  | 01 | E1 | ME | 230 | 09 | BILL 4 | B04 | S1 | 2F | R00 | ACF07 | 230 |  | MEP |  | 10 | 0 | 0 | 0 | 0 | 0 | 2n |  | 25 |  |  |  |  |  |
| C01E105503C0 |  | CB-01 ; Ceiling Support for medical equipment (Exam- 1) |  | 15d | 2011-09-05 A | 2011-11-13 | C01E109201C0 | 50% | 7.5d | 2011-11-13 | 2011-12-01 | 30.58d | 0d | SECONDARY STEEL [146 h]; STRUCTURAL STEEL [120 T(Fe)]; Cost |  |  | 335 | 962 | C01E105503C0 |  | CB | C |  | 01 | E1 | SW | 055 | 03 | BILL 4 | B04 | S1 | 03 | R00 | ACF03 | b |  |  |  |  |  |  |  |  |  |  |  |  |  |  |  |  |  |
| C01E105511C0 |  | CB-01 ; Wall reinforcement for MEP/Medical (Exam- 1) |  | 24d | 2011-11-01 | 2011-12-05 | C01E109201C0 |  |  |  |  | 32.08d | 20.4d | SECONDARY STEEL [52 h]; Cost |  |  |  |  | C01E105511C0 |  | CB | C |  | 01 | E1 | SW | 055 | 11 | BILL 4 | B04 | S1 | 03 | R00 | ACF03 | b |  |  |  |  |  |  |  |  |  |  |  |  |  |  |  |  |  |
| C01E108103C0 |  | CB-01 ; Door Frames (Exam- 1) |  | 42d | 2011-11-12 | 2012-01-02 | C01E109201C0, GNHE08101C0 FS+79d |  |  |  |  | 63d | 0d | ASSORTED DOORS [293 h]; Cost |  |  | 316 | 947 | C01E108103C0 |  | CB | C | 08 | 01 | E1 | DO | 081 | 03 | BILL 4 | B04 | S1 | DF | R00 | ACF06 | 081 |  |  |  |  |  |  |  |  |  |  |  |  |  |  |  |  |  |
| C01E101005C0 |  | CB-01 ; 2nd, Wall Inspection by Consultant (Exam- 1) |  | 6d | 2011-12-21 | 2011-12-28 | C01E122011C0, C01E122015C0, C01E126009C0 |  |  |  |  | 11.68d | 0d | Labor General [1.2 h]; Cost |  |  |  |  | C01E101005C0 |  | CB | C |  | 01 | E1 | ME | 010 | 05 | BILL 4 | B04 | S1 | WI | R00 | ACF07 | 010 |  | MEP |  |  |  |  |  |  |  | 2n |  |  |  |  |  |  |  |
| C01E109205C0 |  | CB-01 ; Partitions Closing (Exam- 1) |  | 60d | 2011-12-28 | 2012-03-10 | C01E101005C0, C01E105511C0, C01E108103C0 FF, C01E109203C0, C01E122005C0, C01E122007C0, C01E122019C0, CAFOA09204C1 FF, C01E121117C0 FF, C01E127001C0 FF, C01E123015C0 FF, CAFCI09201R20 FS+72d |  |  |  |  | 11.68d | 0d | PARTITIONS [730 m]; PARTITIONS [4214 h]; Cost |  |  | 315 | 946 | C01E109205C0 |  | CB | C |  | 01 | E1 | PT | 092 | 05 | BILL 4 | B04 | S1 | FF | R00 | ACF06 | 092 |  | GP |  |  |  |  |  |  |  |  | P2F |  |  |  | R3 |  |  |
| C01E107103C0 |  | CB-01 ; Waterproofing (Exam- 1) |  | 12d | 2012-03-10 | 2012-03-24 | C01E108103C0, C01E109205C0, CV10GZ07106R2 FF |  |  |  |  | 51.68d | 0d | THERMAL & MOISTURE [248 h]; THERMAL & MOISTURE [1645 m2]; Cost |  |  | 105 | 999 | C01E107103C0 |  | CB | C |  | 01 | E1 | FF | 071 | 03 | BILL 4 | B04 | S1 | 01 | R00 | ACF03 | 071 |  |  |  |  |  |  |  |  |  |  |  |  |  |  |  |  |  |
| C01E109901C0 |  | CB-01 ; Wall Prime & 1st coat (Exam- 1) |  | 36d | 2012-03-10 | 2012-04-21 | C01E109205C0 |  |  |  |  | 11.68d | 0d | WALL PAINT [1357 h]; WALL PAINT [1693 m2]; Cost |  |  | 328 | 956 | C01E109901C0 |  | CB | C |  | 01 | E1 | PA | 099 | 01 | BILL 4 | B04 | S1 | 01 | R00 | ACF06 | 099 |  |  |  |  |  |  |  |  |  |  |  |  |  |  |  |  |  |
| C01E126005C0 |  | CB-01 ; 2nd Fix, Wiring for Power/Lighting/Emergency (Exam- 1) |  | 42d | 2012-03-10 | 2012-04-28 | C01E109205C0 |  |  |  |  | 59.68d | 0d | ELECTRICAL [216 h]; Cost |  |  |  |  | C01E126005C0 |  | CB | C |  | 01 | E1 | ME | 260 | 05 | BILL 4 | B04 | S1 | 2F | R00 | ACF07 | 260 |  | MEP |  |  |  |  |  |  |  | 2n |  |  |  |  |  |  |  |
| C01E126007C0 |  | CB-01 ; 2nd Fix, Cable Pulling (Exam- 1) |  | 42d | 2012-03-10 | 2012-04-28 | C01E109201C0 SS+6d, C01E109205C0 |  |  |  |  | 113.68d | 102d | ELECTRICAL [6616.8 h]; Cost |  |  |  |  | C01E126007C0 |  | CB | C |  | 01 | E1 | ME | 260 | 07 | BILL 4 | B04 | S1 | 2F | R00 | ACF07 | 260 |  | MEP |  |  |  |  |  |  |  | 2n |  |  |  |  |  |  |  |
| C01E126011C0 |  | CB-01 ; 2nd Fix, Inst of Equipment (DB) (Exam- 1) |  | 42d | 2012-03-10 | 2012-04-28 | C01E109205C0 |  |  |  |  | 41.68d | 30d | ELECTRICAL [1266 h]; Cost |  |  |  |  | C01E126011C0 |  | CB | C |  | 01 | E1 | ME | 260 | 11 | BILL 4 | B04 | S1 | 2F | R00 | ACF04 | 260 |  | MEP |  |  |  |  |  |  |  | 2n |  |  |  |  |  | E |  |
| C01E126053C0 |  | CB-01 ; 2nd Fix, Wiring / Cabling (Exam- 1) |  | 30d | 2012-03-10 | 2012-04-14 | C01E109205C0 |  |  |  |  | 125.68d | 114d | ELECTRICAL [216 h]; Cost |  |  | 389 | 977 | C01E126053C0 |  | CB | C |  | 01 | E1 | ME | 260 | 53 | BILL 4 | B04 | S1 | 2F | R00 | ACF07 | 260 |  | MEP |  |  |  |  |  |  |  | 2n |  |  |  |  |  |  |  |
| C01E109305C0 |  | CB-01 ; Ceramic floor tile (Exam- 1) |  | 32d | 2012-03-24 | 2012-04-30 | C01E107103C0 |  |  |  |  | 51.68d | 0d | CERAMIC FLOOR TILES [288 h]; CERAMIC FLOOR TILES [157 m2]; Cost |  |  | 106 | 1000 | C01E109305C0 |  | CB | C |  | 01 | E1 | FF | 093 | 05 | BILL 4 | B04 | S1 | 02 | R00 | ACF06 | CT |  |  |  |  |  |  |  |  |  |  |  |  |  |  |  |  |  |
| C01E105501C0 |  | CB-01 ; Handrails & balustrade (Exam- 1) |  | 36d | 2012-04-21 | 2012-06-02 | C01E109901C0 |  |  |  |  | 47.68d | 36d | SECONDARY STEEL [384 h]; Cost |  |  |  |  | C01E105501C0 |  | CB | C |  | 01 | E1 | SW | 055 | 01 | BILL 4 | B04 | S1 | 01 | R00 | ACF03 | a |  |  |  |  |  |  |  |  |  |  |  |  |  |  |  |  |  |
| C01E109501C0 |  | CB-01 ; Ceiling Grid and ServiceTile (Exam- 1) |  | 36d | 2012-04-21 | 2012-06-02 | C01E105503C0, C01E109205C0 SS+15d, C01E121117C0, C01E123008C0, C01E123009C0, C01E123015C0, C01E127001C0, CAFCI22001R02 FS+72d, C01E126011C0 FF, C01E109901C0 |  |  |  |  | 11.68d | 0d | CEILING GRID FOR GYPSUM [3350.56 h]; CEILING GRID FOR GYPSUM [286.83 m2]; Cost |  |  | 323 | 952 | C01E109501C0 |  | CB | C |  | 01 | E1 | CE | 095 | 01 | BILL 4 | B04 | S1 | 01 | R00 | ACF06 | 095 |  |  |  |  |  |  |  |  |  |  |  |  |  |  |  |  | R3 |
| C01E126015C0 |  | CB-01 ; Final Fix, Termination & Gladding of Cables (Exam- 1) |  | 48d | 2012-04-28 | 2012-06-24 | C01E126005C0 |  |  |  |  | 59.68d | 36d | ELECTRICAL [826.8 h]; Cost |  |  |  |  | C01E126015C0 |  | CB | C |  | 01 | E1 | ME | 260 | 15 | BILL 4 | B04 | S1 | FF | R00 | ACF07 | 260 |  | MEP |  |  |  |  |  |  |  | FF |  |  |  |  |  |  |  |
| C01E122025C0 |  | CB-01 ; Final Fix, Inst of Sanitary Ware (Exam- 1) |  | 48d | 2012-04-30 | 2012-06-26 | C01E109205C0, C01E109305C0, A10230 FS+148d |  |  |  |  | 51.68d | 0d | PLUMBING [1491.6 h]; Cost |  |  |  |  | C01E122025C0 |  | CB | C |  | 01 | E1 | ME | 220 | 25 | BILL 4 | B04 | S1 | FF | R00 | ACF07 | 220 |  | MEP |  |  |  |  |  |  |  | FF |  |  |  |  |  |  |  |
| C01E106101C0 |  | CB-01 ; Wood / caseworks (Exam- 1) |  | 60d | 2012-06-02 | 2012-08-12 | C01CO04409C0, C01E109501C0, C01E109901C0, CAFWA00113M0, CAFCI22001R02 FS+190d, A10370 |  |  |  |  | 23.68d | 0d | WOOD WORK/CASEWORK [1777.85 no]; WOOD WORK/CASEWORK [7245 h]; Cost |  |  | 332 | 960 | C01E106101C0 |  | CB | C |  | 01 | E1 | WO | 061 | 01 | BILL 4 | B04 | S1 | WW | R00 | ACF06 | 061 |  |  |  |  |  |  |  |  |  |  |  |  |  |  |  |  | R3 |
| C01E106102C0 |  | CB-01 ; Head Wall (Exam- 1) |  | 29.88d | 2012-06-02 | 2012-07-08 | C01CO04409C0, C01E109501C0, C01E106101C0 SS, CAFWA00113M0, CAFCI22001R02 FS+190d |  |  |  |  | 99.55d | 87.88d | WOOD WORK/CASEWORK [3630 h]; Cost |  |  | 332 | 960 | C01E106102C0 |  | CB | C |  | 01 | E1 | WO | 061 | 02 | BILL 4 | B04 | S1 | WW | R00 | ACF06 | 061 |  |  |  |  |  |  |  |  |  |  |  |  |  |  |  |  | R3 |
| C01E109601C0 |  | CB-01 ; Flooring (Rubber & etc) (Exam- 1) |  | 36d | 2012-06-02 | 2012-07-15 | C01E109901C0, CAFCI22001R02 FS+72d, C01E109501C0, C01E105501C0 FF |  |  |  |  | 11.68d | 0d | RUBBER FLOOR [400 h]; RUBBER FLOOR [994 m2]; Cost |  |  | 326 | 955 | C01E109601C0 |  | CB | C |  | 01 | E1 | FF | 096 | 01 | BILL 4 | B04 | S1 | 03 | R00 | ACF06 | RF |  |  |  |  |  |  |  |  |  |  |  |  |  |  |  |  | R3 |
| C01E109903C0 |  | CB-01 ; Wall Final Paint (Exam- 1) |  | 36d | 2012-06-02 | 2012-07-15 | C01E109901C0, C01E109905C0 |  |  |  |  | 93.43d | 72d | WALL PAINT [731 h]; WALL PAINT [911 m2]; Cost |  |  | 329 | 957 | C01E109903C0 |  | CB | C |  | 01 | E1 | PA | 099 | 03 | BILL 4 | B04 | S1 | 02 | R00 | ACF06 | 099 |  |  |  |  |  |  |  |  |  |  |  |  |  |  |  |  |  |
| C01E109905C0 |  | CB-01 ; Ceiling Prime & 1st coat (Exam- 1) |  | 0d | 2012-06-02 | 2012-06-02 | C01E109501C0 |  |  |  |  | 93.43d | 0d | Cost |  |  | 330 | 958 | C01E109905C0 |  | CB | C |  | 01 | E1 | PA | 099 | 05 | BILL 4 | B04 | S1 | 01 | R00 | ACF06 | 099 |  |  |  |  |  |  |  |  |  |  |  |  |  |  |  |  |  |
| C01E111005C0 |  | CB-01 ; Utility belt (Exam- 1) |  | 30d | 2012-06-02 | 2012-07-08 | C01E106101C0 SS, C01E109205C0 |  |  |  |  | 29.68d | 0d | FF&E [519 h]; FF&E [276.56 no]; Cost |  |  |  |  | C01E111005C0 |  | CB | C |  | 01 | E1 | WO | 110 | 05 | BILL 4 | B04 | S1 | 05 | R00 | ACF08 | e |  |  |  |  |  |  |  |  |  |  |  |  |  |  |  |  |  |
| C01E121115C0 |  | CB-01 ; 2nd Fix, Inst of Sprinkler droppers (Exam- 1) |  | 30d | 2012-06-02 | 2012-07-08 | C01E109501C0 |  |  |  |  | 23.68d | 0d | MECHANICAL [1404 h]; Cost |  |  |  |  | C01E121115C0 |  | CB | C |  | 01 | E1 | ME | 211 | 15 | BILL 4 | B04 | S1 | 2F | R00 | ACF07 | 211 |  | MEP |  |  |  |  |  |  |  | 2n |  |  |  |  |  |  |  |
| C01E123021C0 |  | CB-01 ; 2nd Fix, Inst of Flexible Duct & Plenum boxes (Exam- 1) |  | 42d | 2012-06-02 | 2012-07-22 | C01E109205C0, C01E109501C0 |  |  |  |  | 23.68d | 0d | MECHANICAL [903.6 h]; Cost |  |  |  |  | C01E123021C0 |  | CB | C |  | 01 | E1 | ME | 230 | 21 | BILL 4 | B04 | S1 | 2F | R00 | ACF07 | 230 |  | MEP |  |  |  |  |  |  |  | 2n |  |  |  |  |  |  |  |
| C01E126017C0 |  | CB-01 ; Final Fix, Inst of Ceiling rose (Exam- 1) |  | 48d | 2012-06-02 | 2012-07-29 | C01E109501C0 |  |  |  |  | 23.68d | 0d | ELECTRICAL [123.6 h]; Cost |  |  |  |  | C01E126017C0 |  | CB | C |  | 01 | E1 | ME | 260 | 17 | BILL 4 | B04 | S1 | FF | R00 | ACF07 | 260 |  | MEP |  |  |  |  |  |  |  | FF |  |  |  |  |  |  |  |
| C01E127002C0 |  | CB-01 ; 2nd Fix, Wiring Droppers (Exam- 1) |  | 42d | 2012-06-02 | 2012-07-22 | C01E109501C0 |  |  |  |  | 23.68d | 0d | ELECTRICAL [216 h]; Cost |  |  |  |  | C01E127002C0 |  | CB | C |  | 01 | E1 | ME | 270 | 02 | BILL 4 | B04 | S1 | 2F | R00 | ACF07 | 270 |  | MEP |  |  |  |  |  |  |  | 2n |  |  |  |  |  |  |  |
| C01E127020C0 |  | CB-01 ; 2nd Fix, Inst of ELV Equipment (Panels) (Exam- 1) |  | 42d | 2012-06-02 | 2012-07-22 | C01E109501C0 |  |  |  |  | 41.68d | 30d | ELECTRICAL [384 h]; Cost |  |  |  |  | C01E127020C0 |  | CB | C |  | 01 | E1 | ME | 270 | 20 | BILL 4 | B04 | S1 | 2F | R00 | ACF04 | 270 |  | MEP |  |  |  |  |  |  |  | 2n |  |  |  |  |  | E |  |
| C01E121113C0 |  | CB-01 ; Final Fix, Inst of Sprinklers head/ Extinguisher (Exam- 1) |  | 48d | 2012-06-09 | 2012-08-05 | C01E109501C0, C01E121115C0 SS+6d |  |  |  |  | 23.68d | 0d | MECHANICAL [278.4 h]; Cost |  |  |  |  | C01E121113C0 |  | CB | C |  | 01 | E1 | ME | 211 | 13 | BILL 4 | B04 | S1 | FF | R00 | ACF07 | 211 |  | MEP |  |  |  |  |  |  |  | FF |  |  |  |  |  |  |  |
| C01E123019C0 |  | CB-01 ; Final Fix, Inst of Grilles & Diffusers (Exam- 1) |  | 48d | 2012-06-09 | 2012-08-05 | C01E109501C0, C01E123021C0 SS+6d |  |  |  |  | 23.68d | 0d | MECHANICAL [1970.4 h]; Cost |  |  |  |  | C01E123019C0 |  | CB | C |  | 01 | E1 | ME | 230 | 19 | BILL 4 | B04 | S1 | FF | R00 | ACF07 | 230 |  | MEP |  |  |  |  |  |  |  | FF |  |  |  |  |  |  |  |
| C01E127030C0 |  | CB-01 ; Final Fix, Inst of ELV device (Detector/Speaker) (Exam- 1) |  | 48d | 2012-06-09 | 2012-08-05 | C01E109501C0, C01E127002C0 SS+6d |  |  |  |  | 23.68d | 0d | ELECTRICAL [2054.4 h]; Cost |  |  |  |  | C01E127030C0 |  | CB | C |  | 01 | E1 | ME | 270 | 30 | BILL 4 | B04 | S1 | FF | R00 | ACF07 | 270 |  | MEP |  |  |  |  |  |  |  | FF |  |  |  |  |  |  |  |
| C01E122021C0 |  | CB-01 ; Final Fix, Terminate Sanitary Ware & Appliances (Exam- 1) |  | 48d | 2012-06-26 | 2012-08-23 | C01E122011C0, C01E122025C0 |  |  |  |  | 51.68d | 40d | PLUMBING [1491.6 h]; Cost |  |  |  |  | C01E122021C0 |  | CB | C |  | 01 | E1 | ME | 220 | 21 | BILL 4 | B04 | S1 | FF | R00 | ACF07 | 220 |  | MEP |  |  |  |  |  |  |  | FF |  |  |  |  |  |  |  |

| ID | WBS | Activity | Duration | Start | Finish | Predecessors | Complete | Remaining | Planned start | Planned finish | Total float | Free float | Resources | Cost | Actual cost | change id | CCAD BUILDING(SET) | CCAD PHASE(SET) | CCAD FLOOR(SET) | CCAD ZONE(SET) | CCAD WORK(SET) | CCAD SECTION(SET) | CCAD SERIAL No.(SET) | CCAD SUB ZONE MEP(SET) | CCAD CBS(SET) | CCAD BILL(SET) | CCAD HANDOVER(SET) | CCAD TAG(SET) | CCAD REV(SET) | CCADACF (SET) | CCAD CSA | CCAD SSCF | Change Order # | NEW ACTIVITY ID | CCAD DIVISION(SET) | R3 Finish | RENZ % COMPLETE | July2011 Target% Complete | Act Selector % | P_811 | P_711 | PERCENT COMPLETE | Claimed This Month | user_number8 | user_integer1 | user_integer2 | user_number7 | U% | R3 Partitions | CCAD MEQ |
| --- | --- | --- | --- | --- | --- | --- | --- | --- | --- | --- | --- | --- | --- | --- | --- | --- | --- | --- | --- | --- | --- | --- | --- | --- | --- | --- | --- | --- | --- | --- | --- | --- | --- | --- | --- | --- | --- | --- | --- | --- | --- | --- | --- | --- | --- | --- | --- | --- | --- | --- |
| C01E122029C0 |  | CB-01 ; Final Fix, Medical Gas pipe (Exam- 1) | 18d | 2012-07-08 | 2012-07-29 | C01E109501C0, C01E111005C0 |  |  |  |  | 29.68d | 6d | PLUMBING [504 h]; Cost |  |  | C01E122029C0 | CB | C | 01 | E1 | ME | 220 | 29 | FF | BILL 4 | B04 | S1 | FF | R00 | ACF07 | MEP | 220 |  |  |  |  |  |  |  |  |  |  |  |  |  |  |  |  |  |  |
| C01E108107C0 |  | CB-01 ; Doors (Exam- 1) | 42d | 2012-07-15 | 2012-09-04 | C01E108103C0, C01E109601C0, CV10GZ08105R2 FF, CV08P208101R2 FF, CV08P210201R2 FF |  |  |  |  | 19.43d | 0d | ASSORTED DOORS [1000 h]; ASSORTED DOORS [100 no]; Cost |  |  | C01E108107C0 | CB | C | 01 | E1 | DO | 081 | 07 |  | BILL 4 | B04 | S1 | DR | R00 | ACF06 |  | 081 | 317 | 948 | 08 |  |  |  |  |  |  |  |  |  |  |  |  |  |  |  |
| C01E109701C0 |  | CB-01 ; Wall finishes (ST, WD, WC) (Exam- 1) | 36d | 2012-07-15 | 2012-08-28 | C01E127020C0 FF, CAFCI22001R02 FS+170d, C01E106101C0 SS, C01E109601C0 |  |  |  |  | 11.68d | 0d | ASSORTED WALL FINISH [860 h]; ASSORTED WALL FINISH [988 m2]; Cost |  |  | C01E109701C0 | CB | C | 01 | E1 | WF | 097 | 01 |  | BILL 4 | B04 | S1 | 01 | R00 | ACF06 |  | 097 | 105 | 1002 |  |  |  |  |  |  |  |  |  |  |  |  |  |  |  |  |
| C01E126003C0 |  | CB-01 ; Final Fix, Inst of Light fittings (Exam- 1) | 48d | 2012-07-29 | 2012-09-25 | C01E126017C0 |  |  |  |  | 23.68d | 12d | ELECTRICAL [7983.6 h]; Cost |  |  | C01E126003C0 | CB | C | 01 | E1 | ME | 260 | 03 | FF | BILL 4 | B04 | S1 | FF | R00 | ACF07 | MEP | 260 |  |  |  |  |  |  |  |  |  |  |  |  |  |  |  |  |  |  |
| C01E101006C0 |  | CB-01 ; 2nd, Ceiling Inspection by Consultants (Exam- 1) | 6d | 2012-08-05 | 2012-08-12 | C01E121115C0, C01E123009C0, C01E123015C0, C01E127002C0, C01E109501C0, C01E121113C0, C01E122029C0, C01E123019C0, C01E126017C0, C01E127030C0, C01E126015C0 |  |  |  |  | 23.68d | 12d | Labor General [1.2 h]; Cost |  |  | C01E101006C0 | CB | C | 01 | E1 | ME | 010 | 06 | 2n | BILL 4 | B04 | S1 | CI | R00 | ACF07 | MEP | 010 |  |  |  |  |  |  |  |  |  |  |  |  |  |  |  |  |  |  |
| C01E109503C0 |  | CB-01 ; Ceiling closure - ACT/Gypsum (Exam- 1) | 18d | 2012-08-28 | 2012-09-18 | C01E101006C0, C01E121115C0, C01E123021C0, C01E126005C0, C01E127002C0, CAFOA09503C1 FF, C01E106101C0, C01E109701C0, C01E126053C0, C01E126007C0 |  |  |  |  | 11.68d | 0d | ASSORTED CEILING FINISH [640.22 h]; CEILING GYPSUM [94.09 h]; ASSORTED CEILING FINISH [1041 m2]; CEILING GYPSUM [262 m2]; Cost |  |  | C01E109503C0 | CB | C | 01 | E1 | CE | 095 | 03 |  | BILL 4 | B04 | S1 | 02 | R00 | ACF06 |  | 095 | 324 | 953 |  | R3 |  |  |  |  |  |  |  |  |  |  |  |  |  |  |
| C01E111001C0 |  | CB-01 ; Wall Protection (WP, CG, WG, FCG) (Exam- 1) | 24d | 2012-08-28 | 2012-09-25 | C01E109701C0, C01E109903C0 SS |  |  |  |  | 33.43d | 21.75d | FF&E [35 h]; Cost |  |  | C01E111001C0 | CB | C | 01 | E1 | WF | 110 | 01 |  | BILL 4 | B04 | S1 | 03 | R00 | ACF06 |  | b | 326 | 1001 |  |  |  |  |  |  |  |  |  |  |  |  |  |  |  |  |
| C01E108709C0 |  | CB-01 ; Ironmongery (Exam- 1) | 32d | 2012-09-04 | 2012-10-11 | C01E108107C0, CZ9GZ08154R2 FF |  |  |  |  | 19.43d | 7.75d | IRONMONGERY [630 h]; IRONMONGERY [63 no]; Cost |  |  | C01E108709C0 | CB | C | 01 | E1 | DO | 087 | 09 |  | BILL 4 | B04 | S1 | IM | R00 | ACF06 |  | 087 | 322 | 951 | 08 |  |  |  |  |  |  |  |  |  |  |  |  |  |  |  |
| C01E109674C1 |  | CB-01, Carpet Tile Finish (Exam-1 Offices/Conference) | 0d | 2012-09-18 | 2012-09-18 | C01E109903C0 SS, C01E109907C0 SS |  |  |  |  | 100.48d | 50.8d | Cost |  |  |  | CB | C | 01 | E1 | FF | 096 |  |  |  | B04 |  |  | R00 | ACF06 | CPT | CPT |  |  |  |  |  |  |  |  |  |  |  |  |  |  |  |  |  |  |
| C01E109907C0 |  | CB-01 ; Ceiling Final paint (Exam- 1) | 0d | 2012-09-18 | 2012-09-18 | C01E109601C0, C01E109905C0, C01E109503C0 |  |  |  |  | 39.43d | 0d | Cost |  |  | C01E109907C0 | CB | C | 01 | E1 | PA | 099 | 07 |  | BILL 4 | B04 | S1 | 02 | R00 | ACF06 |  | 099 | 331 | 959 |  |  |  |  |  |  |  |  |  |  |  |  |  |  |  |  |
| C01E111003C0 |  | CB-01 ; FF & E (Exam- 1) | 18d | 2012-09-18 | 2012-10-09 | C01E109601C0, C01E109503C0 |  |  |  |  | 21.43d | 9.75d | FF&E [129 h]; FF&E [68.53 no]; Cost |  |  | C01E111003C0 | CB | C | 01 | E1 | WO | 110 | 03 |  | BILL 4 | B04 | S1 | 04 | R00 | ACF08 |  | a | 333 | 961 |  |  |  |  |  |  |  |  |  |  |  |  |  |  |  |  |
| C01E122027C0 |  | CB-01 ; Final Fix, Inst of All drain (Exam- 1) | 18d | 2012-09-18 | 2012-10-09 | C01E109305C0, C01E109503C0 |  |  |  |  | 11.68d | 0d | PLUMBING [1491.6 h]; Cost |  |  | C01E122027C0 | CB | C | 01 | E1 | ME | 220 | 27 | FF | BILL 4 | B04 | S1 | FF | R00 | ACF07 | MEP | 220 |  |  |  |  |  |  |  |  |  |  |  |  |  |  |  |  |  |  |
| C01E126019C0 |  | CB-01 ; Final Fix, Inst of Switch/Sockets (Exam- 1) | 12d | 2012-09-18 | 2012-10-02 | C01E109901C0, C01E109503C0 |  |  |  |  | 17.68d | 6d | ELECTRICAL [427.2 h]; Cost |  |  | C01E126019C0 | CB | C | 01 | E1 | ME | 260 | 19 | FF | BILL 4 | B04 | S1 | FF | R00 | ACF07 | MEP | 260 |  |  |  |  |  |  |  |  |  |  |  |  |  |  |  |  |  |  |
|  | 10 | **Precommissioning Tesing & snagging (Exam 1)** |  | 2012-10-09 | 2012-11-19 |  |  |  |  |  |  |  |  |  |  |  |  |  |  |  |  |  |  |  |  |  |  |  |  |  |  |  |  |  |  |  |  |  |  |  |  |  |  |  |  |  |  |  |  |  |
| C01TS01801C0 |  | CB-01 ; MEP de-snag, FIREM sign-off | 9.75d | 2012-10-09 | 2012-10-21 | C01E126015C0, C01E122025C0, C01E122027C0, C01E121113C0, C01E123019C0, C01E122029C0, C01E126017C0, C01E126003C0, C01E127030C0, C01E122021C0, C01E126019C0, C01E111005C0 |  |  |  |  | 11.68d | 0d | TESTING & COMMISSIONING [2040 h]; Cost |  |  | C01TS01801C0 | CB | C | 01 | TS | SC | 018 | 01 |  | BILL 4 | B04 | S1 | 01 | R00 | ACF07 |  | 018 |  |  |  |  |  |  |  |  |  |  |  |  |  |  |  |  |  |  |
| C01TS01804C0 |  | CB-01 ; Touch-up & Clean / JV inspection /CIR /De-snag | 15.05d | 2012-10-21 | 2012-11-10 | C01E106101C0, C01E106102C0, C01E109305C0, C01E109601C0, C01E109701C0, C01E109903C0, C01E109907C0, C01E111001C0, C01E111003C0, C01TS01801C0, C01E105501C0, C01E108709C0, C01E109503C0 |  |  |  |  | 11.68d | 0d | TESTING & COMMISSIONING [149 h]; Cost |  |  | C01TS01802C0 | CB | C | 01 | TS | SC | 018 | 02 |  | BILL 4 | B04 | S1 | 02 | R00 | ACF07 |  | 018 |  |  |  |  |  |  |  |  |  |  |  |  |  |  |  |  |  |  |
| C01TS01805C0 |  | CB-01 ; Consultant's final de-snag inspection | 7d | 2012-11-10 | 2012-11-19 | C01TS01804C0 |  |  |  |  | 11.68d | 4.35d | Labor General [1 h]; Cost |  |  | C01TS01803C0 | CB | C | 01 | TS | SC | 018 | 03 |  | BILL 4 | B04 | S1 | 03 | R00 | ACF07 |  | 018 |  |  |  |  |  |  |  |  |  |  |  |  |  |  |  |  |  |  |
|  | 03 | **Exam 2** |  | 2011-03-24 | 2012-11-18 |  |  |  |  |  |  |  |  |  |  |  |  |  |  |  |  |  |  |  |  |  |  |  |  |  |  |  |  |  |  |  |  |  |  |  |  |  |  |  |  |  |  |  |  |  |
| C01E223001C0 |  | CB-01 ; 1st Fix, Inst. of Supports for MEP (Exam- 2) | 27d | 2011-03-24 A | 2011-07-30 A | C01S207808C0, C02S203335C0 | 100% |  | 2011-03-17 | 2011-04-18 |  |  | MECHANICAL [1024.8 h]; Cost [57766.2 AED] | 57,766.25 | 57,766.25 | C01E223001C0 | CB | C | 01 | E2 | ME | 230 | 01 | 1S | BILL 4 | B04 | S1 | 1F | R00 | ACF04 | MEP | 230 |  |  |  |  | 95 | 100 | M1F |  |  |  |  |  |  |  |  |  |  |  |
| C01E222019C0 |  | CB-01 ; 1st Fix, Inst of Drainage pipe (ceiling) (Exam- 2) | 200d | 2011-03-26 A | 2011-10-25 | C01E223001C0, C01E223023C0 SS+10d, C01S207808C0 | 98% | 4d | 2011-05-08 | 2012-01-07 | 24.6d | 0d | PLUMBING [1714.8 h]; Cost [92715.9 AED] | 92,715.95 | 90,861.63 | C01E222019C0 | CB | C | 01 | E2 | ME | 220 | 19 | 1S | BILL 4 | B04 | S1 | 1F | R00 | ACF04 | MEP | 220 |  |  |  |  | 90 | 95 | M1F | 98 | 96 |  |  |  |  |  |  |  |  |  |
| C01E221111C0 |  | CB-01 ; 1st Fix, Inst of Sprinkler main pipe (Exam- 2) | 200d | 2011-03-28 A | 2011-11-16 | C01E222005C0 SS+7d, C01E223001C0, C01S207808C0 | 90% | 20d | 2011-05-16 | 2012-01-15 | 24.6d | 0d | MECHANICAL [686.4 h]; Cost [37438.4 AED] | 37,438.4 | 33,694.56 | C01E221111C0 | CB | C | 01 | E2 | ME | 211 | 11 | 1S | BILL 4 | B04 | S1 | 1F | R00 | ACF04 | MEP | 211 |  |  |  |  | 65 | 99 | M1F |  |  | 90 |  |  |  |  |  |  |  |  |
| C01E226001C0 |  | CB-01 ; 1st Fix, Inst of Trunking/Conduiting (Exam- 2) | 150d | 2011-03-28 A | 2011-11-10 | C01E221111C0 SS+10d, C01E223001C0, C01S207808C0 | 90% | 15d | 2011-05-28 | 2011-11-27 | 24.6d | 0d | ELECTRICAL [430.8 h]; Cost [29580.4 AED] | 29,580.43 | 26,622.38 | C01E226001C0 | CB | C | 01 | E2 | ME | 260 | 01 | 1S | BILL 4 | B04 | S1 | 1F | R00 | ACF04 | MEP | 260 |  |  |  |  | 30 | 85 | M1F | 90 | 50 |  | 17148 |  |  |  |  |  |  |  |
| C01E227010C0 |  | CB-01 ; 1st Fix, Inst of Trunking for ELV system (Exam- 2) | 150d | 2011-03-30 A | 2011-11-29 | C01E223001C0, C01E226013C0 SS+8d, C01S207808C0 | 80% | 30d | 2011-06-13 | 2011-12-14 | 24.6d | 0d | ELECTRICAL [457.2 h]; Cost [24667.9 AED] | 24,667.88 | 19,734.3 | C01E227010C0 | CB | C | 01 | E2 | ME | 270 | 10 | 1S | BILL 4 | B04 | S1 | 1F | R00 | ACF04 | MEP | 270 |  |  |  |  | 30 | 85 | M1F |  |  |  | 14325.5 |  |  |  |  |  |  |  |
| C01E209203C0 |  | CB-01 ; Partitions 1st face (Exam- 2) | 54d | 2011-04-09 A | 2011-11-16 | C01E209201C0 | 80% | 10.8d | 2011-05-15 | 2011-07-17 | 46.3d | 33.6d | PARTITIONS [551 m]; PARTITIONS [2498 h]; Cost |  |  | C01E209203C0 | CB | C | 01 | E2 | PT | 092 | 03 |  | BILL 4 | B04 | S1 | 2F | R00 | ACF06 | GP | 092 | 314 | 945 |  |  | 8 |  | P1F | 55 | 27 |  | 20747.37 | 0 | 0 | 0 | 0 | 70 |  |  |
| C01E209201C0 |  | CB-01 ; Metal Studs (Exam- 2) | 84d | 2011-04-11 A | 2011-11-01 | C01E223001C0 SS, CAFCI09202R02 FS+58d | 82% | 15.12d | 2011-05-01 | 2011-08-07 | 12.7d | 0d | PARTITIONS [3176 h]; PARTITIONS - Metal Studs [551 m]; Cost |  |  | C01E209201C0 | CB | C | 01 | E2 | PT | 092 | 01 |  | BILL 4 | B04 | S1 | 1F | R00 | ACF06 | GP | 092 | 313 | 944 |  |  | 45 |  | PMS | 70 | 65 |  | 31756.2 | 0 | 0 | 0 | 0 |  | R3 |  |
| C01E221117C0 |  | CB-01 ; 1st Fix, Inst of Sprinkler branch pipe (Exam- 2) | 200d | 2011-04-12 A | 2011-12-12 | C01E209201C0, C01E221111C0, C01E205503C0 FF+18d | 90% | 20d | 2011-07-09 | 2012-03-08 | 86.6d | 73.9d | MECHANICAL [1009.2 h]; Cost [55153.8 AED] | 55,153.76 | 49,638.38 | C01E221117C0 | CB | C | 01 | E2 | ME | 211 | 17 | 1S | BILL 4 | B04 | S1 | 1F | R00 | ACF04 | MEP | 211 |  |  |  |  | 25 | 95 | M1F |  |  | 90 | 15983.75 |  |  |  |  |  |  |  |
| C01E226013C0 |  | CB-01 ; 1st Fix, Inst of Cable Tray (Exam- 2) | 150d | 2011-05-10 A | 2011-11-10 | C01E223001C0, C01E226001C0 SS+6d, C01S207808C0 | 90% | 15d | 2011-06-04 | 2011-12-05 | 24.6d | 0d | ELECTRICAL [948 h]; Cost [17044 AED] | 17,043.96 | 15,339.56 | C01E226013C0 | CB | C | 01 | E2 | ME | 260 | 13 | 1S | BILL 4 | B04 | S1 | 1F | R00 | ACF04 | MEP | 260 |  |  |  |  | 30 | 85 | M1F | 90 | 70 |  | 7937.6 |  |  |  |  |  |  |  |
| C01E222005C0 |  | CB-01 ; 1st Fix, Inst of Water supply pipe (ceiling) (Exam- 2) | 60d | 2011-05-11 A | 2011-12-11 | C01E222019C0 SS, C01E223001C0, C01S207808C0 | 35% | 39d | 2011-06-29 | 2011-09-10 | 24.6d | 0d | PLUMBING [1682.4 h]; Cost [90924.8 AED] | 90,924.75 | 31,823.66 | C01E222005C0 | CB | C | 01 | E2 | ME | 220 | 05 | 1S | BILL 4 | B04 | S1 | 1F | R00 | ACF04 | MEP | 220 |  |  |  |  | 35 | 60 | M1F |  |  |  |  |  |  |  |  |  |  |  |
| C01E222007C0 |  | CB-01 ; 1st Fix, Inst of Medical Gas pipe (Exam- 2) | 54d | 2011-05-15 A | 2011-12-10 | C01E223001C0, C01E227010C0 SS+7d, C01S207808C0 | 30% | 37.8d | 2011-07-07 | 2011-09-11 | 24.6d | 9.5d | PLUMBING [504 h]; Cost [26046.8 AED] | 26,046.85 | 7,814.06 | C01E222007C0 | CB | C | 01 | E2 | ME | 220 | 07 | 1S | BILL 4 | B04 | S1 | 1F | R00 | ACF04 | MEP | 220 |  |  |  |  | 10 | 30 | M1F | 30 | 20 |  |  |  |  |  |  |  |  |  |
| C01E222011C0 |  | CB-01 ; 2nd Fix, Drainage/Water pipe (wall) (Exam- 2) | 66d | 2011-05-15 A | 2011-12-18 | C01E209201C0, CAFCI09201R20 FS+72d | 50% | 33d | 2011-06-11 | 2011-08-28 | 15.22d | 2.52d | PLUMBING [1714.8 h]; Cost [92715.9 AED] | 92,715.95 | 46,357.98 | C01E222011C0 | CB | C | 01 | E2 | ME | 220 | 11 | 2n | BILL 4 | B04 | S1 | 2F | R00 | ACF07 | MEP | 220 |  |  |  |  | 15 | 35 |  | 50 | 15 |  |  |  |  |  |  |  |  |  |
| C01E223017C0 |  | CB-01 ; 1st Fix, Inst of CHW pipe (Exam- 2) | 75d | 2011-05-15 A | 2011-11-29 | C01E223001C0, C01S207808C0, C01E205503C0 FF+18d | 60% | 30d | 2011-06-08 | 2011-09-07 | 23.4d | 0d | MECHANICAL [2395.2 h]; Cost [130782 AED] | 130,781.76 | 78,469.05 | C01E223017C0 | CB | C | 01 | E2 | ME | 230 | 17 | 1S | BILL 4 | B04 | S1 | 1F | R00 | ACF04 | MEP | 230 |  |  |  |  | 35 | 60 | M1F |  |  |  |  |  |  |  |  |  |  |  |
| C01E223023C0 |  | CB-01 ; 1st Fix, Inst of Main Ducting (Exam- 2) | 200d | 2011-05-17 A | 2011-12-12 | C01E223001C0, C01E223017C0 SS+7d, C01S207808C0 | 80% | 40d | 2011-06-16 | 2012-02-16 | 23.4d | 0d | MECHANICAL [16992 h]; Cost [927678 AED] | 927,677.51 | 742,142 | C01E223023C0 | CB | C | 01 | E2 | ME | 230 | 23 | 1S | BILL 4 | B04 | S1 | 1F | R00 | ACF04 | MEP | 230 |  |  |  |  | 35 | 90 | M1F |  |  |  | 215256.81 |  |  |  |  |  |  |  |
| C01E226009C0 |  | CB-01 ; 2nd Fix, Inst of Wall conduites (Exam- 2) | 48d | 2011-06-08 A | 2011-12-21 | C01E209201C0 | 20% | 38.4d | 2011-06-08 | 2011-08-04 | 12.7d | 0d | ELECTRICAL [430.8 h]; Cost [29580.4 AED] | 29,580.43 | 5,916.09 | C01E226009C0 | CB | C | 01 | E2 | ME | 260 | 09 | 2n | BILL 4 | B04 | S1 | 2F | R00 | ACF07 | MEP | 260 |  |  |  |  |  | 25 |  | 20 | 10 |  | 3429.57 |  |  |  |  |  |  |  |
| C01E223015C0 |  | CB-01 ; 2nd Fix, Insulation of CHW pipe & Duct (Exam- 2) | 72d | 2011-07-10 A | 2012-01-04 | C01E223009C0 SS, C01E223017C0 SS, C01E223023C0 SS | 60% | 28.8d | 2011-09-11 | 2011-12-10 | 103.8d | 91.1d | MECHANICAL [6742.8 h]; Cost [363863 AED] | 363,863.22 | 218,317.93 | C01E223015C0 | CB | C | 01 | E2 | ME | 230 | 15 | 2n | BILL 4 | B04 | S1 | 2F | R00 | ACF07 | MEP | 230 |  |  |  |  |  | 25 |  | 60 | 50 |  |  |  |  |  |  |  |  |  |
| C01E222015C0 |  | CB-01 ; 2nd Fix, Medical Gas pipe (Exam- 2) | 60d | 2011-08-10 A | 2011-12-19 | C01E209201C0, C01E222007C0 SS | 40% | 36d | 2011-11-10 | 2012-01-23 | 15.1d | 2.4d | PLUMBING [504 h]; Cost [26046.8 AED] | 26,046.85 | 10,418.74 | C01E222015C0 | CB | C | 01 | E2 | ME | 220 | 15 | 2n | BILL 4 | B04 | S1 | 2F | R00 | ACF07 | MEP | 220 |  |  |  |  |  |  |  | 40 | 0 |  |  |  |  |  |  |  |  |  |
| C01E223008C0 |  | CB-01 ; 1st Fix, Inst of VCD's/FD's (Exam- 2) | 48d | 2011-08-10 A | 2011-12-15 | C01E223023C0 SS, C01E205503C0 FF+18d | 10% | 43.2d | 2011-09-08 | 2011-11-03 | 23.4d | 10.7d | MECHANICAL [2648.4 h]; Cost [143058 AED] | 143,057.96 | 14,305.8 | C01E223008C0 | CB | C | 01 | E2 | ME | 230 | 08 | 1S | BILL 4 | B04 | S1 | 1F | R00 | ACF04 | MEP | 230 |  |  |  |  |  | 60 | M1F | 10 | 0 |  |  |  |  |  |  |  |  |  |
| C01E223009C0 |  | CB-01 ; 2nd Fix, Inst of VAV'S CHW connection (Exam- 2) | 42d | 2011-08-10 A | 2012-01-12 | C01E223017C0 | 15% | 35.7d | 2011-09-05 | 2011-10-24 | 96.9d | 0d | MECHANICAL [1419.6 h]; Cost [76659.7 AED] | 76,659.7 | 11,498.95 | C01E223009C0 | CB | C | 01 | E2 | ME | 230 | 09 | 2n | BILL 4 | B04 | S1 | 2F | R00 | ACF07 | MEP | 230 |  |  |  |  |  | 50 |  | 10 | 0 |  |  | 0 | 0 | 0 | 0 |  |  |  |
| C01E227001C0 |  | CB-01 ; 1st Fix, Wiring/ Cabling work (Exam- 2) | 54d | 2011-08-10 A | 2012-01-15 | C01E226001C0, C01E226013C0, C01E227010C0 | 30% | 37.8d | 2011-12-17 | 2012-02-19 | 94.8d | 82.1d | ELECTRICAL [216 h]; Cost [15494.5 AED] | 15,494.51 | 4,648.35 | C01E227001C0 | CB | C | 01 | E2 | ME | 270 | 01 | 1S | BILL 4 | B04 | S1 | 1F | R00 | ACF04 | MEP | 270 |  |  |  |  |  | 25 | M1F | 30 | 0 |  |  |  |  |  |  |  |  |  |
| C01E205503C0 |  | CB-01 ; Ceiling Support for medical equipment (Exam- 2) | 5d | 2011-09-05 A | 2011-11-03 | C01E209201C0 | 50% | 2.5d | 2011-11-13 | 2011-11-19 | 23.4d | 0d | SECONDARY STEEL [59 h]; Cost |  |  | C01E205503C0 | CB | C | 01 | E2 | SW | 055 | 03 |  | BILL 4 | B04 | S1 | 03 | R00 | ACF03 |  | b | 335 | 962 |  |  |  |  |  |  |  |  |  |  |  |  |  |  |  |  |
| C01E205511C0 |  | CB-01 ; Wall reinforcement for MEP/Medical (Exam- 2) | 24d | 2011-11-01 | 2011-12-05 | C01E209201C0 |  |  |  |  | 33.1d | 20.4d | SECONDARY STEEL [21 h]; Cost |  |  | C01E205511C0 | CB | C | 01 | E2 | SW | 055 | 11 |  | BILL 4 | B04 | S1 | 03 | R00 | ACF03 |  | b |  |  |  |  |  |  |  |  |  |  |  |  |  |  |  |  |  |  |
| C01E208103C0 |  | CB-01 ; Door Frames (Exam- 2) | 42d | 2011-11-15 | 2012-01-05 | C01E209201C0, GNHE08101C0 FS+79d, C01E108103C0 SS+3d |  |  |  |  | 63d | 0d | ASSORTED DOORS [222 h]; Cost |  |  | C01E208103C0 | CB | C | 01 | E2 | DO | 081 | 03 |  | BILL 4 | B04 | S1 | DF | R00 | ACF06 |  | 081 | 316 | 947 | 08 |  |  |  |  |  |  |  |  |  |  |  |  |  |  |  |
| C01E201005C0 |  | CB-01 ; 2nd, Wall Inspection by Consultant (Exam- 2) | 6d | 2011-12-21 | 2011-12-28 | C01E222011C0, C01E222015C0, C01E226009C0 |  |  |  |  | 12.7d | 0d | Labor General [1.2 h]; Cost |  |  | C01E201005C0 | CB | C | 01 | E2 | ME | 010 | 05 | 2n | BILL 4 | B04 | S1 | WI | R00 | ACF07 | MEP | 010 |  |  |  |  |  |  |  |  |  |  |  |  |  |  |  |  |  |  |
| C01E209205C0 |  | CB-01 ; Partitions Closing (Exam- 2) | 60d | 2011-12-28 | 2012-03-10 | C01E201005C0, C01E205511C0, C01E208103C0 FF, C01E209203C0, C01E222005C0, C01E222019C0, CAFOA09204C1 FF, C01E223008C0, C01E221117C0 FF, CAFCI09201R20 FS+72d |  |  |  |  | 12.7d | 0d | PARTITIONS [551 m]; PARTITIONS [3201 h]; Cost |  |  | C01E209205C0 | CB | C | 01 | E2 | PT | 092 | 05 |  | BILL 4 | B04 | S1 | FF | R00 | ACF06 | GP | 092 | 315 | 946 |  |  |  |  | P2F |  |  |  |  |  |  |  |  |  | R3 |  |
| C01E207103C0 |  | CB-01 ; Waterproofing (Exam- 2) | 12d | 2012-03-10 | 2012-03-24 | C01E208103C0, C01E209205C0 |  |  |  |  | 52.83d | 0d | THERMAL & MOISTURE [192 h]; THERMAL & MOISTURE [1247 m2]; Cost |  |  | C01E207103C0 | CB | C | 01 | E2 | FF | 071 | 03 |  | BILL 4 | B04 | S1 | 01 | R00 | ACF03 |  | 071 | 105 | 999 |  |  |  |  |  |  |  |  |  |  |  |  |  |  |  |  |
| C01E209901C0 |  | CB-01 ; Wall Prime & 1st coat (Exam- 2) | 36d | 2012-03-10 | 2012-04-21 | C01E209205C0 |  |  |  |  | 12.7d | 0d | WALL PAINT [912 h]; WALL PAINT [1138 m2]; Cost |  |  | C01E209901C0 | CB | C | 01 | E2 | PA | 099 | 01 |  | BILL 4 | B04 | S1 | 01 | R00 | ACF06 |  | 099 | 328 | 956 |  |  |  |  |  |  |  |  |  |  |  |  |  |  |  |  |
| C01E226005C0 |  | CB-01 ; 2nd Fix, Wiring for Power/Lighting/Emergency (Exam- 2) | 42d | 2012-03-10 | 2012-04-28 | C01E209205C0 |  |  |  |  | 60.7d | 0d | ELECTRICAL [216 h]; Cost |  |  | C01E226005C0 | CB | C | 01 | E2 | ME | 260 | 05 | 2n | BILL 4 | B04 | S1 | 2F | R00 | ACF07 | MEP | 260 |  |  |  |  |  |  |  |  |  |  |  |  |  |  |  |  |  |  |
| C01E226007C0 |  | CB-01 ; 2nd Fix, Cable Pulling (Exam- 2) | 42d | 2012-03-10 | 2012-04-28 | C01E209201C0 SS+6d, C01E209205C0 |  |  |  |  | 114.7d | 102d | ELECTRICAL [6616.8 h]; Cost |  |  | C01E226007C0 | CB | C | 01 | E2 | ME | 260 | 07 | 2n | BILL 4 | B04 | S1 | 2F | R00 | ACF07 | MEP | 260 |  |  |  |  |  | 25 |  |  |  |  |  |  |  |  |  |  |  |  |
| C01E226011C0 |  | CB-01 ; 2nd Fix, Inst of Equipment (DB) (Exam- 2) | 42d | 2012-03-10 | 2012-04-28 | C01E209205C0 |  |  |  |  | 42.7d | 30d | ELECTRICAL [1266 h]; Cost |  |  | C01E226011C0 | CB | C | 01 | E2 | ME | 260 | 11 | 2n | BILL 4 | B04 | S1 | 2F | R00 | ACF04 | MEP | 260 |  |  |  |  |  |  |  |  |  |  |  |  |  |  |  |  |  | E |
| C01E226053C0 |  | CB-01 ; 2nd Fix, Wiring / Cabling (Exam- 2) | 30d | 2012-03-10 | 2012-04-14 | C01E209203C0, C01E209205C0 |  |  |  |  | 126.7d | 114d | ELECTRICAL [216 h]; Cost |  |  | C01E226053C0 | CB | C | 01 | E2 | ME | 260 | 53 | 2n | BILL 4 | B04 | S1 | 2F | R00 | ACF07 | MEP | 260 | 389 | 977 |  |  |  |  |  |  |  |  |  |  |  |  |  |  |  |  |
| C01E227020C0 |  | CB-01 ; 2nd Fix, Inst of ELV Equipment (Panels) (Exam- 2) | 42d | 2012-03-10 | 2012-04-28 | C01E209205C0 |  |  |  |  | 78.7d | 66d | ELECTRICAL [384 h]; Cost |  |  | C01E227020C0 | CB | C | 01 | E2 | ME | 270 | 20 | 2n | BILL 4 | B04 | S1 | 2F | R00 | ACF04 | MEP | 270 |  |  |  |  |  |  |  |  |  |  |  |  |  |  |  |  |  | E |
| C01E209305C0 |  | CB-01 ; Ceramic floor tile (Exam- 2) | 30d | 2012-03-24 | 2012-04-28 | C01E207103C0 |  |  |  |  | 52.83d | 0d | CERAMIC FLOOR TILES [216 h]; CERAMIC FLOOR TILES [119 m2]; Cost |  |  | C01E209305C0 | CB | C | 01 | E2 | FF | 093 | 05 |  | BILL 4 | B04 | S1 | 02 | R00 | ACF06 |  | CT | 106 | 1000 |  |  |  |  |  |  |  |  |  |  |  |  |  |  |  |  |
| C01E205501C0 |  | CB-01 ; Handrails & balustrade (Exam- 2) | 36d | 2012-04-21 | 2012-06-02 | C01E209901C0 |  |  |  |  | 48.7d | 36d | SECONDARY STEEL [291 h]; Cost |  |  | C01E205501C0 | CB | C | 01 | E2 | SW | 055 | 01 |  | BILL 4 | B04 | S1 | 01 | R00 | ACF03 |  | a |  |  |  |  |  |  |  |  |  |  |  |  |  |  |  |  |  |  |
| C01E209501C0 |  | CB-01 ; Ceiling Grid and ServiceTile (Exam- 2) | 36d | 2012-04-21 | 2012-06-02 | C01E205503C0, C01E209205C0 SS+15d, C01E221117C0, C01E222007C0, C01E223008C0, C01E223009C0, C01E223015C0, C01E227001C0, CAFCI22001R02 FS+72d, C01E226011C0 FF, C01E209901C0 |  |  |  |  | 12.7d | 0d | CEILING GRID FOR GYPSUM [2542.14 h]; CEILING GRID FOR GYPSUM [217.47 m2]; Cost |  |  | C01E209501C0 | CB | C | 01 | E2 | CE | 095 | 01 |  | BILL 4 | B04 | S1 | 01 | R00 | ACF06 |  | 095 | 323 | 952 |  | R3 |  |  |  |  |  |  |  |  |  |  |  |  |  |  |
| C01E222025C0 |  | CB-01 ; Final Fix, Inst of Sanitary Ware (Exam- 2) | 48d | 2012-04-28 | 2012-06-24 | C01E209205C0, C01E209305C0, A10230 FS+148d |  |  |  |  | 52.83d | 0d | PLUMBING [1491.6 h]; Cost |  |  | C01E222025C0 | CB | C | 01 | E2 | ME | 220 | 25 | FF | BILL 4 | B04 | S1 | FF | R00 | ACF07 | MEP | 220 |  |  |  |  |  |  |  |  |  |  |  |  |  |  |  |  |  |  |
| C01E226015C0 |  | CB-01 ; Final Fix, Termination & Gladding of Cables (Exam- 2) | 48d | 2012-04-28 | 2012-06-24 | C01E226005C0 |  |  |  |  | 60.7d | 40d | ELECTRICAL [826.8 h]; Cost |  |  | C01E226015C0 | CB | C | 01 | E2 | ME | 260 | 15 | FF | BILL 4 | B04 | S1 | FF | R00 | ACF07 | MEP | 260 |  |  |  |  |  |  |  |  |  |  |  |  |  |  |  |  |  |  |
| C01E206101C0 |  | CB-01 ; Wood / caseworks (Exam- 2) | 60d | 2012-06-02 | 2012-08-12 | C01CO04409C0, C01E209501C0, C01E209901C0, CAFWA00113M0, CAFCI22001R02 FS+190d, A10370 |  |  |  |  | 20.7d | 0d | WOOD WORK/CASEWORK [1357.63 no]; WOOD WORK/CASEWORK [5532 h]; Cost |  |  | C01E206101C0 | CB | C | 01 | E2 | WO | 061 | 01 |  | BILL 4 | B04 | S1 | WW | R00 | ACF06 |  | 061 | 332 | 960 |  | R3 |  |  |  |  |  |  |  |  |  |  |  |  |  |  |
| C01E206102C0 |  | CB-01 ; Head Wall (Exam- 2) | 29.88d | 2012-06-02 | 2012-07-08 | C01CO04409C0, C01E209501C0, C01E206101C0 SS, CAFWA00113M0, CAFCI22001R02 FS+190d |  |  |  |  | 98.7d | 86d | WOOD WORK/CASEWORK [2772 h]; Cost |  |  | C01E206102C0 | CB | C | 01 | E2 | WO | 061 | 02 |  | BILL 4 | B04 | S1 | WW | R00 | ACF06 |  | 061 | 332 | 960 |  | R3 |  |  |  |  |  |  |  |  |  |  |  |  |  |  |
| C01E209601C0 |  | CB-01 ; Flooring (Rubber & etc) (Exam- 2) | 36d | 2012-06-02 | 2012-07-15 | C01E209901C0, C01E209501C0, C01E227020C0 FF, C01E205501C0 FF |  |  |  |  | 12.7d | 0d | RUBBER FLOOR [304 h]; RUBBER FLOOR [754 m2]; Cost |  |  | C01E209601C0 | CB | C | 01 | E2 | FF | 096 | 01 |  | BILL 4 | B04 | S1 | 03 | R00 | ACF06 |  | RF | 326 | 955 |  | R3 |  |  |  |  |  |  |  |  |  |  |  |  |  |  |
| C01E209675C1 |  | CB-01, Carpet Tile Finish( Exam-2 Offices/Conference) | 0d | 2012-06-02 | 2012-06-02 | C01E209903C0 SS |  |  |  |  | 100.83d | 88.12d | Cost |  |  |  | CB | C | 01 | E2 | FF | 096 |  |  |  | B04 |  |  | R00 | ACF06 | CPT | CPT |  |  |  |  |  |  |  |  |  |  |  |  |  |  |  |  |  |  |
| C01E209903C0 |  | CB-01 ; Wall Final Paint (Exam- 2) | 36d | 2012-06-02 | 2012-07-15 | C01E209901C0, C01E209905C0 |  |  |  |  | 92.58d | 0d | WALL PAINT [492 h]; WALL PAINT [613 m2]; Cost |  |  | C01E209903C0 | CB | C | 01 | E2 | PA | 099 | 03 |  | BILL 4 | B04 | S1 | 02 | R00 | ACF06 |  | 099 | 329 | 957 |  |  |  |  |  |  |  |  |  |  |  |  |  |  |  |  |
| C01E209905C0 |  | CB-01 ; Ceiling Prime & 1st coat (Exam- 2) | 0d | 2012-06-02 | 2012-06-02 | C01E209501C0 |  |  |  |  | 92.58d | 0d | Cost |  |  | C01E209905C0 | CB | C | 01 | E2 | PA | 099 | 05 |  | BILL 4 | B04 | S1 | 01 | R00 | ACF06 |  | 099 | 330 | 958 |  |  |  |  |  |  |  |  |  |  |  |  |  |  |  |  |
| C01E221115C0 |  | CB-01 ; 2nd Fix, Inst of Sprinkler droppers (Exam- 2) | 30d | 2012-06-02 | 2012-07-08 | C01E209501C0 |  |  |  |  | 24.7d | 0d | MECHANICAL [1404 h]; Cost |  |  | C01E221115C0 | CB | C | 01 | E2 | ME | 211 | 15 | 2n | BILL 4 | B04 | S1 | 2F | R00 | ACF07 | MEP | 211 |  |  |  |  |  |  |  |  |  |  |  |  |  |  |  |  |  |  |
| C01E223021C0 |  | CB-01 ; 2nd Fix, Inst of Flexible Duct & Plenum boxes (Exam- 2) | 42d | 2012-06-02 | 2012-07-22 | C01E209205C0, C01E209501C0 |  |  |  |  | 24.7d | 0d | MECHANICAL [903.6 h]; Cost |  |  | C01E223021C0 | CB | C | 01 | E2 | ME | 230 | 21 | 2n | BILL 4 | B04 | S1 | 2F | R00 | ACF07 | MEP | 230 |  |  |  |  |  |  |  |  |  |  |  |  |  |  |  |  |  |  |
| C01E226017C0 |  | CB-01 ; Final Fix, Inst of Ceiling rose (Exam- 2) | 48d | 2012-06-02 | 2012-07-29 | C01E209501C0 |  |  |  |  | 24.7d | 0d | ELECTRICAL [123.6 h]; Cost |  |  | C01E226017C0 | CB | C | 01 | E2 | ME | 260 | 17 | FF | BILL 4 | B04 | S1 | FF | R00 | ACF07 | MEP | 260 |  |  |  |  |  |  |  |  |  |  |  |  |  |  |  |  |  |  |
| C01E227002C0 |  | CB-01 ; 2nd Fix, Wiring Droppers (Exam- 2) | 42d | 2012-06-02 | 2012-07-22 | C01E209501C0 |  |  |  |  | 24.7d | 0d | ELECTRICAL [216 h]; Cost |  |  | C01E227002C0 | CB | C | 01 | E2 | ME | 270 | 02 | 2n | BILL 4 | B04 | S1 | 2F | R00 | ACF07 | MEP | 270 |  |  |  |  |  |  |  |  |  |  |  |  |  |  |  |  |  |  |
| C01E221113C0 |  | CB-01 ; Final Fix, Inst of Sprinklers head/ Extinguisher (Exam- 2) | 48d | 2012-06-09 | 2012-08-05 | C01E209501C0, C01E221115C0 SS+6d |  |  |  |  | 24.7d | 4d | MECHANICAL [278.4 h]; Cost |  |  | C01E221113C0 | CB | C | 01 | E2 | ME | 211 | 13 | FF | BILL 4 | B04 | S1 | FF | R00 | ACF07 | MEP | 211 |  |  |  |  |  |  |  |  |  |  |  |  |  |  |  |  |  |  |
| C01E223019C0 |  | CB-01 ; Final Fix, Inst of Grilles & Diffusers (Exam- 2) | 48d | 2012-06-09 | 2012-08-05 | C01E209501C0, C01E223021C0 SS+6d |  |  |  |  | 24.7d | 4d | MECHANICAL [1970.4 h]; Cost |  |  | C01E223019C0 | CB | C | 01 | E2 | ME | 230 | 19 | FF | BILL 4 | B04 | S1 | FF | R00 | ACF07 | MEP | 230 |  |  |  |  |  |  |  |  |  |  |  |  |  |  |  |  |  |  |
| C01E226003C0 |  | CB-01 ; Final Fix, Inst of Light fittings (Exam- 2) | 48d | 2012-06-09 | 2012-08-05 | C01E226017C0 SS+6d |  |  |  |  | 24.7d | 4d | ELECTRICAL [7983.6 h]; Cost |  |  | C01E226003C0 | CB | C | 01 | E2 | ME | 260 | 03 | FF | BILL 4 | B04 | S1 | FF | R00 | ACF07 | MEP | 260 |  |  |  |  |  |  |  |  |  |  |  |  |  |  |  |  |  |  |
| C01E227030C0 |  | CB-01 ; Final Fix, Inst of ELV device (Detector/Speaker) (Exam- 2) | 48d | 2012-06-09 | 2012-08-05 | C01E209501C0, C01E227002C0 SS+6d |  |  |  |  | 24.7d | 4d | ELECTRICAL [2054.4 h]; Cost |  |  | C01E227030C0 | CB | C | 01 | E2 | ME | 270 | 30 | FF | BILL 4 | B04 | S1 | FF | R00 | ACF07 | MEP | 270 |  |  |  |  |  |  |  |  |  |  |  |  |  |  |  |  |  |  |
| C01E211005C0 |  | CB-01 ; Utility belt (Exam- 2) | 30d | 2012-06-13 | 2012-07-19 | C01E206101C0 SS+10d, C01E209205C0 |  |  |  |  | 20.7d | 0d | FF&E [396 h]; FF&E [211.08 no]; Cost |  |  | C01E211005C0 | CB | C | 01 | E2 | WO | 110 | 05 |  | BILL 4 | B04 | S1 | 05 | R00 | ACF08 |  | e |  |  |  |  |  |  |  |  |  |  |  |  |  |  |  |  |  |  |

| ID | WBS | Activity | Duration | Start | Finish | Predecessors | Complete | Remaining | Planned start | Planned finish | Total float | Free float | Resources | Cost | Actual cost | change id | CCAD BUILDING(SET) | CCAD PHASE(SET) | CCAD FLOOR(SET) | CCAD ZONE(SET) | CCAD WORK(SET) | CCAD SECTION(SET) | CCAD SERIAL No.(SET) | CCAD SUB ZONE MEP(SET) | CCAD CBS(SET) | CCAD BILL(SET) | CCAD HANDOVER(SET) | CCAD TAG(SET) | CCAD REV(SET) | CCADACF (SET) | CCAD CSA | CCAD SSCF | Change Order # | NEW ACTIVITY ID | CCAD DIVISION(SET) | R3 Finish | RENZ % COMPLETE | July2011 Target% Complete | Claimed This Month | P_811 | P_711 | Act Selector % | PERCENT COMPLETE | user_number8 | user_integer1 | user_integer2 | user_number7 | U% | CCAD MEQ |
| --- | --- | --- | --- | --- | --- | --- | --- | --- | --- | --- | --- | --- | --- | --- | --- | --- | --- | --- | --- | --- | --- | --- | --- | --- | --- | --- | --- | --- | --- | --- | --- | --- | --- | --- | --- | --- | --- | --- | --- | --- | --- | --- | --- | --- | --- | --- | --- | --- | --- |
| C01E222021C0 |  | CB-01 ; Final Fix, Terminate Sanitary Ware & Appliances (Exam- 2) | 48d | 2012-06-24 | 2012-08-21 | C01E222011C0, C01E222025C0 |  |  |  |  | 52.83d | 40.12d | PLUMBING [1491.6 h]; Cost |  |  | C01E222021C0 | CB | C | 01 | E2 | ME | 220 | 21 | FF | BILL 4 | B04 | S1 | FF | R00 | ACF07 | MEP | 220 |  |  |  |  |  |  |  |  |  |  |  |  |  |  |  |  |  |
| C01E208107C0 |  | CB-01 ; Doors (Exam- 2) | 42d | 2012-07-15 | 2012-09-04 | C01E208103C0, C01E209901C0, C01E209601C0 |  |  |  |  | 22.58d | 0d | ASSORTED DOORS [760 h]; ASSORTED DOORS [76 no]; Cost |  |  | C01E208107C0 | CB | C | 01 | E2 | DO | 081 | 07 |  | BILL 4 | B04 | S1 | DR | R00 | ACF06 |  | 081 | 317 | 948 | 08 |  |  |  |  |  |  |  |  |  |  |  |  |  |  |
| C01E209701C0 |  | CB-01 ; Wall finishes (ST, WD, WC) (Exam- 2) | 36d | 2012-07-15 | 2012-08-28 | C01E227020C0 FF, CAFCI22001R02 FS+170d, C01E206101C0 SS, C01E209601C0 |  |  |  |  | 12.7d | 0d | ASSORTED WALL FINISH [576 h]; ASSORTED WALL FINISH [661 m2]; Cost |  |  | C01E209701C0 | CB | C | 01 | E2 | WF | 097 | 01 |  | BILL 4 | B04 | S1 | 01 | R00 | ACF06 |  | 097 | 105 | 1002 |  |  |  |  |  |  |  |  |  |  |  |  |  |  |  |
| C01E222029C0 |  | CB-01 ; Final Fix, Medical Gas pipe (Exam- 2) | 18d | 2012-07-19 | 2012-08-09 | C01E209501C0, C01E211005C0 |  |  |  |  | 20.7d | 0d | PLUMBING [504 h]; Cost |  |  | C01E222029C0 | CB | C | 01 | E2 | ME | 220 | 29 | FF | BILL 4 | B04 | S1 | FF | R00 | ACF07 | MEP | 220 |  |  |  |  |  |  |  |  |  |  |  |  |  |  |  |  |  |
| C01E201006C0 |  | CB-01 ; 2nd, Ceiling Inspection by Consultants (Exam- 2) | 6d | 2012-08-09 | 2012-08-16 | C01E221115C0, C01E223009C0, C01E223015C0, C01E227002C0, C01E209501C0, C01E221113C0, C01E222029C0, C01E223019C0, C01E226017C0, C01E227030C0, C01E226015C0, C01E226003C0 |  |  |  |  | 20.7d | 8d | Labor General [1.2 h]; Cost |  |  | C01E201006C0 | CB | C | 01 | E2 | ME | 010 | 06 | 2n | BILL 4 | B04 | S1 | CI | R00 | ACF07 | MEP | 010 |  |  |  |  |  |  |  |  |  |  |  |  |  |  |  |  |  |
| C01E209503C0 |  | CB-01 ; Ceiling closure - ACT/Gypsum (Exam- 2) | 16.12d | 2012-08-28 | 2012-09-16 | C01E201006C0, C01E221115C0, C01E226005C0, C01E227002C0, CAFOA09503C1 FF, C01E206101C0, C01E209701C0, C01E209675C1 FF, C01E223021C0, C01E226053C0, C01E226007C0 |  |  |  |  | 12.7d | 0d | ASSORTED CEILING FINISH [485.24 h]; CEILING GYPSUM [71.34 h]; ASSORTED CEILING FINISH [789 m2]; CEILING GYPSUM [199 m2]; Cost |  |  | C01E209503C0 | CB | C | 01 | E2 | CE | 095 | 03 |  | BILL 4 | B04 | S1 | 02 | R00 | ACF06 |  | 095 | 324 | 953 |  | R3 |  |  |  |  |  |  |  |  |  |  |  |  |  |
| C01E211001C0 |  | CB-01 ; Wall Protection (WP, CG, WG, FCG) (Exam- 2) | 24d | 2012-08-28 | 2012-09-25 | C01E209701C0, C01E209903C0 SS |  |  |  |  | 32.58d | 19.88d | FF&E [23 h]; Cost |  |  | C01E211001C0 | CB | C | 01 | E2 | WF | 110 | 01 |  | BILL 4 | B04 | S1 | 03 | R00 | ACF08 |  | b | 326 | 1001 |  |  |  |  |  |  |  |  |  |  |  |  |  |  |  |
| C01E208709C0 |  | CB-01 ; Ironmongery (Exam- 2) | 28d | 2012-09-04 | 2012-10-07 | C01E208107C0 |  |  |  |  | 22.58d | 9.88d | IRONMONGERY [480 h]; IRONMONGERY [48 no]; Cost |  |  | C01E208709C0 | CB | C | 01 | E2 | DO | 087 | 09 |  | BILL 4 | B04 | S1 | IM | R00 | ACF06 |  | 087 | 322 | 951 | 08 |  |  |  |  |  |  |  |  |  |  |  |  |  |  |
| C01E209907C0 |  | CB-01 ; Ceiling Final paint (Exam- 2) | 0d | 2012-09-16 | 2012-09-16 | C01E209601C0, C01E209905C0, C01E209503C0 |  |  |  |  | 40.45d | 27.75d | Cost |  |  | C01E209907C0 | CB | C | 01 | E2 | PA | 099 | 07 |  | BILL 4 | B04 | S1 | 02 | R00 | ACF06 |  | 099 | 331 | 959 |  |  |  |  |  |  |  |  |  |  |  |  |  |  |  |
| C01E211003C0 |  | CB-01 ; FF & E (Exam- 2) | 18d | 2012-09-16 | 2012-10-07 | C01E209601C0, C01E209503C0 |  |  |  |  | 22.45d | 9.75d | FF&E [97 h]; FF&E [51.27 no]; Cost |  |  | C01E211003C0 | CB | C | 01 | E2 | WO | 110 | 03 |  | BILL 4 | B04 | S1 | 04 | R00 | ACF08 |  | a | 333 | 961 |  |  |  |  |  |  |  |  |  |  |  |  |  |  |  |
| C01E222027C0 |  | CB-01 ; Final Fix, Inst of All drain (Exam- 2) | 18d | 2012-09-16 | 2012-10-07 | C01E209305C0, C01E209503C0 |  |  |  |  | 12.7d | 0d | PLUMBING [1491.6 h]; Cost |  |  | C01E222027C0 | CB | C | 01 | E2 | ME | 220 | 27 | FF | BILL 4 | B04 | S1 | FF | R00 | ACF07 | MEP | 220 |  |  |  |  |  |  |  |  |  |  |  |  |  |  |  |  |  |
| C01E226019C0 |  | CB-01 ; Final Fix, Inst of Switch/Sockets (Exam- 2) | 12d | 2012-09-16 | 2012-09-30 | C01E209901C0, C01E209503C0 |  |  |  |  | 18.7d | 6d | ELECTRICAL [427.2 h]; Cost |  |  | C01E226019C0 | CB | C | 01 | E2 | ME | 260 | 19 | FF | BILL 4 | B04 | S1 | FF | R00 | ACF07 | MEP | 260 |  |  |  |  |  |  |  |  |  |  |  |  |  |  |  |  |  |
|  | 10 | **Precommissioning Tesing & snagging (Exam 2)** |  | 2012-10-07 | 2012-11-18 |  |  |  |  |  |  |  |  |  |  |  |  |  |  |  |  |  |  |  |  |  |  |  |  |  |  |  |  |  |  |  |  |  |  |  |  |  |  |  |  |  |  |  |  |
| CGLTS01807C0 |  | CB-01 ; MEP de-snag, FIREM sign-off | 9.75d | 2012-10-07 | 2012-10-18 | C01E211005C0, C01E222025C0, C01E222027C0, C01E226015C0, C01E221113C0, C01E223019C0, C01E222029C0, C01E226017C0, C01E226003C0, C01E227030C0, C01E222021C0, C01E226019C0 |  |  |  |  | 12.7d | 0d | TESTING & COMMISSIONING [1020 h]; Cost |  |  | CGLTS01801C0 | CB | C | 01 | TS | SC | 018 | 01 |  | BILL 4 | B04 | S1 | 01 | R00 | ACF07 |  | 018 |  |  |  |  |  |  |  |  |  |  |  |  |  |  |  |  |  |
| CGLTS01814C0 |  | CB-01 ; Touch-up & Clean / JV inspection /CIR /De-snag | 15.9d | 2012-10-18 | 2012-11-08 | C01E206101C0, C01E206102C0, C01E208709C0, C01E209305C0, C01E209601C0, C01E209701C0, C01E209903C0, C01E209907C0, C01E211001C0, C01E211003C0, CGLTS01807C0, C01E205501C0, C01E209503C0 |  |  |  |  | 12.7d | 0d | TESTING & COMMISSIONING [149 h]; Cost |  |  | CGLTS01802C0 | CB | C | 01 | TS | SC | 018 | 02 |  | BILL 4 | B04 | S1 | 02 | R00 | ACF07 |  | 018 |  |  |  |  |  |  |  |  |  |  |  |  |  |  |  |  |  |
| CGLTS01821C0 |  | CB-01 ; Consultant's final de-snag inspection | 7d | 2012-11-08 | 2012-11-18 | CGLTS01814C0 |  |  |  |  | 12.7d | 5.38d | Labor General [1 h]; Cost |  |  | CGLTS01803C0 | CB | C | 01 | TS | SC | 018 | 03 |  | BILL 4 | B04 | S1 | 03 | R00 | ACF07 |  | 018 |  |  |  |  |  |  |  |  |  |  |  |  |  |  |  |  |  |
|  | 04 | **Public Area ( Elev.Lobby & Corridors )** |  | 2011-03-23 | 2012-10-29 |  |  |  |  |  |  |  |  |  |  |  |  |  |  |  |  |  |  |  |  |  |  |  |  |  |  |  |  |  |  |  |  |  |  |  |  |  |  |  |  |  |  |  |  |
| C01PA26001C0 |  | CB-01 ; 1st Fix, Inst of Trunking/Conduiting (Public Area) | 150d | 2011-03-23 A | 2011-10-17 | C01PA23001C0, C01S107807C0, C01S207808C0 | 90% | 15d | 2011-04-18 | 2011-10-13 | 50.17d | 0d | ELECTRICAL [430.8 h]; Cost [29580.4 AED] | 29,580.43 | 26,622.38 | C01PA26001C0 | CB | C | 01 | PA | ME | 260 | 01 | 1S | BILL 4 | B04 | S1 | 1F | R00 | ACF04 | MEP | 260 |  |  |  |  | 40 | 90 | 15433.2 | 90 | 85 | M1F |  |  |  |  |  |  |  |
| C01PA23001C0 |  | CB-01 ; 1st Fix, Inst. of Supports for MEP (Public Area) | 27d | 2011-03-24 A | 2011-05-30 A | C01S107807C0, C01S207808C0, C02S103335C0, C02S203335C0 | 100% |  | 2011-03-17 | 2011-04-18 |  |  | MECHANICAL [1024.8 h]; Cost [57766.2 AED] | 57,766.25 | 57,766.25 | C01PA23001C0 | CB | C | 01 | PA | ME | 230 | 01 | 1S | BILL 4 | B04 | S1 | 1F | R00 | ACF04 | MEP | 230 |  |  |  |  | 100 |  |  |  |  | M1F |  |  |  |  |  |  |  |
| C01PA22019C0 |  | CB-01 ; 1st Fix, Inst of Drainage pipe (ceiling) (Public Area) | 200d | 2011-03-26 A | 2011-10-04 | C01PA23001C0, C01PA26013C0 SS+12d, C01S107807C0, C01S207808C0 | 98% | 4d | 2011-05-18 | 2012-01-17 | 50.17d | 0d | PLUMBING [1714.8 h]; Cost [92715.9 AED] | 92,715.95 | 90,861.63 | C01PA22019C0 | CB | C | 01 | PA | ME | 220 | 19 | 1S | BILL 4 | B04 | S1 | 1F | R00 | ACF04 | MEP | 220 |  |  |  |  | 90 | 90 |  | 98 | 96 | M1F |  |  |  |  |  |  |  |
| C01PA26013C0 |  | CB-01 ; 1st Fix, Inst of Cable Tray (Public Area) | 150d | 2011-03-26 A | 2011-10-17 | C01PA23001C0, C01PA27010C0 SS+4d, C01S107807C0, C01S207808C0 | 90% | 15d | 2011-05-04 | 2011-10-30 | 50.17d | 0d | ELECTRICAL [948 h]; Cost [17044 AED] | 17,043.96 | 15,339.56 | C01PA26013C0 | CB | C | 01 | PA | ME | 260 | 13 | 1S | BILL 4 | B04 | S1 | 1F | R00 | ACF04 | MEP | 260 |  |  |  |  | 30 | 55 | 2976.45 | 90 | 45 | M1F |  |  |  |  |  |  |  |
| C01PA27010C0 |  | CB-01 ; 1st Fix, Inst of Trunking for ELV system (Public Area) | 150d | 2011-03-26 A | 2011-11-03 | C01PA23001C0, C01PA26001C0 SS+10d, C01S107807C0, C01S207808C0 | 80% | 30d | 2011-04-30 | 2011-10-25 | 50.17d | 0d | ELECTRICAL [457.2 h]; Cost [24667.9 AED] | 24,667.88 | 19,734.3 | C01PA27010C0 | CB | C | 01 | PA | ME | 270 | 10 | 1S | BILL 4 | B04 | S1 | 1F | R00 | ACF04 | MEP | 270 |  |  |  |  | 20 | 85 | 17190.66 |  |  | M1F |  |  |  |  |  |  |  |
| C01PA21111C0 |  | CB-01 ; 1st Fix, Inst of Sprinkler main pipe (Public Area) | 200d | 2011-03-27 A | 2011-10-23 | C01PA22005C0 SS+10d, C01PA23001C0, C01S107807C0, C01S207808C0 | 90% | 20d | 2011-06-07 | 2012-02-07 | 52.58d | 0d | MECHANICAL [686.4 h]; Cost [37438.4 AED] | 37,438.4 | 33,694.56 | C01PA21111C0 | CB | C | 01 | PA | ME | 211 | 11 | 1S | BILL 4 | B04 | S1 | 1F | R00 | ACF04 | MEP | 211 |  |  |  |  | 85 | 95 |  |  |  | M1F | 90 |  |  |  |  |  |  |
| C01PA09203C0 |  | CB-01 ; Partitions 1st face (Public Area) | 54d | 2011-04-04 A | 2011-11-20 | C01PA09201C0, C01PA21111C0 FF, C01PA23023C0 FF, C01PA23023C0 | 80% | 10.8d | 2011-04-24 | 2011-06-25 | 52.58d | 0d | PARTITIONS [736 m]; PARTITIONS [3320 h]; Cost |  |  | C01PA09203C0 | CB | C | 01 | PA | PT | 092 | 03 |  | BILL 4 | B04 | S1 | 2F | R00 | ACF06 | GP | 092 | 314 | 945 |  |  | 8 |  | 27609.96 | 55 | 27 | P1F |  | 0 | 0 | 0 | 0 | 70 |  |
| C01PA21117C0 |  | CB-01 ; 1st Fix, Inst of Sprinkler branch pipe (Public Area) | 200d | 2011-04-06 A | 2011-11-19 | C01PA09201C0, C01PA21111C0 | 90% | 20d | 2011-07-31 | 2012-03-31 | 149.38d | 121d | MECHANICAL [1009.2 h]; Cost [55153.8 AED] | 55,153.76 | 49,638.38 | C01PA21117C0 | CB | C | 01 | PA | ME | 211 | 17 | 1S | BILL 4 | B04 | S1 | 1F | R00 | ACF04 | MEP | 211 |  |  |  |  | 55 | 95 |  |  |  | M1F | 90 |  |  |  |  |  |  |
| C01PA09201C0 |  | CB-01 ; Metal Studs (Public Area) | 84d | 2011-04-19 A | 2011-10-18 | C01PA23001C0 SS+12d | 82% | 15.12d | 2011-04-10 | 2011-07-17 | 30.25d | 0d | PARTITIONS [4244 h]; PARTITIONS - Metal Studs [736 m]; Cost |  |  | C01PA09201C0 | CB | C | 01 | PA | PT | 092 | 01 |  | BILL 4 | B04 | S1 | 1F | R00 | ACF06 | GP | 092 | 313 | 944 |  |  | 45 |  | 42260.1 | 70 | 65 | PMS |  | 0 | 0 | 0 | 0 |  |  |
| C01PA23017C0 |  | CB-01 ; 1st Fix, Inst of CHW pipe (Public Area) | 120d | 2011-05-15 A | 2011-11-03 | C01PA21111C0 SS+10d, C01PA23001C0, C01S107807C0, C01S207808C0 | 75% | 30d | 2011-06-20 | 2011-11-14 | 52.58d | 0d | MECHANICAL [2395.2 h]; Cost [130782 AED] | 130,781.76 | 98,086.32 | C01PA23017C0 | CB | C | 01 | PA | ME | 230 | 17 | 1S | BILL 4 | B04 | S1 | 1F | R00 | ACF04 | MEP | 230 |  |  |  |  | 35 | 75 |  |  |  | M1F |  |  |  |  |  |  |  |
| C01PA23023C0 |  | CB-01 ; 1st Fix, Inst of Main Ducting (Public Area) | 200d | 2011-05-15 A | 2011-11-03 | C01PA23001C0, C01PA23017C0 SS+7d, C01S107807C0, C01S207808C0 | 85% | 30d | 2011-06-29 | 2012-02-28 | 52.58d | 0d | MECHANICAL [16992 h]; Cost [927678 AED] | 927,677.51 | 788,525.88 | C01PA23023C0 | CB | C | 01 | PA | ME | 230 | 23 | 1S | BILL 4 | B04 | S1 | 1F | R00 | ACF04 | MEP | 230 |  |  |  |  | 35 | 85 | 215256.81 |  |  | M1F |  |  |  |  |  |  |  |
| C01PA26009C0 |  | CB-01 ; 2nd Fix, Inst of Wall conduites (Public Area) | 60d | 2011-05-31 A | 2011-12-05 | C01PA09201C0 | 40% | 36d | 2011-05-31 | 2011-08-10 | 36.25d | 6d | ELECTRICAL [430.8 h]; Cost [29580.4 AED] | 29,580.43 | 11,832.17 | C01PA26009C0 | CB | C | 01 | PA | ME | 260 | 09 | 2n | BILL 4 | B04 | S1 | 2F | R00 | ACF07 | MEP | 260 |  |  |  |  |  | 45 |  |  |  |  |  |  |  |  |  |  |  |
| C01PA26053C0 |  | CB-01 ; 2nd Fix, Wiring / Cabling (Public Area) | 48d | 2011-06-02 A | 2012-01-08 | C01PA09203C0 | 20% | 38.4d | 2011-09-22 | 2011-11-21 | 134.18d | 105.8d | ELECTRICAL [216 h]; Cost [15494.5 AED] | 15,494.51 | 3,098.9 | C01PA26053C0 | CB | C | 01 | PA | ME | 260 | 53 | 2n | BILL 4 | B04 | S1 | 2F | R00 | ACF07 | MEP | 260 | 389 | 977 |  |  |  | 25 | 3598.69 |  |  |  |  |  |  |  |  |  |  |
| C01PA23015C0 |  | CB-01 ; 2nd Fix, Insulation of CHW pipe & Duct (Public Area) | 72d | 2011-07-10 A | 2011-12-13 | C01PA23009C0 SS, C01PA23017C0 SS, C01PA23023C0 SS | 60% | 28.8d | 2011-09-21 | 2011-12-20 | 130.57d | 102.2d | MECHANICAL [6742.8 h]; Cost [363863 AED] | 363,863.22 | 218,317.93 | C01PA23015C0 | CB | C | 01 | PA | ME | 230 | 15 | 2n | BILL 4 | B04 | S1 | 2F | R00 | ACF07 | MEP | 230 |  |  |  |  |  | 25 |  | 60 | 40 |  |  |  |  |  |  |  |  |
| C01PA22005C0 |  | CB-01 ; 1st Fix, Inst of Water supply pipe (ceiling) (Public Area) | 48d | 2011-08-10 A | 2011-11-23 | C01PA22019C0 SS+7d, C01PA23001C0, C01S107807C0, C01S207808C0 | 10% | 43.2d | 2011-07-31 | 2011-09-26 | 50.17d | 0d | PLUMBING [1682.4 h]; Cost [90924.8 AED] | 90,924.75 | 9,092.47 | C01PA22005C0 | CB | C | 01 | PA | ME | 220 | 05 | 1S | BILL 4 | B04 | S1 | 1F | R00 | ACF04 | MEP | 220 |  |  |  |  |  | 40 |  | 10 | 0 | M1F |  |  |  |  |  |  |  |
| C01PA22011C0 |  | CB-01 ; 2nd Fix, Drainage/Water pipe (wall) (Public Area) | 42d | 2011-08-10 A | 2011-12-06 | C01PA09201C0 | 10% | 37.8d | 2011-12-17 | 2012-02-05 | 34.45d | 4.2d | PLUMBING [1714.8 h]; Cost [92715.9 AED] | 92,715.95 | 9,271.6 | C01PA22011C0 | CB | C | 01 | PA | ME | 220 | 11 | 2n | BILL 4 | B04 | S1 | 2F | R00 | ACF07 | MEP | 220 |  |  |  |  |  | 25 |  | 10 | 0 |  |  |  |  |  |  |  |  |
| C01PA23008C0 |  | CB-01 ; 1st Fix, Inst of VCD's/FD's (Public Area) | 48d | 2011-08-10 A | 2011-11-23 | C01PA23023C0 SS | 10% | 43.2d | 2011-09-15 | 2011-11-14 | 110.17d | 81.8d | MECHANICAL [2648.4 h]; Cost [143058 AED] | 143,057.96 | 14,305.8 | C01PA23008C0 | CB | C | 01 | PA | ME | 230 | 08 | 1S | BILL 4 | B04 | S1 | 1F | R00 | ACF04 | MEP | 230 |  |  |  |  |  | 45 |  | 10 | 0 | M1F |  |  |  |  |  |  |  |
| C01PA23009C0 |  | CB-01 ; 2nd Fix, Inst of VAV'S CHW connection (Public Area) | 42d | 2011-08-10 A | 2011-12-21 | C01PA23017C0 | 15% | 35.7d | 2011-09-17 | 2011-11-05 | 123.67d | 0d | MECHANICAL [1419.6 h]; Cost [76659.7 AED] | 76,659.7 | 11,498.95 | C01PA23009C0 | CB | C | 01 | PA | ME | 230 | 09 | 2n | BILL 4 | B04 | S1 | 2F | R00 | ACF07 | MEP | 230 |  |  |  |  |  | 50 |  | 10 | 0 |  |  | 0 | 0 | 0 | 0 |  |  |
| C01PA27001C0 |  | CB-01 ; 1st Fix, Wiring/ Cabling work (Public Area) | 54d | 2011-08-10 A | 2011-12-24 | C01PA26001C0, C01PA26013C0, C01PA27010C0 | 30% | 37.8d | 2011-09-05 | 2011-11-10 | 121.58d | 93.2d | ELECTRICAL [216 h]; Cost [15494.5 AED] | 15,494.51 | 4,648.35 | C01PA27001C0 | CB | C | 01 | PA | ME | 270 | 01 | 1S | BILL 4 | B04 | S1 | 1F | R00 | ACF04 | MEP | 270 |  |  |  |  |  | 50 |  | 30 | 0 | M1F |  |  |  |  |  |  |  |
| C01PA40302C0 |  | CB-01 ; 2nd Fix, Pneumatic tube (Public Area) | 42d | 2011-10-18 | 2011-12-12 | C01PA09201C0 |  |  |  |  | 30.25d | 0d | MECHANICAL [2661.6 h]; Cost |  |  | C01E140302C0 | CB | C | 01 | PA | ME | 403 | 02 | 2n | BILL 4 | B04 | S1 | 2F | R00 | ACF07 | MEP | 403 |  |  |  |  |  | 25 |  |  |  |  |  |  |  |  |  |  |  |
| C01PA08103C0 |  | CB-01 ; Door Frames (Public Area) | 42d | 2011-11-22 | 2012-01-12 | C01PA09201C0, GNHE08101C0 FS+79d, C01LW08103C0 SS+3d |  |  |  |  | 69.38d | 41d | ASSORTED DOORS [296 h]; Cost |  |  | C01PA08103C0 | CB | C | 01 | PA | DO | 081 | 03 |  | BILL 4 | B04 | S1 | DF | R00 | ACF06 |  | 081 | 316 | 947 | 08 |  |  |  |  |  |  |  |  |  |  |  |  |  |  |
| C01PA01005C0 |  | CB-01 ; 2nd, Wall Inspection by Consultant (Public Area) | 6d | 2011-12-12 | 2011-12-19 | C01PA22011C0, C01PA26009C0, C01PA40302C0 |  |  |  |  | 30.25d | 1.88d | Labor General [0.6 h]; Cost |  |  | C01PA01005C0 | CB | C | 01 | PA | ME | 010 | 05 | 2n | BILL 4 | B04 | S1 | WI | R00 | ACF07 | MEP | 010 |  |  |  |  |  | 15 |  |  |  |  |  |  |  |  |  |  |  |
| C01PA09205C0 |  | CB-01 ; Partitions Closing (Public Area) | 60d | 2011-12-21 | 2012-03-01 | C01PA01005C0, C01PA08103C0 FF, C01PA09203C0, C01PA22005C0, C01PA22019C0, CAFCI09201R02 FS+79d, CAFOA09204C1 FF, C01PA23008C0 FF |  |  |  |  | 28.38d | 0d | PARTITIONS [736 m]; PARTITIONS [4250 h]; Cost |  |  | C01PA09205C0 | CB | C | 01 | PA | PT | 092 | 05 |  | BILL 4 | B04 | S1 | FF | R00 | ACF06 | GP | 092 | 315 | 946 |  |  |  |  |  |  |  | P2F |  |  |  |  |  |  |  |
| C01PA09901C0 |  | CB-01 ; Wall Prime & 1st coat (Public Area) | 36d | 2012-03-03 | 2012-04-12 | C01PA09205C0, C01CO04455C0 FF |  |  |  |  | 28.38d | 0d | WALL PAINT [359 h]; WALL PAINT [448 m2]; Cost |  |  | C01PA09901C0 | CB | C | 01 | PA | PA | 099 | 01 |  | BILL 4 | B04 | S1 | 01 | R00 | ACF06 |  | 099 | 328 | 956 |  |  |  |  |  |  |  |  |  |  |  |  |  |  |  |
| C01PA26005C0 |  | CB-01 ; 2nd Fix, Wiring for Power/Lighting/Emergency (Public Area) | 42d | 2012-03-03 | 2012-04-19 | C01PA09205C0 |  |  |  |  | 64.38d | 18d | ELECTRICAL [216 h]; Cost |  |  | C01PA26005C0 | CB | C | 01 | PA | ME | 260 | 05 | 2n | BILL 4 | B04 | S1 | 2F | R00 | ACF07 | MEP | 260 |  |  |  |  |  | 25 |  |  |  |  |  |  |  |  |  |  |  |
| C01PA26007C0 |  | CB-01 ; 2nd Fix, Cable Pulling (Public Area) | 42d | 2012-03-03 | 2012-04-19 | C01PA09205C0 |  |  |  |  | 118.38d | 90d | ELECTRICAL [6616.8 h]; Cost |  |  | C01PA26007C0 | CB | C | 01 | PA | ME | 260 | 07 | 2n | BILL 4 | B04 | S1 | 2F | R00 | ACF07 | MEP | 260 |  |  |  |  |  | 25 |  |  |  |  |  |  |  |  |  |  |  |
| C01PA26011C0 |  | CB-01 ; 2nd Fix, Inst of Equipment (DB) (Public Area) | 42d | 2012-03-03 | 2012-04-19 | C01PA09205C0 |  |  |  |  | 46.38d | 18d | ELECTRICAL [1266 h]; Cost |  |  | C01PA26011C0 | CB | C | 01 | PA | ME | 260 | 11 | 2n | BILL 4 | B04 | S1 | 2F | R00 | ACF04 | MEP | 260 |  |  |  |  |  |  |  |  |  |  |  |  |  |  |  |  | E |
| C01PA27020C0 |  | CB-01 ; 2nd Fix, Inst of ELV Equipment (Panels) (Public Area) | 42d | 2012-03-03 | 2012-04-19 | C01PA09205C0 |  |  |  |  | 82.38d | 54d | ELECTRICAL [384 h]; Cost |  |  | C01PA27020C0 | CB | C | 01 | PA | ME | 270 | 20 | 2n | BILL 4 | B04 | S1 | 2F | R00 | ACF04 | MEP | 270 |  |  |  |  |  |  |  |  |  |  |  |  |  |  |  |  | E |
| C01PA05501C0 |  | CB-01 ; Handrails & balustrade (Public Area) | 36d | 2012-04-14 | 2012-05-24 | C01PA09901C0, CAFT1405509C0, CAFT1505509C0, CAFT1105509C0, CAFT1205509C0 |  |  |  |  | 52.38d | 24d | SECONDARY STEEL [388 h]; Cost |  |  | C01PA05501C0 | CB | C | 01 | PA | SW | 055 | 01 |  | BILL 4 | B04 | S1 | 01 | R00 | ACF03 |  | a |  |  |  |  |  |  |  |  |  |  |  |  |  |  |  |  |  |
| C01PA09501C0 |  | CB-01 ; Ceiling Grid and ServiceTile (Public Area) | 24d | 2012-04-14 | 2012-05-10 | C01PA09205C0 SS+15d, C01PA21117C0, C01PA23008C0, C01PA23009C0, C01PA23015C0, C01PA27001C0, CAFCI22001R02 FS+72d, C01PA26011C0 FF, C01PA26053C0 FF, C01PA09901C0 |  |  |  |  | 28.38d | 0d | CEILING GRID FOR GYPSUM [3379.78 h]; CEILING GRID FOR GYPSUM [289.32 m2]; Cost |  |  | C01PA09501C0 | CB | C | 01 | PA | CE | 095 | 01 |  | BILL 4 | B04 | S1 | 01 | R00 | ACF06 |  | 095 | 323 | 952 |  |  |  |  |  |  |  |  |  |  |  |  |  |  |  |
| C01PA09601C0 |  | CB-01 ; Flooring (Rubber & etc) (Public Area) | 36d | 2012-05-12 | 2012-06-23 | C01PA09901C0, C01PA09501C0, C01PA27020C0 FF, C01PA05501C0 FF |  |  |  |  | 28.38d | 0d | RUBBER FLOOR [408 h]; RUBBER FLOOR [1003 m2]; Cost |  |  | C01PA09601C0 | CB | C | 01 | PA | FF | 096 | 01 |  | BILL 4 | B04 | S1 | 03 | R00 | ACF06 |  | RF | 326 | 955 |  | R3 |  |  |  |  |  |  |  |  |  |  |  |  |  |
| C01PA09602C0 |  | CB-01 ; Flooring (Stone) (Public Area) | 36d | 2012-05-12 | 2012-06-23 | C01PA09901C0, C01PA09501C0, A10410 |  |  |  |  | 28.38d | 0d | STONE FLOOR [105 m2]; STONE FLOOR [96 h]; Cost |  |  | C01PA09601C0 | CB | C | 01 | PA | FF | 096 | 01 |  | BILL 4 | B04 | S1 | 09 | R00 | ACF06 |  | ST | 326 | 955 |  | R3 |  |  |  |  |  |  |  |  |  |  |  |  |  |
| C01PA09903C0 |  | CB-01 ; Wall Final Paint (Public Area) | 36d | 2012-05-12 | 2012-06-23 | C01PA09901C0, C01PA09905C0 |  |  |  |  | 110.12d | 72d | WALL PAINT [194 h]; WALL PAINT [241 m2]; Cost |  |  | C01PA09903C0 | CB | C | 01 | PA | PA | 099 | 03 |  | BILL 4 | B04 | S1 | 02 | R00 | ACF06 |  | 099 | 329 | 957 |  |  |  |  |  |  |  |  |  |  |  |  |  |  |  |
| C01PA09905C0 |  | CB-01 ; Ceiling Prime & 1st coat (Public Area) | 0d | 2012-05-12 | 2012-05-12 | C01PA09501C0 |  |  |  |  | 110.12d | 0d | Cost |  |  | C01PA09905C0 | CB | C | 01 | PA | PA | 099 | 05 |  | BILL 4 | B04 | S1 | 01 | R00 | ACF06 |  | 099 | 330 | 958 |  |  |  |  |  |  |  |  |  |  |  |  |  |  |  |
| C01PA21115C0 |  | CB-01 ; 2nd Fix, Inst of Sprinkler droppers (Public Area) | 30d | 2012-05-12 | 2012-06-14 | C01PA09501C0 |  |  |  |  | 39.38d | 0d | MECHANICAL [1404 h]; Cost |  |  | C01PA21115C0 | CB | C | 01 | PA | ME | 211 | 15 | 2n | BILL 4 | B04 | S1 | 2F | R00 | ACF07 | MEP | 211 |  |  |  |  |  |  |  |  |  |  |  |  |  |  |  |  |  |
| C01PA23021C0 |  | CB-01 ; 2nd Fix, Inst of Flexible Duct & Plenum boxes (Public Area) | 42d | 2012-05-12 | 2012-06-30 | C01PA09205C0, C01PA09501C0 |  |  |  |  | 40.38d | 0d | MECHANICAL [903.6 h]; Cost |  |  | C01PA23021C0 | CB | C | 01 | PA | ME | 230 | 21 | 2n | BILL 4 | B04 | S1 | 2F | R00 | ACF07 | MEP | 230 |  |  |  |  |  |  |  |  |  |  |  |  |  |  |  |  |  |
| C01PA26015C0 |  | CB-01 ; Final Fix, Termination & Gladding of Cables (Public Area) | 48d | 2012-05-12 | 2012-07-07 | C01PA26005C0, C01PA09501C0 |  |  |  |  | 46.38d | 7d | ELECTRICAL [826.8 h]; Cost |  |  | C01PA26015C0 | CB | C | 01 | PA | ME | 260 | 15 | FF | BILL 4 | B04 | S1 | FF | R00 | ACF07 | MEP | 260 |  |  |  |  |  |  |  |  |  |  |  |  |  |  |  |  |  |
| C01PA26017C0 |  | CB-01 ; Final Fix, Inst of Ceiling rose (Public Area) | 48d | 2012-05-12 | 2012-07-07 | C01PA09501C0 |  |  |  |  | 39.38d | 0d | ELECTRICAL [123.6 h]; Cost |  |  | C01PA26017C0 | CB | C | 01 | PA | ME | 260 | 17 | FF | BILL 4 | B04 | S1 | FF | R00 | ACF07 | MEP | 260 |  |  |  |  |  |  |  |  |  |  |  |  |  |  |  |  |  |
| C01PA27002C0 |  | CB-01 ; 2nd Fix, Wiring Droppers (Public Area) | 42d | 2012-05-12 | 2012-06-30 | C01PA09501C0 |  |  |  |  | 39.38d | 0d | ELECTRICAL [216 h]; Cost |  |  | C01PA27002C0 | CB | C | 01 | PA | ME | 270 | 02 | 2n | BILL 4 | B04 | S1 | 2F | R00 | ACF07 | MEP | 270 |  |  |  |  |  |  |  |  |  |  |  |  |  |  |  |  |  |
| C01PA40303C0 |  | CB-01 ; Final Fix, Pneumatic Station (Public Area) | 48d | 2012-05-12 | 2012-07-07 | C01PA09501C0 |  |  |  |  | 46.38d | 7d | MECHANICAL [2661.6 h]; Cost |  |  | C01E140303C0 | CB | C | 01 | PA | ME | 403 | 03 | FF | BILL 4 | B04 | S1 | FF | R00 | ACF07 | MEP | 403 |  |  |  |  |  |  |  |  |  |  |  |  |  |  |  |  |  |
| C01PA23019C0 |  | CB-01 ; Final Fix, Inst of Grilles & Diffusers (Public Area) | 48d | 2012-05-19 | 2012-07-14 | C01PA09501C0, C01PA23021C0 SS+6d |  |  |  |  | 40.38d | 1d | MECHANICAL [1970.4 h]; Cost |  |  | C01PA23019C0 | CB | C | 01 | PA | ME | 230 | 19 | FF | BILL 4 | B04 | S1 | FF | R00 | ACF07 | MEP | 230 |  |  |  |  |  |  |  |  |  |  |  |  |  |  |  |  |  |
| C01PA21113C0 |  | CB-01 ; Final Fix, Inst of Sprinklers head/ Extinguisher (Public Area) | 48d | 2012-05-20 | 2012-07-15 | C01PA09501C0, C01PA21115C0 SS+7d |  |  |  |  | 39.38d | 0d | MECHANICAL [278.4 h]; Cost |  |  | C01PA21113C0 | CB | C | 01 | PA | ME | 211 | 13 | FF | BILL 4 | B04 | S1 | FF | R00 | ACF07 | MEP | 211 |  |  |  |  |  |  |  |  |  |  |  |  |  |  |  |  |  |
| C01PA26003C0 |  | CB-01 ; Final Fix, Inst of Light fittings (Public Area) | 48d | 2012-05-20 | 2012-07-15 | C01PA09501C0, C01PA26017C0 SS+7d |  |  |  |  | 39.38d | 0d | ELECTRICAL [7983.6 h]; Cost |  |  | C01PA26003C0 | CB | C | 01 | PA | ME | 260 | 03 | FF | BILL 4 | B04 | S1 | FF | R00 | ACF07 | MEP | 260 |  |  |  |  |  |  |  |  |  |  |  |  |  |  |  |  |  |
| C01PA27030C0 |  | CB-01 ; Final Fix, Inst of ELV device (Detector/Speaker) (Public Area) | 48d | 2012-05-20 | 2012-07-15 | C01PA09501C0, C01PA27002C0 SS+7d |  |  |  |  | 39.38d | 0d | ELECTRICAL [2054.4 h]; Cost |  |  | C01PA27030C0 | CB | C | 01 | PA | ME | 270 | 30 | FF | BILL 4 | B04 | S1 | FF | R00 | ACF07 | MEP | 270 |  |  |  |  |  |  |  |  |  |  |  |  |  |  |  |  |  |
| C01PA08107C0 |  | CB-01 ; Doors (Public Area) | 36d | 2012-06-24 | 2012-08-04 | C01PA08103C0, C01PA09901C0, C01PA09602C0, C01PA09601C0 |  |  |  |  | 56.12d | 0d | ASSORTED DOORS [1010 h]; ASSORTED DOORS [101 no]; Cost |  |  | C01PA08107C0 | CB | C | 01 | PA | DO | 081 | 07 |  | BILL 4 | B04 | S1 | DR | R00 | ACF06 |  | 081 | 317 | 948 | 08 |  |  |  |  |  |  |  |  |  |  |  |  |  |  |
| C01PA09701C0 |  | CB-01 ; Wall finishes (ST, WD, WC) (Public Area) | 36d | 2012-06-24 | 2012-08-04 | C01PA27020C0 FF, CAFCI22001R02 FS+170d, C01PA09601C0, C01PA09602C0 |  |  |  |  | 28.38d | 0d | ASSORTED WALL FINISH [376 h]; ASSORTED WALL FINISH [431 m2]; Cost |  |  | C01PA09701C0 | CB | C | 01 | PA | WF | 097 | 01 |  | BILL 4 | B04 | S1 | 01 | R00 | ACF06 |  | 097 | 105 | 1002 |  |  |  |  |  |  |  |  |  |  |  |  |  |  |  |
| C01PA01006C0 |  | CB-01 ; 2nd, Ceiling Inspection by Consultants (Public Area) | 6d | 2012-07-16 | 2012-07-22 | C01PA21115C0, C01PA23009C0, C01PA23015C0, C01PA27002C0, C01PA09501C0, C01PA21113C0, C01PA23019C0, C01PA26003C0, C01PA26017C0, C01PA27030C0, C01PA40303C0, C01PA26015C0 |  |  |  |  | 39.38d | 11d | Labor General [1.2 h]; Cost |  |  | C01PA01006C0 | CB | C | 01 | PA | ME | 010 | 06 | 2n | BILL 4 | B04 | S1 | CI | R00 | ACF07 | MEP | 010 |  |  |  |  |  |  |  |  |  |  |  |  |  |  |  |  |  |
| C01PA08709C0 |  | CB-01 ; Ironmongery (Public Area) | 18d | 2012-08-05 | 2012-08-27 | C01PA08107C0 |  |  |  |  | 56.12d | 27.75d | IRONMONGERY [640 h]; IRONMONGERY [64 no]; Cost |  |  | C01PA08709C0 | CB | C | 01 | PA | DO | 087 | 09 |  | BILL 4 | B04 | S1 | IM | R00 | ACF06 |  | 087 | 322 | 951 | 08 |  |  |  |  |  |  |  |  |  |  |  |  |  |  |
| C01PA09503C0 |  | CB-01 ; Ceiling closure - ACT/Gypsum (Public Area) | 24d | 2012-08-05 | 2012-09-03 | C01PA01006C0, C01PA21115C0, C01PA26005C0, C01PA27002C0, CAFOA09503C1 FF, C01PA09701C0, C01PA23021C0, C01PA26007C0 |  |  |  |  | 28.38d | 0d | ASSORTED CEILING FINISH [645.75 h]; CEILING GYPSUM [94.92 h]; ASSORTED CEILING FINISH [1050 m2]; CEILING GYPSUM [264 m2]; Cost |  |  | C01PA09503C0 | CB | C | 01 | PA | CE | 095 | 03 |  | BILL 4 | B04 | S1 | 02 | R00 | ACF06 |  | 095 | 324 | 953 |  |  |  |  |  |  |  |  |  |  |  |  |  |  |  |
| C01PA11001C0 |  | CB-01 ; Wall Protection (WP, CG, WG, FCG) (Public Area) | 24d | 2012-08-05 | 2012-09-03 | C01PA09701C0, C01PA09903C0 SS |  |  |  |  | 50.12d | 21.75d | FF&E [16 h]; Cost |  |  | C01PA11001C0 | CB | C | 01 | PA | WF | 110 | 01 |  | BILL 4 | B04 | S1 | 03 | R00 | ACF08 |  | b | 326 | 1001 |  |  |  |  |  |  |  |  |  |  |  |  |  |  |  |
| C01PA11009C0 |  | CB-01 ; Signage (Public Area) | 12.75d | 2012-08-05 | 2012-08-21 | C01PA09701C0 |  |  |  |  | 61.38d | 33d | SIGNAGES [353 h]; SIGNAGES [353.28 no]; Cost |  |  | C01PA11009C0 | CB | C | 01 | PA | SA | 110 | 09 |  | BILL 4 | B04 | S1 | 09 | R00 | ACF08 |  | c | 322 | 951 | 08 |  |  |  |  |  |  |  |  |  |  |  |  |  |  |
| C01PA09907C0 |  | CB-01 ; Ceiling Final paint (Public Area) | 0d | 2012-09-04 | 2012-09-04 | C01PA09601C0, C01PA09905C0, C01PA09602C0, C01PA09503C0 |  |  |  |  | 50.12d | 21.75d | Cost |  |  | C01PA09907C0 | CB | C | 01 | PA | PA | 099 | 07 |  | BILL 4 | B04 | S1 | 02 | R00 | ACF06 |  | 099 | 331 | 959 |  |  |  |  |  |  |  |  |  |  |  |  |  |  |  |
| C01PA26019C0 |  | CB-01 ; Final Fix, Inst of Switch/Sockets (Public Area) | 12d | 2012-09-04 | 2012-09-17 | C01PA09901C0, C01PA09503C0 |  |  |  |  | 28.38d | 0d | ELECTRICAL [427.2 h]; Cost |  |  | C01PA26019C0 | CB | C | 01 | PA | ME | 260 | 19 | FF | BILL 4 | B04 | S1 | FF | R00 | ACF07 | MEP | 260 |  |  |  |  |  |  |  |  |  |  |  |  |  |  |  |  |  |

| ID | WBS | Activity | Duration | Start | Finish | Predecessors | Complete | Remaining | Planned start | Planned finish | Total float | Free float | Resources | Cost | Actual cost | change id | CCAD BUILDING(SET) | CCAD PHASE(SET) | CCAD FLOOR(SET) | CCAD ZONE(SET) | CCAD WORK(SET) | CCAD SECTION(SET) | CCAD SERIAL No.(SET) | CCAD CBS(SET) | CCAD BILL(SET) | CCAD HANDOVER(SET) | CCAD TAG(SET) | CCAD REV(SET) | CCADACF (SET) | CCAD SSCF | RENZ % COMPLETE | CCAD SUB ZONE MEP(SET) | CCAD CSA | Act Selector % | PERCENT COMPLETE | July2011 Target% Complete | P_811 | P_711 | Claimed This Month | user_number8 | user_integer1 | user_integer2 | user_number7 | Change Order # | NEW ACTIVITY ID | U% | R3 Partitions | CCAD DIVISION(SET) | CCAD MEQ |
| --- | --- | --- | --- | --- | --- | --- | --- | --- | --- | --- | --- | --- | --- | --- | --- | --- | --- | --- | --- | --- | --- | --- | --- | --- | --- | --- | --- | --- | --- | --- | --- | --- | --- | --- | --- | --- | --- | --- | --- | --- | --- | --- | --- | --- | --- | --- | --- | --- | --- |
|  | 10 | **Precommissioning Tesing & snagging (Public Area)** |  | 2012-09-18 | 2012-10-29 |  |  |  |  |  |  |  |  |  |  |  |  |  |  |  |  |  |  |  |  |  |  |  |  |  |  |  |  |  |  |  |  |  |  |  |  |  |  |  |  |  |  |  |  |
| CGLTS01808C0 |  | CB-01 ; MEP de-snag, FIREM sign-off | 9.75d | 2012-09-18 | 2012-09-29 | C01PA26015C0, C01PA40303C0, C01PA21113C0, C01PA23019C0, C01PA26017C0, C01PA26003C0, C01PA27030C0, C01PA26019C0 |  |  |  |  | 28.38d | 0d | TESTING & COMMISSIONING [1020 h]; Cost |  |  | CGLTS01801C0 | CB | C | 01 | TS | SC | 018 | 01 | BILL 4 | B04 | S1 | 01 | R00 | ACF07 | 018 |  |  |  |  |  |  |  |  |  |  |  |  |  |  |  |  |  |  |  |
| CGLTS01815C0 |  | CB-01 ; Touch-up & Clean / JV inspection /CIR /De-snag | 17d | 2012-09-29 | 2012-10-18 | C01PA08709C0, C01PA09601C0, C01PA09701C0, C01PA09903C0, C01PA09907C0, C01PA11001C0, C01PA11009C0, CGLTS01808C0, C01PA05501C0, C01PA09602C0, C01PA09503C0 |  |  |  |  | 28.38d | 0d | TESTING & COMMISSIONING [149 h]; Cost |  |  | CGLTS01802C0 | CB | C | 01 | TS | SC | 018 | 02 | BILL 4 | B04 | S1 | 02 | R00 | ACF07 | 018 |  |  |  |  |  |  |  |  |  |  |  |  |  |  |  |  |  |  |  |
| CGLTS01822C0 |  | CB-01 ; Consultant's final de-snag inspection | 6.88d | 2012-10-18 | 2012-10-29 | CGLTS01815C0 |  |  |  |  | 28.38d | 21.05d | Labor General [1 h]; Cost |  |  | CGLTS01803C0 | CB | C | 01 | TS | SC | 018 | 03 | BILL 4 | B04 | S1 | 03 | R00 | ACF07 | 018 |  |  |  |  |  |  |  |  |  |  |  |  |  |  |  |  |  |  |  |
|  | 05 | **Laser, Wave, Intralase** |  | 2011-03-24 | 2012-11-18 |  |  |  |  |  |  |  |  |  |  |  |  |  |  |  |  |  |  |  |  |  |  |  |  |  |  |  |  |  |  |  |  |  |  |  |  |  |  |  |  |  |  |  |  |
| C01LW23001C0 |  | CB-01 ; 1st Fix, Inst. of Supports for MEP (Laser,Wave) | 27d | 2011-03-24 A | 2011-05-30 A | C01S207808C0, C02S203335C0 | 100% |  | 2011-03-17 | 2011-04-18 |  |  | MECHANICAL [1024.8 h]; Cost [57766.2 AED] | 57,766.25 | 57,766.25 | C01LW23001C0 | CB | C | 01 | LW | ME | 230 | 01 | BILL 4 | B04 | S1 | 1F | R00 | ACF04 | 230 | 100 | 1S | MEP | M1F |  |  |  |  |  |  |  |  |  |  |  |  |  |  |  |
| C01LW21111C0 |  | CB-01 ; 1st Fix, Inst of Sprinkler main pipe (Laser,Wave) | 200d | 2011-03-26 A | 2011-10-29 | C01LW23001C0, C01LW23017C0 SS+10d, C01S203335C0 | 90% | 20d | 2011-04-30 | 2011-12-28 | 31.88d | 0d | MECHANICAL [686.4 h]; Cost [37438.4 AED] | 37,438.4 | 33,694.56 | C01LW21111C0 | CB | C | 01 | LW | ME | 211 | 11 | BILL 4 | B04 | S1 | 1F | R00 | ACF04 | 211 | 90 | 1S | MEP | M1F | 90 | 95 |  |  |  |  |  |  |  |  |  |  |  |  |  |
| C01LW22019C0 |  | CB-01 ; 1st Fix, Inst of Drainage pipe (ceiling) (Laser,Wave) | 200d | 2011-03-26 A | 2011-10-10 | C01LW21111C0 SS+12d, C01LW23001C0, C01S203335C0 | 98% | 4d | 2011-05-14 | 2012-01-12 | 31.88d | 0d | PLUMBING [1714.8 h]; Cost [92715.9 AED] | 92,715.95 | 90,861.63 | C01LW22019C0 | CB | C | 01 | LW | ME | 220 | 19 | BILL 4 | B04 | S1 | 1F | R00 | ACF04 | 220 | 90 | 1S | MEP | M1F |  | 95 | 98 | 96 |  |  |  |  |  |  |  |  |  |  |  |
| C01LW26013C0 |  | CB-01 ; 1st Fix, Inst of Cable Tray (Laser,Wave) | 150d | 2011-03-28 A | 2011-10-23 | C01LW23001C0, C01LW26001C0 SS+10d, C01S203335C0 | 90% | 15d | 2011-07-04 | 2012-01-04 | 31.88d | 0d | ELECTRICAL [948 h]; Cost [17044 AED] | 17,043.96 | 15,339.56 | C01LW26013C0 | CB | C | 01 | LW | ME | 260 | 13 | BILL 4 | B04 | S1 | 1F | R00 | ACF04 | 260 | 50 | 1S | MEP | M1F |  | 85 | 90 | 80 | 5953.2 |  |  |  |  |  |  |  |  |  |  |
| C01LW27010C0 |  | CB-01 ; 1st Fix, Inst of Trunking for ELV system (Laser,Wave) | 75d | 2011-03-30 A | 2011-11-13 | C01LW23001C0, C01LW26013C0 SS+6d, C01S203335C0 | 60% | 30d | 2011-07-11 | 2011-10-09 | 31.88d | 0d | ELECTRICAL [457.2 h]; Cost [24667.9 AED] | 24,667.88 | 14,800.73 | C01LW27010C0 | CB | C | 01 | LW | ME | 270 | 10 | BILL 4 | B04 | S1 | 1F | R00 | ACF04 | 270 | 10 | 1S | MEP | M1F |  | 65 |  |  | 14325.5 |  |  |  |  |  |  |  |  |  |  |
| C01LW09203C0 |  | CB-01 ; Partitions 1st face (Laser,Wave) | 54d | 2011-04-11 A | 2011-10-30 | C01LW09201C0 | 80% | 10.8d | 2011-05-22 | 2011-07-24 | 58.08d | 46.08d | PARTITIONS [32 m]; PARTITIONS [161 h]; Cost |  |  | C01LW09203C0 | CB | C | 01 | LW | PT | 092 | 03 | BILL 4 | B04 | S1 | 2F | R00 | ACF06 | 092 | 8 |  | GP | P1F |  |  | 55 | 27 | 1356.53 | 0 | 0 | 0 | 0 | 314 | 945 | 70 |  |  |  |
| C01LW21117C0 |  | CB-01 ; 1st Fix, Inst of Sprinkler branch pipe (Laser,Wave) | 150d | 2011-04-12 A | 2011-11-28 | C01LW09201C0, C01LW21111C0, C01LW05503C0 FF+18d | 85% | 22.5d | 2011-06-21 | 2011-12-22 | 37.38d | 25.38d | MECHANICAL [1009.2 h]; Cost [55153.8 AED] | 55,153.76 | 46,880.7 | C01LW21117C0 | CB | C | 01 | LW | ME | 211 | 17 | BILL 4 | B04 | S1 | 1F | R00 | ACF04 | 211 | 70 | 1S | MEP | M1F |  | 85 |  |  |  |  |  |  |  |  |  |  |  |  |  |
| C01LW09201C0 |  | CB-01 ; Metal Studs (Laser,Wave) | 84d | 2011-04-19 A | 2011-10-18 | C01LW23001C0 | 82% | 15.12d | 2011-05-08 | 2011-08-14 | 20.88d | 0d | PARTITIONS [202 h]; PARTITIONS - Metal Studs [32 m]; Cost |  |  | C01LW09201C0 | CB | C | 01 | LW | PT | 092 | 01 | BILL 4 | B04 | S1 | 1F | R00 | ACF06 | 092 | 45 |  | GP | PMS |  |  | 70 | 65 | 692.1 | 0 | 0 | 0 | 0 | 313 | 944 |  | R3 |  |  |
| C01LW23017C0 |  | CB-01 ; 1st Fix, Inst of CHW pipe (Laser,Wave) | 90d | 2011-05-04 A | 2011-11-14 | C01LW23001C0, C01S203335C0, C01LW05503C0 FF+18d | 65% | 31.5d | 2011-06-04 | 2011-09-20 | 31.88d | 0d | MECHANICAL [2395.2 h]; Cost [130782 AED] | 130,781.76 | 85,008.14 | C01LW23017C0 | CB | C | 01 | LW | ME | 230 | 17 | BILL 4 | B04 | S1 | 1F | R00 | ACF04 | 230 | 35 | 1S | MEP | M1F |  | 65 |  |  |  |  |  |  |  |  |  |  |  |  |  |
| C01LW26001C0 |  | CB-01 ; 1st Fix, Inst of Trunking/Conduiting (Laser,Wave) | 150d | 2011-05-10 A | 2011-10-23 | C01LW23001C0, C01LW23023C0 SS+12d, C01S203335C0 | 90% | 15d | 2011-06-21 | 2011-12-22 | 31.88d | 0d | ELECTRICAL [430.8 h]; Cost [29580.4 AED] | 29,580.43 | 26,622.38 | C01LW26001C0 | CB | C | 01 | LW | ME | 260 | 01 | BILL 4 | B04 | S1 | 1F | R00 | ACF04 | 260 | 45 | 1S | MEP | M1F |  | 85 | 90 | 45 |  |  |  |  |  |  |  |  |  |  |  |
| C01LW22011C0 |  | CB-01 ; 2nd Fix, Drainage/Water pipe (wall) (Laser,Wave) | 60d | 2011-05-15 A | 2011-12-21 | C01LW09201C0, CAFCI09201R20 FS+72d | 40% | 36d | 2011-06-11 | 2011-08-21 | 12d | 0d | PLUMBING [1714.8 h]; Cost [92715.9 AED] | 92,715.95 | 37,086.38 | C01LW22011C0 | CB | C | 01 | LW | ME | 220 | 11 | BILL 4 | B04 | S1 | 2F | R00 | ACF07 | 220 | 40 | 2n | MEP |  |  | 65 |  |  |  |  |  |  |  |  |  |  |  |  |  |
| C01LW23023C0 |  | CB-01 ; 1st Fix, Inst of Main Ducting (Laser,Wave) | 200d | 2011-05-15 A | 2011-11-13 | C01LW22005C0 SS+14d, C01LW23001C0, C01S203335C0 | 85% | 30d | 2011-07-03 | 2012-03-03 | 31.88d | 0d | MECHANICAL [16992 h]; Cost [927678 AED] | 927,677.51 | 788,525.88 | C01LW23023C0 | CB | C | 01 | LW | ME | 230 | 23 | BILL 4 | B04 | S1 | 1F | R00 | ACF04 | 230 | 35 | 1S | MEP | M1F |  | 85 |  |  | 215256.81 |  |  |  |  |  |  |  |  |  |  |
| C01LW22005C0 |  | CB-01 ; 1st Fix, Inst of Water supply pipe (ceiling) (Laser,Wave) | 60d | 2011-05-16 A | 2011-11-23 | C01LW22019C0 SS+7d, C01LW23001C0, C01S203335C0 | 35% | 39d | 2011-06-15 | 2011-08-25 | 31.88d | 0d | PLUMBING [1682.4 h]; Cost [90924.8 AED] | 90,924.75 | 31,823.66 | C01LW22005C0 | CB | C | 01 | LW | ME | 220 | 05 | BILL 4 | B04 | S1 | 1F | R00 | ACF04 | 220 | 35 | 1S | MEP | M1F |  | 60 |  |  |  |  |  |  |  |  |  |  |  |  |  |
| C01LW23015C0 |  | CB-01 ; 2nd Fix, Insulation of CHW pipe & Duct (Laser,Wave) | 72d | 2011-07-10 A | 2011-12-20 | C01LW23009C0 SS, C01LW23017C0 SS, C01LW23023C0 SS | 60% | 28.8d | 2011-09-10 | 2011-12-08 | 79.58d | 67.58d | MECHANICAL [6742.8 h]; Cost [363863 AED] | 363,863.22 | 218,317.93 | C01LW23015C0 | CB | C | 01 | LW | ME | 230 | 15 | BILL 4 | B04 | S1 | 2F | R00 | ACF07 | 230 |  | 2n | MEP |  |  | 25 | 60 | 40 |  |  |  |  |  |  |  |  |  |  |  |
| C01LW22007C0 |  | CB-01 ; 1st Fix, Inst of Medical Gas pipe (Laser,Wave) | 48d | 2011-08-10 A | 2011-11-29 | C01LW23001C0, C01LW27010C0 SS+7d, C01S203335C0 | 10% | 43.2d | 2011-07-31 | 2011-09-26 | 31.88d | 11d | PLUMBING [504 h]; Cost [26046.8 AED] | 26,046.85 | 2,604.69 | C01LW22007C0 | CB | C | 01 | LW | ME | 220 | 07 | BILL 4 | B04 | S1 | 1F | R00 | ACF04 | 220 |  | 1S | MEP | M1F |  | 25 | 10 | 0 |  |  |  |  |  |  |  |  |  |  |  |
| C01LW23008C0 |  | CB-01 ; 1st Fix, Inst of VCD's/FD's (Laser,Wave) | 48d | 2011-08-10 A | 2011-11-29 | C01LW23023C0 SS, C01LW05503C0 FF+18d | 10% | 43.2d | 2011-09-08 | 2011-11-03 | 96.68d | 84.68d | MECHANICAL [2648.4 h]; Cost [143058 AED] | 143,057.96 | 14,305.8 | C01LW23008C0 | CB | C | 01 | LW | ME | 230 | 08 | BILL 4 | B04 | S1 | 1F | R00 | ACF04 | 230 |  | 1S | MEP | M1F |  | 35 | 10 | 0 |  |  |  |  |  |  |  |  |  |  |  |
| C01LW23009C0 |  | CB-01 ; 2nd Fix, Inst of VAV'S CHW connection (Laser,Wave) | 42d | 2011-08-10 A | 2011-12-28 | C01LW23017C0 | 15% | 35.7d | 2011-09-05 | 2011-10-24 | 79.58d | 0d | MECHANICAL [1419.6 h]; Cost [76659.7 AED] | 76,659.7 | 11,498.95 | C01LW23009C0 | CB | C | 01 | LW | ME | 230 | 09 | BILL 4 | B04 | S1 | 2F | R00 | ACF07 | 230 |  | 2n | MEP |  |  | 25 | 10 | 0 |  | 0 | 0 | 0 | 0 |  |  |  |  |  |  |
| C01LW26009C0 |  | CB-01 ; 2nd Fix, Inst of Wall conduites (Laser,Wave) | 48d | 2011-08-10 A | 2011-12-07 | C01LW09201C0 | 20% | 38.4d | 2011-11-10 | 2012-01-09 | 24.48d | 12.48d | ELECTRICAL [430.8 h]; Cost [29580.4 AED] | 29,580.43 | 5,916.09 | C01LW26009C0 | CB | C | 01 | LW | ME | 260 | 09 | BILL 4 | B04 | S1 | 2F | R00 | ACF07 | 260 |  | 2n | MEP |  |  | 25 | 20 | 0 |  |  |  |  |  |  |  |  |  |  |  |
| C01LW27001C0 |  | CB-01 ; 1st Fix, Wiring/ Cabling work (Laser,Wave) | 54d | 2011-08-10 A | 2011-12-28 | C01LW26001C0, C01LW26013C0, C01LW27010C0 | 30% | 37.8d | 2011-09-11 | 2011-11-16 | 108.08d | 96.08d | ELECTRICAL [216 h]; Cost [15494.5 AED] | 15,494.51 | 4,648.35 | C01LW27001C0 | CB | C | 01 | LW | ME | 270 | 01 | BILL 4 | B04 | S1 | 1F | R00 | ACF04 | 270 |  | 1S | MEP | M1F |  | 25 | 30 | 0 |  |  |  |  |  |  |  |  |  |  |  |
| C01LW05503C0 |  | CB-01 ; Ceiling Support for medical equipment (Laser,Wave) | 5d | 2011-09-05 A | 2011-10-20 | C01LW09201C0 | 50% | 2.5d | 2011-10-29 | 2011-11-03 | 31.88d | 0d | SECONDARY STEEL [97 h]; Cost |  |  | C01LW05503C0 | CB | C | 01 | LW | SW | 055 | 03 | BILL 4 | B04 | S1 | 03 | R00 | ACF03 | b |  |  |  |  |  |  |  |  |  |  |  |  |  | 335 | 962 |  |  |  |  |
| C01LW05511C0 |  | CB-01 ; Wall reinforcement for MEP/Medical (Laser,Wave) | 24.12d | 2011-10-18 | 2011-11-19 | C01LW09201C0 |  |  |  |  | 44.75d | 32.75d | SECONDARY STEEL [35 h]; Cost |  |  | C01LW05511C0 | CB | C | 01 | LW | SW | 055 | 11 | BILL 4 | B04 | S1 | 03 | R00 | ACF03 | b |  |  |  |  |  |  |  |  |  |  |  |  |  |  |  |  |  |  |  |
| C01LW22015C0 |  | CB-01 ; 2nd Fix, Medical Gas pipe (Laser,Wave) | 42d | 2011-10-18 | 2011-12-12 | C01LW09201C0, C01LW22007C0 SS |  |  |  |  | 20.88d | 8.88d | PLUMBING [504 h]; Cost |  |  | C01LW22015C0 | CB | C | 01 | LW | ME | 220 | 15 | BILL 4 | B04 | S1 | 2F | R00 | ACF07 | 220 |  | 2n | MEP |  |  | 25 |  |  |  |  |  |  |  |  |  |  |  |  |  |
| C01LW08103C0 |  | CB-01 ; Door Frames (Laser,Wave) | 42d | 2011-11-19 | 2012-01-09 | C01LW09201C0, GNHE08101C0 FS+79d, C01E208103C0 SS+3d |  |  |  |  | 63d | 0d | ASSORTED DOORS [223 h]; Cost |  |  | C01LW08103C0 | CB | C | 01 | LW | DO | 081 | 03 | BILL 4 | B04 | S1 | DF | R00 | ACF06 | 081 |  |  |  |  |  |  |  |  |  |  |  |  |  | 316 | 947 |  |  | 08 |  |
| C01LW01005C0 |  | CB-01 ; 2nd, Wall Inspection by Consultant (Laser,Wave) | 6d | 2011-12-22 | 2011-12-28 | C01LW22011C0, C01LW22015C0, C01LW26009C0 |  |  |  |  | 12d | 0d | Labor General [0.6 h]; Cost |  |  | C01LW01005C0 | CB | C | 01 | LW | ME | 010 | 05 | BILL 4 | B04 | S1 | WI | R00 | ACF07 | 010 |  | 2n | MEP |  |  |  |  |  |  |  |  |  |  |  |  |  |  |  |  |
| C01LW09205C0 |  | CB-01 ; Partitions Closing (Laser,Wave) | 60d | 2011-12-29 | 2012-03-10 | C01LW01005C0, C01LW05511C0, C01LW08103C0 FF, C01LW09203C0, C01LW22005C0, C01LW22019C0, CAFOA09204C1 FF, C01LW23008C0 FF, C01LW21117C0, C01LW23015C0 FF, CAFCI09201R20 FS+72d |  |  |  |  | 12d | 0d | PARTITIONS [32 m]; PARTITIONS [217 h]; Cost |  |  | C01LW09205C0 | CB | C | 01 | LW | PT | 092 | 05 | BILL 4 | B04 | S1 | FF | R00 | ACF06 | 092 |  |  | GP | P2F |  |  |  |  |  |  |  |  |  | 315 | 946 |  | R3 |  |  |
| C01LW07103C0 |  | CB-01 ; Waterproofing (Laser,Wave) | 12d | 2012-03-11 | 2012-03-24 | C01LW08103C0, C01LW09205C0 |  |  |  |  | 56d | 0d | THERMAL & MOISTURE [16 h]; THERMAL & MOISTURE [81 m2]; Cost |  |  | C01LW07103C0 | CB | C | 01 | LW | FF | 071 | 03 | BILL 4 | B04 | S1 | 01 | R00 | ACF03 | 071 |  |  |  |  |  |  |  |  |  |  |  |  |  | 105 | 999 |  |  |  |  |
| C01LW09901C0 |  | CB-01 ; Wall Prime & 1st coat (Laser,Wave) | 36d | 2012-03-11 | 2012-04-21 | C01LW09205C0 |  |  |  |  | 12d | 0d | WALL PAINT [669 h]; WALL PAINT [833 m2]; Cost |  |  | C01LW09901C0 | CB | C | 01 | LW | PA | 099 | 01 | BILL 4 | B04 | S1 | 01 | R00 | ACF06 | 099 |  |  |  |  |  |  |  |  |  |  |  |  |  | 328 | 956 |  |  |  |  |
| C01LW26005C0 |  | CB-01 ; 2nd Fix, Wiring for Power/Lighting/Emergency (Laser,Wave) | 42d | 2012-03-11 | 2012-04-28 | C01LW09205C0 |  |  |  |  | 96d | 0d | ELECTRICAL [216 h]; Cost |  |  | C01LW26005C0 | CB | C | 01 | LW | ME | 260 | 05 | BILL 4 | B04 | S1 | 2F | R00 | ACF07 | 260 |  | 2n | MEP |  |  |  |  |  |  |  |  |  |  |  |  |  |  |  |  |
| C01LW26007C0 |  | CB-01 ; 2nd Fix, Cable Pulling (Laser,Wave) | 42d | 2012-03-11 | 2012-04-28 | C01LW09201C0 SS+6d, C01LW09205C0 |  |  |  |  | 114d | 102d | ELECTRICAL [6616.8 h]; Cost |  |  | C01LW26007C0 | CB | C | 01 | LW | ME | 260 | 07 | BILL 4 | B04 | S1 | 2F | R00 | ACF07 | 260 |  | 2n | MEP |  |  | 5 |  |  |  |  |  |  |  |  |  |  |  |  |  |
| C01LW26011C0 |  | CB-01 ; 2nd Fix, Inst of Equipment (DB) (Laser,Wave) | 42d | 2012-03-11 | 2012-04-28 | C01LW09205C0 |  |  |  |  | 42d | 30d | ELECTRICAL [1266 h]; Cost |  |  | C01LW26011C0 | CB | C | 01 | LW | ME | 260 | 11 | BILL 4 | B04 | S1 | 2F | R00 | ACF04 | 260 |  | 2n | MEP |  |  |  |  |  |  |  |  |  |  |  |  |  |  |  | E |
| C01LW26053C0 |  | CB-01 ; 2nd Fix, Wiring / Cabling (Laser,Wave) | 30d | 2012-03-11 | 2012-04-14 | C01LW09203C0, C01LW09205C0 |  |  |  |  | 126d | 114d | ELECTRICAL [216 h]; Cost |  |  | C01LW26053C0 | CB | C | 01 | LW | ME | 260 | 53 | BILL 4 | B04 | S1 | 2F | R00 | ACF07 | 260 |  | 2n | MEP |  |  |  |  |  |  |  |  |  |  | 389 | 977 |  |  |  |  |
| C01LW27020C0 |  | CB-01 ; 2nd Fix, Inst of ELV Equipment (Panels) (Laser,Wave) | 42d | 2012-03-11 | 2012-04-28 | C01LW09205C0 |  |  |  |  | 78d | 66d | ELECTRICAL [384 h]; Cost |  |  | C01LW27020C0 | CB | C | 01 | LW | ME | 270 | 20 | BILL 4 | B04 | S1 | 2F | R00 | ACF04 | 270 |  | 2n | MEP |  |  |  |  |  |  |  |  |  |  |  |  |  |  |  | E |
| C01LW09305C0 |  | CB-01 ; Ceramic floor tile (Laser,Wave) | 22d | 2012-03-25 | 2012-04-18 | C01LW07103C0 |  |  |  |  | 56d | 0d | CERAMIC FLOOR TILES [16 h]; CERAMIC FLOOR TILES [8 m2]; Cost |  |  | C01LW09305C0 | CB | C | 01 | LW | FF | 093 | 05 | BILL 4 | B04 | S1 | 02 | R00 | ACF06 | CT |  |  |  |  |  |  |  |  |  |  |  |  |  | 106 | 1000 |  |  |  |  |
| C01LW22025C0 |  | CB-01 ; Final Fix, Inst of Sanitary Ware (Laser,Wave) | 48d | 2012-04-19 | 2012-06-13 | C01LW09205C0, C01LW09305C0, A10230 FS+148d |  |  |  |  | 56d | 0d | PLUMBING [1491.6 h]; Cost |  |  | C01LW22025C0 | CB | C | 01 | LW | ME | 220 | 25 | BILL 4 | B04 | S1 | FF | R00 | ACF07 | 220 |  | FF | MEP |  |  |  |  |  |  |  |  |  |  |  |  |  |  |  |  |
| C01LW05501C0 |  | CB-01 ; Handrails & balustrade (Laser,Wave) | 36d | 2012-04-22 | 2012-06-02 | C01LW09901C0 |  |  |  |  | 48d | 36d | SECONDARY STEEL [57 h]; Cost |  |  | C01LW05501C0 | CB | C | 01 | LW | SW | 055 | 01 | BILL 4 | B04 | S1 | 01 | R00 | ACF03 | a |  |  |  |  |  |  |  |  |  |  |  |  |  |  |  |  |  |  |  |
| C01LW09501C0 |  | CB-01 ; Ceiling Grid and ServiceTile (Laser,Wave) | 36d | 2012-04-22 | 2012-06-02 | C01LW05503C0, C01LW09205C0 SS+15d, C01LW21117C0, C01LW22007C0, C01LW23008C0, C01LW23009C0, C01LW23015C0, C01LW27001C0, CAFCI22001R02 FS+72d, C01LW26011C0 FF, C01LW09901C0 |  |  |  |  | 12d | 0d | CEILING GRID FOR GYPSUM [165.58 h]; CEILING GRID FOR GYPSUM [14.11 m2]; Cost |  |  | C01LW09501C0 | CB | C | 01 | LW | CE | 095 | 01 | BILL 4 | B04 | S1 | 01 | R00 | ACF06 | 095 |  |  |  |  |  |  |  |  |  |  |  |  |  | 323 | 952 |  |  |  |  |
| C01LW26015C0 |  | CB-01 ; Final Fix, Termination & Gladding of Cables (Laser,Wave) | 48d | 2012-04-29 | 2012-06-24 | C01LW26005C0 |  |  |  |  | 96d | 84d | ELECTRICAL [826.8 h]; Cost |  |  | C01LW26015C0 | CB | C | 01 | LW | ME | 260 | 15 | BILL 4 | B04 | S1 | FF | R00 | ACF07 | 260 |  | FF | MEP |  |  |  |  |  |  |  |  |  |  |  |  |  |  |  |  |
| C01LW06101C0 |  | CB-01 ; Wood / caseworks (Laser,Wave) | 60d | 2012-06-03 | 2012-08-12 | C01CO04409C0, C01LW09501C0, C01LW09901C0, CAFWA00113M0, CAFCI22001R02 FS+190d, A10370 |  |  |  |  | 20d | 0d | WOOD WORK/CASEWORK [96.97 no]; WOOD WORK/CASEWORK [395 h]; Cost |  |  | C01LW06101C0 | CB | C | 01 | LW | WO | 061 | 01 | BILL 4 | B04 | S1 | WW | R00 | ACF06 | 061 |  |  |  |  |  |  |  |  |  |  |  |  |  | 332 | 960 |  |  |  |  |
| C01LW06102C0 |  | CB-01 ; Head Wall (Laser,Wave) | 29.88d | 2012-06-03 | 2012-07-08 | C01CO04409C0, C01LW09501C0, C01LW06101C0 SS, CAFWA00113M0, CAFCI22001R02 FS+190d |  |  |  |  | 96.12d | 84.12d | WOOD WORK/CASEWORK [199 h]; Cost |  |  | C01LW06102C0 | CB | C | 01 | LW | WO | 061 | 02 | BILL 4 | B04 | S1 | WW | R00 | ACF06 | 061 |  |  |  |  |  |  |  |  |  |  |  |  |  | 332 | 960 |  |  |  |  |
| C01LW09601C0 |  | CB-01 ; Flooring (Rubber & etc) (Laser,Wave) | 36d | 2012-06-03 | 2012-07-15 | C01LW09901C0, C01LW09501C0, C01LW27020C0 FF, C01LW05501C0 FF |  |  |  |  | 12d | 0d | RUBBER FLOOR [24 h]; RUBBER FLOOR [49 m2]; Cost |  |  | C01LW09601C0 | CB | C | 01 | LW | FF | 096 | 01 | BILL 4 | B04 | S1 | 03 | R00 | ACF06 | RF |  |  |  |  |  |  |  |  |  |  |  |  |  | 326 | 955 |  |  |  |  |
| C01LW09903C0 |  | CB-01 ; Wall Final Paint (Laser,Wave) | 36d | 2012-06-03 | 2012-07-15 | C01LW09901C0, C01LW09905C0 |  |  |  |  | 90d | 72d | WALL PAINT [359 h]; WALL PAINT [448 m2]; Cost |  |  | C01LW09903C0 | CB | C | 01 | LW | PA | 099 | 03 | BILL 4 | B04 | S1 | 02 | R00 | ACF06 | 099 |  |  |  |  |  |  |  |  |  |  |  |  |  | 329 | 957 |  |  |  |  |
| C01LW09905C0 |  | CB-01 ; Ceiling Prime & 1st coat (Laser,Wave) | 0d | 2012-06-03 | 2012-06-03 | C01LW09501C0 |  |  |  |  | 90d | 0d | Cost |  |  | C01LW09905C0 | CB | C | 01 | LW | PA | 099 | 05 | BILL 4 | B04 | S1 | 01 | R00 | ACF06 | 099 |  |  |  |  |  |  |  |  |  |  |  |  |  | 330 | 958 |  |  |  |  |
| C01LW21115C0 |  | CB-01 ; 2nd Fix, Inst of Sprinkler droppers (Laser,Wave) | 42d | 2012-06-03 | 2012-07-22 | C01LW09501C0 |  |  |  |  | 24d | 0d | MECHANICAL [1404 h]; Cost |  |  | C01LW21115C0 | CB | C | 01 | LW | ME | 211 | 15 | BILL 4 | B04 | S1 | 2F | R00 | ACF07 | 211 |  | 2n | MEP |  |  |  |  |  |  |  |  |  |  |  |  |  |  |  |  |
| C01LW23021C0 |  | CB-01 ; 2nd Fix, Inst of Flexible Duct & Plenum boxes (Laser,Wave) | 42d | 2012-06-03 | 2012-07-22 | C01LW09205C0, C01LW09501C0 |  |  |  |  | 24d | 0d | MECHANICAL [903.6 h]; Cost |  |  | C01LW23021C0 | CB | C | 01 | LW | ME | 230 | 21 | BILL 4 | B04 | S1 | 2F | R00 | ACF07 | 230 |  | 2n | MEP |  |  |  |  |  |  |  |  |  |  |  |  |  |  |  |  |
| C01LW26017C0 |  | CB-01 ; Final Fix, Inst of Ceiling rose (Laser,Wave) | 48d | 2012-06-03 | 2012-07-29 | C01LW09501C0 |  |  |  |  | 24d | 0d | ELECTRICAL [123.6 h]; Cost |  |  | C01LW26017C0 | CB | C | 01 | LW | ME | 260 | 17 | BILL 4 | B04 | S1 | FF | R00 | ACF07 | 260 |  | FF | MEP |  |  |  |  |  |  |  |  |  |  |  |  |  |  |  |  |
| C01LW27002C0 |  | CB-01 ; 2nd Fix, Wiring Droppers (Laser,Wave) | 42d | 2012-06-03 | 2012-07-22 | C01LW09501C0 |  |  |  |  | 24d | 0d | ELECTRICAL [216 h]; Cost |  |  | C01LW27002C0 | CB | C | 01 | LW | ME | 270 | 02 | BILL 4 | B04 | S1 | 2F | R00 | ACF07 | 270 |  | 2n | MEP |  |  |  |  |  |  |  |  |  |  |  |  |  |  |  |  |
| C01LW21113C0 |  | CB-01 ; Final Fix, Inst of Sprinklers head/ Extinguisher (Laser,Wave) | 48d | 2012-06-10 | 2012-08-05 | C01LW09501C0, C01LW21115C0 SS+6d |  |  |  |  | 24d | 4d | MECHANICAL [278.4 h]; Cost |  |  | C01LW21113C0 | CB | C | 01 | LW | ME | 211 | 13 | BILL 4 | B04 | S1 | FF | R00 | ACF07 | 211 |  | FF | MEP |  |  |  |  |  |  |  |  |  |  |  |  |  |  |  |  |
| C01LW23019C0 |  | CB-01 ; Final Fix, Inst of Grilles & Diffusers (Laser,Wave) | 48d | 2012-06-10 | 2012-08-05 | C01LW09501C0, C01LW23021C0 SS+6d |  |  |  |  | 24d | 4d | MECHANICAL [1970.4 h]; Cost |  |  | C01LW23019C0 | CB | C | 01 | LW | ME | 230 | 19 | BILL 4 | B04 | S1 | FF | R00 | ACF07 | 230 |  | FF | MEP |  |  |  |  |  |  |  |  |  |  |  |  |  |  |  |  |
| C01LW26003C0 |  | CB-01 ; Final Fix, Inst of Light fittings (Laser,Wave) | 48d | 2012-06-10 | 2012-08-05 | C01LW26017C0 SS+6d |  |  |  |  | 24d | 4d | ELECTRICAL [7983.6 h]; Cost |  |  | C01LW26003C0 | CB | C | 01 | LW | ME | 260 | 03 | BILL 4 | B04 | S1 | FF | R00 | ACF07 | 260 |  | FF | MEP |  |  |  |  |  |  |  |  |  |  |  |  |  |  |  |  |
| C01LW27030C0 |  | CB-01 ; Final Fix, Inst of ELV device (Detector/Speaker) (Laser,Wave) | 48d | 2012-06-10 | 2012-08-05 | C01LW09501C0, C01LW27002C0 SS+6d |  |  |  |  | 24d | 4d | ELECTRICAL [2054.4 h]; Cost |  |  | C01LW27030C0 | CB | C | 01 | LW | ME | 270 | 30 | BILL 4 | B04 | S1 | FF | R00 | ACF07 | 270 |  | FF | MEP |  |  |  |  |  |  |  |  |  |  |  |  |  |  |  |  |
| C01LW11005C0 |  | CB-01 ; Utility belt (Laser,Wave) | 30d | 2012-06-14 | 2012-07-19 | C01LW06101C0 SS+10d, C01LW09205C0 |  |  |  |  | 20d | 0d | FF&E [335 h]; FF&E [178.69 no]; Cost |  |  | C01LW11005C0 | CB | C | 01 | LW | WO | 110 | 05 | BILL 4 | B04 | S1 | 05 | R00 | ACF08 | e |  |  |  |  |  |  |  |  |  |  |  |  |  |  |  |  |  |  |  |
| C01LW22021C0 |  | CB-01 ; Final Fix, Terminate Sanitary Ware & Appliances (Laser,Wave) | 48d | 2012-06-14 | 2012-08-09 | C01LW22011C0, C01LW22025C0 |  |  |  |  | 56d | 44d | PLUMBING [1491.6 h]; Cost |  |  | C01LW22021C0 | CB | C | 01 | LW | ME | 220 | 21 | BILL 4 | B04 | S1 | FF | R00 | ACF07 | 220 |  | FF | MEP |  |  |  |  |  |  |  |  |  |  |  |  |  |  |  |  |
| C01LW08107C0 |  | CB-01 ; Doors (Laser,Wave) | 42d | 2012-07-16 | 2012-09-04 | C01LW08103C0, C01LW09901C0, C01LW09601C0 |  |  |  |  | 34d | 0d | ASSORTED DOORS [760 h]; ASSORTED DOORS [76 no]; Cost |  |  | C01LW08107C0 | CB | C | 01 | LW | DO | 081 | 07 | BILL 4 | B04 | S1 | DR | R00 | ACF06 | 081 |  |  |  |  |  |  |  |  |  |  |  |  |  | 317 | 948 |  |  | 08 |  |
| C01LW09701C0 |  | CB-01 ; Wall finishes (ST, WD, WC) (Laser,Wave) | 36d | 2012-07-16 | 2012-08-28 | C01LW27020C0 FF, CAFCI22001R02 FS+170d, C01LW06101C0 SS, C01LW09601C0 |  |  |  |  | 12d | 0d | ASSORTED WALL FINISH [696 h]; ASSORTED WALL FINISH [800 m2]; Cost |  |  | C01LW09701C0 | CB | C | 01 | LW | WF | 097 | 01 | BILL 4 | B04 | S1 | 01 | R00 | ACF06 | 097 |  |  |  |  |  |  |  |  |  |  |  |  |  | 105 | 1002 |  |  |  |  |
| C01LW22029C0 |  | CB-01 ; Final Fix, Medical Gas pipe (Laser,Wave) | 18d | 2012-07-21 | 2012-08-09 | C01LW09501C0, C01LW11005C0 |  |  |  |  | 20d | 0d | PLUMBING [504 h]; Cost |  |  | C01LW22029C0 | CB | C | 01 | LW | ME | 220 | 29 | BILL 4 | B04 | S1 | FF | R00 | ACF07 | 220 |  | FF | MEP |  |  |  |  |  |  |  |  |  |  |  |  |  |  |  |  |
| C01LW01006C0 |  | CB-01 ; 2nd, Ceiling Inspection by Consultants (Laser,Wave) | 6d | 2012-08-11 | 2012-08-16 | C01LW21115C0, C01LW23009C0, C01LW23015C0, C01LW27002C0, C01LW09501C0, C01LW21113C0, C01LW22029C0, C01LW23019C0, C01LW26017C0, C01LW27030C0, C01LW26003C0 |  |  |  |  | 20d | 8d | Labor General [0.6 h]; Cost |  |  | C01LW01006C0 | CB | C | 01 | LW | ME | 010 | 06 | BILL 4 | B04 | S1 | CI | R00 | ACF07 | 010 |  | 2n | MEP |  |  |  |  |  |  |  |  |  |  |  |  |  |  |  |  |
| C01LW09503C0 |  | CB-01 ; Ceiling closure - ACT/Gypsum (Laser,Wave) | 12d | 2012-08-29 | 2012-09-11 | C01LW01006C0, C01LW21115C0, C01LW26005C0, C01LW27002C0, CAFOA09503C1 FF, C01LW06101C0, C01LW09701C0, C01LW23021C0, C01LW26053C0, C01LW26007C0, CV100109503R2 FF |  |  |  |  | 12d | 0d | ASSORTED CEILING FINISH [31.36 h]; CEILING GYPSUM [4.71 h]; ASSORTED CEILING FINISH [51 m2]; CEILING GYPSUM [13 m2]; Cost |  |  | C01LW09503C0 | CB | C | 01 | LW | CE | 095 | 03 | BILL 4 | B04 | S1 | 02 | R00 | ACF06 | 095 |  |  |  |  |  |  |  |  |  |  |  |  |  | 324 | 953 |  |  |  |  |
| C01LW11001C0 |  | CB-01 ; Wall Protection (WP, CG, WG, FCG) (Laser,Wave) | 24d | 2012-08-29 | 2012-09-25 | C01LW09701C0, C01LW09903C0 SS |  |  |  |  | 30d | 18d | FF&E [28 h]; Cost |  |  | C01LW11001C0 | CB | C | 01 | LW | WF | 110 | 01 | BILL 4 | B04 | S1 | 03 | R00 | ACF08 | b |  |  |  |  |  |  |  |  |  |  |  |  |  | 326 | 1001 |  |  |  |  |
| C01LW08709C0 |  | CB-01 ; Ironmongery (Laser,Wave) | 14d | 2012-09-05 | 2012-09-20 | C01LW08107C0 |  |  |  |  | 34d | 22d | IRONMONGERY [30 h]; IRONMONGERY [3 no]; Cost |  |  | C01LW08709C0 | CB | C | 01 | LW | DO | 087 | 09 | BILL 4 | B04 | S1 | IM | R00 | ACF06 | 087 |  |  |  |  |  |  |  |  |  |  |  |  |  | 322 | 951 |  |  | 08 |  |
| C01LW09907C0 |  | CB-01 ; Ceiling Final paint (Laser,Wave) | 0d | 2012-09-12 | 2012-09-12 | C01LW09601C0, C01LW09905C0, C01LW09503C0 |  |  |  |  | 42d | 30d | Cost |  |  | C01LW09907C0 | CB | C | 01 | LW | PA | 099 | 07 | BILL 4 | B04 | S1 | 02 | R00 | ACF06 | 099 |  |  |  |  |  |  |  |  |  |  |  |  |  | 331 | 959 |  |  |  |  |
| C01LW11003C0 |  | CB-01 ; FF & E (Laser,Wave) | 24d | 2012-09-12 | 2012-10-09 | C01LW09601C0, C01LW09503C0 |  |  |  |  | 18d | 6d | FF&E [89 h]; FF&E [47.12 no]; Cost |  |  | C01LW11003C0 | CB | C | 01 | LW | WO | 110 | 03 | BILL 4 | B04 | S1 | 04 | R00 | ACF08 | a |  |  |  |  |  |  |  |  |  |  |  |  |  | 333 | 961 |  |  |  |  |
| C01LW22027C0 |  | CB-01 ; Final Fix, Inst of All drain (Laser,Wave) | 18d | 2012-09-12 | 2012-10-02 | C01LW09305C0, C01LW09503C0 |  |  |  |  | 12d | 0d | PLUMBING [1491.6 h]; Cost |  |  | C01LW22027C0 | CB | C | 01 | LW | ME | 220 | 27 | BILL 4 | B04 | S1 | FF | R00 | ACF07 | 220 |  | FF | MEP |  |  |  |  |  |  |  |  |  |  |  |  |  |  |  |  |
| C01LW26019C0 |  | CB-01 ; Final Fix, Inst of Switch/Sockets (Laser,Wave) | 12d | 2012-09-12 | 2012-09-25 | C01LW09901C0, C01LW09503C0 |  |  |  |  | 18d | 6d | ELECTRICAL [427.2 h]; Cost |  |  | C01LW26019C0 | CB | C | 01 | LW | ME | 260 | 19 | BILL 4 | B04 | S1 | FF | R00 | ACF07 | 260 |  | FF | MEP |  |  |  |  |  |  |  |  |  |  |  |  |  |  |  |  |

| ID | WBS | Activity | Duration | Start | Finish | Predecessors | Complete | Remaining | Planned start | Planned finish | Total float | Free float | Resources | Cost | Actual cost | change id | CCAD BUILDING(SET) | CCAD PHASE(SET) | CCAD FLOOR(SET) | CCAD ZONE(SET) | CCAD WORK(SET) | CCAD SECTION(SET) | CCAD SERIAL No.(SET) | CCAD CBS(SET) | CCAD BILL(SET) | CCAD HANDOVER(SET) | CCAD TAG(SET) | CCAD REV(SET) | CCADACF (SET) | CCAD SSCF | Change Order # | NEW ACTIVITY ID | RENZ % COMPLETE | Claimed This Month | P_811 | P_711 | CCAD CSA | Act Selector % | U% | July2011 Target% Complete | CCAD SUB ZONE MEP(SET) | user_number8 | user_integer1 | user_integer2 | user_number7 | CCAD MEQ | CCAD DIVISION(SET) | IDDD |
| --- | --- | --- | --- | --- | --- | --- | --- | --- | --- | --- | --- | --- | --- | --- | --- | --- | --- | --- | --- | --- | --- | --- | --- | --- | --- | --- | --- | --- | --- | --- | --- | --- | --- | --- | --- | --- | --- | --- | --- | --- | --- | --- | --- | --- | --- | --- | --- | --- |
|  | 10 | **Precommissioning Tesing & snagging (Laser, Wave, Intralase)** |  | 2012-10-03 | 2012-11-18 |  |  |  |  |  |  |  |  |  |  |  |  |  |  |  |  |  |  |  |  |  |  |  |  |  |  |  |  |  |  |  |  |  |  |  |  |  |  |  |  |  |  |  |
| CGLTS01809C0 |  | CB-01 ; MEP de-snag, FIREM sign-off | 12d | 2012-10-03 | 2012-10-16 | C01LW11005C0, C01LW22027C0, C01LW26015C0, C01LW21113C0, C01LW23019C0, C01LW22029C0, C01LW26017C0, C01LW26003C0, C01LW27030C0, C01LW22021C0, C01LW26019C0 |  |  |  |  | 12d | 0d | TESTING & COMMISSIONING [1020 h]; Cost |  |  | CGLTS01801C0 | CB | C | 01 | TS | SC | 018 | 01 | BILL 4 | B04 | S1 | 01 | R00 | ACF07 | 018 |  |  |  |  |  |  |  |  |  |  |  |  |  |  |  |  |  |  |
| CGLTS01816C0 |  | CB-01 ; Touch-up & Clean / JV inspection /CIR /De-snag | 18d | 2012-10-17 | 2012-11-08 | C01LW06101C0, C01LW06102C0, C01LW08709C0, C01LW09305C0, C01LW09601C0, C01LW09701C0, C01LW09903C0, C01LW11001C0, C01LW11003C0, CGLTS01809C0, C01LW05501C0, C01LW09503C0, C01LW09907C0 |  |  |  |  | 12d | 0d | TESTING & COMMISSIONING [149 h]; Cost |  |  | CGLTS01802C0 | CB | C | 01 | TS | SC | 018 | 02 | BILL 4 | B04 | S1 | 02 | R00 | ACF07 | 018 |  |  |  |  |  |  |  |  |  |  |  |  |  |  |  |  |  |  |
| CGLTS01823C0 |  | CB-01 ; Consultant's final de-snag inspection | 7d | 2012-11-10 | 2012-11-18 | CGLTS01816C0 |  |  |  |  | 12d | 4.67d | Labor General [1 h]; Cost |  |  | CGLTS01803C0 | CB | C | 01 | TS | SC | 018 | 03 | BILL 4 | B04 | S1 | 03 | R00 | ACF07 | 018 |  |  |  |  |  |  |  |  |  |  |  |  |  |  |  |  |  |  |
|  | 06 | **TR Room** |  | 2011-04-10 | 2012-10-04 |  |  |  |  |  |  |  |  |  |  |  |  |  |  |  |  |  |  |  |  |  |  |  |  |  |  |  |  |  |  |  |  |  |  |  |  |  |  |  |  |  |  |  |
| C01TR09201C0 |  | CB-01 ; Metal Studs (TR RM) | 18d | 2011-04-10 A | 2011-11-05 | C01PA09201C0, A10290 FS+72d | 95% | 0.9d | 2011-04-24 | 2011-05-14 | 21.9d | 0d | PARTITIONS [404 h]; PARTITIONS - Metal Studs [71 m]; Cost |  |  | C01TR09201C0 | CB | C | 01 | TR | PT | 092 | 01 | BILL 4 | B04 | S1 | 1F | R00 | ACF06 | 092 | 313 | 885 | 45 | 1384.25 | 95 | 65 | GP | PMS |  |  |  |  |  |  |  |  |  |  |
| C01TR09203C0 |  | CB-01 ; Partitions 1st face (TR RM) | 48d | 2011-04-11 A | 2011-11-10 | C01TR09201C0 SS+12d | 95% | 2.4d | 2011-05-08 | 2011-07-03 | 54.6d | 0d | PARTITIONS [71 m]; PARTITIONS [322 h]; Cost |  |  | C01TR09203C0 | CB | C | 01 | TR | PT | 092 | 03 | BILL 4 | B04 | S1 | 2F | R00 | ACF06 | 092 | 314 | 886 | 8 | 775.18 | 95 | 27 | GP | P1F | 95 |  |  |  |  |  |  |  |  |  |
| C01TR26027C0 |  | CB-01 ; 2nd Fix, Wiring / Cabling (TR RM) | 36d | 2011-06-08 A | 2011-12-12 | C01TR09203C0 | 30% | 25.2d | 2011-08-15 | 2011-09-28 | 148.6d | 94d | ELECTRICAL [216 h]; Cost [15494.5 AED] | 15,494.51 | 4,648.35 | C01TR26027C0 | CB | C | 01 | TR | ME | 260 | 27 | BILL 4 | B04 | S1 | 2F | R00 | ACF07 | 260 | 417 | 1318 |  | 5398.04 |  |  | MEP |  |  | 35 | 2n |  |  |  |  |  |  |  |
| C01TR26026C0 |  | CB-01 ; 2nd Fix, Conduit (TR RM) | 66d | 2011-06-08 A | 2011-12-07 | C01TR09201C0 SS+6d | 65% | 23.1d | 2011-06-08 | 2011-08-25 | 21.9d | 0d | ELECTRICAL [430.8 h]; Cost [29580.4 AED] | 29,580.43 | 19,227.28 | C01TR26026C0 | CB | C | 01 | TR | ME | 260 | 26 | BILL 4 | B04 | S1 | 2F | R00 | ACF07 | 260 |  |  |  | 20577.39 |  |  | MEP |  |  | 65 | 2n |  |  |  |  |  |  |  |
| C01TR26009C0 |  | CB-01 ; 2nd Fix, Inst of Equipment (DB, TR, SG,BUS) (TR RM) | 54d | 2011-07-11 A | 2012-02-14 | C01TR09205C0 SS | 25% | 40.5d | 2011-10-11 | 2011-12-19 | 70.9d | 47.5d | ELECTRICAL [14013.6 h]; Cost [3188823 AED] | 3,188,823.2 | 797,205.8 | C01TR26009C0 | CB | C | 01 | TR | ME | 260 | 09 | BILL 4 | B04 | S1 | 2F | R00 | ACF04 | 260 |  |  |  |  |  |  | MEP |  |  |  | 2n | 0 | 0 | 0 | 0 | E |  |  |
| C01TR23009C0 |  | CB-01 ; 2nd Fix, Inst of VAV'S CHW connection (TR RM) | 36d | 2011-08-10 A | 2012-03-06 | C01TR09201C0, C01TR09205C0 | 15% | 30.6d | 2012-01-11 | 2012-02-23 | 70.8d | 0d | MECHANICAL [1419.6 h]; Cost [76659.7 AED] | 76,659.7 | 11,498.95 | C01TR23009C0 | CB | C | 01 | TR | ME | 230 | 09 | BILL 4 | B04 | S1 | 2F | R00 | ACF07 | 230 |  |  |  |  | 10 | 0 | MEP |  |  | 25 | 2n | 0 | 0 | 0 | 0 |  |  |  |
| C01TR08101C0 |  | CB-01 ; Door Frames (TR RM) | 18d | 2011-11-12 | 2011-12-04 | C01TR09201C0, GNHE08101C0 FS+79d |  |  |  |  | 64d | 46.6d | ASSORTED DOORS [3 h]; Cost |  |  | C01TR08101C0 | CB | C | 01 | TR | DO | 081 | 01 | BILL 4 | B04 | S1 | DF | R00 | ACF06 | 081 | 316 | 20001090 |  |  |  |  |  |  |  |  |  |  |  |  |  |  | 08 |  |
| C01TR01005C0 |  | CB-01 ; 2nd, Wall Inspection by Consultant (TR RM) | 12d | 2011-12-07 | 2011-12-21 | C01TR26026C0 |  |  |  |  | 21.9d | 4.5d | Labor General [1.2 h]; Cost |  |  | C01TR01005C0 | CB | C | 01 | TR | ME | 010 | 05 | BILL 4 | B04 | S1 | WI | R00 | ACF07 | 010 |  |  |  |  |  |  | MEP |  |  | 25 | 2n |  |  |  |  |  |  |  |
| C01TR09205C0 |  | CB-01 ; Partitions Closing (TR RM) | 28d | 2011-12-26 | 2012-01-29 | C01TR01005C0, C01TR08101C0 FF, C01TR09201C0, C01TR09203C0, CAFOA09204C1 FF, CGLTR09205C0 SS+6d |  |  |  |  | 17.4d | 0d | PARTITIONS [71 m]; PARTITIONS [416 h]; Cost |  |  | C01TR09205C0 | CB | C | 01 | TR | PT | 092 | 05 | BILL 4 | B04 | S1 | FF | R00 | ACF06 | 092 | 315 | 887 |  |  |  |  | GP | P2F |  |  |  |  |  |  |  |  |  |  |
| C01TR09901C0 |  | CB-01 ; Wall Prime & 1st coat (TR RM) | 18d | 2012-01-29 | 2012-02-20 | C01TR09205C0 |  |  |  |  | 23.4d | 0d | WALL PAINT [36 h]; WALL PAINT [43 m2]; Cost |  |  | C01TR09901C0 | CB | C | 01 | TR | PA | 099 | 01 | BILL 4 | B04 | S1 | 01 | R00 | ACF06 | 099 | 360 | 20001110 |  |  |  |  |  |  |  |  |  |  |  |  |  |  |  |  |
| C01TR23011C0 |  | CB-01 ; 2nd Fix, Inst of VCD's/FD's (TR RM) | 30d | 2012-01-29 | 2012-03-05 | C01TR09201C0, C01TR09205C0 |  |  |  |  | 71.4d | 0d | MECHANICAL [2648.4 h]; Cost |  |  | C01TR23011C0 | CB | C | 01 | TR | ME | 230 | 11 | BILL 4 | B04 | S1 | 2F | R00 | ACF07 | 230 |  |  |  |  |  |  | MEP |  |  | 25 | 2n |  |  |  |  |  |  |  |
| C01TR23013C0 |  | CB-01 ; 2nd Fix, Insulation of CHW pipe & Duct (TR RM) | 30d | 2012-01-29 | 2012-03-05 | C01TR23009C0 SS, C01TR23011C0 SS, C01TR09205C0 |  |  |  |  | 71.4d | 12d | MECHANICAL [6742.8 h]; Cost |  |  | C01TR23013C0 | CB | C | 01 | TR | ME | 230 | 13 | BILL 4 | B04 | S1 | 2F | R00 | ACF07 | 230 |  |  |  |  |  |  | MEP |  |  |  | 2n |  |  |  |  |  |  |  |
| C01TR09501C0 |  | CB-01 ; Ceiling grid and ServiceTile (TR RM) | 24d | 2012-02-20 | 2012-03-19 | C01TR09205C0 SS+15d, C01TR09901C0 |  |  |  |  | 23.4d | 0d | CEILING GRID FOR GYPSUM [219.15 h]; CEILING GRID FOR GYPSUM [18.71 m2]; Cost |  |  | C01TR09501C0 | CB | C | 01 | TR | CE | 095 | 01 | BILL 4 | B04 | S1 | 01 | R00 | ACF06 | 095 | 336 | 1327 |  |  |  |  |  |  |  |  |  |  |  |  |  |  |  | 1 |
| C01TR01006C0 |  | CB-01 ; 2nd, Ceiling Inspection by Consultants (TR RM) | 12d | 2012-03-19 | 2012-04-02 | C01TR23009C0, C01TR23011C0, C01TR23013C0, C01TR09501C0, C01TR26027C0 FF |  |  |  |  | 59.4d | 36d | Labor General [1.2 h]; Cost |  |  | C01TR01006C0 | CB | C | 01 | TR | ME | 010 | 06 | BILL 4 | B04 | S1 | CI | R00 | ACF07 | 010 |  |  |  |  |  |  | MEP |  |  |  | 2n |  |  |  |  |  |  |  |
| C01TR09601C0 |  | CB-01 ; Floor Finishes (TR RM) | 18d | 2012-03-19 | 2012-04-09 | C01TR09501C0, C01TR26009C0 FF |  |  |  |  | 23.4d | 0d | ASSORTED FLOOR FINISH [632 h]; ASSORTED FLOOR FINISH [348 m2]; Cost |  |  | C01TR09601C0 | CB | C | 01 | TR | FF | 096 | 01 | BILL 4 | B04 | S1 | 01 | R00 | ACF06 | FF | 359 | 20001120 |  |  |  |  |  |  |  |  |  |  |  |  |  |  |  |  |
| C01TR09905C0 |  | CB-01 ; Ceiling Prime & 1st coat (TR RM) | 0d | 2012-03-19 | 2012-03-19 | C01TR09501C0 |  |  |  |  | 141.4d | 66d | Cost |  |  | C01TR09905C0 | CB | C | 01 | TR | PA | 099 | 05 | BILL 4 | B04 | S1 | 01 | R00 | ACF06 | 099 | 362 | 1313 |  |  |  |  |  |  |  |  |  |  |  |  |  |  |  |  |
| C01TR23023C0 |  | CB-01 ; 2nd Fix, Flexible ducts (TR RM) | 30d | 2012-03-19 | 2012-04-23 | C01TR09205C0, C01TR09501C0 |  |  |  |  | 41.4d | 18d | MECHANICAL [903.6 h]; Cost |  |  | C01TR23023C0 | CB | C | 01 | TR | ME | 230 | 23 | BILL 4 | B04 | S1 | 2F | R00 | ACF07 | 230 | 412 | 20001140 |  |  |  |  | MEP |  |  |  | 2n |  |  |  |  |  |  |  |
| C01TR26005C0 |  | CB-01 ; 2nd Fix, Wiring for Power/Lighting/Emergency (TR RM) | 30d | 2012-03-19 | 2012-04-23 | C01TR26026C0, C01TR26027C0 SS+6d, C01TR09501C0 |  |  |  |  | 41.4d | 18d | ELECTRICAL [216 h]; Cost |  |  | C01TR26005C0 | CB | C | 01 | TR | ME | 260 | 05 | BILL 4 | B04 | S1 | 2F | R00 | ACF07 | 260 |  |  |  |  |  |  | MEP |  |  |  | 2n |  |  |  |  |  |  |  |
| C01TR27002C0 |  | CB-01 ; 2nd Fix, Dressing of ELV panels (TR RM) | 30d | 2012-03-19 | 2012-04-23 | C01TR09205C0, C01TR27020C0 SS |  |  |  |  | 77.4d | 36d | ELECTRICAL [1284 h]; Cost |  |  | C01TR27002C0 | CB | C | 01 | TR | ME | 270 | 02 | BILL 4 | B04 | S1 | 2F | R00 | ACF07 | 270 |  |  |  |  |  |  | MEP |  |  |  | 2n |  |  |  |  |  |  |  |
| C01TR27020C0 |  | CB-01 ; 2nd Fix, Inst of ELV Equipment (Panels) (TR RM) | 30d | 2012-03-19 | 2012-04-23 | C01TR09205C0, C01TR09501C0 |  |  |  |  | 77.4d | 0d | ELECTRICAL [384 h]; Cost |  |  | C01TR27020C0 | CB | C | 01 | TR | ME | 270 | 20 | BILL 4 | B04 | S1 | 2F | R00 | ACF04 | 270 |  |  |  |  |  |  | MEP |  |  |  | 2n |  |  |  |  | E |  |  |
| C01TR08105C0 |  | CB-01 ; Doors (TR RM) | 18d | 2012-04-09 | 2012-04-30 | C01TR08101C0, C01TR09901C0, C01TR09601C0 |  |  |  |  | 103.4d | 0d | ASSORTED DOORS [10 h]; ASSORTED DOORS [1 no]; Cost |  |  | C01TR08105C0 | CB | C | 01 | TR | DO | 081 | 05 | BILL 4 | B04 | S1 | DR | R00 | ACF06 | 081 | 317 | 1325 |  |  |  |  |  |  |  |  |  |  |  |  |  |  | 08 |  |
| C01TR21115C0 |  | CB-01 ; 2nd Fix, Gaseous Fire Suppression (TR RM) | 30d | 2012-04-09 | 2012-05-14 | C01TR09601C0 |  |  |  |  | 23.4d | 0d | MECHANICAL [3854.4 h]; Cost |  |  | C01TR21115C0 | CB | C | 01 | TR | ME | 211 | 15 | BILL 4 | B04 | S1 | 2F | R00 | ACF07 | 211 | 411 | 20001130 |  |  |  |  | MEP |  |  |  | 2n |  |  |  |  |  |  |  |
| C01TR08709C0 |  | CB-01 ; Ironmongery (TR RM) | 16d | 2012-04-30 | 2012-05-19 | C01TR08105C0 |  |  |  |  | 103.4d | 80d | IRONMONGERY [60 h]; IRONMONGERY [6 no]; Cost |  |  | C01TR08709C0 | CB | C | 01 | TR | DO | 087 | 09 | BILL 4 | B04 | S1 | IM | R00 | ACF06 | 087 | 322 | 20001100 |  |  |  |  |  |  |  |  |  |  |  |  |  |  | 08 |  |
| C01TR09503C0 |  | CB-01 ; Ceiling closure (TR RM) | 18d | 2012-05-14 | 2012-06-04 | C01TR01006C0, C01TR21115C0, C01TR26005C0, C01TR26026C0, C01TR26027C0, C01TR23023C0 |  |  |  |  | 23.4d | 0d | ASSORTED CEILING FINISH [94.09 h]; CEILING GYPSUM [6.15 h]; ASSORTED CEILING FINISH [153 m2]; CEILING GYPSUM [38 m2]; Cost |  |  | C01TR09503C0 | CB | C | 01 | TR | CE | 095 | 03 | BILL 4 | B04 | S1 | 02 | R00 | ACF06 | 095 | 337 | 20001080 |  |  |  |  |  |  |  |  |  |  |  |  |  |  |  |  |
| C01TR09903C0 |  | CB-01 ; Wall - Final Paint (TR RM) | 12d | 2012-06-04 | 2012-06-19 | C01TR09503C0, C01TR09901C0 |  |  |  |  | 77.4d | 54d | WALL PAINT [20 h]; WALL PAINT [23 m2]; Cost |  |  | C01TR09903C0 | CB | C | 01 | TR | PA | 099 | 03 | BILL 4 | B04 | S1 | 02 | R00 | ACF06 | 099 | 361 | 1312 |  |  |  |  |  |  |  |  |  |  |  |  |  |  |  |  |
| C01TR09907C0 |  | CB-01 ; Ceiling - Final paint (TR RM) | 0d | 2012-06-04 | 2012-06-04 | C01TR09905C0, C01TR09503C0 |  |  |  |  | 75.4d | 0d | Cost |  |  | C01TR09907C0 | CB | C | 01 | TR | PA | 099 | 07 | BILL 4 | B04 | S1 | 02 | R00 | ACF06 | 099 | 363 | 1314 |  |  |  |  |  |  |  |  |  |  |  |  |  |  |  |  |
| C01TR23074C0 |  | CB-01 ; Final Fix, Grilles, panels & diffusers (TR RM) | 30d | 2012-06-04 | 2012-07-10 | C01TR09503C0 |  |  |  |  | 41.4d | 18d | MECHANICAL [1970.4 h]; Cost |  |  | C01TR23074C0 | CB | C | 01 | TR | ME | 230 | 74 | BILL 4 | B04 | S1 | FF | R00 | ACF07 | 230 | 419 | 20001160 |  |  |  |  | MEP |  |  |  | FF |  |  |  |  |  |  |  |
| C01TR26015C0 |  | CB-01 ; Final Fix, Inst of Ceiling rose (TR RM) | 30d | 2012-06-04 | 2012-07-10 | C01TR09503C0 |  |  |  |  | 23.4d | 0d | ELECTRICAL [123.6 h]; Cost |  |  | C01TR26015C0 | CB | C | 01 | TR | ME | 260 | 15 | BILL 4 | B04 | S1 | FF | R00 | ACF07 | 260 |  |  |  |  |  |  | MEP |  |  |  | FF |  |  |  |  |  |  |  |
| C01TR27030C0 |  | CB-01 ; Final Fix, Inst of ELV device (Detector/Speaker) (TR RM) | 30d | 2012-06-04 | 2012-07-10 | C01TR09503C0, C01TR27002C0 |  |  |  |  | 41.4d | 18d | ELECTRICAL [2054.4 h]; Cost |  |  | C01TR27030C0 | CB | C | 01 | TR | ME | 270 | 30 | BILL 4 | B04 | S1 | FF | R00 | ACF07 | 270 |  |  |  |  |  |  | MEP |  |  |  | FF |  |  |  |  |  |  |  |
| C01TR26013C0 |  | CB-01 ; Final Fix, Termination & Gladding of Cables (TR RM) | 30d | 2012-06-11 | 2012-07-17 | C01TR09503C0, C01TR26015C0 SS+6d, C01TR26009C0 |  |  |  |  | 23.4d | 0d | ELECTRICAL [826.8 h]; Cost |  |  | C01TR26013C0 | CB | C | 01 | TR | ME | 260 | 13 | BILL 4 | B04 | S1 | FF | R00 | ACF07 | 260 |  |  |  |  |  |  | MEP |  |  |  | FF |  |  |  |  |  |  |  |
| C01TR26017C0 |  | CB-01 ; Final Fix, Inst of Switch/Sockets (TR RM) | 12d | 2012-06-19 | 2012-07-03 | C01TR09503C0, C01TR09901C0, C01TR26013C0 SS+6d |  |  |  |  | 23.4d | 0d | ELECTRICAL [427.2 h]; Cost |  |  | C01TR26017C0 | CB | C | 01 | TR | ME | 260 | 17 | BILL 4 | B04 | S1 | FF | R00 | ACF07 | 260 |  |  |  |  |  |  | MEP |  |  |  | FF |  |  |  |  |  |  |  |
| C01TR26076C0 |  | CB-01 ; Final Fix, Lighting fittings (TR RM) | 30d | 2012-06-26 | 2012-07-31 | C01TR09503C0, C01TR26017C0 SS+6d |  |  |  |  | 23.4d | 0d | ELECTRICAL [7983.6 h]; Cost |  |  | C01TR26076C0 | CB | C | 01 | TR | ME | 260 | 76 | BILL 4 | B04 | S1 | FF | R00 | ACF07 | 260 | 420 | 20001170 |  |  |  |  | MEP |  |  |  | FF |  |  |  |  |  |  |  |
| C01TR01802C0 |  | CB-01 ; MEP de-snag, FIREM sign-off | 18d | 2012-07-31 | 2012-08-23 | C01TR23074C0, C01TR26015C0, C01TR27030C0, C01TR26013C0, C01TR26017C0, C01TR26076C0 |  |  |  |  | 23.4d | 0d | TESTING & COMMISSIONING [510 h]; Cost |  |  | CP3TR01851C0 | CB | C | 01 | TR | SC | 018 | 53 | BILL 4 | B04 | S1 | 01 | R00 | ACF07 | 018 | 396 |  |  |  |  |  |  |  |  |  |  |  |  |  |  |  |  |  |
| C01TR01801C0 |  | CB-01 ; Touch-up & Clean / JV inspection /CIR /De-snag | 24d | 2012-08-23 | 2012-09-20 | C01TR01802C0, C01TR09601C0, C01TR09903C0, C01TR09907C0, C01TR08709C0 |  |  |  |  | 23.4d | 0d | TESTING & COMMISSIONING [85 h]; Cost |  |  | C01TR01851C0 | CB | C | 01 | TR | SC | 018 | 51 | BILL 4 | B04 | S1 | 02 | R00 | ACF07 | 018 | 396 |  |  |  |  |  |  |  |  |  |  |  |  |  |  |  |  |  |
| C01TR01803C0 |  | CB-01 ; Consultant's final de-snag inspection | 12d | 2012-09-20 | 2012-10-04 | C01TR01801C0 |  |  |  |  | 23.4d | 15.05d | Labor General [1 h]; Cost |  |  | CP3TS01803C0 | CB | C | 01 | TR | SC | 018 | 03 | BILL 4 | B04 | S1 | 03 | R00 | ACF07 | 018 |  |  |  |  |  |  |  |  |  |  |  |  |  |  |  |  |  |  |

| ID | WBS | Activity | Type | Duration | Start | Finish | Predecessors | Complete | Remaining | Planned start | Planned finish | Total float | Free float | Resources | Cost | Actual cost | Change Order # | NEW ACTIVITY ID | change id | RENZ % COMPLETE | CCAD BUILDING(SET) | CCAD PHASE(SET) | CCAD DIVISION(SET) | CCAD FLOOR(SET) | CCAD ZONE(SET) | CCAD WORK(SET) | CCAD SECTION(SET) | CCAD SERIAL No.(SET) | CCAD CBS(SET) | CCAD BILL(SET) | CCAD HANDOVER(SET) | CCAD TAG(SET) | CCAD REV(SET) | CCADACF (SET) | CCAD SSCF | Actual Cost | CCAD CSA | Claimed This Month | P_811 | P_711 | CCAD SUB ZONE MEP(SET) | Act Selector % | July2011 Target% Complete | user_number8 | user_integer1 | user_integer2 | user_number7 | U% | R3 Partitions | PERCENT COMPLETE | CCAD MEQ | R3 Finish |
| --- | --- | --- | --- | --- | --- | --- | --- | --- | --- | --- | --- | --- | --- | --- | --- | --- | --- | --- | --- | --- | --- | --- | --- | --- | --- | --- | --- | --- | --- | --- | --- | --- | --- | --- | --- | --- | --- | --- | --- | --- | --- | --- | --- | --- | --- | --- | --- | --- | --- | --- | --- | --- |
|  | 02 | **Level 2** |  |  | 2010-10-04 | 2012-11-24 |  |  |  |  |  |  |  |  |  |  |  |  |  |  |  |  |  |  |  |  |  |  |  |  |  |  |  |  |  |  |  |  |  |  |  |  |  |  |  |  |  |  |  |  |  |  |
|  | 01 | **Structure & Envelopment** |  |  | 2010-10-04 | 2012-06-04 |  |  |  |  |  |  |  |  |  |  |  |  |  |  |  |  |  |  |  |  |  |  |  |  |  |  |  |  |  |  |  |  |  |  |  |  |  |  |  |  |  |  |  |  |  |  |
| C02SD03311C0 |  | CB-02 ; Corewall concrete (Zone SD) |  | 6d | 2010-10-04 A | 2010-10-16 A | C01SD03311C0 | 100% |  | 2010-11-18 | 2010-11-24 |  |  | CONCRETE [4968 h]; CONCRETE [125 m3]; Cost |  |  | 301 | 302 | C02SD03311C0 | 100 | CB | C | 03 | 02 | SD | CT | 033 | 11 | BILL 4 | B04 | S1 | 04 | R00 | ACF03 | 033 |  |  |  |  |  |  |  |  |  |  |  |  |  |  |  |  |  |
| C02SC03311C0 |  | CB-02 ; Corewall concrete (Zone SC) |  | 6d | 2010-10-21 A | 2010-10-21 A | C01SC03311C0 | 100% |  | 2010-11-08 | 2010-11-14 |  |  | CONCRETE [4968 h]; CONCRETE [125 m3]; Cost |  |  | 301 | 298 | C02SC03311C0 | 100 | CB | C | 03 | 02 | SC | CT | 033 | 11 | BILL 4 | B04 | S1 | 04 | R00 | ACF03 | 033 |  |  |  |  |  |  |  |  |  |  |  |  |  |  |  |  |  |
| C02S105101C0 |  | CB-02 ; Erection of Structural Steel (Zone S1) |  | 13d | 2010-11-02 A | 2011-01-22 A | C01S105101C0, C01S105103C0, C02SC03311C0 | 100% |  | 2010-12-12 | 2010-12-27 |  |  | STRUCTURAL STEEL [4575 h]; STRUCTURAL STEEL [175 T(Fe)]; Cost |  |  | 297 | 294 | C02S105101C0 | 100 | CB | C |  | 02 | S1 | ST | 051 | 01 | BILL 4 | B04 | S1 | 01 | R00 | ACF03 | 051 | 1773028 | ST |  |  |  |  |  |  |  |  |  |  |  |  |  |  |  |
| C02S105103C0 |  | CB-02 ; Alignment &welding (Zone S1) |  | 5d | 2010-11-08 A | 2011-01-29 A | C02S105101C0 | 100% |  | 2010-12-28 | 2011-01-04 |  |  | STRUCTURAL STEEL [472 h]; Cost |  |  | 298 | 295 | C02S105103C0 | 100 | CB | C |  | 02 | S1 | ST | 051 | 03 | BILL 4 | B04 | S1 | 02 | R00 | ACF03 | 051 | 197003 | ST |  |  |  |  |  |  |  |  |  |  |  |  |  |  |  |
| C02S205101C0 |  | CB-02 ; Erection of Structural Steel (Zone S2) |  | 13d | 2010-11-09 A | 2011-01-15 A | C01S205103C0, C02SD03311C0 | 100% |  | 2010-12-23 | 2011-01-09 |  |  | STRUCTURAL STEEL [7344 h]; STRUCTURAL STEEL [282 T(Fe)]; Cost |  |  | 297 | 300 | C02S205101C0 | 100 | CB | C |  | 02 | S2 | ST | 051 | 01 | BILL 4 | B04 | S1 | 01 | R00 | ACF03 | 051 | 2350292 | ST |  |  |  |  |  |  |  |  |  |  |  |  |  |  |  |
| C02S205103C0 |  | CB-02 ; Alignment & welding (Zone S2) |  | 5d | 2010-11-14 A | 2011-01-28 A | C02S205101C0 | 100% |  | 2011-01-10 | 2011-01-16 |  |  | STRUCTURAL STEEL [624 h]; Cost |  |  | 298 | 301 | C02S205103C0 | 100 | CB | C |  | 02 | S2 | ST | 051 | 03 | BILL 4 | B04 | S1 | 02 | R00 | ACF03 | 051 | 261144 | ST |  |  |  |  |  |  |  |  |  |  |  |  |  |  |  |
| C02S105305C0 |  | CB-02 ; Metal Decking (Zone S1) |  | 15d | 2010-12-30 A | 2011-05-24 A | C02S105103C0, C03S105101C0 | 100% |  | 2011-01-08 | 2011-01-25 |  |  | METAL DECKING [2038 h]; METAL DECKING [2580 m2]; Cost |  |  | 299 | 296 | C02S105305C0 | 100 | CB | C |  | 02 | S1 | ST | 053 | 05 | BILL 4 | B04 | S1 | 03 | R00 | ACF03 | 053 | 302975.64 | ST |  |  |  |  |  |  |  |  |  |  |  |  |  |  |  |
| C02S205305C0 |  | CB-02 ; Metal Decking (Zone S2) |  | 18d | 2011-01-03 A | 2011-03-03 A | C02S205103C0, C03S205101C0 | 100% |  | 2011-01-03 | 2011-01-24 |  |  | METAL DECKING [2702 h]; METAL DECKING [3420 m2]; Cost |  |  | 299 | 303 | C02S205305C0 | 100 | CB | C |  | 02 | S2 | ST | 053 | 05 | BILL 4 | B04 | S1 | 03 | R00 | ACF03 | 053 | 401618.88 | ST |  |  |  |  |  |  |  |  |  |  |  |  |  |  |  |
| C02S103335C0 |  | CB-02 ; Concrete on metal decking (Zone S1) |  | 10d | 2011-01-11 A | 2011-04-06 A | C02S105305C0 | 100% |  | 2011-01-25 | 2011-02-06 |  |  | CONCRETE [13392 h]; CONCRETE [337 m3]; Cost |  |  | 302 | 299 | C02S103335C0 | 100 | CB | C | 03 | 02 | S1 | CT | 033 | 35 | BILL 4 | B04 | S1 | 08 | R00 | ACF03 | 033 |  |  |  |  |  |  |  |  |  |  |  |  |  |  |  |  |  |
| C02S203335C0 |  | CB-02 ; Concrete on metal decking (Zone S2) |  | 10d | 2011-01-25 A | 2011-04-11 A | C02S205305C0 | 100% |  | 2011-01-25 | 2011-02-05 |  |  | CONCRETE [17808 h]; CONCRETE [448 m3]; Cost |  |  | 302 | 304 | C02S203335C0 | 100 | CB | C | 03 | 02 | S2 | CT | 033 | 35 | BILL 4 | B04 | S1 | 08 | R00 | ACF03 | 033 |  |  |  |  |  |  |  |  |  |  |  |  |  |  |  |  |  |
| C02S107807C0 |  | CB-02 ; Cementitious Fire Proofing (Zone S1) |  | 10d | 2011-03-02 A | 2011-04-14 A | C03S103335C0 | 100% |  | 2011-03-05 | 2011-03-16 |  |  | CEMENTITIOUS FIREPROOFING [1415 h]; CEMENTITIOUS FIREPROOFING [2829 m2]; Cost |  |  | 300 | 297 | C02S107807C0 | 100 | CB | C |  | 02 | S1 | ST | 078 | 07 | BILL 4 | B04 | S1 | 04 | R00 | ACF03 | 078 |  | ST |  |  |  |  |  |  |  |  |  |  |  |  |  |  |  |
| C02S207808C0 |  | CB-02 ; Cementitious Fire Proofing (Zone S2) |  | 12d | 2011-03-06 A | 2011-04-19 A | C03S203335C0 | 100% |  | 2011-03-05 | 2011-03-19 |  |  | CEMENTITIOUS FIREPROOFING [1875 h]; CEMENTITIOUS FIREPROOFING [3750 m2]; Cost |  |  | 300 | 305 | C02S207808C0 | 100 | CB | C |  | 02 | S2 | ST | 078 | 08 | BILL 4 | B04 | S1 | 04 | R00 | ACF03 | 078 |  | ST |  |  |  |  |  |  |  |  |  |  |  |  |  |  |  |
| C02CO04401C0 |  | CB-02 ; S1 - Ex. Partitions (Common Zone) |  | 200d | 2011-03-22 A | 2011-10-23 | C01CO04409C0 SS+15d, C04S103335C0, C04S203335C0, C02GN00606C0 FF | 95% | 10d | 2011-07-19 | 2012-03-19 | 61.05d | 0d | PARTITIONS [1152.03 m]; PARTITIONS [5737.4 h]; Cost |  |  | 690 | 185 | C02CO04401C0 | 40 | CB | C |  | 02 | CO | FA | 044 | 01 | BILL 4 | B04 | S1 | FS1 | R00 | ACF05 | 044 |  | FA | 88447.21 | 85 | 60 |  |  |  |  |  |  |  |  |  |  |  |  |
| C02GN00606C0 |  | CB-02 ; Temporary Enclosure | level of effort | 224.25d | 2011-05-15 A | 2012-06-04 | C02E109203C0 SS, C02E209203C0 SS, C02PA09203C0 SS, C02TR09203C0 SS | 8% | 206d | 2011-05-31 | 2012-02-28 | 124d | 0d | Labor General [0.6 h]; Cost |  |  |  |  |  |  | CB | C |  | 02 | GEN | FA | GEN |  |  | B04 |  | TE | R00 | ACF05 | 010 |  | FA |  | 34.48 | 22.64 |  |  |  |  |  |  |  |  |  |  |  |  |
| C02CO04409C0 |  | CB-02 ; S1 Onyx Stone (Common Zone) |  | 66d | 2011-08-10 A | 2011-10-19 | C02CO04401C0 SS | 90% | 6.6d | 2011-09-03 | 2011-11-22 | 62.13d | 0d | FACADE METAL PANEL 1 [156 h]; FACADE STONE PANEL 1 [2977.8 h]; FACADE METAL PANEL 1 [57 m2]; FACADE STONE PANEL 1 [1088 m2]; FACADE TOTAL QUANTITY m2 [1145 m2]; Cost |  |  | 691 | 186 | C02CO04409C0 |  | CB | C |  | 02 | CO | FA | 044 | 09 | BILL 4 | B04 | S1 | FS1 | R00 | ACF05 | 044 |  | FA |  | 25 | 0 |  |  |  |  |  |  |  |  |  |  |  |  |
| C02CO04455C0 |  | CB-02 ; S1 Inner Side of External Partition (Common Zone) |  | 48d | 2012-01-15 | 2012-03-12 | C02CO04401C0, C02PA09205C0 SS, C02E209205C0 SS, C02E109205C0 SS |  |  |  |  | 56.05d | 42d | FACADE STONE PANEL 1 [3666.4 h]; Cost |  |  |  |  | DP3CO04415C0 |  | CB | C |  | 02 | CO | FA | 044 | 15 | BILL 5 | B04 | S1 | FS1 | R00 | ACF05 | 044 |  | FA |  |  |  |  |  |  |  |  |  |  |  |  |  |  |  |
| C02CO04403C0 |  | CB-02 ; C3 - Bracket, mullion &transom (Panoramic Lifts) |  | 84d | 2012-02-28 | 2012-06-04 | C03CO04403C0 SS |  |  |  |  | 124d | 0d | FACADE CURTAIN WALL 3 [1086.6 h]; Cost |  |  | 688 | 183 | C02CO04403C0 |  | CB | C |  | 02 | CO | FA | 044 | 03 | BILL 4 | B04 | S1 | FC3 | R00 | ACF05 | 044 |  | FA |  |  |  |  |  |  |  |  |  |  |  |  |  |  |  |
| C02CO04405C0 |  | CB-02 ; C3 single glass (Panoramic Lifts) |  | 84d | 2012-02-28 | 2012-06-04 | C02CO04403C0 SS, C03CO04405C0 SS, C02GN00606C0 FF, C02CO04403C0 FF |  |  |  |  | 124d | 108.53d | FACADE CURTAIN WALL 3 [788.1 h]; FACADE BACK PAINTED BUTT GLAZED [309.4 h]; FACADE GLASS BOX [1903.7 h]; FACADE CURTAIN WALL 3 [288 m2]; FACADE BACK PAINTED BUTT GLAZED [113 m2]; FACADE GLASS BOX [696 m2]; FACADE TOTAL QUANTITY m2 [1097 m2]; Cost |  |  | 689 | 184 | C02CO04405C0 |  | CB | C |  | 02 | CO | FA | 044 | 05 | BILL 4 | B04 | S1 | FC3 | R00 | ACF05 | 044 |  | FA |  |  |  |  |  |  |  |  |  |  |  |  |  |  |  |
|  | 02 | **Exam 1** |  |  | 2011-03-24 | 2012-11-24 |  |  |  |  |  |  |  |  |  |  |  |  |  |  |  |  |  |  |  |  |  |  |  |  |  |  |  |  |  |  |  |  |  |  |  |  |  |  |  |  |  |  |  |  |  |  |
| C02E123001C0 |  | CB-02 ; 1st Fix, Inst. of Supports for MEP (Exam- 1) |  | 27d | 2011-03-24 A | 2011-05-30 A | C02S107807C0, C03S103335C0 | 100% |  | 2011-03-16 | 2011-04-17 |  |  | MECHANICAL [1024.8 h]; Cost [57766.2 AED] | 57,766.25 | 57,766.25 |  |  | C02E123001C0 | 100 | CB | C |  | 02 | E1 | ME | 230 | 01 | BILL 4 | B04 | S1 | 1F | R00 | ACF04 | 230 |  | MEP |  |  |  | 1S | M1F |  |  |  |  |  |  |  |  |  |  |
| C02E122019C0 |  | CB-02 ; 1st Fix, Inst of Drainage pipe (ceiling) (Exam- 1) |  | 200d | 2011-03-26 A | 2011-10-26 | C02E123001C0, C02E123017C0 SS+6d, C02S107807C0 | 98% | 4d | 2011-04-24 | 2011-12-22 | 17.73d | 0d | PLUMBING [1714.8 h]; Cost [92715.9 AED] | 92,715.95 | 90,861.63 |  |  | C02E122019C0 | 75 | CB | C |  | 02 | E1 | ME | 220 | 19 | BILL 4 | B04 | S1 | 1F | R00 | ACF04 | 220 |  | MEP | 5371.55 | 98 | 95 | 1S | M1F | 85 |  |  |  |  |  |  |  |  |  |
| C02E121111C0 |  | CB-02 ; 1st Fix, Inst of Sprinkler main pipe (Exam- 1) |  | 150d | 2011-03-28 A | 2011-11-12 | C02E122005C0 SS+6d, C02E123001C0, C02S107807C0 | 90% | 15d | 2011-05-08 | 2011-11-02 | 17.73d | 0d | MECHANICAL [686.4 h]; Cost [37438.4 AED] | 37,438.4 | 33,694.56 |  |  | C02E121111C0 | 70 | CB | C |  | 02 | E1 | ME | 211 | 11 | BILL 4 | B04 | S1 | 1F | R00 | ACF04 | 211 |  | MEP |  |  |  | 1S | M1F | 100 |  |  |  |  |  |  |  |  |  |
| C02E126013C0 |  | CB-02 ; 1st Fix, Inst of Cable Tray (Exam- 1) |  | 62d | 2011-03-29 A | 2011-06-08 A | C02E123001C0, C02E126001C0 SS+6d, C02S107807C0 | 100% |  | 2011-05-29 | 2011-08-10 |  |  | ELECTRICAL [948 h]; Cost [17044 AED] | 17,043.96 | 17,043.96 |  |  | C02E126013C0 | 25 | CB | C |  | 02 | E1 | ME | 260 | 13 | BILL 4 | B04 | S1 | 1F | R00 | ACF04 | 260 |  | MEP | 14883.49 |  |  | 1S | M1F |  |  |  |  |  |  |  |  |  |  |
| C02E127010C0 |  | CB-02 ; 1st Fix, Inst of Trunking for ELV system (Exam- 1) |  | 150d | 2011-03-29 A | 2011-11-30 | C02E123001C0, C02E126013C0 SS+6d, C02S107807C0 | 80% | 30d | 2011-06-05 | 2011-12-06 | 17.73d | 0d | ELECTRICAL [457.2 h]; Cost [24667.9 AED] | 24,667.88 | 19,734.3 |  |  | C02E127010C0 | 15 | CB | C |  | 02 | E1 | ME | 270 | 10 | BILL 4 | B04 | S1 | 1F | R00 | ACF04 | 270 |  | MEP | 22920.8 |  |  | 1S | M1F | 98 |  |  |  |  |  |  |  |  |  |
| C02E121117C0 |  | CB-02 ; 1st Fix, Inst of Sprinkler branch pipe (Exam- 1) |  | 150d | 2011-04-11 A | 2011-12-01 | C02E109201C0, C02E121111C0, C02E105503C0 FF+18d | 90% | 15d | 2011-06-30 | 2011-12-31 | 34.23d | 26.9d | MECHANICAL [1009.2 h]; Cost [55153.8 AED] | 55,153.76 | 49,638.38 |  |  | C02E121117C0 | 65 | CB | C |  | 02 | E1 | ME | 211 | 17 | BILL 4 | B04 | S1 | 1F | R00 | ACF04 | 211 |  | MEP | 3196.75 |  |  | 1S | M1F | 80 |  |  |  |  |  |  |  |  |  |
| C02E109201C0 |  | CB-02 ; Metal Studs (Exam- 1) |  | 84d | 2011-04-16 A | 2011-10-29 | C02E123001C0, CAFCI09202R02 FS+62d | 90% | 8.4d | 2011-05-24 | 2011-09-01 | 11.72d | 0d | PARTITIONS [4735 h]; PARTITIONS - Metal Studs [618 m]; Cost |  |  | 313 | 944 | C02E109201C0 | 55 | CB | C |  | 02 | E1 | PT | 092 | 01 | BILL 4 | B04 | S1 | 1F | R00 | ACF06 | 092 |  | GP | 78474.5 |  |  |  | PMS |  | 0 | 0 | 0 | 0 | 90 | R3 |  |  |  |
| C02E126001C0 |  | CB-02 ; 1st Fix, Inst of Trunking/Conduiting (Exam- 1) |  | 150d | 2011-04-20 A | 2011-11-20 | C02E123001C0, C02E123023C0 SS+6d, C02S107807C0 | 85% | 22.5d | 2011-05-22 | 2011-11-20 | 17.73d | 0d | ELECTRICAL [430.8 h]; Cost [29580.4 AED] | 29,580.43 | 25,143.36 |  |  | C02E126001C0 | 25 | CB | C |  | 02 | E1 | ME | 260 | 01 | BILL 4 | B04 | S1 | 1F | R00 | ACF04 | 260 |  | MEP | 24007.2 | 85 | 80 | 1S | M1F | 95 |  |  |  |  |  |  |  |  |  |
| C02E109203C0 |  | CB-02 ; Partitions 1st face (Exam- 1) |  | 54d | 2011-05-15 A | 2011-11-24 | C02E109201C0 | 63% | 19.98d | 2011-06-11 | 2011-08-14 | 39.75d | 32.42d | PARTITIONS [618 m]; PARTITIONS [3691 h]; Cost |  |  | 314 | 945 | C02E109203C0 | 5 | CB | C |  | 02 | E1 | PT | 092 | 03 | BILL 4 | B04 | S1 | 2F | R00 | ACF06 | 092 |  | GP | 87891.3 | 55 | 32 |  | P1F |  | 0 | 0 | 0 | 0 |  |  |  |  |  |
| C02E123023C0 |  | CB-02 ; 1st Fix, Inst of Main Ducting (Exam- 1) |  | 120d | 2011-05-22 A | 2011-11-30 | C02E121111C0 SS+6d, C02E123001C0, C02S107807C0 | 75% | 30d | 2011-06-20 | 2011-11-14 | 17.73d | 0d | MECHANICAL [16992 h]; Cost [927678 AED] | 927,677.51 | 695,758.13 |  |  | C02E123023C0 | 30 | CB | C |  | 02 | E1 | ME | 230 | 23 | BILL 4 | B04 | S1 | 1F | R00 | ACF04 | 230 |  | MEP | 161442.62 |  |  | 1S | M1F | 85 |  |  |  |  |  |  |  |  |  |
| C02E123017C0 |  | CB-02 ; 1st Fix, Inst of CHW pipe (Exam- 1) |  | 70d | 2011-05-31 A | 2011-12-01 | C02E123001C0, C02S107807C0, C02E105503C0 FF+18d | 55% | 31.5d | 2011-05-31 | 2011-08-21 | 17.73d | 0d | MECHANICAL [2395.2 h]; Cost [130782 AED] | 130,781.76 | 71,929.97 |  |  | C02E123017C0 |  | CB | C |  | 02 | E1 | ME | 230 | 17 | BILL 4 | B04 | S1 | 1F | R00 | ACF04 | 230 |  | MEP |  |  |  | 1S | M1F | 55 |  |  |  |  |  |  |  |  |  |
| C02E126009C0 |  | CB-02 ; 2nd Fix, Inst of Wall conduites (Exam- 1) |  | 41d | 2011-06-05 A | 2011-08-30 A | C02E109201C0 | 100% |  | 2011-06-05 | 2011-07-24 |  |  | ELECTRICAL [430.8 h]; Cost [29580.4 AED] | 29,580.43 | 29,580.43 |  |  | C02E126009C0 |  | CB | C |  | 02 | E1 | ME | 260 | 09 | BILL 4 | B04 | S1 | 2F | R00 | ACF07 | 260 |  | MEP | 13718.26 | 100 | 40 | 2n |  | 45 |  |  |  |  |  |  |  |  |  |
| C02E127001C0 |  | CB-02 ; 1st Fix, Wiring/ Cabling work (Exam- 1) |  | 48d | 2011-06-09 A | 2012-01-16 | C02E126001C0, C02E126013C0, C02E127010C0 | 20% | 38.4d | 2011-08-16 | 2011-10-12 | 51.33d | 44d | ELECTRICAL [216 h]; Cost [15494.5 AED] | 15,494.51 | 3,098.9 |  |  | C02E127001C0 |  | CB | C |  | 02 | E1 | ME | 270 | 01 | BILL 4 | B04 | S1 | 1F | R00 | ACF04 | 270 |  | MEP | 3598.69 |  |  | 1S | M1F | 25 |  |  |  |  |  |  |  |  |  |
| C02E123015C0 |  | CB-02 ; 2nd Fix, Insulation of CHW pipe & Duct (Exam- 1) |  | 60d | 2011-07-10 A | 2012-01-08 | C02E123009C0 SS, C02E123017C0 SS, C02E123023C0 SS | 50% | 30d | 2011-09-18 | 2011-11-30 | 58.23d | 50.9d | MECHANICAL [6742.8 h]; Cost [363863 AED] | 363,863.22 | 181,931.61 |  |  | C02E123015C0 |  | CB | C |  | 02 | E1 | ME | 230 | 15 | BILL 4 | B04 | S1 | 2F | R00 | ACF07 | 230 |  | MEP |  | 41 | 35 | 2n |  | 25 | 0 | 0 | 0 | 0 |  |  | 50 |  |  |
| C02E122005C0 |  | CB-02 ; 1st Fix, Inst of Water supply pipe (ceiling) (Exam- 1) |  | 48d | 2011-08-10 A | 2011-12-11 | C02E122019C0 SS+6d, C02E123001C0, C02S107807C0 | 20% | 38.4d | 2011-07-31 | 2011-09-26 | 17.73d | 0d | PLUMBING [1682.4 h]; Cost [90924.8 AED] | 90,924.75 | 18,184.95 |  |  | C02E122005C0 |  | CB | C |  | 02 | E1 | ME | 220 | 05 | BILL 4 | B04 | S1 | 1F | R00 | ACF04 | 220 |  | MEP |  | 20 | 0 | 1S | M1F | 25 |  |  |  |  |  |  |  |  |  |
| C02E122011C0 |  | CB-02 ; 2nd Fix, Drainage/Water pipe (wall) (Exam- 1) |  | 42d | 2011-08-10 A | 2011-12-27 | C02E109201C0, CAFCI09201R20 FS+79d | 10% | 37.8d | 2011-12-24 | 2012-02-12 | 7.33d | 0d | PLUMBING [1714.8 h]; Cost [92715.9 AED] | 92,715.95 | 9,271.6 |  |  | C02E122011C0 |  | CB | C |  | 02 | E1 | ME | 220 | 11 | BILL 4 | B04 | S1 | 2F | R00 | ACF07 | 220 |  | MEP |  | 10 | 0 | 2n |  |  |  |  |  |  |  |  |  |  |  |
| C02E105503C0 |  | CB-02 ; Ceiling Support for medical equipment (Exam- 1) |  | 10d | 2011-09-05 A | 2011-11-09 | C02E109201C0 | 25% | 7.5d | 2011-10-25 | 2011-11-09 | 17.73d | 0d | SECONDARY STEEL [146 h]; STRUCTURAL STEEL [2 T(Fe)]; Cost |  |  | 335 | 962 | C02E105503C0 |  | CB | C |  | 02 | E1 | SW | 055 | 03 | BILL 4 | B04 | S1 | 03 | R00 | ACF03 | b |  |  |  |  |  |  |  |  |  |  |  |  |  |  |  |  |  |
| C02E122007C0 |  | CB-02 ; 1st Fix, Inst of Medical Gas pipe (Exam- 1) |  | 42d | 2011-10-22 | 2011-12-15 | C02E123001C0, C02E127010C0 SS+5d, C02S107807C0 |  |  |  |  | 17.73d | 6d | PLUMBING [504 h]; Cost |  |  |  |  | C02E122007C0 |  | CB | C |  | 02 | E1 | ME | 220 | 07 | BILL 4 | B04 | S1 | 1F | R00 | ACF04 | 220 |  | MEP |  |  |  | 1S | M1F | 20 |  |  |  |  |  |  |  |  |  |
| C02E105511C0 |  | CB-02 ; Wall reinforcement for MEP/Medical (Exam- 1) |  | 24d | 2011-10-29 | 2011-11-30 | C02E109201C0 |  |  |  |  | 35.73d | 28.4d | SECONDARY STEEL [52 h]; Cost |  |  |  |  | C02E105511C0 |  | CB | C |  | 02 | E1 | SW | 055 | 11 | BILL 4 | B04 | S1 | 03 | R00 | ACF03 | b |  |  |  |  |  |  |  |  |  |  |  |  |  |  |  |  |  |
| C02E122015C0 |  | CB-02 ; 2nd Fix, Medical Gas pipe (Exam- 1) |  | 42d | 2011-10-29 | 2011-12-22 | C02E109201C0, C02E122007C0 SS |  |  |  |  | 11.72d | 4.4d | PLUMBING [504 h]; Cost |  |  |  |  | C02E122015C0 |  | CB | C |  | 02 | E1 | ME | 220 | 15 | BILL 4 | B04 | S1 | 2F | R00 | ACF07 | 220 |  | MEP |  |  |  | 2n |  | 20 |  |  |  |  |  |  |  |  |  |
| C02E108103C0 |  | CB-02 ; Door Frames (Exam- 1) |  | 42d | 2011-11-27 | 2012-01-16 | C02E109201C0, GNHE08101C0 FS+93d |  |  |  |  | 51.12d | 43.8d | ASSORTED DOORS [195 h]; Cost |  |  | 316 | 947 | C02E108103C0 |  | CB | C | 08 | 02 | E1 | DO | 081 | 03 | BILL 4 | B04 | S1 | DF | R00 | ACF06 | 081 |  |  |  |  |  |  |  |  |  |  |  |  |  |  |  |  |  |
| C02E123008C0 |  | CB-02 ; 1st Fix, Inst of VCD's/FD's (Exam- 1) |  | 42d | 2011-11-30 | 2012-01-21 | C02E123023C0, C02E105503C0 FF+18d |  |  |  |  | 47.73d | 40.4d | MECHANICAL [2648.4 h]; Cost |  |  |  |  | C02E123008C0 |  | CB | C |  | 02 | E1 | ME | 230 | 08 | BILL 4 | B04 | S1 | 1F | R00 | ACF04 | 230 |  | MEP |  |  |  | 1S | M1F | 45 |  |  |  |  |  |  |  |  |  |
| C02E123009C0 |  | CB-02 ; 2nd Fix, Inst of VAV'S CHW connection (Exam- 1) |  | 30d | 2011-12-01 | 2012-01-08 | C02E123017C0 |  |  |  |  | 58.23d | 0d | MECHANICAL [1419.6 h]; Cost |  |  |  |  | C02E123009C0 |  | CB | C |  | 02 | E1 | ME | 230 | 09 | BILL 4 | B04 | S1 | 2F | R00 | ACF07 | 230 |  | MEP |  |  |  | 2n |  |  |  |  |  |  |  |  |  |  |  |
| C02E101005C0 |  | CB-02 ; 2nd, Wall Inspection by Consultant (Exam- 1) |  | 6d | 2011-12-27 | 2012-01-04 | C02E122011C0, C02E122015C0, C02E126009C0 |  |  |  |  | 7.33d | 0d | Labor General [0.6 h]; Cost |  |  |  |  | C02E101005C0 |  | CB | C |  | 02 | E1 | ME | 010 | 05 | BILL 4 | B04 | S1 | WI | R00 | ACF07 | 010 |  | MEP |  |  |  | 2n |  |  |  |  |  |  |  |  |  |  |  |
| C02E109205C0 |  | CB-02 ; Partitions Closing (Exam- 1) |  | 54d | 2012-01-04 | 2012-03-08 | C02E101005C0, C02E105511C0, C02E108103C0 FF, C02E109203C0, C02E122005C0, C02E122019C0, C02E123023C0 FF, CAFOA09204C1 FF, C02E121117C0, C02E123015C0 FF, C02E127001C0 FF, C02E123008C0 FF, CAFCI09201R20 FS+79d |  |  |  |  | 7.33d | 0d | PARTITIONS [618 m]; PARTITIONS [4738 h]; Cost |  |  | 315 | 946 | C02E109205C0 |  | CB | C |  | 02 | E1 | PT | 092 | 05 | BILL 4 | B04 | S1 | FF | R00 | ACF06 | 092 |  | GP |  |  |  |  | P2F |  |  |  |  |  |  | R3 |  |  |  |
| C02E107103C0 |  | CB-02 ; Waterproofing (Exam- 1) |  | 12d | 2012-03-08 | 2012-03-22 | C02E108103C0, C02E109205C0 |  |  |  |  | 49.2d | 0d | THERMAL & MOISTURE [168 h]; THERMAL & MOISTURE [1069 m2]; Cost |  |  | 105 | 999 | C02E107103C0 |  | CB | C |  | 02 | E1 | FF | 071 | 03 | BILL 4 | B04 | S1 | 01 | R00 | ACF03 | 071 |  |  |  |  |  |  |  |  |  |  |  |  |  |  |  |  |  |
| C02E109901C0 |  | CB-02 ; Wall Prime & 1st coat (Exam- 1) |  | 24d | 2012-03-08 | 2012-04-05 | C02E109205C0 |  |  |  |  | 7.33d | 0d | WALL PAINT [1729 h]; WALL PAINT [2158 m2]; Cost |  |  | 328 | 956 | C02E109901C0 |  | CB | C |  | 02 | E1 | PA | 099 | 01 | BILL 4 | B04 | S1 | 01 | R00 | ACF06 | 099 |  |  |  |  |  |  |  |  |  |  |  |  |  |  |  |  |  |
| C02E126005C0 |  | CB-02 ; 2nd Fix, Wiring for Power/Lighting/Emergency (Exam- 1) |  | 42d | 2012-03-08 | 2012-04-26 | C02E109205C0 |  |  |  |  | 58.33d | 0d | ELECTRICAL [216 h]; Cost |  |  |  |  | C02E126005C0 |  | CB | C |  | 02 | E1 | ME | 260 | 05 | BILL 4 | B04 | S1 | 2F | R00 | ACF07 | 260 |  | MEP |  |  |  | 2n |  |  |  |  |  |  |  |  |  |  |  |
| C02E126007C0 |  | CB-02 ; 2nd Fix, Cable Pulling (Exam- 1) |  | 42d | 2012-03-08 | 2012-04-26 | C02E109201C0 SS+6d, C02E109205C0 |  |  |  |  | 112.33d | 105d | ELECTRICAL [6616.8 h]; Cost |  |  |  |  | C02E126007C0 |  | CB | C |  | 02 | E1 | ME | 260 | 07 | BILL 4 | B04 | S1 | 2F | R00 | ACF07 | 260 |  | MEP |  |  |  | 2n |  |  |  |  |  |  |  |  |  |  |  |
| C02E126011C0 |  | CB-02 ; 2nd Fix, Inst of Equipment (DB) (Exam- 1) |  | 42d | 2012-03-08 | 2012-04-26 | C02E109205C0 |  |  |  |  | 22.32d | 15d | ELECTRICAL [1266 h]; Cost |  |  |  |  | C02E126011C0 |  | CB | C |  | 02 | E1 | ME | 260 | 11 | BILL 4 | B04 | S1 | 2F | R00 | ACF04 | 260 |  | MEP |  |  |  | 2n |  |  |  |  |  |  |  |  |  | E |  |
| C02E126053C0 |  | CB-02 ; 2nd Fix, Wiring / Cabling (Exam- 1) |  | 30d | 2012-03-08 | 2012-04-12 | C02E109203C0, C02E109205C0 |  |  |  |  | 124.33d | 117d | ELECTRICAL [216 h]; Cost |  |  | 389 | 977 | C02E126053C0 |  | CB | C |  | 02 | E1 | ME | 260 | 53 | BILL 4 | B04 | S1 | 2F | R00 | ACF07 | 260 |  | MEP |  |  |  | 2n |  |  |  |  |  |  |  |  |  |  |  |
| C02E127020C0 |  | CB-02 ; 2nd Fix, Inst of ELV Equipment (Panels) (Exam- 1) |  | 42d | 2012-03-08 | 2012-04-26 | C02E109205C0 |  |  |  |  | 52.33d | 45d | ELECTRICAL [384 h]; Cost |  |  |  |  | C02E127020C0 |  | CB | C |  | 02 | E1 | ME | 270 | 20 | BILL 4 | B04 | S1 | 2F | R00 | ACF04 | 270 |  | MEP |  |  |  | 2n |  |  |  |  |  |  |  |  |  | E |  |
| C02E109305C0 |  | CB-02 ; Ceramic floor tile (Exam- 1) |  | 30d | 2012-03-22 | 2012-04-26 | C02E107103C0 |  |  |  |  | 49.2d | 0d | CERAMIC FLOOR TILES [200 h]; CERAMIC FLOOR TILES [108 m2]; Cost |  |  | 106 | 1000 | C02E109305C0 |  | CB | C |  | 02 | E1 | FF | 093 | 05 | BILL 4 | B04 | S1 | 02 | R00 | ACF06 | CT |  |  |  |  |  |  |  |  |  |  |  |  |  |  |  |  |  |
| C02E105501C0 |  | CB-02 ; Handrails & balustrade (Exam- 1) |  | 36d | 2012-04-05 | 2012-05-17 | C02E109901C0 |  |  |  |  | 34.33d | 27d | SECONDARY STEEL [288 h]; Cost |  |  |  |  | C02E105501C0 |  | CB | C |  | 02 | E1 | SW | 055 | 01 | BILL 4 | B04 | S1 | 01 | R00 | ACF03 | a |  |  |  |  |  |  |  |  |  |  |  |  |  |  |  |  |  |
| C02E109501C0 |  | CB-02 ; Ceiling Grid and ServiceTile (Exam- 1) |  | 33d | 2012-04-05 | 2012-05-14 | C02E105503C0, C02E109205C0 SS+15d, C02E121117C0, C02E122007C0, C02E123008C0, C02E123009C0, C02E123015C0, C02E127001C0, C02E126011C0 FF, C02E109901C0 |  |  |  |  | 7.33d | 0d | CEILING GRID FOR GYPSUM [2357.08 h]; CEILING GRID FOR GYPSUM [201.6 m2]; Cost |  |  | 323 | 952 | C02E109501C0 |  | CB | C |  | 02 | E1 | CE | 095 | 01 | BILL 4 | B04 | S1 | 01 | R00 | ACF06 | 095 |  |  |  |  |  |  |  |  |  |  |  |  |  |  |  |  |  |
| C02E122025C0 |  | CB-02 ; Final Fix, Inst of Sanitary Ware (Exam- 1) |  | 48d | 2012-04-26 | 2012-06-23 | C02E109205C0, C02E109305C0, A10230 FS+148d |  |  |  |  | 49.2d | 0d | PLUMBING [1491.6 h]; Cost |  |  |  |  | C02E122025C0 |  | CB | C |  | 02 | E1 | ME | 220 | 25 | BILL 4 | B04 | S1 | FF | R00 | ACF07 | 220 |  | MEP |  |  |  | FF |  |  |  |  |  |  |  |  |  |  |  |
| C02E126015C0 |  | CB-02 ; Final Fix, Termination & Gladding of Cables (Exam- 1) |  | 48d | 2012-04-26 | 2012-06-23 | C02E126005C0 |  |  |  |  | 58.33d | 45d | ELECTRICAL [826.8 h]; Cost |  |  |  |  | C02E126015C0 |  | CB | C |  | 02 | E1 | ME | 260 | 15 | BILL 4 | B04 | S1 | FF | R00 | ACF07 | 260 |  | MEP |  |  |  | FF |  |  |  |  |  |  |  |  |  |  |  |
| C02E109601C0 |  | CB-02 ; Flooring (Rubber & etc) (Exam- 1) |  | 30d | 2012-05-14 | 2012-06-19 | C02E109901C0, C02E109501C0, C02E127020C0 FF, C02E105501C0 FF |  |  |  |  | 7.33d | 0d | RUBBER FLOOR [264 h]; RUBBER FLOOR [650 m2]; Cost |  |  | 326 | 955 | C02E109601C0 |  | CB | C |  | 02 | E1 | FF | 096 | 01 | BILL 4 | B04 | S1 | 03 | R00 | ACF06 | RF |  |  |  |  |  |  |  |  |  |  |  |  |  |  |  |  | R3 |
| C02E109903C0 |  | CB-02 ; Wall Final Paint (Exam- 1) |  | 36d | 2012-05-14 | 2012-06-26 | C02E109901C0, C02E109905C0 |  |  |  |  | 106.2d | 66d | WALL PAINT [931 h]; WALL PAINT [1162 m2]; Cost |  |  | 329 | 957 | C02E109903C0 |  | CB | C |  | 02 | E1 | PA | 099 | 03 | BILL 4 | B04 | S1 | 02 | R00 | ACF06 | 099 |  |  |  |  |  |  |  |  |  |  |  |  |  |  |  |  |  |
| C02E109905C0 |  | CB-02 ; Ceiling Prime & 1st coat (Exam- 1) |  | 0d | 2012-05-14 | 2012-05-14 | C02E109501C0 |  |  |  |  | 106.2d | 0d | Cost |  |  | 330 | 958 | C02E109905C0 |  | CB | C |  | 02 | E1 | PA | 099 | 05 | BILL 4 | B04 | S1 | 01 | R00 | ACF06 | 099 |  |  |  |  |  |  |  |  |  |  |  |  |  |  |  |  |  |
| C02E121115C0 |  | CB-02 ; 2nd Fix, Inst of Sprinkler droppers (Exam- 1) |  | 30d | 2012-05-14 | 2012-06-19 | C02E109501C0 |  |  |  |  | 37.33d | 0d | MECHANICAL [1404 h]; Cost |  |  |  |  | C02E121115C0 |  | CB | C |  | 02 | E1 | ME | 211 | 15 | BILL 4 | B04 | S1 | 2F | R00 | ACF07 | 211 |  | MEP |  |  |  | 2n |  |  |  |  |  |  |  |  |  |  |  |
| C02E123021C0 |  | CB-02 ; 2nd Fix, Inst of Flexible Duct & Plenum boxes (Exam- 1) |  | 42d | 2012-05-14 | 2012-07-03 | C02E109205C0, C02E109501C0 |  |  |  |  | 37.33d | 0d | MECHANICAL [903.6 h]; Cost |  |  |  |  | C02E123021C0 |  | CB | C |  | 02 | E1 | ME | 230 | 21 | BILL 4 | B04 | S1 | 2F | R00 | ACF07 | 230 |  | MEP |  |  |  | 2n |  |  |  |  |  |  |  |  |  |  |  |
| C02E126017C0 |  | CB-02 ; Final Fix, Inst of Ceiling rose (Exam- 1) |  | 48d | 2012-05-14 | 2012-07-10 | C02E109501C0 |  |  |  |  | 36.33d | 0d | ELECTRICAL [123.6 h]; Cost |  |  |  |  | C02E126017C0 |  | CB | C |  | 02 | E1 | ME | 260 | 17 | BILL 4 | B04 | S1 | FF | R00 | ACF07 | 260 |  | MEP |  |  |  | FF |  |  |  |  |  |  |  |  |  |  |  |
| C02E127002C0 |  | CB-02 ; 2nd Fix, Wiring Droppers (Exam- 1) |  | 42d | 2012-05-14 | 2012-07-03 | C02E109501C0 |  |  |  |  | 37.33d | 0d | ELECTRICAL [216 h]; Cost |  |  |  |  | C02E127002C0 |  | CB | C |  | 02 | E1 | ME | 270 | 02 | BILL 4 | B04 | S1 | 2F | R00 | ACF07 | 270 |  | MEP |  |  |  | 2n |  |  |  |  |  |  |  |  |  |  |  |
| C02E121113C0 |  | CB-02 ; Final Fix, Inst of Sprinklers head/ Extinguisher (Exam- 1) |  | 48d | 2012-05-21 | 2012-07-17 | C02E109501C0, C02E121115C0 SS+6d, CV09GZ21158R2 |  |  |  |  | 37.33d | 24d | MECHANICAL [278.4 h]; Cost |  |  |  |  | C02E121113C0 |  | CB | C |  | 02 | E1 | ME | 211 | 13 | BILL 4 | B04 | S1 | FF | R00 | ACF07 | 211 |  | MEP |  |  |  | FF |  |  |  |  |  |  |  |  |  |  |  |
| C02E123019C0 |  | CB-02 ; Final Fix, Inst of Grilles & Diffusers (Exam- 1) |  | 48d | 2012-05-21 | 2012-07-17 | C02E109501C0, C02E123021C0 SS+6d |  |  |  |  | 37.33d | 24d | MECHANICAL [1970.4 h]; Cost |  |  |  |  | C02E123019C0 |  | CB | C |  | 02 | E1 | ME | 230 | 19 | BILL 4 | B04 | S1 | FF | R00 | ACF07 | 230 |  | MEP |  |  |  | FF |  |  |  |  |  |  |  |  |  |  |  |
| C02E127030C0 |  | CB-02 ; Final Fix, Inst of ELV device (Detector/Speaker) (Exam- 1) |  | 48d | 2012-05-21 | 2012-07-17 | C02TR27002C0 SS+6d, C02E109501C0, C02E127002C0 SS+6d |  |  |  |  | 37.33d | 24d | ELECTRICAL [2054.4 h]; Cost |  |  |  |  | C02E127030C0 |  | CB | C |  | 02 | E1 | ME | 270 | 30 | BILL 4 | B04 | S1 | FF | R00 | ACF07 | 270 |  | MEP |  |  |  | FF |  |  |  |  |  |  |  |  |  |  |  |
| C02E126003C0 |  | CB-02 ; Final Fix, Inst of Light fittings (Exam- 1) |  | 48d | 2012-05-22 | 2012-07-18 | C02E126017C0 SS+7d |  |  |  |  | 36.33d | 23d | ELECTRICAL [7983.6 h]; Cost |  |  |  |  | C02E126003C0 |  | CB | C |  | 02 | E1 | ME | 260 | 03 | BILL 4 | B04 | S1 | FF | R00 | ACF07 | 260 |  | MEP |  |  |  | FF |  |  |  |  |  |  |  |  |  |  |  |
| C02E106101C0 |  | CB-02 ; Wood / caseworks (Exam- 1) |  | 60d | 2012-06-19 | 2012-08-30 | C02CO04401C0, C02E109501C0, C02E109901C0, CAFWA00113M0, CAFCI22001R02 FS+196d, C02E109601C0, A10370 |  |  |  |  | 7.33d | 0d | WOOD WORK/CASEWORK [1165.15 no]; WOOD WORK/CASEWORK [4749 h]; Cost |  |  | 332 | 960 | C02E106101C0 |  | CB | C |  | 02 | E1 | WO | 061 | 01 | BILL 4 | B04 | S1 | WW | R00 | ACF06 | 061 |  |  |  |  |  |  |  |  |  |  |  |  |  |  |  |  | R3 |

| ID | WBS | Activity | Duration | Start | Finish | Predecessors | Complete | Remaining | Planned start | Planned finish | Total float | Free float | Resources | Cost | Actual cost | Change Order # | NEW ACTIVITY ID | change id | CCAD BUILDING(SET) | CCAD PHASE(SET) | CCAD FLOOR(SET) | CCAD ZONE(SET) | CCAD WORK(SET) | CCAD SECTION(SET) | CCAD SERIAL No.(SET) | CCAD CBS(SET) | CCAD BILL(SET) | CCAD HANDOVER(SET) | CCAD TAG(SET) | CCAD REV(SET) | CCADACF (SET) | CCAD SSCF | R3 Finish | CCAD DIVISION(SET) | CCAD SUB ZONE MEP(SET) | CCAD CSA | RENZ % COMPLETE | July2011 Target% Complete | Claimed This Month | Act Selector % | P_811 | P_711 | user_number8 | user_integer1 | user_integer2 | user_number7 | U% | R3 Partitions | PERCENT COMPLETE | CCAD MEQ |
| --- | --- | --- | --- | --- | --- | --- | --- | --- | --- | --- | --- | --- | --- | --- | --- | --- | --- | --- | --- | --- | --- | --- | --- | --- | --- | --- | --- | --- | --- | --- | --- | --- | --- | --- | --- | --- | --- | --- | --- | --- | --- | --- | --- | --- | --- | --- | --- | --- | --- | --- |
| C02E106102C0 |  | CB-02 ; Head Wall (Exam- 1) | 30d | 2012-06-19 | 2012-07-24 | C02CO04401C0, C02E109501C0, C02E106101C0 SS, CAFWA00113M0, CAFCI22001R02 FS+196d |  |  |  |  | 82.2d | 74.88d | WOOD WORK/CASEWORK [2168 h]; Cost |  |  | 332 | 960 | C02E106102C0 | CB | C | 02 | E1 | WO | 061 | 02 | BILL 4 | B04 | S1 | WW | R00 | ACF06 | 061 | R3 |  |  |  |  |  |  |  |  |  |  |  |  |  |  |  |  |  |
| C02E108107C0 |  | CB-02 ; Doors (Exam- 1) | 42d | 2012-06-19 | 2012-08-07 | C02E108103C0, C02E109901C0, C02E109601C0 |  |  |  |  | 38.2d | 0d | ASSORTED DOORS [660 h]; ASSORTED DOORS [66 no]; Cost |  |  | 317 | 948 | C02E108107C0 | CB | C | 02 | E1 | DO | 081 | 07 | BILL 4 | B04 | S1 | DR | R00 | ACF06 | 081 |  | 08 |  |  |  |  |  |  |  |  |  |  |  |  |  |  |  |  |
| C02E109701C0 |  | CB-02 ; Wall finishes (ST, WD, WC) (Exam- 1) | 36d | 2012-06-19 | 2012-07-31 | C02E127020C0 FF, CAFCI22001R02 FS+176d, C02E106101C0 SS, C02E109601C0 |  |  |  |  | 31.32d | 0d | ASSORTED WALL FINISH [1665 h]; ASSORTED WALL FINISH [1913 m2]; Cost |  |  | 105 | 1002 | C02E109701C0 | CB | C | 02 | E1 | WF | 097 | 01 | BILL 4 | B04 | S1 | 01 | R00 | ACF06 | 097 | R3 |  |  |  |  |  |  |  |  |  |  |  |  |  |  |  |  |  |
| C02E111005C0 |  | CB-02 ; Utility belt (Exam- 1) | 30d | 2012-06-19 | 2012-07-24 | C02E106101C0 SS, C02E109205C0 |  |  |  |  | 13.32d | 0d | FF&E [675 h]; FF&E [359.93 no]; Cost |  |  |  |  | C02E111005C0 | CB | C | 02 | E1 | WO | 110 | 05 | BILL 4 | B04 | S1 | 05 | R00 | ACF08 | e |  |  |  |  |  |  |  |  |  |  |  |  |  |  |  |  |  |  |
| C02E122021C0 |  | CB-02 ; Final Fix, Terminate Sanitary Ware & Appliances (Exam- 1) | 48d | 2012-06-23 | 2012-08-18 | C02E122011C0, C02E122025C0 |  |  |  |  | 49.2d | 41.88d | PLUMBING [1491.6 h]; Cost |  |  |  |  | C02E122021C0 | CB | C | 02 | E1 | ME | 220 | 21 | BILL 4 | B04 | S1 | FF | R00 | ACF07 | 220 |  |  | FF | MEP |  |  |  |  |  |  |  |  |  |  |  |  |  |  |
| C02E122029C0 |  | CB-02 ; Final Fix, Medical Gas pipe (Exam- 1) | 18d | 2012-07-24 | 2012-08-14 | C02E109501C0, C02E111005C0 |  |  |  |  | 13.32d | 0d | PLUMBING [504 h]; Cost |  |  |  |  | C02E122029C0 | CB | C | 02 | E1 | ME | 220 | 29 | BILL 4 | B04 | S1 | FF | R00 | ACF07 | 220 |  |  | FF | MEP |  |  |  |  |  |  |  |  |  |  |  |  |  |  |
| C02E111001C0 |  | CB-02 ; Wall Protection (WP, CG, WG, FCG) (Exam- 1) | 24d | 2012-07-31 | 2012-08-30 | C02E109701C0, C02E109903C0 SS |  |  |  |  | 52.2d | 44.88d | FF&E [68 h]; Cost |  |  | 326 | 1001 | C02E111001C0 | CB | C | 02 | E1 | WF | 110 | 01 | BILL 4 | B04 | S1 | 03 | R00 | ACF08 | b |  |  |  |  |  |  |  |  |  |  |  |  |  |  |  |  |  |  |
| C02E108709C0 |  | CB-02 ; Ironmongery (Exam- 1) | 32d | 2012-08-07 | 2012-09-16 | C02E108107C0 |  |  |  |  | 38.2d | 30.88d | IRONMONGERY [710 h]; IRONMONGERY [71 no]; Cost |  |  | 322 | 951 | C02E108709C0 | CB | C | 02 | E1 | DO | 087 | 09 | BILL 4 | B04 | S1 | IM | R00 | ACF06 | 087 |  | 08 |  |  |  |  |  |  |  |  |  |  |  |  |  |  |  |  |
| C02E101006C0 |  | CB-02 ; 2nd, Ceiling Inspection by Consultants (Exam- 1) | 6d | 2012-08-14 | 2012-08-23 | C02E121115C0, C02E123009C0, C02E123015C0, C02E127002C0, C02E109501C0, C02E121113C0, C02E122029C0, C02E123019C0, C02E126003C0, C02E127030C0, C02E126015C0 |  |  |  |  | 13.32d | 6d | Labor General [0.6 h]; Cost |  |  |  |  | C02E101006C0 | CB | C | 02 | E1 | ME | 010 | 06 | BILL 4 | B04 | S1 | CI | R00 | ACF07 | 010 |  |  | 2n | MEP |  |  |  |  |  |  |  |  |  |  |  |  |  |  |
| C02E109503C0 |  | CB-02 ; Ceiling closure - ACT/Gypsum (Exam- 1) | 20.88d | 2012-08-30 | 2012-09-24 | C02E101006C0, C02E121115C0, C02E126005C0, C02E127002C0, CAFOA09503C1 FF, C02E106101C0, C02E109701C0, C02E123021C0, C02E126053C0, C02E126007C0, CV100209504R2 FF |  |  |  |  | 7.33d | 0d | ASSORTED CEILING FINISH [449.56 h]; CEILING GYPSUM [66.22 h]; ASSORTED CEILING FINISH [731 m2]; CEILING GYPSUM [184 m2]; Cost |  |  | 324 | 953 | C02E109503C0 | CB | C | 02 | E1 | CE | 095 | 03 | BILL 4 | B04 | S1 | 02 | R00 | ACF06 | 095 |  |  |  |  |  |  |  |  |  |  |  |  |  |  |  |  |  |  |
| C02E109676C1 |  | CB-02, Carpet Tile Finish (Exam-1 Offices/Conference) | 0d | 2012-09-24 | 2012-09-24 | C02E109903C0 SS, C02E109907C0 SS |  |  |  |  | 31.32d | 24d | Cost |  |  |  |  |  | CB | C | 02 | E1 | FF | 096 |  |  | B04 |  |  | R00 | ACF06 | CPT |  |  |  | CPT |  |  |  |  |  |  |  |  |  |  |  |  |  |  |
| C02E109907C0 |  | CB-02 ; Ceiling Final paint (Exam- 1) | 0d | 2012-09-24 | 2012-09-24 | C02E109601C0, C02E109905C0, C02E109503C0 |  |  |  |  | 31.32d | 0d | Cost |  |  | 331 | 959 | C02E109907C0 | CB | C | 02 | E1 | PA | 099 | 07 | BILL 4 | B04 | S1 | 02 | R00 | ACF06 | 099 |  |  |  |  |  |  |  |  |  |  |  |  |  |  |  |  |  |  |
| C02E111003C0 |  | CB-02 ; FF & E (Exam- 1) | 12d | 2012-09-24 | 2012-10-08 | C02E109601C0, C02E109503C0 |  |  |  |  | 19.32d | 12d | FF&E [249 h]; FF&E [132.59 no]; Cost |  |  | 333 | 961 | C02E111003C0 | CB | C | 02 | E1 | WO | 110 | 03 | BILL 4 | B04 | S1 | 04 | R00 | ACF08 | a |  |  |  |  |  |  |  |  |  |  |  |  |  |  |  |  |  |  |
| C02E122027C0 |  | CB-02 ; Final Fix, Inst of All drain (Exam- 1) | 12d | 2012-09-24 | 2012-10-08 | C02E109305C0, C02E109503C0 |  |  |  |  | 7.33d | 0d | PLUMBING [1491.6 h]; Cost |  |  |  |  | C02E122027C0 | CB | C | 02 | E1 | ME | 220 | 27 | BILL 4 | B04 | S1 | FF | R00 | ACF07 | 220 |  |  | FF | MEP |  |  |  |  |  |  |  |  |  |  |  |  |  |  |
| C02E126019C0 |  | CB-02 ; Final Fix, Inst of Switch/Sockets (Exam- 1) | 12d | 2012-09-24 | 2012-10-08 | C02E109901C0, C02E109503C0 |  |  |  |  | 7.33d | 0d | ELECTRICAL [427.2 h]; Cost |  |  |  |  | C02E126019C0 | CB | C | 02 | E1 | ME | 260 | 19 | BILL 4 | B04 | S1 | FF | R00 | ACF07 | 260 |  |  | FF | MEP |  |  |  |  |  |  |  |  |  |  |  |  |  |  |
|  | 10 | **Precommissioning Tesing & snagging (Exam 1)** |  | 2012-10-08 | 2012-11-24 |  |  |  |  |  |  |  |  |  |  |  |  |  |  |  |  |  |  |  |  |  |  |  |  |  |  |  |  |  |  |  |  |  |  |  |  |  |  |  |  |  |  |  |  |  |
| C02TS01801C0 |  | CB-02 ; MEP de-snag, FIREM sign-off | 12d | 2012-10-08 | 2012-10-22 | C02E122025C0, C02E122027C0, C02E126015C0, C02E121113C0, C02E123019C0, C02E122029C0, C02E126017C0, C02E126003C0, C02E127030C0, C02E122021C0, C02E126019C0, C02E111005C0 |  |  |  |  | 7.33d | 0d | TESTING & COMMISSIONING [2040 h]; Cost |  |  |  |  | C02TS01801C0 | CB | C | 02 | TS | SC | 018 | 01 | BILL 4 | B04 | S1 | 01 | R00 | ACF07 | 018 |  |  |  |  |  |  |  |  |  |  |  |  |  |  |  |  |  |  |
| C02TS01806C0 |  | CB-02 ; Touch-up & Clean / JV inspection /CIR /De-snag | 18d | 2012-10-22 | 2012-11-14 | C02E106101C0, C02E106102C0, C02E108709C0, C02E109305C0, C02E109601C0, C02E109701C0, C02E109903C0, C02E109907C0, C02E111001C0, C02E111003C0, C02TS01801C0, C02E105501C0, C02CO04405C0, C02E109503C0, C02E109676C1 |  |  |  |  | 7.33d | 0d | TESTING & COMMISSIONING [149 h]; Cost |  |  |  |  | C02TS01802C0 | CB | C | 02 | TS | SC | 018 | 02 | BILL 4 | B04 | S1 | 02 | R00 | ACF07 | 018 |  |  |  |  |  |  |  |  |  |  |  |  |  |  |  |  |  |  |
| C02TS01809C0 |  | CB-02 ; Consultant's final de-snag inspection | 7d | 2012-11-14 | 2012-11-24 | C02TS01806C0 |  |  |  |  | 7.33d | 0d | Labor General [0.5 h]; Cost |  |  |  |  | C02TS01803C0 | CB | C | 02 | TS | SC | 018 | 03 | BILL 4 | B04 | S1 | 03 | R00 | ACF07 | 018 |  |  |  |  |  |  |  |  |  |  |  |  |  |  |  |  |  |  |
|  | 03 | **Exam 2** |  | 2011-03-25 | 2012-11-13 |  |  |  |  |  |  |  |  |  |  |  |  |  |  |  |  |  |  |  |  |  |  |  |  |  |  |  |  |  |  |  |  |  |  |  |  |  |  |  |  |  |  |  |  |  |
| C02E223001C0 |  | CB-02 ; 1st Fix, Inst. of Supports for MEP (Exam- 2) | 27d | 2011-03-25 A | 2011-07-30 A | C02S207808C0, C03S203335C0 | 100% |  | 2011-03-19 | 2011-04-19 |  |  | MECHANICAL [1024.8 h]; Cost [57766.2 AED] | 57,766.25 | 57,766.25 |  |  | C02E223001C0 | CB | C | 02 | E2 | ME | 230 | 01 | BILL 4 | B04 | S1 | 1F | R00 | ACF04 | 230 |  |  | 1S | MEP | 90 | 100 | 3350.45 | M1F |  |  |  |  |  |  |  |  |  |  |
| C02E221111C0 |  | CB-02 ; 1st Fix, Inst of Sprinkler main pipe (Exam- 2) | 150d | 2011-03-28 A | 2011-11-13 | C02E222005C0 SS+6d, C02E223001C0, C02S207808C0 | 90% | 15d | 2011-05-15 | 2011-11-13 | 15.47d | 0d | MECHANICAL [686.4 h]; Cost [37438.4 AED] | 37,438.4 | 33,694.56 |  |  | C02E221111C0 | CB | C | 02 | E2 | ME | 211 | 11 | BILL 4 | B04 | S1 | 1F | R00 | ACF04 | 211 |  |  | 1S | MEP | 65 | 98 | 6517.35 | M1F |  |  |  |  |  |  |  |  |  |  |
| C02E222019C0 |  | CB-02 ; 1st Fix, Inst of Drainage pipe (ceiling) (Exam- 2) | 200d | 2011-03-28 A | 2011-10-27 | C02E223001C0, C02E223017C0 SS+10d, C02S207808C0 | 98% | 4d | 2011-05-01 | 2011-12-29 | 15.47d | 0d | PLUMBING [1714.8 h]; Cost [92715.9 AED] | 92,715.95 | 90,861.63 |  |  | C02E222019C0 | CB | C | 02 | E2 | ME | 220 | 19 | BILL 4 | B04 | S1 | 1F | R00 | ACF04 | 220 |  |  | 1S | MEP | 65 | 98 | 5371.55 | M1F |  |  |  |  |  |  |  |  |  |  |
| C02E226001C0 |  | CB-02 ; 1st Fix, Inst of Trunking/Conduiting (Exam- 2) | 150d | 2011-03-30 A | 2011-11-22 | C02E223001C0, C02E223023C0 SS+6d, C02S207808C0 | 85% | 22.5d | 2011-05-29 | 2011-11-28 | 22.98d | 7.5d | ELECTRICAL [430.8 h]; Cost [29580.4 AED] | 29,580.43 | 25,143.36 |  |  | C02E226001C0 | CB | C | 02 | E2 | ME | 260 | 01 | BILL 4 | B04 | S1 | 1F | R00 | ACF04 | 260 |  |  | 1S | MEP | 40 | 98 | 17148 | M1F | 85 | 80 |  |  |  |  |  |  |  |  |
| C02E226013C0 |  | CB-02 ; 1st Fix, Inst of Cable Tray (Exam- 2) | 150d | 2011-03-30 A | 2011-12-01 | C02E223001C0, C02E223023C0 FF, C02E226001C0 SS+6d, C02E226001C0 FF, C02S207808C0 | 90% | 15d | 2011-06-05 | 2011-12-06 | 15.47d | 0d | ELECTRICAL [948 h]; Cost [17044 AED] | 17,043.96 | 15,339.56 |  |  | C02E226013C0 | CB | C | 02 | E2 | ME | 260 | 13 | BILL 4 | B04 | S1 | 1F | R00 | ACF04 | 260 |  |  | 1S | MEP | 30 | 98 | 11906.4 | M1F | 90 | 80 |  |  |  |  |  |  |  |  |
| C02E209201C0 |  | CB-02 ; Metal Studs (Exam- 2) | 84d | 2011-04-16 A | 2011-10-29 | C02E223001C0, CAFCI09202R02 FS+62d | 90% | 8.4d | 2011-05-31 | 2011-09-08 | 15.47d | 0d | PARTITIONS [3002 h]; PARTITIONS - Metal Studs [391 m]; Cost |  |  | 313 | 944 | C02E209201C0 | CB | C | 02 | E2 | PT | 092 | 01 | BILL 4 | B04 | S1 | 1F | R00 | ACF06 | 092 |  |  |  | GP | 60 |  | 39817.4 | PMS |  |  | 0 | 0 | 0 | 0 | 90 | R3 |  |  |
| C02E209203C0 |  | CB-02 ; Partitions 1st face (Exam- 2) | 54d | 2011-05-15 A | 2011-11-24 | C02E209201C0 | 63% | 19.98d | 2011-06-11 | 2011-08-14 | 48d | 32.52d | PARTITIONS [391 m]; PARTITIONS [2337 h]; Cost |  |  | 314 | 945 | C02E209203C0 | CB | C | 02 | E2 | PT | 092 | 03 | BILL 4 | B04 | S1 | 2F | R00 | ACF06 | 092 |  |  |  | GP | 5 |  | 55744.29 | P1F | 55 | 32 | 0 | 0 | 0 | 0 |  |  |  |  |
| C02E227010C0 |  | CB-02 ; 1st Fix, Inst of Trunking for ELV system (Exam- 2) | 120d | 2011-05-15 A | 2011-12-13 | C02E223001C0, C02E226013C0 SS+6d, C02S207808C0 | 80% | 24d | 2011-07-21 | 2011-12-15 | 15.47d | 0d | ELECTRICAL [457.2 h]; Cost [24667.9 AED] | 24,667.88 | 19,734.3 |  |  | C02E227010C0 | CB | C | 02 | E2 | ME | 270 | 10 | BILL 4 | B04 | S1 | 1F | R00 | ACF04 | 270 |  |  | 1S | MEP | 20 | 98 | 20055.5 | M1F |  |  |  |  |  |  |  |  |  |  |
| C02E223023C0 |  | CB-02 ; 1st Fix, Inst of Main Ducting (Exam- 2) | 120d | 2011-05-23 A | 2011-12-01 | C02E221111C0 SS+6d, C02E223001C0, C02S207808C0 | 75% | 30d | 2011-06-25 | 2011-11-19 | 15.47d | 0d | MECHANICAL [16992 h]; Cost [927678 AED] | 927,677.51 | 695,758.13 |  |  | C02E223023C0 | CB | C | 02 | E2 | ME | 230 | 23 | BILL 4 | B04 | S1 | 1F | R00 | ACF04 | 230 |  |  | 1S | MEP | 30 | 88 | 161442.62 | M1F |  |  |  |  |  |  |  |  |  |  |
| C02E226009C0 |  | CB-02 ; 2nd Fix, Inst of Wall conduites (Exam- 2) | 41d | 2011-06-05 A | 2011-08-30 A | C02E209201C0 | 100% |  | 2011-06-05 | 2011-07-24 |  |  | ELECTRICAL [430.8 h]; Cost [29580.4 AED] | 29,580.43 | 29,580.43 |  |  | C02E226009C0 | CB | C | 02 | E2 | ME | 260 | 09 | BILL 4 | B04 | S1 | 2F | R00 | ACF07 | 260 |  |  | 2n | MEP |  | 60 | 15433.04 |  | 100 | 45 |  |  |  |  |  |  |  |  |
| C02E221117C0 |  | CB-02 ; 1st Fix, Inst of Sprinkler branch pipe (Exam- 2) | 150d | 2011-06-15 A | 2011-12-01 | C02E209201C0, C02E221111C0, C02E205503C0 FF+18d | 90% | 15d | 2011-07-10 | 2012-01-10 | 42.48d | 27d | MECHANICAL [1009.2 h]; Cost [55153.8 AED] | 55,153.76 | 49,638.38 |  |  | C02E221117C0 | CB | C | 02 | E2 | ME | 211 | 17 | BILL 4 | B04 | S1 | 1F | R00 | ACF04 | 211 |  |  | 1S | MEP |  | 90 | 31967.72 | M1F |  |  |  |  |  |  |  |  |  |  |
| C02E222005C0 |  | CB-02 ; 1st Fix, Inst of Water supply pipe (ceiling) (Exam- 2) | 48d | 2011-07-10 A | 2011-12-13 | C02E222019C0 SS+6d, C02E223001C0, C02S207808C0 | 20% | 38.4d | 2011-07-13 | 2011-09-10 | 15.47d | 0d | PLUMBING [1682.4 h]; Cost [90924.8 AED] | 90,924.75 | 18,184.95 |  |  | C02E222005C0 | CB | C | 02 | E2 | ME | 220 | 05 | BILL 4 | B04 | S1 | 1F | R00 | ACF04 | 220 |  |  | 1S | MEP |  | 60 |  | M1F | 20 | 10 |  |  |  |  |  |  |  |  |
| C02E223015C0 |  | CB-02 ; 2nd Fix, Insulation of CHW pipe & Duct (Exam- 2) | 60d | 2011-07-10 A | 2012-01-08 | C02E223009C0 SS, C02E223017C0 SS, C02E223023C0 SS | 50% | 30d | 2011-09-29 | 2011-12-14 | 102.47d | 87d | MECHANICAL [6742.8 h]; Cost [363863 AED] | 363,863.22 | 181,931.61 |  |  | C02E223015C0 | CB | C | 02 | E2 | ME | 230 | 15 | BILL 4 | B04 | S1 | 2F | R00 | ACF07 | 230 |  |  | 2n | MEP |  | 35 |  |  | 41 | 35 | 0 | 0 | 0 | 0 |  |  | 50 |  |
| C02E223017C0 |  | CB-02 ; 1st Fix, Inst of CHW pipe (Exam- 2) | 75d | 2011-07-10 A | 2011-12-01 | C02E223001C0, C02S207808C0, C02E205503C0 FF+18d | 60% | 30d | 2011-07-02 | 2011-09-29 | 15.47d | 0d | MECHANICAL [2395.2 h]; Cost [130782 AED] | 130,781.76 | 78,469.05 |  |  | C02E223017C0 | CB | C | 02 | E2 | ME | 230 | 17 | BILL 4 | B04 | S1 | 1F | R00 | ACF04 | 230 |  |  | 1S | MEP |  | 60 |  | M1F |  |  |  |  |  |  |  |  |  |  |
| C02E222011C0 |  | CB-02 ; 2nd Fix, Drainage/Water pipe (wall) (Exam- 2) | 42d | 2011-08-10 A | 2011-12-27 | C02E209201C0, CAFCI09201R20 FS+79d | 10% | 37.8d | 2011-12-24 | 2012-02-12 | 15.57d | 0.1d | PLUMBING [1714.8 h]; Cost [92715.9 AED] | 92,715.95 | 9,271.6 |  |  | C02E222011C0 | CB | C | 02 | E2 | ME | 220 | 11 | BILL 4 | B04 | S1 | 2F | R00 | ACF07 | 220 |  |  | 2n | MEP |  | 25 |  |  | 10 | 0 |  |  |  |  |  |  |  |  |
| C02E227001C0 |  | CB-02 ; 1st Fix, Wiring/ Cabling work (Exam- 2) | 48d | 2011-08-10 A | 2012-01-29 | C02E226001C0, C02E226013C0, C02E227010C0 | 20% | 38.4d | 2011-09-17 | 2011-11-15 | 85.08d | 69.6d | ELECTRICAL [216 h]; Cost [15494.5 AED] | 15,494.51 | 3,098.9 |  |  | C02E227001C0 | CB | C | 02 | E2 | ME | 270 | 01 | BILL 4 | B04 | S1 | 1F | R00 | ACF04 | 270 |  |  | 1S | MEP |  | 35 |  | M1F | 20 | 0 |  |  |  |  |  |  |  |  |
| C02E205503C0 |  | CB-02 ; Ceiling Support for medical equipment (Exam- 2) | 10d | 2011-09-05 A | 2011-11-09 | C02E209201C0 | 25% | 7.5d | 2011-10-25 | 2011-11-09 | 15.47d | 0d | SECONDARY STEEL [156 h]; STRUCTURAL STEEL [1 T(Fe)]; Cost |  |  | 335 | 962 | C02E205503C0 | CB | C | 02 | E2 | SW | 055 | 03 | BILL 4 | B04 | S1 | 03 | R00 | ACF03 | b |  |  |  |  |  |  |  |  |  |  |  |  |  |  |  |  |  |  |
| C02E205511C0 |  | CB-02 ; Wall reinforcement for MEP/Medical (Exam- 2) | 24d | 2011-10-29 | 2011-11-30 | C02E209201C0 |  |  |  |  | 43.98d | 28.5d | SECONDARY STEEL [56 h]; Cost |  |  |  |  | C02E205511C0 | CB | C | 02 | E2 | SW | 055 | 11 | BILL 4 | B04 | S1 | 03 | R00 | ACF03 | b |  |  |  |  |  |  |  |  |  |  |  |  |  |  |  |  |  |  |
| C02E222015C0 |  | CB-02 ; 2nd Fix, Medical Gas pipe (Exam- 2) | 42d | 2011-10-29 | 2011-12-22 | C02E209201C0 |  |  |  |  | 19.98d | 4.5d | PLUMBING [504 h]; Cost |  |  |  |  | C02E222015C0 | CB | C | 02 | E2 | ME | 220 | 15 | BILL 4 | B04 | S1 | 2F | R00 | ACF07 | 220 |  |  | 2n | MEP |  | 35 |  |  |  |  |  |  |  |  |  |  |  |  |
| C02E222007C0 |  | CB-02 ; 1st Fix, Inst of Medical Gas pipe (Exam- 2) | 42d | 2011-11-13 | 2012-01-04 | C02E223001C0, C02E227010C0 SS+6d, C02S207808C0 |  |  |  |  | 15.47d | 0d | PLUMBING [504 h]; Cost |  |  |  |  | C02E222007C0 | CB | C | 02 | E2 | ME | 220 | 07 | BILL 4 | B04 | S1 | 1F | R00 | ACF04 | 220 |  |  | 1S | MEP |  | 45 |  | M1F |  |  |  |  |  |  |  |  |  |  |
| C02E208103C0 |  | CB-02 ; Door Frames (Exam- 2) | 42d | 2011-11-27 | 2012-01-16 | C02E209201C0, GNHE08101C0 FS+93d |  |  |  |  | 33.25d | 0d | ASSORTED DOORS [124 h]; Cost |  |  | 316 | 947 | C02E208103C0 | CB | C | 02 | E2 | DO | 081 | 03 | BILL 4 | B04 | S1 | DF | R00 | ACF06 | 081 |  | 08 |  |  |  |  |  |  |  |  |  |  |  |  |  |  |  |  |
| C02E223008C0 |  | CB-02 ; 1st Fix, Inst of VCD's/FD's (Exam- 2) | 42d | 2011-12-01 | 2012-01-22 | C02E223023C0, C02E205503C0 FF+18d |  |  |  |  | 54.48d | 39d | MECHANICAL [2648.4 h]; Cost |  |  |  |  | C02E223008C0 | CB | C | 02 | E2 | ME | 230 | 08 | BILL 4 | B04 | S1 | 1F | R00 | ACF04 | 230 |  |  | 1S | MEP |  | 75 |  | M1F |  |  |  |  |  |  |  |  |  |  |
| C02E223009C0 |  | CB-02 ; 2nd Fix, Inst of VAV'S CHW connection (Exam- 2) | 30d | 2011-12-01 | 2012-01-08 | C02E223017C0 |  |  |  |  | 66.47d | 0d | MECHANICAL [1419.6 h]; Cost |  |  |  |  | C02E223009C0 | CB | C | 02 | E2 | ME | 230 | 09 | BILL 4 | B04 | S1 | 2F | R00 | ACF07 | 230 |  |  | 2n | MEP |  | 50 |  |  |  |  |  |  |  |  |  |  |  |  |
| C02E201005C0 |  | CB-02 ; 2nd, Wall Inspection by Consultant (Exam- 2) | 6d | 2011-12-27 | 2012-01-04 | C02E222011C0, C02E222015C0, C02E226009C0, C02E222007C0 FF |  |  |  |  | 15.47d | 0d | Labor General [0.6 h]; Cost |  |  |  |  | C02E201005C0 | CB | C | 02 | E2 | ME | 010 | 05 | BILL 4 | B04 | S1 | WI | R00 | ACF07 | 010 |  |  | 2n | MEP |  |  |  |  |  |  |  |  |  |  |  |  |  |  |
| C02E209205C0 |  | CB-02 ; Partitions Closing (Exam- 2) | 54d | 2012-01-04 | 2012-03-08 | C02E201005C0, C02E205511C0, C02E209203C0, C02E222005C0, C02E222019C0, CAFOA09204C1 FF, C02E208103C0 FF, C02E221117C0, C02E223008C0 FF, C02E223009C0 FF, CAFCI09201R20 FS+79d |  |  |  |  | 15.47d | 0d | PARTITIONS [391 m]; PARTITIONS [3002 h]; Cost |  |  | 315 | 946 | C02E209205C0 | CB | C | 02 | E2 | PT | 092 | 05 | BILL 4 | B04 | S1 | FF | R00 | ACF06 | 092 |  |  |  | GP |  |  |  | P2F |  |  |  |  |  |  |  | R3 |  |  |
| C02E207103C0 |  | CB-02 ; Waterproofing (Exam- 2) | 12d | 2012-03-08 | 2012-03-22 | C02E208103C0, C02E209205C0 |  |  |  |  | 57.35d | 0d | THERMAL & MOISTURE [104 h]; THERMAL & MOISTURE [679 m2]; Cost |  |  | 105 | 999 | C02E207103C0 | CB | C | 02 | E2 | FF | 071 | 03 | BILL 4 | B04 | S1 | 01 | R00 | ACF03 | 071 |  |  |  |  |  |  |  |  |  |  |  |  |  |  |  |  |  |  |
| C02E209901C0 |  | CB-02 ; Wall Prime & 1st coat (Exam- 2) | 36d | 2012-03-08 | 2012-04-19 | C02E209205C0 |  |  |  |  | 15.47d | 0d | WALL PAINT [1311 h]; WALL PAINT [1636 m2]; Cost |  |  | 328 | 956 | C02E209901C0 | CB | C | 02 | E2 | PA | 099 | 01 | BILL 4 | B04 | S1 | 01 | R00 | ACF06 | 099 |  |  |  |  |  |  |  |  |  |  |  |  |  |  |  |  |  |  |
| C02E226005C0 |  | CB-02 ; 2nd Fix, Wiring for Power/Lighting/Emergency (Exam- 2) | 30d | 2012-03-08 | 2012-04-12 | C02E209205C0 |  |  |  |  | 75.47d | 42d | ELECTRICAL [216 h]; Cost |  |  |  |  | C02E226005C0 | CB | C | 02 | E2 | ME | 260 | 05 | BILL 4 | B04 | S1 | 2F | R00 | ACF07 | 260 |  |  | 2n | MEP |  |  |  |  |  |  |  |  |  |  |  |  |  |  |
| C02E226007C0 |  | CB-02 ; 2nd Fix, Cable Pulling (Exam- 2) | 42d | 2012-03-08 | 2012-04-26 | C02E209201C0 SS+6d, C02E209205C0 |  |  |  |  | 117.47d | 102d | ELECTRICAL [6616.8 h]; Cost |  |  |  |  | C02E226007C0 | CB | C | 02 | E2 | ME | 260 | 07 | BILL 4 | B04 | S1 | 2F | R00 | ACF07 | 260 |  |  | 2n | MEP |  | 25 |  |  |  |  |  |  |  |  |  |  |  |  |
| C02E226011C0 |  | CB-02 ; 2nd Fix, Inst of Equipment (DB) (Exam- 2) | 42d | 2012-03-08 | 2012-04-26 | C02E209205C0 |  |  |  |  | 45.48d | 30d | ELECTRICAL [1266 h]; Cost |  |  |  |  | C02E226011C0 | CB | C | 02 | E2 | ME | 260 | 11 | BILL 4 | B04 | S1 | 2F | R00 | ACF04 | 260 |  |  | 2n | MEP |  |  |  |  |  |  |  |  |  |  |  |  |  | E |
| C02E226053C0 |  | CB-02 ; 2nd Fix, Wiring / Cabling (Exam- 2) | 30d | 2012-03-08 | 2012-04-12 | C02E209203C0, C02E209205C0 |  |  |  |  | 129.47d | 114d | ELECTRICAL [216 h]; Cost |  |  | 389 | 977 | C02E226053C0 | CB | C | 02 | E2 | ME | 260 | 53 | BILL 4 | B04 | S1 | 2F | R00 | ACF07 | 260 |  |  | 2n | MEP |  |  |  |  |  |  |  |  |  |  |  |  |  |  |
| C02E227020C0 |  | CB-02 ; 2nd Fix, Inst of ELV Equipment (Panels) (Exam- 2) | 42d | 2012-03-08 | 2012-04-26 | C02E209205C0 |  |  |  |  | 81.47d | 66d | ELECTRICAL [384 h]; Cost |  |  |  |  | C02E227020C0 | CB | C | 02 | E2 | ME | 270 | 20 | BILL 4 | B04 | S1 | 2F | R00 | ACF04 | 270 |  |  | 2n | MEP |  |  |  |  |  |  |  |  |  |  |  |  |  | E |
| C02E209305C0 |  | CB-02 ; Ceramic floor tile (Exam- 2) | 24d | 2012-03-22 | 2012-04-19 | C02E207103C0 |  |  |  |  | 57.35d | 0d | CERAMIC FLOOR TILES [128 h]; CERAMIC FLOOR TILES [68 m2]; Cost |  |  | 106 | 1000 | C02E209305C0 | CB | C | 02 | E2 | FF | 093 | 05 | BILL 4 | B04 | S1 | 02 | R00 | ACF06 | CT |  |  |  |  |  |  |  |  |  |  |  |  |  |  |  |  |  |  |
| C02E205501C0 |  | CB-02 ; Handrails & balustrade (Exam- 2) | 36d | 2012-04-19 | 2012-05-31 | C02E209901C0 |  |  |  |  | 15.47d | 0d | SECONDARY STEEL [183 h]; Cost |  |  |  |  | C02E205501C0 | CB | C | 02 | E2 | SW | 055 | 01 | BILL 4 | B04 | S1 | 01 | R00 | ACF03 | a |  |  |  |  |  |  |  |  |  |  |  |  |  |  |  |  |  |  |
| C02E209501C0 |  | CB-02 ; Ceiling Grid and ServiceTile (Exam- 2) | 36d | 2012-04-19 | 2012-05-31 | C02E205503C0, C02E209205C0 FS+15d, C02E221117C0, C02E223008C0, C02E223009C0, C02E223015C0, C02E227001C0, CAFCI22001R02 FS+79d, C02E226011C0 FF, C02E209901C0 |  |  |  |  | 15.47d | 0d | CEILING GRID FOR GYPSUM [1495.09 h]; CEILING GRID FOR GYPSUM [128.08 m2]; Cost |  |  | 323 | 952 | C02E209501C0 | CB | C | 02 | E2 | CE | 095 | 01 | BILL 4 | B04 | S1 | 01 | R00 | ACF06 | 095 | R3 |  |  |  |  |  |  |  |  |  |  |  |  |  |  |  |  |  |
| C02E222025C0 |  | CB-02 ; Final Fix, Inst of Sanitary Ware (Exam- 2) | 48d | 2012-04-19 | 2012-06-14 | C02E209205C0, C02E209305C0, A10230 FS+148d |  |  |  |  | 57.35d | 0d | PLUMBING [1491.6 h]; Cost |  |  |  |  | C02E222025C0 | CB | C | 02 | E2 | ME | 220 | 25 | BILL 4 | B04 | S1 | FF | R00 | ACF07 | 220 |  |  | FF | MEP |  |  |  |  |  |  |  |  |  |  |  |  |  |  |
| C02E206101C0 |  | CB-02 ; Wood / caseworks (Exam- 2) | 60d | 2012-05-31 | 2012-08-11 | C02CO04401C0, C02E209501C0, C02E209901C0, CAFWA00113M0, CAFCI22001R02 FS+196d, A10370 |  |  |  |  | 23.48d | 0d | WOOD WORK/CASEWORK [744.94 no]; WOOD WORK/CASEWORK [3036 h]; Cost |  |  | 332 | 960 | C02E206101C0 | CB | C | 02 | E2 | WO | 061 | 01 | BILL 4 | B04 | S1 | WW | R00 | ACF06 | 061 | R3 |  |  |  |  |  |  |  |  |  |  |  |  |  |  |  |  |  |
| C02E206102C0 |  | CB-02 ; Head Wall (Exam- 2) | 30d | 2012-05-31 | 2012-07-07 | C02CO04401C0, C02E209501C0, C02E206101C0 SS, CAFWA00113M0, CAFCI22001R02 FS+196d |  |  |  |  | 97.1d | 81.62d | WOOD WORK/CASEWORK [1386 h]; Cost |  |  | 332 | 960 | C02E206102C0 | CB | C | 02 | E2 | WO | 061 | 02 | BILL 4 | B04 | S1 | WW | R00 | ACF06 | 061 | R3 |  |  |  |  |  |  |  |  |  |  |  |  |  |  |  |  |  |
| C02E209601C0 |  | CB-02 ; Flooring (Rubber & etc) (Exam- 2) | 36d | 2012-05-31 | 2012-07-14 | C02E209901C0, C02E209501C0, C02E227020C0 FF, C02E205501C0 |  |  |  |  | 15.47d | 0d | RUBBER FLOOR [168 h]; RUBBER FLOOR [412 m2]; Cost |  |  | 326 | 955 | C02E209601C0 | CB | C | 02 | E2 | FF | 096 | 01 | BILL 4 | B04 | S1 | 03 | R00 | ACF06 | RF | R3 |  |  |  |  |  |  |  |  |  |  |  |  |  |  |  |  |  |
| C02E209903C0 |  | CB-02 ; Wall Final Paint (Exam- 2) | 36d | 2012-05-31 | 2012-07-14 | C02E209901C0, C02E209905C0 |  |  |  |  | 91.1d | 72d | WALL PAINT [707 h]; WALL PAINT [881 m2]; Cost |  |  | 329 | 957 | C02E209903C0 | CB | C | 02 | E2 | PA | 099 | 03 | BILL 4 | B04 | S1 | 02 | R00 | ACF06 | 099 |  |  |  |  |  |  |  |  |  |  |  |  |  |  |  |  |  |  |
| C02E209905C0 |  | CB-02 ; Ceiling Prime & 1st coat (Exam- 2) | 0d | 2012-05-31 | 2012-05-31 | C02E209501C0 |  |  |  |  | 91.1d | 0d | Cost |  |  | 330 | 958 | C02E209905C0 | CB | C | 02 | E2 | PA | 099 | 05 | BILL 4 | B04 | S1 | 01 | R00 | ACF06 | 099 |  |  |  |  |  |  |  |  |  |  |  |  |  |  |  |  |  |  |
| C02E221115C0 |  | CB-02 ; 2nd Fix, Inst of Sprinkler droppers (Exam- 2) | 30d | 2012-05-31 | 2012-07-07 | C02E209501C0 |  |  |  |  | 27.48d | 0d | MECHANICAL [1404 h]; Cost |  |  |  |  | C02E221115C0 | CB | C | 02 | E2 | ME | 211 | 15 | BILL 4 | B04 | S1 | 2F | R00 | ACF07 | 211 |  |  | 2n | MEP |  |  |  |  |  |  |  |  |  |  |  |  |  |  |
| C02E223021C0 |  | CB-02 ; 2nd Fix, Inst of Flexible Duct & Plenum boxes (Exam- 2) | 42d | 2012-05-31 | 2012-07-21 | C02E209205C0, C02E209501C0 |  |  |  |  | 27.48d | 0d | MECHANICAL [903.6 h]; Cost |  |  |  |  | C02E223021C0 | CB | C | 02 | E2 | ME | 230 | 21 | BILL 4 | B04 | S1 | 2F | R00 | ACF07 | 230 |  |  | 2n | MEP |  |  |  |  |  |  |  |  |  |  |  |  |  |  |
| C02E226015C0 |  | CB-02 ; Final Fix, Termination & Gladding of Cables (Exam- 2) | 48d | 2012-05-31 | 2012-07-28 | C02E226005C0, C02E209501C0 |  |  |  |  | 33.48d | 10d | ELECTRICAL [826.8 h]; Cost |  |  |  |  | C02E226015C0 | CB | C | 02 | E2 | ME | 260 | 15 | BILL 4 | B04 | S1 | FF | R00 | ACF07 | 260 |  |  | FF | MEP |  |  |  |  |  |  |  |  |  |  |  |  |  |  |
| C02E226017C0 |  | CB-02 ; Final Fix, Inst of Ceiling rose (Exam- 2) | 48d | 2012-05-31 | 2012-07-28 | C02E209501C0 |  |  |  |  | 26.48d | 0d | ELECTRICAL [123.6 h]; Cost |  |  |  |  | C02E226017C0 | CB | C | 02 | E2 | ME | 260 | 17 | BILL 4 | B04 | S1 | FF | R00 | ACF07 | 260 |  |  | FF | MEP |  |  |  |  |  |  |  |  |  |  |  |  |  |  |
| C02E227002C0 |  | CB-02 ; 2nd Fix, Wiring Droppers (Exam- 2) | 42d | 2012-05-31 | 2012-07-21 | C02E209501C0 |  |  |  |  | 27.48d | 0d | ELECTRICAL [216 h]; Cost |  |  |  |  | C02E227002C0 | CB | C | 02 | E2 | ME | 270 | 02 | BILL 4 | B04 | S1 | 2F | R00 | ACF07 | 270 |  |  | 2n | MEP |  |  |  |  |  |  |  |  |  |  |  |  |  |  |
| C02E221113C0 |  | CB-02 ; Final Fix, Inst of Sprinklers head/ Extinguisher (Exam- 2) | 48d | 2012-06-07 | 2012-08-04 | C02E209501C0, C02E221115C0 SS+6d |  |  |  |  | 27.48d | 4d | MECHANICAL [278.4 h]; Cost |  |  |  |  | C02E221113C0 | CB | C | 02 | E2 | ME | 211 | 13 | BILL 4 | B04 | S1 | FF | R00 | ACF07 | 211 |  |  | FF | MEP |  |  |  |  |  |  |  |  |  |  |  |  |  |  |
| C02E223019C0 |  | CB-02 ; Final Fix, Inst of Grilles & Diffusers (Exam- 2) | 48d | 2012-06-07 | 2012-08-04 | C02E209501C0, C02E223021C0 SS+6d |  |  |  |  | 27.48d | 4d | MECHANICAL [1970.4 h]; Cost |  |  |  |  | C02E223019C0 | CB | C | 02 | E2 | ME | 230 | 19 | BILL 4 | B04 | S1 | FF | R00 | ACF07 | 230 |  |  | FF | MEP |  |  |  |  |  |  |  |  |  |  |  |  |  |  |
| C02E227030C0 |  | CB-02 ; Final Fix, Inst of ELV device (Detector/Speaker) (Exam- 2) | 48d | 2012-06-07 | 2012-08-04 | C02E209501C0, C02E227002C0 SS+6d |  |  |  |  | 27.48d | 4d | ELECTRICAL [2054.4 h]; Cost |  |  |  |  | C02E227030C0 | CB | C | 02 | E2 | ME | 270 | 30 | BILL 4 | B04 | S1 | FF | R00 | ACF07 | 270 |  |  | FF | MEP |  |  |  |  |  |  |  |  |  |  |  |  |  |  |
| C02E226003C0 |  | CB-02 ; Final Fix, Inst of Light fittings (Exam- 2) | 48d | 2012-06-09 | 2012-08-05 | C02E226017C0 SS+7d |  |  |  |  | 26.48d | 3d | ELECTRICAL [7983.6 h]; Cost |  |  |  |  | C02E226003C0 | CB | C | 02 | E2 | ME | 260 | 03 | BILL 4 | B04 | S1 | FF | R00 | ACF07 | 260 |  |  | FF | MEP |  |  |  |  |  |  |  |  |  |  |  |  |  |  |

| ID | WBS | Activity | Duration | Start | Finish | Predecessors | Complete | Remaining | Planned start | Planned finish | Total float | Free float | Resources | Cost | Actual cost | change id | CCAD BUILDING(SET) | CCAD PHASE(SET) | CCAD FLOOR(SET) | CCAD ZONE(SET) | CCAD WORK(SET) | CCAD SECTION(SET) | CCAD SERIAL No.(SET) | CCAD CBS(SET) | CCAD BILL(SET) | CCAD HANDOVER(SET) | CCAD TAG(SET) | CCAD REV(SET) | CCADACF (SET) | CCAD SSCF | CCAD SUB ZONE MEP(SET) | CCAD CSA | Change Order # | NEW ACTIVITY ID | CCAD DIVISION(SET) | R3 Finish | RENZ % COMPLETE | Act Selector % | PERCENT COMPLETE | July2011 Target% Complete | Claimed This Month | P_811 | P_711 | user_number8 | user_integer1 | user_integer2 | user_number7 | U% | R3 Partitions | CCAD MEQ |
| --- | --- | --- | --- | --- | --- | --- | --- | --- | --- | --- | --- | --- | --- | --- | --- | --- | --- | --- | --- | --- | --- | --- | --- | --- | --- | --- | --- | --- | --- | --- | --- | --- | --- | --- | --- | --- | --- | --- | --- | --- | --- | --- | --- | --- | --- | --- | --- | --- | --- | --- |
| C02E211005C0 |  | CB-02 ; Utility belt (Exam- 2) | 30d | 2012-06-12 | 2012-07-18 | C02E206101C0 SS+10d, C02E209205C0 |  |  |  |  | 23.48d | 0d | FF&E [575 h]; FF&E [306.41 no]; Cost |  |  | C02E211005C0 | CB | C | 02 | E2 | WO | 110 | 05 | BILL 4 | B04 | S1 | 05 | R00 | ACF08 | e |  |  |  |  |  |  |  |  |  |  |  |  |  |  |  |  |  |  |  |  |
| C02E222021C0 |  | CB-02 ; Final Fix, Terminate Sanitary Ware & Appliances (Exam- 2) | 48d | 2012-06-14 | 2012-08-11 | C02E222011C0, C02E222025C0 |  |  |  |  | 57.35d | 41.88d | PLUMBING [1491.6 h]; Cost |  |  | C02E222021C0 | CB | C | 02 | E2 | ME | 220 | 21 | BILL 4 | B04 | S1 | FF | R00 | ACF07 | 220 | FF | MEP |  |  |  |  |  |  |  |  |  |  |  |  |  |  |  |  |  |  |
| C02E208107C0 |  | CB-02 ; Doors (Exam- 2) | 42d | 2012-07-14 | 2012-09-03 | C02E208103C0, C02E209901C0, C02E209601C0 |  |  |  |  | 21.1d | 0d | ASSORTED DOORS [420 h]; ASSORTED DOORS [42 no]; Cost |  |  | C02E208107C0 | CB | C | 02 | E2 | DO | 081 | 07 | BILL 4 | B04 | S1 | DR | R00 | ACF06 | 081 |  |  | 317 | 948 | 08 |  |  |  |  |  |  |  |  |  |  |  |  |  |  |  |
| C02E209701C0 |  | CB-02 ; Wall finishes (ST, WD, WC) (Exam- 2) | 36d | 2012-07-14 | 2012-08-27 | C02E227020C0 FF, CAFCI22001R02 FS+196d, C02E206101C0 SS, C02E209601C0 |  |  |  |  | 15.47d | 0d | ASSORTED WALL FINISH [1388 h]; ASSORTED WALL FINISH [1595 m2]; Cost |  |  | C02E209701C0 | CB | C | 02 | E2 | WF | 097 | 01 | BILL 4 | B04 | S1 | 01 | R00 | ACF06 | 097 |  |  | 105 | 1002 |  |  |  |  |  |  |  |  |  |  |  |  |  |  |  |  |
| C02E222029C0 |  | CB-02 ; Final Fix, Medical Gas pipe (Exam- 2) | 18d | 2012-07-18 | 2012-08-08 | C02E209501C0, C02E211005C0 |  |  |  |  | 23.48d | 0d | PLUMBING [504 h]; Cost |  |  | C02E222029C0 | CB | C | 02 | E2 | ME | 220 | 29 | BILL 4 | B04 | S1 | FF | R00 | ACF07 | 220 | FF | MEP |  |  |  |  |  |  |  |  |  |  |  |  |  |  |  |  |  |  |
| C02E201006C0 |  | CB-02 ; 2nd, Ceiling Inspection by Consultants (Exam- 2) | 6d | 2012-08-08 | 2012-08-15 | C02E221115C0, C02E223009C0, C02E223015C0, C02E227002C0, C02E209501C0, C02E221113C0, C02E222029C0, C02E223019C0, C02E226017C0, C02E227030C0, C02E226015C0, C02E226003C0 |  |  |  |  | 23.48d | 8d | Labor General [0.6 h]; Cost |  |  | C02E201006C0 | CB | C | 02 | E2 | ME | 010 | 06 | BILL 4 | B04 | S1 | CI | R00 | ACF07 | 010 | 2n | MEP |  |  |  |  |  |  |  |  |  |  |  |  |  |  |  |  |  |  |
| C02E209503C0 |  | CB-02 ; Ceiling closure - ACT/Gypsum (Exam- 2) | 17.88d | 2012-08-27 | 2012-09-17 | C02E201006C0, C02E221115C0, C02E226005C0, C02E227002C0, CAFOA09503C1 FF, C02E206101C0, C02E209701C0, C02E223021C0, C02E226053C0, C02E226007C0 |  |  |  |  | 15.47d | 0d | ASSORTED CEILING FINISH [285.98 h]; CEILING GYPSUM [42.02 h]; ASSORTED CEILING FINISH [465 m2]; CEILING GYPSUM [117 m2]; Cost |  |  | C02E209503C0 | CB | C | 02 | E2 | CE | 095 | 03 | BILL 4 | B04 | S1 | 02 | R00 | ACF06 | 095 |  |  | 324 | 953 |  | R3 |  |  |  |  |  |  |  |  |  |  |  |  |  |  |
| C02E211001C0 |  | CB-02 ; Wall Protection (WP, CG, WG, FCG) (Exam- 2) | 24d | 2012-08-27 | 2012-09-24 | C02E209701C0, C02E209903C0 SS |  |  |  |  | 31.1d | 15.62d | FF&E [56 h]; Cost |  |  | C02E211001C0 | CB | C | 02 | E2 | WF | 110 | 01 | BILL 4 | B04 | S1 | 03 | R00 | ACF08 | b |  |  | 326 | 1001 |  |  |  |  |  |  |  |  |  |  |  |  |  |  |  |  |
| C02E208709C0 |  | CB-02 ; Ironmongery (Exam- 2) | 28d | 2012-09-03 | 2012-10-06 | C02E208107C0 |  |  |  |  | 21.1d | 5.62d | IRONMONGERY [450 h]; IRONMONGERY [45 no]; Cost |  |  | C02E208709C0 | CB | C | 02 | E2 | DO | 087 | 09 | BILL 4 | B04 | S1 | IM | R00 | ACF06 | 087 |  |  | 322 | 951 | 08 |  |  |  |  |  |  |  |  |  |  |  |  |  |  |  |
| C02E209677C1 |  | CB-02, Carpet Tile Finish (Exam-2 Offices/Conference) | 0d | 2012-09-17 | 2012-09-17 | C02E209903C0 SS, C02E209907C0 SS |  |  |  |  | 37.23d | 21.75d | Cost |  |  |  | CB | C | 02 | E2 | FF | 096 |  |  | B04 |  |  | R00 | ACF06 | CPT |  | CPT |  |  |  |  |  |  |  |  |  |  |  |  |  |  |  |  |  |  |
| C02E209907C0 |  | CB-02 ; Ceiling Final paint (Exam- 2) | 0d | 2012-09-17 | 2012-09-17 | C02E209601C0, C02E209905C0, C02E209503C0 |  |  |  |  | 37.23d | 0d | Cost |  |  | C02E209907C0 | CB | C | 02 | E2 | PA | 099 | 07 | BILL 4 | B04 | S1 | 02 | R00 | ACF06 | 099 |  |  | 331 | 959 |  |  |  |  |  |  |  |  |  |  |  |  |  |  |  |  |
| C02E211003C0 |  | CB-02 ; FF & E (Exam- 2) | 12d | 2012-09-17 | 2012-10-01 | C02E209601C0, C02E209503C0 |  |  |  |  | 25.23d | 9.75d | FF&E [212 h]; FF&E [112.88 no]; Cost |  |  | C02E211003C0 | CB | C | 02 | E2 | WO | 110 | 03 | BILL 4 | B04 | S1 | 04 | R00 | ACF08 | a |  |  | 333 | 961 |  |  |  |  |  |  |  |  |  |  |  |  |  |  |  |  |
| C02E222027C0 |  | CB-02 ; Final Fix, Inst of All drain (Exam- 2) | 12d | 2012-09-17 | 2012-10-01 | C02E209305C0, C02E209503C0 |  |  |  |  | 15.47d | 0d | PLUMBING [1491.6 h]; Cost |  |  | C02E222027C0 | CB | C | 02 | E2 | ME | 220 | 27 | BILL 4 | B04 | S1 | FF | R00 | ACF07 | 220 | FF | MEP |  |  |  |  |  |  |  |  |  |  |  |  |  |  |  |  |  |  |
| C02E226019C0 |  | CB-02 ; Final Fix, Inst of Switch/Sockets (Exam- 2) | 12d | 2012-09-17 | 2012-10-01 | C02E209901C0, C02E209503C0 |  |  |  |  | 15.47d | 0d | ELECTRICAL [427.2 h]; Cost |  |  | C02E226019C0 | CB | C | 02 | E2 | ME | 260 | 19 | BILL 4 | B04 | S1 | FF | R00 | ACF07 | 260 | FF | MEP |  |  |  |  |  |  |  |  |  |  |  |  |  |  |  |  |  |  |
|  | 10 | **Precommissioning Tesing & snagging (Exam 2)** |  | 2012-10-01 | 2012-11-13 |  |  |  |  |  |  |  |  |  |  |  |  |  |  |  |  |  |  |  |  |  |  |  |  |  |  |  |  |  |  |  |  |  |  |  |  |  |  |  |  |  |  |  |  |  |
| C02TS01804C0 |  | CB-02 ; MEP de-snag, FIREM sign-off | 9.75d | 2012-10-01 | 2012-10-13 | C02E222025C0, C02E222027C0, C02E226015C0, C02E221113C0, C02E223019C0, C02E222021C0, C02E222029C0, C02E226017C0, C02E226003C0, C02E227030C0, C02E226019C0, C02E211005C0 |  |  |  |  | 15.47d | 0d | TESTING & COMMISSIONING [1020 h]; Cost |  |  | C02TS01801C0 | CB | C | 02 | TS | SC | 018 | 01 | BILL 4 | B04 | S1 | 01 | R00 | ACF07 | 018 |  |  |  |  |  |  |  |  |  |  |  |  |  |  |  |  |  |  |  |  |
| C02TS01807C0 |  | CB-02 ; Touch-up & Clean / JV inspection /CIR /De-snag | 18d | 2012-10-13 | 2012-11-05 | C02E206101C0, C02E206102C0, C02E208709C0, C02E209601C0, C02E209701C0, C02E209903C0, C02E211001C0, C02E211003C0, C02TS01804C0, C02E205501C0, C02CO04405C0, C02E209503C0, C02E209677C1 |  |  |  |  | 15.47d | 0d | TESTING & COMMISSIONING [149 h]; Cost |  |  | C02TS01802C0 | CB | C | 02 | TS | SC | 018 | 02 | BILL 4 | B04 | S1 | 02 | R00 | ACF07 | 018 |  |  |  |  |  |  |  |  |  |  |  |  |  |  |  |  |  |  |  |  |
| C02TS01810C0 |  | CB-02 ; Consultant's final de-snag inspection | 7d | 2012-11-05 | 2012-11-13 | C02TS01807C0 |  |  |  |  | 15.47d | 8.15d | Labor General [1 h]; Cost |  |  | C02TS01803C0 | CB | C | 02 | TS | SC | 018 | 03 | BILL 4 | B04 | S1 | 03 | R00 | ACF07 | 018 |  |  |  |  |  |  |  |  |  |  |  |  |  |  |  |  |  |  |  |  |
|  | 04 | **Public Area ( Elev.Lobby & Corridors )** |  | 2011-03-24 | 2012-11-14 |  |  |  |  |  |  |  |  |  |  |  |  |  |  |  |  |  |  |  |  |  |  |  |  |  |  |  |  |  |  |  |  |  |  |  |  |  |  |  |  |  |  |  |  |  |
| C02PA23001C0 |  | CB-02 ; 1st Fix, Inst. of Supports for MEP (Public Area) | 27d | 2011-03-24 A | 2011-05-30 A | C02S107807C0, C02S207808C0, C03S103335C0, C03S203335C0 | 100% |  | 2011-03-19 | 2011-04-19 |  |  | MECHANICAL [1024.8 h]; Cost [57766.2 AED] | 57,766.25 | 57,766.25 | C02PA23001C0 | CB | C | 02 | PA | ME | 230 | 01 | BILL 4 | B04 | S1 | 1F | R00 | ACF04 | 230 | 1S | MEP |  |  |  |  | 100 | M1F |  |  |  |  |  |  |  |  |  |  |  |  |
| C02PA21111C0 |  | CB-02 ; 1st Fix, Inst of Sprinkler main pipe (Public Area) | 200d | 2011-03-27 A | 2011-10-23 | C02PA23001C0, C02PA23017C0 SS+12d, C02S103335C0 | 90% | 20d | 2011-05-03 | 2012-01-02 | 60.25d | 0d | MECHANICAL [686.4 h]; Cost [37438.4 AED] | 37,438.4 | 33,694.56 | C02PA21111C0 | CB | C | 02 | PA | ME | 211 | 11 | BILL 4 | B04 | S1 | 1F | R00 | ACF04 | 211 | 1S | MEP |  |  |  |  | 65 | M1F | 90 | 95 | 6517.35 |  |  |  |  |  |  |  |  |  |
| C02PA22019C0 |  | CB-02 ; 1st Fix, Inst of Drainage pipe (ceiling) (Public Area) | 200d | 2011-03-29 A | 2011-10-04 | C02PA21111C0 SS+10d, C02PA23001C0, C02S103335C0 | 98% | 4d | 2011-05-15 | 2012-01-14 | 60.25d | 30d | PLUMBING [1714.8 h]; Cost [92715.9 AED] | 92,715.95 | 90,861.63 | C02PA22019C0 | CB | C | 02 | PA | ME | 220 | 19 | BILL 4 | B04 | S1 | 1F | R00 | ACF04 | 220 | 1S | MEP |  |  |  |  | 65 | M1F |  | 95 | 32229.3 | 98 | 95 |  |  |  |  |  |  |  |
| C02PA26001C0 |  | CB-02 ; 1st Fix, Inst of Trunking/Conduiting (Public Area) | 150d | 2011-03-30 A | 2011-10-26 | C02PA23001C0, C02S103335C0 | 85% | 22.5d | 2011-07-02 | 2012-01-02 | 30.25d | 0d | ELECTRICAL [430.8 h]; Cost [29580.4 AED] | 29,580.43 | 25,143.36 | C02PA26001C0 | CB | C | 02 | PA | ME | 260 | 01 | BILL 4 | B04 | S1 | 1F | R00 | ACF04 | 260 | 1S | MEP |  |  |  |  | 25 | M1F |  | 95 | 24007.2 | 85 | 80 |  |  |  |  |  |  |  |
| C02PA26013C0 |  | CB-02 ; 1st Fix, Inst of Cable Tray (Public Area) | 150d | 2011-03-30 A | 2011-11-03 | C02PA23001C0, C02PA26001C0 SS+10d, C02S103335C0 | 80% | 30d | 2011-07-13 | 2012-01-14 | 30.25d | 0d | ELECTRICAL [948 h]; Cost [17044 AED] | 17,043.96 | 13,635.17 | C02PA26013C0 | CB | C | 02 | PA | ME | 260 | 13 | BILL 4 | B04 | S1 | 1F | R00 | ACF04 | 260 | 1S | MEP |  |  |  |  | 25 | M1F |  | 95 | 13890.8 |  |  |  |  |  |  |  |  |  |
| C02PA09201C0 |  | CB-02 ; Metal Studs (Public Area) | 84d | 2011-04-16 A | 2011-10-29 | C02PA23001C0 SS+12d, CAFCI09202R02 FS+62d | 90% | 8.4d | 2011-05-10 | 2011-08-16 | 26.85d | 0d | PARTITIONS [10018 h]; PARTITIONS - Metal Studs [1406 m]; Cost |  |  | C02PA09201C0 | CB | C | 02 | PA | PT | 092 | 01 | BILL 4 | B04 | S1 | 1F | R00 | ACF06 | 092 |  | GP | 313 | 944 |  |  | 60 | PMS |  |  | 132887.4 |  |  | 0 | 0 | 0 | 0 | 90 | R3 |  |
| C02PA21117C0 |  | CB-02 ; 1st Fix, Inst of Sprinkler branch pipe (Public Area) | 150d | 2011-04-16 A | 2011-11-28 | C02PA09201C0, C02PA21111C0 | 85% | 22.5d | 2011-06-25 | 2011-12-26 | 106.35d | 92.3d | MECHANICAL [1009.2 h]; Cost [55153.8 AED] | 55,153.76 | 46,880.7 | C02PA21117C0 | CB | C | 02 | PA | ME | 211 | 17 | BILL 4 | B04 | S1 | 1F | R00 | ACF04 | 211 | 1S | MEP |  |  |  |  | 50 | M1F |  | 85 |  |  |  |  |  |  |  |  |  |  |
| C02PA09203C0 |  | CB-02 ; Partitions early wall & 1st face (Public Area) | 60d | 2011-05-15 A | 2011-11-17 | C02PA09201C0 SS+12d | 63% | 22.2d | 2011-05-31 | 2011-08-09 | 61.05d | 47d | PARTITIONS [1406 m]; PARTITIONS [7817 h]; Cost |  |  | C02PA09203C0 | CB | C | 02 | PA | PT | 092 | 03 | BILL 4 | B04 | S1 | 2F | R00 | ACF06 | 092 |  | GP | 314 | 945 |  |  | 5 | P1F |  |  | 186042.3 | 55 | 32 | 0 | 0 | 0 | 0 |  |  |  |
| C02PA27010C0 |  | CB-02 ; 1st Fix, Inst of Trunking for ELV system (Public Area) | 150d | 2011-05-15 A | 2011-11-03 | C02PA23001C0, C02PA26013C0 SS+7d, C02S103335C0 | 80% | 30d | 2011-07-24 | 2012-01-24 | 30.25d | 0d | ELECTRICAL [457.2 h]; Cost [24667.9 AED] | 24,667.88 | 19,734.3 | C02PA27010C0 | CB | C | 02 | PA | ME | 270 | 10 | BILL 4 | B04 | S1 | 1F | R00 | ACF04 | 270 | 1S | MEP |  |  |  |  | 10 | M1F |  | 95 | 24353.1 |  |  |  |  |  |  |  |  |  |
| C02PA23023C0 |  | CB-02 ; 1st Fix, Inst of Main Ducting (Public Area) | 120d | 2011-05-22 A | 2011-12-14 | C02PA22005C0 SS+14d, C02PA23001C0, C02S103335C0 | 75% | 30d | 2011-07-07 | 2011-12-01 | 51.25d | 0d | MECHANICAL [16992 h]; Cost [927678 AED] | 927,677.51 | 695,758.13 | C02PA23023C0 | CB | C | 02 | PA | ME | 230 | 23 | BILL 4 | B04 | S1 | 1F | R00 | ACF04 | 230 | 1S | MEP |  |  |  |  | 30 | M1F |  | 85 | 161442.62 |  |  |  |  |  |  |  |  |  |
| C02PA26009C0 |  | CB-02 ; 2nd Fix, Inst of Wall conduites (Public Area) | 60d | 2011-05-31 A | 2011-12-22 | C02PA09201C0 | 30% | 42d | 2011-05-31 | 2011-08-09 | 26.85d | 0d | ELECTRICAL [430.8 h]; Cost [29580.4 AED] | 29,580.43 | 8,874.13 | C02PA26009C0 | CB | C | 02 | PA | ME | 260 | 09 | BILL 4 | B04 | S1 | 2F | R00 | ACF07 | 260 | 2n | MEP |  |  |  |  |  |  |  | 55 |  |  |  |  |  |  |  |  |  |  |
| C02PA27001C0 |  | CB-02 ; 1st Fix, Wiring/ Cabling work (Public Area) | 48d | 2011-06-07 A | 2011-12-25 | C02PA26001C0, C02PA26013C0, C02PA27010C0 | 20% | 38.4d | 2011-08-23 | 2011-10-20 | 120.85d | 106.8d | ELECTRICAL [216 h]; Cost [15494.5 AED] | 15,494.51 | 3,098.9 | C02PA27001C0 | CB | C | 02 | PA | ME | 270 | 01 | BILL 4 | B04 | S1 | 1F | R00 | ACF04 | 270 | 1S | MEP |  |  |  |  |  | M1F |  | 25 | 3598.69 |  |  |  |  |  |  |  |  |  |
| C02PA22005C0 |  | CB-02 ; 1st Fix, Inst of Water supply pipe (ceiling) (Public Area) | 60d | 2011-06-14 A | 2011-12-25 | C02PA22019C0 SS+12d, C02PA23001C0, C02S103335C0, C02PA26001C0 FF, C02PA26013C0 FF, C02PA27010C0 | 35% | 39d | 2011-06-14 | 2011-08-23 | 30.25d | 0d | PLUMBING [1682.4 h]; Cost [90924.8 AED] | 90,924.75 | 31,823.66 | C02PA22005C0 | CB | C | 02 | PA | ME | 220 | 05 | BILL 4 | B04 | S1 | 1F | R00 | ACF04 | 220 | 1S | MEP |  |  |  |  |  | M1F |  | 45 | 36900.1 |  |  |  |  |  |  |  |  |  |
| C02PA22011C0 |  | CB-02 ; 2nd Fix, Drainage/Water pipe (wall) (Public Area) | 42d | 2011-08-10 A | 2011-12-18 | C02PA09201C0 | 10% | 37.8d | 2011-12-24 | 2012-02-12 | 31.05d | 4.2d | PLUMBING [1714.8 h]; Cost [92715.9 AED] | 92,715.95 | 9,271.6 | C02PA22011C0 | CB | C | 02 | PA | ME | 220 | 11 | BILL 4 | B04 | S1 | 2F | R00 | ACF07 | 220 | 2n | MEP |  |  |  |  |  |  |  | 25 |  | 10 | 0 |  |  |  |  |  |  |  |
| C02PA23015C0 |  | CB-02 ; 2nd Fix, Insulation of CHW pipe & Duct (Public Area) | 54d | 2011-08-10 A | 2011-12-27 | C02PA23009C0 SS, C02PA23017C0 SS, C02PA23023C0 SS | 50% | 27d | 2011-10-29 | 2012-01-05 | 83.05d | 69d | MECHANICAL [6742.8 h]; Cost [363863 AED] | 363,863.22 | 181,931.61 | C02PA23015C0 | CB | C | 02 | PA | ME | 230 | 15 | BILL 4 | B04 | S1 | 2F | R00 | ACF07 | 230 | 2n | MEP |  |  |  |  |  |  | 50 |  |  | 41 | 0 | 0 | 0 | 0 | 0 |  |  |  |
| C02PA23017C0 |  | CB-02 ; 1st Fix, Inst of CHW pipe (Public Area) | 48d | 2011-08-10 A | 2011-11-23 | C02PA23001C0, C02S103335C0 | 10% | 43.2d | 2011-07-31 | 2011-09-26 | 14.05d | 0d | MECHANICAL [2395.2 h]; Cost [130782 AED] | 130,781.76 | 13,078.18 | C02PA23017C0 | CB | C | 02 | PA | ME | 230 | 17 | BILL 4 | B04 | S1 | 1F | R00 | ACF04 | 230 | 1S | MEP |  |  |  |  |  | M1F |  | 55 |  | 10 | 0 |  |  |  |  |  |  |  |
| C02PA40302C0 |  | CB-02 ; 2nd Fix, Pneumatic tube (Public Area) | 42d | 2011-10-29 | 2011-12-22 | C02PA09201C0 |  |  |  |  | 26.85d | 0d | MECHANICAL [2661.6 h]; Cost |  |  | C02E140302C0 | CB | C | 02 | PA | ME | 403 | 02 | BILL 4 | B04 | S1 | 2F | R00 | ACF07 | 403 | 2n | MEP |  |  |  |  |  |  |  | 25 |  |  |  |  |  |  |  |  |  |  |
| C02PA23009C0 |  | CB-02 ; 2nd Fix, Inst of VAV'S CHW connection (Public Area) | 42d | 2011-11-23 | 2012-01-15 | C02PA23017C0 |  |  |  |  | 14.05d | 0d | MECHANICAL [1419.6 h]; Cost |  |  | C02PA23009C0 | CB | C | 02 | PA | ME | 230 | 09 | BILL 4 | B04 | S1 | 2F | R00 | ACF07 | 230 | 2n | MEP |  |  |  |  |  |  |  | 25 |  |  |  |  |  |  |  |  |  |  |
| C02PA08103C0 |  | CB-02 ; Door Frames (Public Area) | 42d | 2011-11-30 | 2012-01-19 | C02PA09201C0, GNHE08101C0 FS+93d, C02E208103C0 SS+3d |  |  |  |  | 33.25d | 0d | ASSORTED DOORS [412 h]; Cost |  |  | C02PA08103C0 | CB | C | 02 | PA | DO | 081 | 03 | BILL 4 | B04 | S1 | DF | R00 | ACF06 | 081 |  |  | 316 | 947 | 08 |  |  |  |  |  |  |  |  |  |  |  |  |  |  |  |
| C02PA23008C0 |  | CB-02 ; 1st Fix, Inst of VCD's/FD's (Public Area) | 42d | 2011-12-15 | 2012-02-02 | C02PA23023C0 |  |  |  |  | 51.25d | 37.2d | MECHANICAL [2648.4 h]; Cost |  |  | C02PA23008C0 | CB | C | 02 | PA | ME | 230 | 08 | BILL 4 | B04 | S1 | 1F | R00 | ACF04 | 230 | 1S | MEP |  |  |  |  |  | M1F |  | 45 |  |  |  |  |  |  |  |  |  |  |
| C02PA01005C0 |  | CB-02 ; 2nd, Wall Inspection by Consultant (Public Area) | 6d | 2011-12-22 | 2011-12-29 | C02PA22011C0, C02PA26009C0, C02PA40302C0 |  |  |  |  | 26.85d | 12.8d | Labor General [0.6 h]; Cost |  |  | C02PA01005C0 | CB | C | 02 | PA | ME | 010 | 05 | BILL 4 | B04 | S1 | WI | R00 | ACF07 | 010 | 2n | MEP |  |  |  |  |  |  |  |  |  |  |  |  |  |  |  |  |  |  |
| C02PA09205C0 |  | CB-02 ; Partitions Closing (Public Area) | 54d | 2012-01-15 | 2012-03-19 | C02PA01005C0, C02PA09203C0, C02PA22005C0, C02PA22019C0, CAFCI09201R02 FS+86d, CAFCI09201R02 FF+86d, CAFOA09204C1 FF, C02PA08103C0 FF, C02PA21117C0 FF, C02PA23008C0 FF, C02PA23015C0 FF, C02PA23009C0 |  |  |  |  | 14.05d | 0d | PARTITIONS [1406 m]; PARTITIONS [10019 h]; Cost |  |  | C02PA09205C0 | CB | C | 02 | PA | PT | 092 | 05 | BILL 4 | B04 | S1 | FF | R00 | ACF06 | 092 |  | GP | 315 | 946 |  |  |  | P2F |  |  |  |  |  |  |  |  |  |  | R3 |  |
| C02PA09901C0 |  | CB-02 ; Wall Prime & 1st coat (Public Area) | 36d | 2012-03-19 | 2012-04-30 | C02PA09205C0, C02CO04455C0 FF |  |  |  |  | 14.05d | 0d | WALL PAINT [481 h]; WALL PAINT [600 m2]; Cost |  |  | C02PA09901C0 | CB | C | 02 | PA | PA | 099 | 01 | BILL 4 | B04 | S1 | 01 | R00 | ACF06 | 099 |  |  | 328 | 956 |  |  |  |  |  |  |  |  |  |  |  |  |  |  |  |  |
| C02PA26005C0 |  | CB-02 ; 2nd Fix, Wiring for Power/Lighting/Emergency (Public Area) | 42d | 2012-03-19 | 2012-05-07 | C02PA09205C0 |  |  |  |  | 92.05d | 18d | ELECTRICAL [216 h]; Cost |  |  | C02PA26005C0 | CB | C | 02 | PA | ME | 260 | 05 | BILL 4 | B04 | S1 | 2F | R00 | ACF07 | 260 | 2n | MEP |  |  |  |  |  |  |  |  |  |  |  |  |  |  |  |  |  |  |
| C02PA26007C0 |  | CB-02 ; 2nd Fix, Cable Pulling (Public Area) | 42d | 2012-03-19 | 2012-05-07 | C02PA09201C0 SS+6d, C02PA09205C0 |  |  |  |  | 104.05d | 90d | ELECTRICAL [6616.8 h]; Cost |  |  | C02PA26007C0 | CB | C | 02 | PA | ME | 260 | 07 | BILL 4 | B04 | S1 | 2F | R00 | ACF07 | 260 | 2n | MEP |  |  |  |  |  |  |  | 25 |  |  |  |  |  |  |  |  |  |  |
| C02PA26011C0 |  | CB-02 ; 2nd Fix, Inst of Equipment (DB) (Public Area) | 42d | 2012-03-19 | 2012-05-07 | C02PA09205C0 |  |  |  |  | 32.05d | 18d | ELECTRICAL [1266 h]; Cost |  |  | C02PA26011C0 | CB | C | 02 | PA | ME | 260 | 11 | BILL 4 | B04 | S1 | 2F | R00 | ACF04 | 260 | 2n | MEP |  |  |  |  |  |  |  |  |  |  |  |  |  |  |  |  |  | E |
| C02PA26053C0 |  | CB-02 ; 2nd Fix, Wiring / Cabling (Public Area) | 30d | 2012-03-19 | 2012-04-23 | C02PA09205C0 |  |  |  |  | 116.05d | 102d | ELECTRICAL [216 h]; Cost |  |  | C02PA26053C0 | CB | C | 02 | PA | ME | 260 | 53 | BILL 4 | B04 | S1 | 2F | R00 | ACF07 | 260 | 2n | MEP | 389 | 977 |  |  |  |  |  |  |  |  |  |  |  |  |  |  |  |  |
| C02PA27020C0 |  | CB-02 ; 2nd Fix, Inst of ELV Equipment (Panels) (Public Area) | 42d | 2012-03-19 | 2012-05-07 | C02PA09205C0 |  |  |  |  | 32.05d | 18d | ELECTRICAL [384 h]; Cost |  |  | C02PA27020C0 | CB | C | 02 | PA | ME | 270 | 20 | BILL 4 | B04 | S1 | 2F | R00 | ACF04 | 270 | 2n | MEP |  |  |  |  |  |  |  |  |  |  |  |  |  |  |  |  |  | E |
| C02PA05501C0 |  | CB-02 ; Handrails & balustrade (Public Area) | 36d | 2012-04-30 | 2012-06-11 | C02PA09901C0, CAFT1405509C0, CAFT1505509C0, CAFT1105509C0, CAFT1205509C0 |  |  |  |  | 38.05d | 24d | SECONDARY STEEL [650 h]; Cost |  |  | C02PA05501C0 | CB | C | 02 | PA | SW | 055 | 01 | BILL 4 | B04 | S1 | 01 | R00 | ACF03 | a |  |  |  |  |  |  |  |  |  |  |  |  |  |  |  |  |  |  |  |  |
| C02PA09501C0 |  | CB-02 ; Ceiling Grid and ServiceTile (Public Area) | 24d | 2012-04-30 | 2012-05-28 | C02PA09205C0 SS+15d, C02PA21117C0, C02PA23008C0, C02PA23009C0, C02PA23015C0, C02PA27001C0, CAFCI22001R02 FS+79d, C02PA26011C0 FF, C02PA09901C0 |  |  |  |  | 14.05d | 0d | CEILING GRID FOR GYPSUM [4982.01 h]; CEILING GRID FOR GYPSUM [426.36 m2]; Cost |  |  | C02PA09501C0 | CB | C | 02 | PA | CE | 095 | 01 | BILL 4 | B04 | S1 | 01 | R00 | ACF06 | 095 |  |  | 323 | 952 |  | R3 |  |  |  |  |  |  |  |  |  |  |  |  |  |  |
| C02PA09601C0 |  | CB-02 ; Flooring (Rubber & etc) (Public Area) | 36d | 2012-05-28 | 2012-07-10 | C02PA09901C0, C02PA09501C0 |  |  |  |  | 14.05d | 0d | RUBBER FLOOR [552 h]; RUBBER FLOOR [1375 m2]; Cost |  |  | C02PA09601C0 | CB | C | 02 | PA | FF | 096 | 01 | BILL 4 | B04 | S1 | 03 | R00 | ACF06 | RF |  |  | 326 | 955 |  | R3 |  |  |  |  |  |  |  |  |  |  |  |  |  |  |
| C02PA09602C0 |  | CB-02 ; Flooring (Stone) (Public Area) | 36d | 2012-05-28 | 2012-07-10 | C02PA09901C0, C02PA09501C0, C02PA27020C0, C02PA05501C0 FF, A10410 |  |  |  |  | 14.05d | 0d | STONE FLOOR [15 m2]; STONE FLOOR [16 h]; Cost |  |  | C02PA09601C0 | CB | C | 02 | PA | FF | 096 | 01 | BILL 4 | B04 | S1 | 09 | R00 | ACF06 | ST |  |  | 326 | 955 |  | R3 |  |  |  |  |  |  |  |  |  |  |  |  |  |  |
| C02PA09903C0 |  | CB-02 ; Wall Final Paint (Public Area) | 36d | 2012-05-28 | 2012-07-10 | C02PA09901C0, C02PA09905C0 |  |  |  |  | 107.05d | 72d | WALL PAINT [260 h]; WALL PAINT [323 m2]; Cost |  |  | C02PA09903C0 | CB | C | 02 | PA | PA | 099 | 03 | BILL 4 | B04 | S1 | 02 | R00 | ACF06 | 099 |  |  | 329 | 957 |  |  |  |  |  |  |  |  |  |  |  |  |  |  |  |  |
| C02PA09905C0 |  | CB-02 ; Ceiling Prime & 1st coat (Public Area) | 0d | 2012-05-28 | 2012-05-28 | C02PA09501C0 |  |  |  |  | 107.05d | 0d | Cost |  |  | C02PA09905C0 | CB | C | 02 | PA | PA | 099 | 05 | BILL 4 | B04 | S1 | 01 | R00 | ACF06 | 099 |  |  | 330 | 958 |  |  |  |  |  |  |  |  |  |  |  |  |  |  |  |  |
| C02PA21115C0 |  | CB-02 ; 2nd Fix, Inst of Sprinkler droppers (Public Area) | 30d | 2012-05-28 | 2012-07-03 | C02PA09501C0 |  |  |  |  | 25.05d | 0d | MECHANICAL [1404 h]; Cost |  |  | C02PA21115C0 | CB | C | 02 | PA | ME | 211 | 15 | BILL 4 | B04 | S1 | 2F | R00 | ACF07 | 211 | 2n | MEP |  |  |  |  |  |  |  |  |  |  |  |  |  |  |  |  |  |  |
| C02PA23021C0 |  | CB-02 ; 2nd Fix, Inst of Flexible Duct & Plenum boxes (Public Area) | 42d | 2012-05-28 | 2012-07-17 | C02PA09205C0, C02PA09501C0 |  |  |  |  | 44.05d | 0d | MECHANICAL [903.6 h]; Cost |  |  | C02PA23021C0 | CB | C | 02 | PA | ME | 230 | 21 | BILL 4 | B04 | S1 | 2F | R00 | ACF07 | 230 | 2n | MEP |  |  |  |  |  |  |  |  |  |  |  |  |  |  |  |  |  |  |
| C02PA26015C0 |  | CB-02 ; Final Fix, Termination & Gladding of Cables (Public Area) | 48d | 2012-05-28 | 2012-07-24 | C02PA26005C0, C02PA09501C0 |  |  |  |  | 74.05d | 60d | ELECTRICAL [826.8 h]; Cost |  |  | C02PA26015C0 | CB | C | 02 | PA | ME | 260 | 15 | BILL 4 | B04 | S1 | FF | R00 | ACF07 | 260 | FF | MEP |  |  |  |  |  |  |  |  |  |  |  |  |  |  |  |  |  |  |
| C02PA26017C0 |  | CB-02 ; Final Fix, Inst of Ceiling rose (Public Area) | 48d | 2012-05-28 | 2012-07-24 | C02PA09501C0 |  |  |  |  | 32.05d | 0d | ELECTRICAL [123.6 h]; Cost |  |  | C02PA26017C0 | CB | C | 02 | PA | ME | 260 | 17 | BILL 4 | B04 | S1 | FF | R00 | ACF07 | 260 | FF | MEP |  |  |  |  |  |  |  |  |  |  |  |  |  |  |  |  |  |  |
| C02PA27002C0 |  | CB-02 ; 2nd Fix, Wiring Droppers (Public Area) | 42d | 2012-05-28 | 2012-07-17 | C02PA09501C0 |  |  |  |  | 25.05d | 0d | ELECTRICAL [216 h]; Cost |  |  | C02PA27002C0 | CB | C | 02 | PA | ME | 270 | 02 | BILL 4 | B04 | S1 | 2F | R00 | ACF07 | 270 | 2n | MEP |  |  |  |  |  |  |  |  |  |  |  |  |  |  |  |  |  |  |
| C02PA40303C0 |  | CB-02 ; Final Fix, Pneumatic Station (Public Area) | 48d | 2012-05-28 | 2012-07-24 | C02PA09501C0 |  |  |  |  | 32.05d | 7d | MECHANICAL [2661.6 h]; Cost |  |  | C02E140303C0 | CB | C | 02 | PA | ME | 403 | 03 | BILL 4 | B04 | S1 | FF | R00 | ACF07 | 403 | FF | MEP |  |  |  |  |  |  |  |  |  |  |  |  |  |  |  |  |  |  |
| C02PA23019C0 |  | CB-02 ; Final Fix, Inst of Grilles & Diffusers (Public Area) | 48d | 2012-06-04 | 2012-07-31 | C02PA09501C0, C02PA23021C0 SS+6d |  |  |  |  | 68.05d | 54d | MECHANICAL [1970.4 h]; Cost |  |  | C02PA23019C0 | CB | C | 02 | PA | ME | 230 | 19 | BILL 4 | B04 | S1 | FF | R00 | ACF07 | 230 | FF | MEP |  |  |  |  |  |  |  |  |  |  |  |  |  |  |  |  |  |  |
| C02PA21113C0 |  | CB-02 ; Final Fix, Inst of Sprinklers head/ Extinguisher (Public Area) | 48d | 2012-06-05 | 2012-08-01 | C02PA09501C0, C02PA21115C0 SS+7d |  |  |  |  | 25.05d | 0d | MECHANICAL [278.4 h]; Cost |  |  | C02PA21113C0 | CB | C | 02 | PA | ME | 211 | 13 | BILL 4 | B04 | S1 | FF | R00 | ACF07 | 211 | FF | MEP |  |  |  |  |  |  |  |  |  |  |  |  |  |  |  |  |  |  |
| C02PA26003C0 |  | CB-02 ; Final Fix, Inst of Light fittings (Public Area) | 48d | 2012-06-05 | 2012-08-01 | C02PA26017C0 SS+7d |  |  |  |  | 67.05d | 53d | ELECTRICAL [7983.6 h]; Cost |  |  | C02PA26003C0 | CB | C | 02 | PA | ME | 260 | 03 | BILL 4 | B04 | S1 | FF | R00 | ACF07 | 260 | FF | MEP |  |  |  |  |  |  |  |  |  |  |  |  |  |  |  |  |  |  |
| C02PA27030C0 |  | CB-02 ; Final Fix, Inst of ELV device (Detector/Speaker) (Public Area) | 48d | 2012-06-05 | 2012-08-01 | C02PA09501C0, C02PA27002C0 SS+7d |  |  |  |  | 25.05d | 0d | ELECTRICAL [2054.4 h]; Cost |  |  | C02PA27030C0 | CB | C | 02 | PA | ME | 270 | 30 | BILL 4 | B04 | S1 | FF | R00 | ACF07 | 270 | FF | MEP |  |  |  |  |  |  |  |  |  |  |  |  |  |  |  |  |  |  |
| C02PA08107C0 |  | CB-02 ; Doors (Public Area) | 36d | 2012-07-10 | 2012-08-23 | C02PA08103C0, C02PA09901C0, C02PA09601C0, C02PA09602C0 |  |  |  |  | 41.05d | 0d | ASSORTED DOORS [1410 h]; ASSORTED DOORS [141 no]; Cost |  |  | C02PA08107C0 | CB | C | 02 | PA | DO | 081 | 07 | BILL 4 | B04 | S1 | DR | R00 | ACF06 | 081 |  |  | 317 | 948 | 08 |  |  |  |  |  |  |  |  |  |  |  |  |  |  |  |
| C02PA09701C0 |  | CB-02 ; Wall finishes (ST, WD, WC) (Public Area) | 36d | 2012-07-10 | 2012-08-23 | C02PA27020C0 FF, CAFCI22001R02 FS+176d, C02PA09601C0, C02PA09602C0 |  |  |  |  | 14.05d | 0d | ASSORTED WALL FINISH [529 h]; ASSORTED WALL FINISH [607 m2]; Cost |  |  | C02PA09701C0 | CB | C | 02 | PA | WF | 097 | 01 | BILL 4 | B04 | S1 | 01 | R00 | ACF06 | 097 |  |  | 105 | 1002 |  |  |  |  |  |  |  |  |  |  |  |  |  |  |  |  |
| C02PA01006C0 |  | CB-02 ; 2nd, Ceiling Inspection by Consultants (Public Area) | 6d | 2012-08-01 | 2012-08-08 | C02PA21115C0, C02PA23009C0, C02PA23015C0, C02PA27002C0, C02PA09501C0, C02PA21113C0, C02PA26017C0, C02PA27030C0, C02PA40303C0 |  |  |  |  | 25.05d | 11d | Labor General [0.6 h]; Cost |  |  | C02PA01006C0 | CB | C | 02 | PA | ME | 010 | 06 | BILL 4 | B04 | S1 | CI | R00 | ACF07 | 010 | 2n | MEP |  |  |  |  |  |  |  |  |  |  |  |  |  |  |  |  |  |  |
| C02PA08709C0 |  | CB-02 ; Ironmongery (Public Area) | 18d | 2012-08-23 | 2012-09-13 | C02PA08107C0 |  |  |  |  | 41.05d | 27d | IRONMONGERY [1510 h]; IRONMONGERY [151 no]; Cost |  |  | C02PA08709C0 | CB | C | 02 | PA | DO | 087 | 09 | BILL 4 | B04 | S1 | IM | R00 | ACF06 | 087 |  |  | 322 | 951 | 08 |  |  |  |  |  |  |  |  |  |  |  |  |  |  |  |
| C02PA09503C0 |  | CB-02 ; Ceiling closure - ACT/Gypsum (Public Area) | 24d | 2012-08-23 | 2012-09-20 | C02PA01006C0, C02PA21115C0, C02PA26005C0, C02PA27002C0, CAFOA09503C1 FF, C02PA09701C0, C02PA23021C0, C02PA26053C0, C02PA26007C0 |  |  |  |  | 14.05d | 0d | ASSORTED CEILING FINISH [951.4 h]; CEILING GYPSUM [139.81 h]; ASSORTED CEILING FINISH [1547 m2]; CEILING GYPSUM [390 m2]; Cost |  |  | C02PA09503C0 | CB | C | 02 | PA | CE | 095 | 03 | BILL 4 | B04 | S1 | 02 | R00 | ACF06 | 095 |  |  | 324 | 953 |  | R3 |  |  |  |  |  |  |  |  |  |  |  |  |  |  |
| C02PA11001C0 |  | CB-02 ; Wall Protection (WP, CG, WG, FCG) (Public Area) | 24d | 2012-08-23 | 2012-09-20 | C02PA09701C0, C02PA09903C0 SS |  |  |  |  | 35.05d | 21d | FF&E [21 h]; Cost |  |  | C02PA11001C0 | CB | C | 02 | PA | WF | 110 | 01 | BILL 4 | B04 | S1 | 03 | R00 | ACF08 | b |  |  | 326 | 1001 |  |  |  |  |  |  |  |  |  |  |  |  |  |  |  |  |
| C02PA11009C0 |  | CB-02 ; Signage (Public Area) | 12d | 2012-08-23 | 2012-09-06 | C02PA09701C0 |  |  |  |  | 47.05d | 33d | SIGNAGES [331 h]; SIGNAGES [331.2 no]; Cost |  |  | C02PA11009C0 | CB | C | 02 | PA | SA | 110 | 09 | BILL 4 | B04 | S1 | 09 | R00 | ACF08 | c |  |  | 322 | 951 | 08 |  |  |  |  |  |  |  |  |  |  |  |  |  |  |  |

| ID | WBS | Activity | Duration | Start | Finish | Predecessors | Complete | Remaining | Planned start | Planned finish | Total float | Free float | Resources | Cost | Actual cost | Change Order # | NEW ACTIVITY ID | change id | CCAD BUILDING(SET) | CCAD PHASE(SET) | CCAD FLOOR(SET) | CCAD ZONE(SET) | CCAD WORK(SET) | CCAD SECTION(SET) | CCAD SERIAL No.(SET) | CCAD CBS(SET) | CCAD BILL(SET) | CCAD HANDOVER(SET) | CCAD TAG(SET) | CCAD REV(SET) | CCADACF (SET) | CCAD SSCF | CCAD SUB ZONE MEP(SET) | CCAD CSA | user_number8 | user_integer1 | user_integer2 | user_number7 | RENZ % COMPLETE | Claimed This Month | U% | Act Selector % | P_811 | P_711 | July2011 Target% Complete | CCAD MEQ | CCAD DIVISION(SET) | IDDD |
| --- | --- | --- | --- | --- | --- | --- | --- | --- | --- | --- | --- | --- | --- | --- | --- | --- | --- | --- | --- | --- | --- | --- | --- | --- | --- | --- | --- | --- | --- | --- | --- | --- | --- | --- | --- | --- | --- | --- | --- | --- | --- | --- | --- | --- | --- | --- | --- | --- |
| C02PA09907C0 |  | CB-02 ; Ceiling Final paint (Public Area) | 0d | 2012-09-20 | 2012-09-20 | C02PA09601C0, C02PA09905C0, C02PA09602C0, C02PA09503C0 |  |  |  |  | 35.05d | 21d | Cost |  |  | 331 | 959 | C02PA09907C0 | CB | C | 02 | PA | PA | 099 | 07 | BILL 4 | B04 | S1 | 02 | R00 | ACF06 | 099 |  |  |  |  |  |  |  |  |  |  |  |  |  |  |  |  |
| C02PA26019C0 |  | CB-02 ; Final Fix, Inst of Switch/Sockets (Public Area) | 12d | 2012-09-20 | 2012-10-04 | C02PA09901C0, C02PA09503C0 |  |  |  |  | 14.05d | 0d | ELECTRICAL [427.2 h]; Cost |  |  |  |  | C02PA26019C0 | CB | C | 02 | PA | ME | 260 | 19 | BILL 4 | B04 | S1 | FF | R00 | ACF07 | 260 | FF | MEP |  |  |  |  |  |  |  |  |  |  |  |  |  |  |
|  | 10 | **Precommissioning Tesing & snagging (Public Area)** |  | 2012-10-04 | 2012-11-14 |  |  |  |  |  |  |  |  |  |  |  |  |  |  |  |  |  |  |  |  |  |  |  |  |  |  |  |  |  |  |  |  |  |  |  |  |  |  |  |  |  |  |  |
| C02TS01805C0 |  | CB-02 ; MEP de-snag, FIREM sign-off | 9d | 2012-10-04 | 2012-10-15 | C02PA26015C0, C02PA40303C0, C02PA21113C0, C02PA23019C0, C02PA26017C0, C02PA26003C0, C02PA27030C0, C02PA26019C0 |  |  |  |  | 14.05d | 0d | TESTING & COMMISSIONING [1020 h]; Cost |  |  |  |  | C02TS01801C0 | CB | C | 02 | TS | SC | 018 | 01 | BILL 4 | B04 | S1 | 01 | R00 | ACF07 | 018 |  |  |  |  |  |  |  |  |  |  |  |  |  |  |  |  |
| C02TS01808C0 |  | CB-02 ; Touch-up & Clean / JV inspection /CIR /De-snag | 17.75d | 2012-10-15 | 2012-11-06 | C02PA08709C0, C02PA09601C0, C02PA09701C0, C02PA09907C0, C02PA11001C0, C02PA11009C0, C02TS01805C0, C02PA05501C0, C02PA09602C0, C02PA09503C0 |  |  |  |  | 14.05d | 0d | TESTING & COMMISSIONING [149 h]; Cost |  |  |  |  | C02TS01802C0 | CB | C | 02 | TS | SC | 018 | 02 | BILL 4 | B04 | S1 | 02 | R00 | ACF07 | 018 |  |  |  |  |  |  |  |  |  |  |  |  |  |  |  |  |
| C02TS01811C0 |  | CB-02 ; Consultant's final de-snag inspection | 7d | 2012-11-06 | 2012-11-14 | C02TS01808C0 |  |  |  |  | 14.05d | 6.72d | Labor General [1 h]; Cost |  |  |  |  | C02TS01803C0 | CB | C | 02 | TS | SC | 018 | 03 | BILL 4 | B04 | S1 | 03 | R00 | ACF07 | 018 |  |  |  |  |  |  |  |  |  |  |  |  |  |  |  |  |
|  | 06 | **TR Room** |  | 2011-04-16 | 2012-10-11 |  |  |  |  |  |  |  |  |  |  |  |  |  |  |  |  |  |  |  |  |  |  |  |  |  |  |  |  |  |  |  |  |  |  |  |  |  |  |  |  |  |  |  |
| C02TR09201C0 |  | CB-02 ; Metal Studs (TR RM) | 18d | 2011-04-16 A | 2011-11-09 | C02PA09201C0, A10290 FS+72d | 90% | 1.8d | 2011-05-24 | 2011-06-13 | 48.2d | 0d | PARTITIONS [664 h]; PARTITIONS - Metal Studs [87 m]; Cost |  |  | 313 | 885 | C02TR09201C0 | CB | C | 02 | TR | PT | 092 | 01 | BILL 4 | B04 | S1 | 1F | R00 | ACF06 | 092 |  | GP | 0 | 0 | 0 | 0 | 60 | 8794 | 90 | PMS |  |  |  |  |  |  |
| C02TR09203C0 |  | CB-02 ; Partitions 1st face (TR RM) | 40d | 2011-05-15 A | 2011-11-24 | C02TR09201C0 SS+12d | 63% | 14.8d | 2011-06-11 | 2011-07-28 | 48.2d | 30.8d | PARTITIONS [87 m]; PARTITIONS [516 h]; Cost |  |  | 314 | 886 | C02TR09203C0 | CB | C | 02 | TR | PT | 092 | 03 | BILL 4 | B04 | S1 | 2F | R00 | ACF06 | 092 |  | GP | 0 | 0 | 0 | 0 | 5 | 12311.62 |  | P1F | 55 | 32 |  |  |  |  |
| C02TR26026C0 |  | CB-02 ; 2nd Fix, Conduit (TR RM) | 18d | 2011-06-05 A | 2011-08-30 A | C02TR09201C0 SS+6d | 100% |  | 2011-06-05 | 2011-06-26 |  |  | ELECTRICAL [430.8 h]; Cost [29580.4 AED] | 29,580.43 | 29,580.43 |  |  | C02TR26026C0 | CB | C | 02 | TR | ME | 260 | 26 | BILL 4 | B04 | S1 | 2F | R00 | ACF07 | 260 | 2n | MEP |  |  |  |  |  | 20577.39 |  |  | 100 | 65 | 65 |  |  |  |
| C02TR26005C0 |  | CB-02 ; 2nd Fix, Wiring for Power/Lighting/Emergency (TR RM) | 36d | 2011-06-07 A | 2012-04-26 | C02TR26026C0, C02TR26027C0 SS+6d, C02TR09501C0 | 25% | 27d | 2011-08-18 | 2011-10-02 | 38.4d | 21d | ELECTRICAL [216 h]; Cost [15494.5 AED] | 15,494.51 | 3,873.63 |  |  | C02TR26005C0 | CB | C | 02 | TR | ME | 260 | 05 | BILL 4 | B04 | S1 | 2F | R00 | ACF07 | 260 | 2n | MEP |  |  |  |  |  | 3598.69 |  |  |  |  | 25 |  |  |  |
| C02TR26009C0 |  | CB-02 ; 2nd Fix, Inst of Equipment (DB, TR, SG,BUS) (TR RM) | 54d | 2011-07-05 A | 2012-02-21 | C02TR09201C0, C02TR09205C0 SS | 25% | 40.5d | 2011-10-05 | 2011-12-13 | 118.9d | 101.5d | ELECTRICAL [14013.6 h]; Cost [3188823 AED] | 3,188,823.2 | 797,205.8 |  |  | C02TR26009C0 | CB | C | 02 | TR | ME | 260 | 09 | BILL 4 | B04 | S1 | 2F | R00 | ACF04 | 260 | 2n | MEP | 0 | 0 | 0 | 0 |  |  |  |  |  |  | 25 | E |  |  |
| C02TR23013C0 |  | CB-02 ; 2nd Fix, Insulation of CHW pipe & Duct (TR RM) | 36d | 2011-07-10 A | 2012-02-25 | C02TR23009C0 SS, C02TR23011C0 SS | 55% | 16.2d | 2011-09-19 | 2011-10-31 | 79.2d | 25.8d | MECHANICAL [6742.8 h]; Cost [363863 AED] | 363,863.22 | 200,124.77 |  |  | C02TR23013C0 | CB | C | 02 | TR | ME | 230 | 13 | BILL 4 | B04 | S1 | 2F | R00 | ACF07 | 230 | 2n | MEP | 0 | 0 | 0 | 0 |  |  |  |  | 41 | 35 | 25 |  |  |  |
| C02TR01005C0 |  | CB-02 ; 2nd, Wall Inspection by Consultant (TR RM) | 12d | 2011-11-05 | 2011-11-21 | C02TR26026C0 |  |  |  |  | 51d | 33.6d | Labor General [0.6 h]; Cost |  |  |  |  | C02TR01005C0 | CB | C | 02 | TR | ME | 010 | 05 | BILL 4 | B04 | S1 | WI | R00 | ACF07 | 010 | 2n | MEP |  |  |  |  |  |  |  |  |  |  |  |  |  |  |
| C02TR08101C0 |  | CB-02 ; Door Frames (TR RM) | 18d | 2011-11-27 | 2011-12-18 | C02TR09201C0, GNHE08101C0 FS+93d |  |  |  |  | 58d | 40.6d | ASSORTED DOORS [3 h]; Cost |  |  | 316 | 20001090 | C02TR08101C0 | CB | C | 02 | TR | DO | 081 | 01 | BILL 4 | B04 | S1 | DF | R00 | ACF06 | 081 |  |  |  |  |  |  |  |  |  |  |  |  |  |  | 08 |  |
| C02TR09205C0 |  | CB-02 ; Partitions Closing (TR RM) | 28d | 2012-01-03 | 2012-02-06 | C02TR01005C0, C02TR09201C0, C02TR09203C0, CAFOA09204C1 FF, C01TR09205C0 SS+6d, C02TR08101C0 FF |  |  |  |  | 17.4d | 0d | PARTITIONS [87 m]; PARTITIONS [669 h]; Cost |  |  | 315 | 887 | C02TR09205C0 | CB | C | 02 | TR | PT | 092 | 05 | BILL 4 | B04 | S1 | FF | R00 | ACF06 | 092 |  | GP |  |  |  |  |  |  |  | P2F |  |  |  |  |  |  |
| C02TR09901C0 |  | CB-02 ; Wall Prime & 1st coat (TR RM) | 18d | 2012-02-06 | 2012-02-27 | C02TR09205C0 |  |  |  |  | 17.4d | 0d | WALL PAINT [33 h]; WALL PAINT [39 m2]; Cost |  |  | 360 | 20001110 | C02TR09901C0 | CB | C | 02 | TR | PA | 099 | 01 | BILL 4 | B04 | S1 | 01 | R00 | ACF06 | 099 |  |  |  |  |  |  |  |  |  |  |  |  |  |  |  |  |
| C02TR23009C0 |  | CB-02 ; 2nd Fix, Inst of VAV'S CHW connection (TR RM) | 30d | 2012-02-06 | 2012-03-12 | C02TR09201C0, C02TR09205C0 |  |  |  |  | 65.4d | 0d | MECHANICAL [1419.6 h]; Cost |  |  |  |  | C02TR23009C0 | CB | C | 02 | TR | ME | 230 | 09 | BILL 4 | B04 | S1 | 2F | R00 | ACF07 | 230 | 2n | MEP |  |  |  |  |  |  |  |  |  |  |  |  |  |  |
| C02TR23011C0 |  | CB-02 ; 2nd Fix, Inst of VCD's/FD's (TR RM) | 30d | 2012-02-06 | 2012-03-12 | C02TR09201C0, C02TR09205C0 |  |  |  |  | 65.4d | 0d | MECHANICAL [2648.4 h]; Cost |  |  |  |  | C02TR23011C0 | CB | C | 02 | TR | ME | 230 | 11 | BILL 4 | B04 | S1 | 2F | R00 | ACF07 | 230 | 2n | MEP |  |  |  |  |  |  |  |  |  |  | 25 |  |  |  |
| C02TR26027C0 |  | CB-02 ; 2nd Fix, Wiring / Cabling (TR RM) | 30d | 2012-02-06 | 2012-03-12 | C02TR09205C0 |  |  |  |  | 74.4d | 36d | ELECTRICAL [216 h]; Cost |  |  | 417 | 1318 | C02TR26027C0 | CB | C | 02 | TR | ME | 260 | 27 | BILL 4 | B04 | S1 | 2F | R00 | ACF07 | 260 | 2n | MEP |  |  |  |  |  |  |  |  |  |  |  |  |  |  |
| C02TR09501C0 |  | CB-02 ; Ceiling grid and ServiceTile (TR RM) | 24d | 2012-02-27 | 2012-03-26 | C02TR09205C0, C02TR09901C0 |  |  |  |  | 17.4d | 0d | CEILING GRID FOR GYPSUM [214.28 h]; CEILING GRID FOR GYPSUM [18.34 m2]; Cost |  |  | 336 | 1327 | C02TR09501C0 | CB | C | 02 | TR | CE | 095 | 01 | BILL 4 | B04 | S1 | 01 | R00 | ACF06 | 095 |  |  |  |  |  |  |  |  |  |  |  |  |  |  |  | 1 |
| C02TR01006C0 |  | CB-02 ; 2nd, Ceiling Inspection by Consultants (TR RM) | 12d | 2012-03-26 | 2012-04-09 | C02TR23009C0, C02TR23011C0, C02TR23013C0, C02TR09501C0 |  |  |  |  | 53.4d | 36d | Labor General [0.6 h]; Cost |  |  |  |  | C02TR01006C0 | CB | C | 02 | TR | ME | 010 | 06 | BILL 4 | B04 | S1 | CI | R00 | ACF07 | 010 | 2n | MEP |  |  |  |  |  |  |  |  |  |  |  |  |  |  |
| C02TR09601C0 |  | CB-02 ; Floor Finishes (TR RM) | 18d | 2012-03-26 | 2012-04-16 | C02TR09501C0 |  |  |  |  | 17.4d | 0d | ASSORTED FLOOR FINISH [576 h]; ASSORTED FLOOR FINISH [318 m2]; Cost |  |  | 359 | 20001120 | C02TR09601C0 | CB | C | 02 | TR | FF | 096 | 01 | BILL 4 | B04 | S1 | 01 | R00 | ACF06 | FF |  |  |  |  |  |  |  |  |  |  |  |  |  |  |  |  |
| C02TR23023C0 |  | CB-02 ; 2nd Fix, Flexible ducts (TR RM) | 30d | 2012-03-26 | 2012-04-30 | C02TR09205C0, C02TR09501C0 |  |  |  |  | 35.4d | 18d | MECHANICAL [903.6 h]; Cost |  |  | 412 | 20001140 | C02TR23023C0 | CB | C | 02 | TR | ME | 230 | 23 | BILL 4 | B04 | S1 | 2F | R00 | ACF07 | 230 | 2n | MEP |  |  |  |  |  |  |  |  |  |  |  |  |  |  |
| C02TR27002C0 |  | CB-02 ; 2nd Fix, Dressing of ELV panels (TR RM) | 30d | 2012-03-26 | 2012-04-30 | C02TR09205C0, C02TR27020C0 SS |  |  |  |  | 71.4d | 36d | ELECTRICAL [1284 h]; Cost |  |  |  |  | C02TR27002C0 | CB | C | 02 | TR | ME | 270 | 02 | BILL 4 | B04 | S1 | 2F | R00 | ACF07 | 270 | 2n | MEP |  |  |  |  |  |  |  |  |  |  |  |  |  |  |
| C02TR27020C0 |  | CB-02 ; 2nd Fix, Inst of ELV Equipment (Panels) (TR RM) | 30d | 2012-03-26 | 2012-04-30 | C02TR09201C0, C02TR09205C0, C02TR09501C0 |  |  |  |  | 71.4d | 0d | ELECTRICAL [384 h]; Cost |  |  |  |  | C02TR27020C0 | CB | C | 02 | TR | ME | 270 | 20 | BILL 4 | B04 | S1 | 2F | R00 | ACF04 | 270 | 2n | MEP |  |  |  |  |  |  |  |  |  |  |  | E |  |  |
| C02TR08105C0 |  | CB-02 ; Doors (TR RM) | 18d | 2012-04-16 | 2012-05-07 | C02TR08101C0, C02TR09901C0, C02TR09601C0 |  |  |  |  | 93.4d | 0d | ASSORTED DOORS [10 h]; ASSORTED DOORS [1 no]; Cost |  |  | 317 | 1325 | C02TR08105C0 | CB | C | 02 | TR | DO | 081 | 05 | BILL 4 | B04 | S1 | DR | R00 | ACF06 | 081 |  |  |  |  |  |  |  |  |  |  |  |  |  |  | 08 |  |
| C02TR21115C0 |  | CB-02 ; 2nd Fix, Gaseous Fire Suppression (TR RM) | 30d | 2012-04-16 | 2012-05-21 | C02TR09601C0 |  |  |  |  | 17.4d | 0d | MECHANICAL [3854.4 h]; Cost |  |  | 411 | 20001130 | C02TR21115C0 | CB | C | 02 | TR | ME | 211 | 15 | BILL 4 | B04 | S1 | 2F | R00 | ACF07 | 211 | 2n | MEP |  |  |  |  |  |  |  |  |  |  |  |  |  |  |
| C02TR08709C0 |  | CB-02 ; Ironmongery (TR RM) | 20d | 2012-05-07 | 2012-05-30 | C02TR08105C0 |  |  |  |  | 93.4d | 76d | IRONMONGERY [100 h]; IRONMONGERY [10 no]; Cost |  |  | 322 | 20001100 | C02TR08709C0 | CB | C | 02 | TR | DO | 087 | 09 | BILL 4 | B04 | S1 | IM | R00 | ACF06 | 087 |  |  |  |  |  |  |  |  |  |  |  |  |  |  | 08 |  |
| C02TR09503C0 |  | CB-02 ; Ceiling closure (TR RM) | 18d | 2012-05-21 | 2012-06-11 | C02TR01006C0, C02TR21115C0, C02TR26005C0, C02TR26026C0, C02TR26027C0, C02TR23023C0 |  |  |  |  | 17.4d | 0d | ASSORTED CEILING FINISH [92.25 h]; CEILING GYPSUM [5.95 h]; ASSORTED CEILING FINISH [150 m2]; CEILING GYPSUM [38 m2]; Cost |  |  | 337 | 20001080 | C02TR09503C0 | CB | C | 02 | TR | CE | 095 | 03 | BILL 4 | B04 | S1 | 02 | R00 | ACF06 | 095 |  |  |  |  |  |  |  |  |  |  |  |  |  |  |  |  |
| C02TR09903C0 |  | CB-02 ; Wall - Final Paint (TR RM) | 12d | 2012-06-11 | 2012-06-26 | C02TR09503C0, C02TR09901C0 |  |  |  |  | 71.4d | 54d | WALL PAINT [18 h]; WALL PAINT [21 m2]; Cost |  |  | 361 | 1312 | C02TR09903C0 | CB | C | 02 | TR | PA | 099 | 03 | BILL 4 | B04 | S1 | 02 | R00 | ACF06 | 099 |  |  |  |  |  |  |  |  |  |  |  |  |  |  |  |  |
| C02TR09905C0 |  | CB-02 ; Ceiling Prime & 1st coat (TR RM) | 0d | 2012-06-11 | 2012-06-11 | C02TR09503C0 |  |  |  |  | 83.4d | 8d | Cost |  |  | 362 | 1313 | C02TR09905C0 | CB | C | 02 | TR | PA | 099 | 05 | BILL 4 | B04 | S1 | 01 | R00 | ACF06 | 099 |  |  |  |  |  |  |  |  |  |  |  |  |  |  |  |  |
| C02TR23074C0 |  | CB-02 ; Final Fix, Grilles, panels & diffusers (TR RM) | 30d | 2012-06-11 | 2012-07-17 | C02TR09503C0 |  |  |  |  | 35.4d | 18d | MECHANICAL [1970.4 h]; Cost |  |  | 419 | 20001160 | C02TR23074C0 | CB | C | 02 | TR | ME | 230 | 74 | BILL 4 | B04 | S1 | FF | R00 | ACF07 | 230 | FF | MEP |  |  |  |  |  |  |  |  |  |  |  |  |  |  |
| C02TR26015C0 |  | CB-02 ; Final Fix, Inst of Ceiling rose (TR RM) | 30d | 2012-06-11 | 2012-07-17 | C02TR09503C0 |  |  |  |  | 17.4d | 0d | ELECTRICAL [123.6 h]; Cost |  |  |  |  | C02TR26015C0 | CB | C | 02 | TR | ME | 260 | 15 | BILL 4 | B04 | S1 | FF | R00 | ACF07 | 260 | FF | MEP |  |  |  |  |  |  |  |  |  |  |  |  |  |  |
| C02TR27030C0 |  | CB-02 ; Final Fix, Inst of ELV device (Detector/Speaker) (TR RM) | 30d | 2012-06-11 | 2012-07-17 | C02TR09503C0, C02TR27002C0 |  |  |  |  | 35.4d | 18d | ELECTRICAL [2054.4 h]; Cost |  |  |  |  | C02TR27030C0 | CB | C | 02 | TR | ME | 270 | 30 | BILL 4 | B04 | S1 | FF | R00 | ACF07 | 270 | FF | MEP |  |  |  |  |  |  |  |  |  |  |  |  |  |  |
| C02TR26013C0 |  | CB-02 ; Final Fix, Termination & Gladding of Cables (TR RM) | 30d | 2012-06-19 | 2012-07-24 | C02TR09503C0, C02TR26015C0 SS+6d, C02TR26009C0 |  |  |  |  | 17.4d | 0d | ELECTRICAL [826.8 h]; Cost |  |  |  |  | C02TR26013C0 | CB | C | 02 | TR | ME | 260 | 13 | BILL 4 | B04 | S1 | FF | R00 | ACF07 | 260 | FF | MEP |  |  |  |  |  |  |  |  |  |  |  |  |  |  |
| C02TR09907C0 |  | CB-02 ; Ceiling - Final paint (TR RM) | 0d | 2012-06-21 | 2012-06-21 | C01TR09907C0 SS+14d, C02TR09905C0, C02TR09503C0 |  |  |  |  | 75.4d | 58d | Cost |  |  | 363 | 1314 | C02TR09907C0 | CB | C | 02 | TR | PA | 099 | 07 | BILL 4 | B04 | S1 | 02 | R00 | ACF06 | 099 |  |  |  |  |  |  |  |  |  |  |  |  |  |  |  |  |
| C02TR26017C0 |  | CB-02 ; Final Fix, Inst of Switch/Sockets (TR RM) | 12d | 2012-06-26 | 2012-07-10 | C02TR09503C0, C02TR09901C0, C02TR26013C0 SS+6d |  |  |  |  | 17.4d | 0d | ELECTRICAL [427.2 h]; Cost |  |  |  |  | C02TR26017C0 | CB | C | 02 | TR | ME | 260 | 17 | BILL 4 | B04 | S1 | FF | R00 | ACF07 | 260 | FF | MEP |  |  |  |  |  |  |  |  |  |  |  |  |  |  |
| C02TR26076C0 |  | CB-02 ; Final Fix, Lighting fittings (TR RM) | 30d | 2012-07-03 | 2012-08-07 | C02TR09503C0, C02TR26017C0 SS+6d |  |  |  |  | 17.4d | 0d | ELECTRICAL [7983.6 h]; Cost |  |  | 420 | 20001170 | C02TR26076C0 | CB | C | 02 | TR | ME | 260 | 76 | BILL 4 | B04 | S1 | FF | R00 | ACF07 | 260 | FF | MEP |  |  |  |  |  |  |  |  |  |  |  |  |  |  |
| C02TR01802C0 |  | CB-02 ; MEP de-snag, FIREM sign-off | 18d | 2012-08-07 | 2012-08-30 | C02TR23074C0, C02TR26015C0, C02TR27030C0, C02TR26013C0, C02TR26017C0, C02TR26076C0 |  |  |  |  | 17.4d | 0d | TESTING & COMMISSIONING [510 h]; Cost |  |  | 396 |  | CP3TR01851C0 | CB | C | 02 | TR | SC | 018 | 53 | BILL 4 | B04 | S1 | 01 | R00 | ACF07 | 018 |  |  |  |  |  |  |  |  |  |  |  |  |  |  |  |  |
| C02TR01801C0 |  | CB-02 ; Touch-up & Clean / JV inspection /CIR /De-snag | 24d | 2012-08-30 | 2012-09-27 | C02TR01802C0, C02TR09601C0, C02TR09901C0, C02TR09903C0, C02TR09907C0, C02TR08709C0 |  |  |  |  | 17.4d | 0d | TESTING & COMMISSIONING [85 h]; Cost |  |  | 396 |  | C02TR01851C0 | CB | C | 02 | TR | SC | 018 | 51 | BILL 4 | B04 | S1 | 02 | R00 | ACF07 | 018 |  |  |  |  |  |  |  |  |  |  |  |  |  |  |  |  |
| C02TR01803C0 |  | CB-02 ; Consultant's final de-snag inspection | 12d | 2012-09-27 | 2012-10-11 | C02TR01801C0 |  |  |  |  | 17.4d | 9.05d | Labor General [1 h]; Cost |  |  |  |  | CP3TS01803C0 | CB | C | 02 | TR | SC | 018 | 03 | BILL 4 | B04 | S1 | 03 | R00 | ACF07 | 018 |  |  |  |  |  |  |  |  |  |  |  |  |  |  |  |  |

| ID | WBS | Activity | Type | Duration | Start | Finish | Predecessors | Complete | Remaining | Planned start | Planned finish | Total float | Free float | Resources | Cost | Actual cost | Change Order # | NEW ACTIVITY ID | change id | RENZ % COMPLETE | CCAD BUILDING(SET) | CCAD PHASE(SET) | CCAD DIVISION(SET) | CCAD FLOOR(SET) | CCAD ZONE(SET) | CCAD WORK(SET) | CCAD SECTION(SET) | CCAD SERIAL No.(SET) | CCAD CBS(SET) | CCAD BILL(SET) | CCAD HANDOVER(SET) | CCAD TAG(SET) | CCAD REV(SET) | CCADACF (SET) | CCAD SSCF | Actual Cost | CCAD CSA | Claimed This Month | P_811 | P_711 | July2011 Target% Complete | CCAD SUB ZONE MEP(SET) | Act Selector % | PERCENT COMPLETE | user_number8 | user_integer1 | user_integer2 | user_number7 | R3 Partitions | CCAD MEQ | R3 Finish |
| --- | --- | --- | --- | --- | --- | --- | --- | --- | --- | --- | --- | --- | --- | --- | --- | --- | --- | --- | --- | --- | --- | --- | --- | --- | --- | --- | --- | --- | --- | --- | --- | --- | --- | --- | --- | --- | --- | --- | --- | --- | --- | --- | --- | --- | --- | --- | --- | --- | --- | --- | --- |
|  | 03 | **Level 3** |  |  | 2010-10-13 | 2012-11-21 |  |  |  |  |  |  |  |  |  |  |  |  |  |  |  |  |  |  |  |  |  |  |  |  |  |  |  |  |  |  |  |  |  |  |  |  |  |  |  |  |  |  |  |  |  |
|  | 01 | **Structure & Envelopment** |  |  | 2010-10-13 | 2012-06-04 |  |  |  |  |  |  |  |  |  |  |  |  |  |  |  |  |  |  |  |  |  |  |  |  |  |  |  |  |  |  |  |  |  |  |  |  |  |  |  |  |  |  |  |  |  |
| C03SD03311C0 |  | CB-03 ; Corewall concrete (Zone SD) |  | 6d | 2010-10-13 A | 2010-10-23 A | C02SD03311C0 | 100% |  | 2010-11-25 | 2010-12-01 |  |  | CONCRETE [4968 h]; CONCRETE [125 m3]; Cost |  |  | 301 | 314 | C03SD03311C0 | 100 | CB | C | 03 | 03 | SD | CT | 033 | 11 | BILL 4 | B04 | S1 | 04 | R00 | ACF03 | 033 |  |  |  |  |  |  |  |  |  |  |  |  |  |  |  |  |
| C03SC03311C0 |  | CB-03 ; Corewall concrete (Zone SC) |  | 6d | 2010-10-22 A | 2010-10-28 A | C02SC03311C0 | 100% |  | 2010-11-18 | 2010-11-24 |  |  | CONCRETE [4968 h]; CONCRETE [125 m3]; Cost |  |  | 301 | 310 | C03SC03311C0 | 100 | CB | C | 03 | 03 | SC | CT | 033 | 11 | BILL 4 | B04 | S1 | 04 | R00 | ACF03 | 033 |  |  |  |  |  |  |  |  |  |  |  |  |  |  |  |  |
| C03S105101C0 |  | CB-03 ; Erection of Structural Steel (Zone S1) |  | 8.33d | 2010-11-29 A | 2011-01-30 A | C02S105101C0, C02S105103C0, C03SC03311C0 | 100% |  | 2011-01-02 | 2011-01-11 |  |  | STRUCTURAL STEEL [4572 h]; STRUCTURAL STEEL [175 T(Fe)]; Cost |  |  | 297 | 306 | C03S105101C0 | 100 | CB | C |  | 03 | S1 | ST | 051 | 01 | BILL 4 | B04 | S1 | 01 | R00 | ACF03 | 051 | 1773027.51 | ST |  |  |  |  |  |  |  |  |  |  |  |  |  |  |
| C03S205101C0 |  | CB-03 ; Erection of Structural Steel (Zone S2) |  | 7.4d | 2010-12-03 A | 2011-01-30 A | C02S205101C0, C02S205103C0, C03SD03311C0 | 100% |  | 2011-01-02 | 2011-01-10 |  |  | STRUCTURAL STEEL [7345 h]; STRUCTURAL STEEL [282 T(Fe)]; Cost |  |  | 297 | 312 | C03S205101C0 | 100 | CB | C |  | 03 | S2 | ST | 051 | 01 | BILL 4 | B04 | S1 | 01 | R00 | ACF03 | 051 | 2350292.28 | ST |  |  |  |  |  |  |  |  |  |  |  |  |  |  |
| C03S105103C0 |  | CB-03 ; Alignment & welding (Zone S1) |  | 5d | 2010-12-08 A | 2011-02-08 A | C03S105101C0 | 100% |  | 2011-02-05 | 2011-02-10 |  |  | STRUCTURAL STEEL [473 h]; Cost |  |  | 298 | 307 | C03S105103C0 | 100 | CB | C |  | 03 | S1 | ST | 051 | 03 | BILL 4 | B04 | S1 | 02 | R00 | ACF03 | 051 |  | ST |  |  |  |  |  |  |  |  |  |  |  |  |  |  |
| C03S205103C0 |  | CB-03 ; Alignment & welding (Zone S2) |  | 5d | 2010-12-14 A | 2011-02-12 A | C03S205101C0 | 100% |  | 2011-01-31 | 2011-02-06 |  |  | STRUCTURAL STEEL [627 h]; Cost |  |  | 298 | 313 | C03S205103C0 | 100 | CB | C |  | 03 | S2 | ST | 051 | 03 | BILL 4 | B04 | S1 | 02 | R00 | ACF03 | 051 |  | ST |  |  |  |  |  |  |  |  |  |  |  |  |  |  |
| C03S105305C0 |  | CB-03 ; Metal Decking (Zone S1) |  | 15d | 2011-01-05 A | 2011-04-05 A | C03S105103C0, C04S105101C0 | 100% |  | 2011-01-11 | 2011-01-29 |  |  | METAL DECKING [2038 h]; METAL DECKING [2580 m2]; Cost |  |  | 299 | 308 | C03S105305C0 | 100 | CB | C |  | 03 | S1 | ST | 053 | 05 | BILL 4 | B04 | S1 | 03 | R00 | ACF03 | 053 | 302975.64 | ST |  |  |  |  |  |  |  |  |  |  |  |  |  |  |
| C03S205305C0 |  | CB-03 ; Metal Decking (Zone S2) |  | 18d | 2011-01-06 A | 2011-04-07 A | C03S205103C0, C04S205101C0 | 100% |  | 2011-01-06 | 2011-01-27 |  |  | METAL DECKING [2702 h]; METAL DECKING [3420 m2]; Cost |  |  | 299 | 315 | C03S205305C0 | 100 | CB | C |  | 03 | S2 | ST | 053 | 05 | BILL 4 | B04 | S1 | 03 | R00 | ACF03 | 053 | 401618.88 | ST |  |  |  |  |  |  |  |  |  |  |  |  |  |  |
| C03S103335C0 |  | CB-03 ; Concrete on metal decking (Zone S1) |  | 10d | 2011-01-28 A | 2011-04-11 A | C03S105305C0 | 100% |  | 2011-01-29 | 2011-02-09 |  |  | CONCRETE [13392 h]; CONCRETE [337 m3]; Cost |  |  | 302 | 311 | C03S103335C0 | 100 | CB | C | 03 | 03 | S1 | CT | 033 | 35 | BILL 4 | B04 | S1 | 08 | R00 | ACF03 | 033 |  |  |  |  |  |  |  |  |  |  |  |  |  |  |  |  |
| C03S203335C0 |  | CB-03 ; Concrete on metal decking (Zone S2) |  | 11d | 2011-02-07 A | 2011-04-11 A | C03S205305C0 | 100% |  | 2011-02-06 | 2011-02-19 |  |  | CONCRETE [17808 h]; CONCRETE [448 m3]; Cost |  |  | 302 | 316 | C03S203335C0 | 100 | CB | C | 03 | 03 | S2 | CT | 033 | 35 | BILL 4 | B04 | S1 | 08 | R00 | ACF03 | 033 |  |  |  |  |  |  |  |  |  |  |  |  |  |  |  |  |
| C03S107807C0 |  | CB-03 ; Cementitious Fire Proofing (Zone S1) |  | 10d | 2011-03-06 A | 2011-06-05 A | C04S103335C0 | 100% |  | 2011-03-19 | 2011-03-30 |  |  | CEMENTITIOUS FIREPROOFING [1415 h]; CEMENTITIOUS FIREPROOFING [2829 m2]; Cost |  |  | 300 | 309 | C03S107807C0 | 95 | CB | C |  | 03 | S1 | ST | 078 | 07 | BILL 4 | B04 | S1 | 04 | R00 | ACF03 | 078 |  | ST | 12234.96 |  |  |  |  |  |  |  |  |  |  |  |  |  |
| C03S207808C0 |  | CB-03 ; Cementitious Fire Proofing (Zone S2) |  | 12d | 2011-03-07 A | 2011-06-06 A | C04S203335C0 | 100% |  | 2011-03-16 | 2011-03-30 |  |  | CEMENTITIOUS FIREPROOFING [1875 h]; CEMENTITIOUS FIREPROOFING [3750 m2]; Cost |  |  | 300 | 317 | C03S207808C0 | 97 | CB | C |  | 03 | S2 | ST | 078 | 08 | BILL 4 | B04 | S1 | 04 | R00 | ACF03 | 078 |  | ST | 9730.81 |  |  |  |  |  |  |  |  |  |  |  |  |  |
| C03CO04401C0 |  | CB-03 ; S1, S2 - Ex. partitions (Common Zone) |  | 200d | 2011-04-24 A | 2011-10-23 | C02CO04401C0 SS+15d, CR5S103335C0, CR5S203335C0, C03GN00707C0 FF | 95% | 10d | 2011-07-03 | 2012-03-01 | 61.05d | 0d | PARTITIONS [1425.36 m]; PARTITIONS [7098.5 h]; Cost |  |  | 815 | 189 | C03CO04401C0 | 30 | CB | C |  | 03 | CO | FA | 044 | 01 | BILL 4 | B04 | S1 | FS1 | R00 | ACF05 | 044 |  | FA | 117848.75 | 85 | 60 |  |  |  |  |  |  |  |  |  |  |  |
| C03GN00707C0 |  | CB-03 ; Temporary Enclosure | level of effort | 212d | 2011-05-16 A | 2012-06-04 | C03E109203C0 SS, C03E209203C0 SS, C03PA09203C0 SS, C03TR09203C0 SS | 3% | 206d | 2011-06-14 | 2012-02-28 | 124d | 0d | Labor General [0.6 h]; Cost |  |  |  |  |  |  | CB | C |  | 03 | GEN | FA | GEN |  |  | B04 |  | TE | R00 | ACF05 | 010 |  | FA |  | 30.61 | 18.06 |  |  |  |  |  |  |  |  |  |  |  |
| C03CO04409C0 |  | CB-03 ; S1 Onyx Stone (Common Zone) |  | 66d | 2011-08-10 A | 2011-10-19 | C02CO04409C0 SS+12d, C02CO04409C0 FF, C03CO04401C0 SS | 90% | 6.6d | 2011-09-17 | 2011-12-08 | 62.13d | 0d | FACADE BACK PAINTED BUTT GLAZED [309.4 h]; FACADE STONE PANEL 1 [2704.2 h]; FACADE BACK PAINTED BUTT GLAZED [113 m2]; FACADE STONE PANEL 1 [988 m2]; FACADE TOTAL QUANTITY m2 [1101 m2]; Cost |  |  | 816 | 190 | C03CO04409C0 |  | CB | C |  | 03 | CO | FA | 044 | 09 | BILL 4 | B04 | S1 | FS1 | R00 | ACF05 | 044 |  | FA |  | 25 | 0 |  |  |  |  |  |  |  |  |  |  |  |
| C03CO04455C0 |  | CB-03 ; S1 Inner Side of External Partition (Common Zone) |  | 48d | 2012-01-12 | 2012-03-10 | C03CO04401C0, C03PA09205C0 SS, C03E209205C0 SS, C03E109205C0 SS |  |  |  |  | 8.35d | 0d | FACADE STONE PANEL 1 [3908.3 h]; Cost |  |  |  |  | DP3CO04415C0 |  | CB | C |  | 03 | CO | FA | 044 | 15 | BILL 5 | B04 | S1 | FS1 | R00 | ACF05 | 044 |  | FA |  |  |  |  |  |  |  |  |  |  |  |  |  |  |
| C03CO04403C0 |  | CB-03 ; C3 Bracket, mullion & transom (Panoramic Lifts) |  | 84d | 2012-02-28 | 2012-06-04 | C04CO04403C0 SS |  |  |  |  | 124d | 0d | FACADE CURTAIN WALL 3 [913.5 h]; Cost |  |  | 813 | 187 | C03CO04403C0 |  | CB | C |  | 03 | CO | FA | 044 | 03 | BILL 4 | B04 | S1 | FC3 | R00 | ACF05 | 044 |  | FA |  |  |  |  |  |  |  |  |  |  |  |  |  |  |
| C03CO04405C0 |  | CB-03 ; C3 single glass (Panoramic Lifts) |  | 84d | 2012-02-28 | 2012-06-04 | C03CO04403C0 SS, C03GN00707C0 FF, C04CO04405C0 SS, C03CO04403C0 FF |  |  |  |  | 124d | 0d | FACADE CURTAIN WALL 3 [662.2 h]; FACADE GLASS BOX [1190.7 h]; FACADE CURTAIN WALL 3 [242 m2]; FACADE GLASS BOX [435 m2]; FACADE TOTAL QUANTITY m2 [677 m2]; Cost |  |  | 814 | 188 | C03CO04405C0 |  | CB | C |  | 03 | CO | FA | 044 | 05 | BILL 4 | B04 | S1 | FC3 | R00 | ACF05 | 044 |  | FA |  |  |  |  |  |  |  |  |  |  |  |  |  |  |
|  | 02 | **Exam 1** |  |  | 2011-03-26 | 2012-11-21 |  |  |  |  |  |  |  |  |  |  |  |  |  |  |  |  |  |  |  |  |  |  |  |  |  |  |  |  |  |  |  |  |  |  |  |  |  |  |  |  |  |  |  |  |  |
| C03E123001C0 |  | CB-03 ; 1st Fix, Inst. of Supports for MEP (Exam- 1) |  | 200d | 2011-03-26 A | 2011-10-11 | C03S107807C0, C04S103335C0 | 95% | 10d | 2011-03-30 | 2011-11-27 | 28.95d | 0d | MECHANICAL [1024.8 h]; Cost [57766.2 AED] | 57,766.25 | 54,877.94 |  |  | C03E123001C0 | 80 | CB | C |  | 03 | E1 | ME | 230 | 01 | BILL 4 | B04 | S1 | 1F | R00 | ACF04 | 230 |  | MEP | 6155.49 |  |  | 95 | 1S | M1F |  |  |  |  |  |  |  |  |
| C03E122019C0 |  | CB-03 ; 1st Fix, Inst of Drainage pipe (ceiling) (Exam- 1) |  | 200d | 2011-03-29 A | 2011-10-04 | C03E123001C0 SS, C03S107807C0 | 98% | 4d | 2011-05-01 | 2011-12-29 | 56.75d | 28.4d | PLUMBING [1714.8 h]; Cost [92715.9 AED] | 92,715.95 | 90,861.63 |  |  | C03E122019C0 | 75 | CB | C |  | 03 | E1 | ME | 220 | 19 | BILL 4 | B04 | S1 | 1F | R00 | ACF04 | 220 |  | MEP | 5371.55 |  |  | 85 | 1S | M1F |  |  |  |  |  |  |  |  |
| C03E121111C0 |  | CB-03 ; 1st Fix, Inst of Sprinkler main pipe (Exam- 1) |  | 200d | 2011-04-21 A | 2011-11-30 | C03E123001C0 SS, C03E123017C0 SS+4d, C03S107807C0 | 90% | 20d | 2011-05-10 | 2012-01-09 | 28.35d | 0d | MECHANICAL [686.4 h]; Cost [37438.4 AED] | 37,438.4 | 33,694.56 |  |  | C03E121111C0 | 65 | CB | C |  | 03 | E1 | ME | 211 | 11 | BILL 4 | B04 | S1 | 1F | R00 | ACF04 | 211 |  | MEP | 6517.35 |  |  | 95 | 1S | M1F | 90 |  |  |  |  |  |  |  |
| C03E123023C0 |  | CB-03 ; 1st Fix, Inst of Main Ducting (Exam- 1) |  | 100d | 2011-05-09 A | 2011-10-29 | C03E122005C0 SS+14d, C03E123001C0 SS, C03S107807C0 | 75% | 25d | 2011-05-17 | 2011-09-14 | 66.75d | 0d | MECHANICAL [16992 h]; Cost [927678 AED] | 927,677.51 | 695,758.13 |  |  | C03E123023C0 | 20 | CB | C |  | 03 | E1 | ME | 230 | 23 | BILL 4 | B04 | S1 | 1F | R00 | ACF04 | 230 |  | MEP | 269071 |  |  | 85 | 1S | M1F |  |  |  |  |  |  |  |  |
| C03E126013C0 |  | CB-03 ; 1st Fix, Inst of Cable Tray (Exam- 1) |  | 100d | 2011-05-10 A | 2011-10-29 | C03E123001C0 SS, C03E126001C0 SS+12d, C03S107807C0 | 75% | 25d | 2011-07-07 | 2011-11-03 | 152.12d | 0d | ELECTRICAL [948 h]; Cost [17044 AED] | 17,043.96 | 12,782.97 |  |  | C03E126013C0 | 10 | CB | C |  | 03 | E1 | ME | 260 | 13 | BILL 4 | B04 | S1 | 1F | R00 | ACF04 | 260 |  | MEP | 16867.82 | 75 | 70 | 98 | 1S | M1F |  |  |  |  |  |  |  |  |
| C03E109201C0 |  | CB-03 ; Metal Studs (Exam- 1) |  | 84d | 2011-05-15 A | 2011-10-29 | C03E123001C0, CAFCI09202R02 FS+62d | 90% | 8.4d | 2011-06-15 | 2011-09-25 | 22.95d | 0d | PARTITIONS [4735 h]; PARTITIONS - Metal Studs [679 m]; Cost |  |  | 313 | 944 | C03E109201C0 | 25 | CB | C |  | 03 | E1 | PT | 092 | 01 | BILL 4 | B04 | S1 | 1F | R00 | ACF06 | 092 |  | GP | 109864.13 | 85 | 70 |  |  | PMS |  | 0 | 0 | 0 | 0 | R3 |  |  |
| C03E126001C0 |  | CB-03 ; 1st Fix, Inst of Trunking/Conduiting (Exam- 1) |  | 100d | 2011-05-15 A | 2011-10-29 | C03E123001C0 SS, C03E123023C0 SS+12d, C03S107807C0 | 75% | 25d | 2011-06-22 | 2011-10-20 | 152.12d | 0d | ELECTRICAL [430.8 h]; Cost [29580.4 AED] | 29,580.43 | 22,185.32 |  |  | C03E126001C0 | 10 | CB | C |  | 03 | E1 | ME | 260 | 01 | BILL 4 | B04 | S1 | 1F | R00 | ACF04 | 260 |  | MEP | 29151.3 | 75 | 70 | 98 | 1S | M1F |  |  |  |  |  |  |  |  |
| C03E127010C0 |  | CB-03 ; 1st Fix, Inst of Trunking for ELV system (Exam- 1) |  | 100d | 2011-05-15 A | 2011-10-29 | C03E123001C0 SS, C03E126013C0 SS+14d, C03S107807C0 | 75% | 25d | 2011-07-24 | 2011-11-23 | 152.12d | 0d | ELECTRICAL [457.2 h]; Cost [24667.9 AED] | 24,667.88 | 18,500.91 |  |  | C03E127010C0 | 20 | CB | C |  | 03 | E1 | ME | 270 | 10 | BILL 4 | B04 | S1 | 1F | R00 | ACF04 | 270 |  | MEP | 21488.03 | 75 | 70 | 95 | 1S | M1F |  |  |  |  |  |  |  |  |
| C03E109203C0 |  | CB-03 ; Partitions 1st face (Exam- 1) |  | 54d | 2011-05-23 A | 2011-12-19 | C03E109201C0, C03E121111C0 FF, C03E123023C0 FF, C03E121117C0 FF | 71% | 15.66d | 2011-06-30 | 2011-09-04 | 28.35d | 20d | PARTITIONS [679 m]; PARTITIONS [3691 h]; Cost |  |  | 314 | 945 | C03E109203C0 | 2 | CB | C |  | 03 | E1 | PT | 092 | 03 | BILL 4 | B04 | S1 | 2F | R00 | ACF06 | 092 |  | GP | 57129.35 | 55 | 30 |  |  | P1F |  | 0 | 0 | 0 | 0 |  |  |  |
| C03E127001C0 |  | CB-03 ; 1st Fix, Wiring/ Cabling work (Exam- 1) |  | 54d | 2011-06-01 A | 2011-06-29 A | C03E126001C0, C03E126013C0, C03E127010C0 | 100% |  | 2011-08-28 | 2011-11-01 |  |  | ELECTRICAL [216 h]; Cost [15494.5 AED] | 15,494.51 | 15,494.51 |  |  | C03E127001C0 |  | CB | C |  | 03 | E1 | ME | 270 | 01 | BILL 4 | B04 | S1 | 1F | R00 | ACF04 | 270 |  | MEP | 17993.47 |  |  |  | 1S | M1F |  |  |  |  |  |  |  |  |
| C03E121117C0 |  | CB-03 ; 1st Fix, Inst of Sprinkler branch pipe (Exam- 1) |  | 150d | 2011-06-09 A | 2011-12-19 | C03E109201C0, C03E121111C0, C03E105503C0 FF+18d | 90% | 15d | 2011-07-02 | 2012-01-02 | 28.35d | 0d | MECHANICAL [1009.2 h]; Cost [55153.8 AED] | 55,153.76 | 49,638.38 |  |  | C03E121117C0 |  | CB | C |  | 03 | E1 | ME | 211 | 17 | BILL 4 | B04 | S1 | 1F | R00 | ACF04 | 211 |  | MEP | 9590.32 |  |  | 90 | 1S | M1F |  |  |  |  |  |  |  |  |
| C03E126009C0 |  | CB-03 ; 2nd Fix, Inst of Wall conduites (Exam- 1) |  | 48d | 2011-06-11 A | 2011-12-18 | C03E109201C0 | 20% | 38.4d | 2011-06-11 | 2011-08-07 | 22.95d | 14.6d | ELECTRICAL [430.8 h]; Cost [29580.4 AED] | 29,580.43 | 5,916.09 |  |  | C03E126009C0 |  | CB | C |  | 03 | E1 | ME | 260 | 09 | BILL 4 | B04 | S1 | 2F | R00 | ACF07 | 260 |  | MEP | 6859.13 |  |  | 25 | 2n |  |  |  |  |  |  |  |  |  |
| C03E123015C0 |  | CB-03 ; 2nd Fix, Insulation of CHW pipe & Duct (Exam- 1) |  | 66d | 2011-07-10 A | 2012-01-22 | C03E123009C0 SS, C03E123017C0 SS, C03E123023C0 SS | 50% | 33d | 2011-10-03 | 2011-12-25 | 48.35d | 40d | MECHANICAL [6742.8 h]; Cost [363863 AED] | 363,863.22 | 181,931.61 |  |  | C03E123015C0 |  | CB | C |  | 03 | E1 | ME | 230 | 15 | BILL 4 | B04 | S1 | 2F | R00 | ACF07 | 230 |  | MEP |  | 50 | 35 | 25 | 2n |  |  |  |  |  |  |  |  |  |
| C03E123017C0 |  | CB-03 ; 1st Fix, Inst of CHW pipe (Exam- 1) |  | 75d | 2011-07-10 A | 2011-12-13 | C03E122019C0 SS+4d, C03E123001C0 SS, C03S107807C0, C03E105503C0 FF+18d | 60% | 30d | 2011-07-05 | 2011-10-03 | 28.35d | 0d | MECHANICAL [2395.2 h]; Cost [130782 AED] | 130,781.76 | 78,469.05 |  |  | C03E123017C0 |  | CB | C |  | 03 | E1 | ME | 230 | 17 | BILL 4 | B04 | S1 | 1F | R00 | ACF04 | 230 |  | MEP |  |  |  | 60 | 1S | M1F |  |  |  |  |  |  |  |  |
| C03E122005C0 |  | CB-03 ; 1st Fix, Inst of Water supply pipe (ceiling) (Exam- 1) |  | 48d | 2011-08-10 A | 2011-11-17 | C03E123001C0 SS, C03S107807C0 | 20% | 38.4d | 2011-08-04 | 2011-10-02 | 53.35d | 0d | PLUMBING [1682.4 h]; Cost [90924.8 AED] | 90,924.75 | 18,184.95 |  |  | C03E122005C0 |  | CB | C |  | 03 | E1 | ME | 220 | 05 | BILL 4 | B04 | S1 | 1F | R00 | ACF04 | 220 |  | MEP |  | 20 | 0 | 30 | 1S | M1F |  |  |  |  |  |  |  |  |
| C03E122007C0 |  | CB-03 ; 1st Fix, Inst of Medical Gas pipe (Exam- 1) |  | 48d | 2011-08-10 A | 2011-11-17 | C03E123001C0 SS, C03S107807C0 | 20% | 38.4d | 2011-08-04 | 2011-10-02 | 47.95d | 24.4d | PLUMBING [504 h]; Cost [26046.8 AED] | 26,046.85 | 5,209.37 |  |  | C03E122007C0 |  | CB | C |  | 03 | E1 | ME | 220 | 07 | BILL 4 | B04 | S1 | 1F | R00 | ACF04 | 220 |  | MEP |  | 20 | 0 | 45 | 1S | M1F |  |  |  |  |  |  |  |  |
| C03E122011C0 |  | CB-03 ; 2nd Fix, Drainage/Water pipe (wall) (Exam- 1) |  | 48d | 2011-08-10 A | 2012-01-05 | C03E109201C0, CAFCI09201R20 FS+86d | 20% | 38.4d | 2011-12-31 | 2012-02-26 | 8.35d | 0d | PLUMBING [1714.8 h]; Cost [92715.9 AED] | 92,715.95 | 18,543.19 |  |  | C03E122011C0 |  | CB | C |  | 03 | E1 | ME | 220 | 11 | BILL 4 | B04 | S1 | 2F | R00 | ACF07 | 220 |  | MEP |  | 20 | 0 | 30 | 2n |  |  |  |  |  |  |  |  |  |
| C03E122015C0 |  | CB-03 ; 2nd Fix, Medical Gas pipe (Exam- 1) |  | 42d | 2011-08-10 A | 2011-12-18 | C03E109201C0, C03E122007C0 SS | 10% | 37.8d | 2011-12-31 | 2012-02-19 | 23.55d | 15.2d | PLUMBING [504 h]; Cost [26046.8 AED] | 26,046.85 | 2,604.69 |  |  | C03E122015C0 |  | CB | C |  | 03 | E1 | ME | 220 | 15 | BILL 4 | B04 | S1 | 2F | R00 | ACF07 | 220 |  | MEP |  | 10 | 0 | 5 | 2n |  |  |  |  |  |  |  |  |  |
| C03E105503C0 |  | CB-03 ; Ceiling Support for medical equipment (Exam- 1) |  | 20d | 2011-09-05 A | 2011-11-20 | C03E109201C0 | 20% | 16d | 2011-10-30 | 2011-11-27 | 28.35d | 0d | SECONDARY STEEL [146 h]; STRUCTURAL STEEL [7 T(Fe)]; Cost |  |  | 335 | 962 | C03E105503C0 |  | CB | C |  | 03 | E1 | SW | 055 | 03 | BILL 4 | B04 | S1 | 03 | R00 | ACF03 | b |  |  |  |  |  |  |  |  |  |  |  |  |  |  |  |  |
| C03E105511C0 |  | CB-03 ; Wall reinforcement for MEP/Medical (Exam- 1) |  | 24d | 2011-10-29 | 2011-11-30 | C03E109201C0 |  |  |  |  | 43.35d | 35d | SECONDARY STEEL [52 h]; Cost |  |  |  |  | C03E105511C0 |  | CB | C |  | 03 | E1 | SW | 055 | 11 | BILL 4 | B04 | S1 | 03 | R00 | ACF03 | b |  |  |  |  |  |  |  |  |  |  |  |  |  |  |  |  |
| C03E123008C0 |  | CB-03 ; 1st Fix, Inst of VCD's/FD's (Exam- 1) |  | 42d | 2011-10-30 | 2011-12-22 | C03E123023C0, C03E105503C0 FF+18d |  |  |  |  | 72.75d | 64.4d | MECHANICAL [2648.4 h]; Cost |  |  |  |  | C03E123008C0 |  | CB | C |  | 03 | E1 | ME | 230 | 08 | BILL 4 | B04 | S1 | 1F | R00 | ACF04 | 230 |  | MEP |  |  |  | 60 | 1S | M1F |  |  |  |  |  |  |  |  |
| C03E108103C0 |  | CB-03 ; Door Frames (Exam- 1) |  | 42d | 2011-12-05 | 2012-01-23 | C03E109201C0, GNHE08101C0 FS+93d, C02PA08103C0 SS+3d |  |  |  |  | 33.25d | 0d | ASSORTED DOORS [195 h]; Cost |  |  | 316 | 947 | C03E108103C0 |  | CB | C | 08 | 03 | E1 | DO | 081 | 03 | BILL 4 | B04 | S1 | DF | R00 | ACF06 | 081 |  |  |  |  |  |  |  |  |  |  |  |  |  |  |  |  |
| C03E123009C0 |  | CB-03 ; 2nd Fix, Inst of VAV'S CHW connection (Exam- 1) |  | 30d | 2011-12-13 | 2012-01-18 | C03E123017C0 |  |  |  |  | 48.35d | 0d | MECHANICAL [1419.6 h]; Cost |  |  |  |  | C03E123009C0 |  | CB | C |  | 03 | E1 | ME | 230 | 09 | BILL 4 | B04 | S1 | 2F | R00 | ACF07 | 230 |  | MEP |  |  |  | 25 | 2n |  |  |  |  |  |  |  |  |  |
| C03E101005C0 |  | CB-03 ; 2nd, Wall Inspection by Consultant (Exam- 1) |  | 6d | 2012-01-05 | 2012-01-12 | C03E122011C0, C03E122015C0, C03E126009C0 |  |  |  |  | 8.35d | 0d | Labor General [0.6 h]; Cost |  |  |  |  | C03E101005C0 |  | CB | C |  | 03 | E1 | ME | 010 | 05 | BILL 4 | B04 | S1 | WI | R00 | ACF07 | 010 |  | MEP |  |  |  | 15 | 2n |  |  |  |  |  |  |  |  |  |
| C03E109205C0 |  | CB-03 ; Partitions Closing (Exam- 1) |  | 48d | 2012-01-12 | 2012-03-10 | C03E101005C0, C03E105511C0, C03E109203C0, C03E122005C0, C03E122019C0, CAFOA09204C1 FF, C03E108103C0 FF, C03E123009C0 FF, C03E123015C0 FF, C03E123008C0 FF, CAFCI09201R20 FS+86d |  |  |  |  | 8.35d | 0d | PARTITIONS [679 m]; PARTITIONS [4738 h]; Cost |  |  | 315 | 946 | C03E109205C0 |  | CB | C |  | 03 | E1 | PT | 092 | 05 | BILL 4 | B04 | S1 | FF | R00 | ACF06 | 092 |  | GP |  |  |  |  |  | P2F |  |  |  |  |  | R3 |  |  |
| C03E107103C0 |  | CB-03 ; Waterproofing (Exam- 1) |  | 12d | 2012-03-10 | 2012-03-24 | C03E108103C0, C03E109205C0 |  |  |  |  | 48.73d | 0d | THERMAL & MOISTURE [168 h]; THERMAL & MOISTURE [1069 m2]; Cost |  |  | 105 | 999 | C03E107103C0 |  | CB | C |  | 03 | E1 | FF | 071 | 03 | BILL 4 | B04 | S1 | 01 | R00 | ACF03 | 071 |  |  |  |  |  |  |  |  |  |  |  |  |  |  |  |  |
| C03E109901C0 |  | CB-03 ; Wall Prime & 1st coat (Exam- 1) |  | 36d | 2012-03-10 | 2012-04-21 | C03E109205C0, C03CO04455C0 SS+7d, C03CO04455C0 FF |  |  |  |  | 9.72d | 0d | WALL PAINT [1729 h]; WALL PAINT [2158 m2]; Cost |  |  | 328 | 956 | C03E109901C0 |  | CB | C |  | 03 | E1 | PA | 099 | 01 | BILL 4 | B04 | S1 | 01 | R00 | ACF06 | 099 |  |  |  |  |  |  |  |  |  |  |  |  |  |  |  |  |
| C03E126005C0 |  | CB-03 ; 2nd Fix, Wiring for Power/Lighting/Emergency (Exam- 1) |  | 42d | 2012-03-10 | 2012-04-28 | C03E109205C0 |  |  |  |  | 72.72d | 0d | ELECTRICAL [216 h]; Cost |  |  |  |  | C03E126005C0 |  | CB | C |  | 03 | E1 | ME | 260 | 05 | BILL 4 | B04 | S1 | 2F | R00 | ACF07 | 260 |  | MEP |  |  |  |  | 2n |  |  |  |  |  |  |  |  |  |
| C03E126007C0 |  | CB-03 ; 2nd Fix, Cable Pulling (Exam- 1) |  | 42d | 2012-03-10 | 2012-04-28 | C03E109201C0 SS+6d, C03E109205C0 |  |  |  |  | 126.72d | 117d | ELECTRICAL [6616.8 h]; Cost |  |  |  |  | C03E126007C0 |  | CB | C |  | 03 | E1 | ME | 260 | 07 | BILL 4 | B04 | S1 | 2F | R00 | ACF07 | 260 |  | MEP |  |  |  | 25 | 2n |  |  |  |  |  |  |  |  |  |
| C03E126011C0 |  | CB-03 ; 2nd Fix, Inst of Equipment (DB) (Exam- 1) |  | 42d | 2012-03-10 | 2012-04-28 | C03E109205C0 |  |  |  |  | 33.73d | 24d | ELECTRICAL [1266 h]; Cost |  |  |  |  | C03E126011C0 |  | CB | C |  | 03 | E1 | ME | 260 | 11 | BILL 4 | B04 | S1 | 2F | R00 | ACF04 | 260 |  | MEP |  |  |  |  | 2n |  |  |  |  |  |  |  | E |  |
| C03E126053C0 |  | CB-03 ; 2nd Fix, Wiring / Cabling (Exam- 1) |  | 30d | 2012-03-10 | 2012-04-14 | C03E109203C0, C03E109205C0 |  |  |  |  | 138.72d | 129d | ELECTRICAL [216 h]; Cost |  |  | 389 | 977 | C03E126053C0 |  | CB | C |  | 03 | E1 | ME | 260 | 53 | BILL 4 | B04 | S1 | 2F | R00 | ACF07 | 260 |  | MEP |  |  |  |  | 2n |  |  |  |  |  |  |  |  |  |
| C03E127020C0 |  | CB-03 ; 2nd Fix, Inst of ELV Equipment (Panels) (Exam- 1) |  | 42d | 2012-03-10 | 2012-04-28 | C03E109205C0 |  |  |  |  | 33.73d | 24d | ELECTRICAL [384 h]; Cost |  |  |  |  | C03E127020C0 |  | CB | C |  | 03 | E1 | ME | 270 | 20 | BILL 4 | B04 | S1 | 2F | R00 | ACF04 | 270 |  | MEP |  |  |  |  | 2n |  |  |  |  |  |  |  | E |  |
| C03E109305C0 |  | CB-03 ; Ceramic floor tile (Exam- 1) |  | 30d | 2012-03-24 | 2012-04-28 | C03E107103C0 |  |  |  |  | 48.73d | 0d | CERAMIC FLOOR TILES [200 h]; CERAMIC FLOOR TILES [108 m2]; Cost |  |  | 106 | 1000 | C03E109305C0 |  | CB | C |  | 03 | E1 | FF | 093 | 05 | BILL 4 | B04 | S1 | 02 | R00 | ACF06 | CT |  |  |  |  |  |  |  |  |  |  |  |  |  |  |  |  |
| C03E105501C0 |  | CB-03 ; Handrails & balustrade (Exam- 1) |  | 35.25d | 2012-04-21 | 2012-05-31 | C03E109901C0 |  |  |  |  | 34.48d | 24.75d | SECONDARY STEEL [288 h]; Cost |  |  |  |  | C03E105501C0 |  | CB | C |  | 03 | E1 | SW | 055 | 01 | BILL 4 | B04 | S1 | 01 | R00 | ACF03 | a |  |  |  |  |  |  |  |  |  |  |  |  |  |  |  |  |
| C03E109501C0 |  | CB-03 ; Ceiling Grid and ServiceTile (Exam- 1) |  | 30d | 2012-04-21 | 2012-05-26 | C03E105503C0, C03E121117C0, C03E123008C0, C03E123009C0, C03E123015C0, C03E127001C0, CAFCI22001R02 FS+79d, C03E126011C0 FF, C03E109901C0 |  |  |  |  | 9.72d | 0d | CEILING GRID FOR GYPSUM [2357.08 h]; CEILING GRID FOR GYPSUM [201.6 m2]; Cost |  |  | 323 | 952 | C03E109501C0 |  | CB | C |  | 03 | E1 | CE | 095 | 01 | BILL 4 | B04 | S1 | 01 | R00 | ACF06 | 095 |  |  |  |  |  |  |  |  |  |  |  |  |  |  |  | R3 |
| C03E122025C0 |  | CB-03 ; Final Fix, Inst of Sanitary Ware (Exam- 1) |  | 48d | 2012-04-28 | 2012-06-24 | C03E109205C0, C03E109305C0, A10230 FS+148d |  |  |  |  | 48.73d | 0d | PLUMBING [1491.6 h]; Cost |  |  |  |  | C03E122025C0 |  | CB | C |  | 03 | E1 | ME | 220 | 25 | BILL 4 | B04 | S1 | FF | R00 | ACF07 | 220 |  | MEP |  |  |  |  | FF |  |  |  |  |  |  |  |  |  |
| C03E126015C0 |  | CB-03 ; Final Fix, Termination & Gladding of Cables (Exam- 1) |  | 48d | 2012-04-28 | 2012-06-24 | C03E126005C0 |  |  |  |  | 72.72d | 63d | ELECTRICAL [826.8 h]; Cost |  |  |  |  | C03E126015C0 |  | CB | C |  | 03 | E1 | ME | 260 | 15 | BILL 4 | B04 | S1 | FF | R00 | ACF07 | 260 |  | MEP |  |  |  |  | FF |  |  |  |  |  |  |  |  |  |
| C03E109601C0 |  | CB-03 ; Flooring (Rubber & etc) (Exam- 1) |  | 30d | 2012-05-26 | 2012-07-01 | C03E109501C0, C03E127020C0, C03E105501C0 FF |  |  |  |  | 9.72d | 0d | RUBBER FLOOR [328 h]; RUBBER FLOOR [818 m2]; Cost |  |  | 326 | 955 | C03E109601C0 |  | CB | C |  | 03 | E1 | FF | 096 | 01 | BILL 4 | B04 | S1 | 03 | R00 | ACF06 | RF |  |  |  |  |  |  |  |  |  |  |  |  |  |  |  | R3 |
| C03E109903C0 |  | CB-03 ; Wall Final Paint (Exam- 1) |  | 36d | 2012-05-26 | 2012-07-08 | C03E109901C0, C03E109905C0 |  |  |  |  | 108.72d | 66d | WALL PAINT [931 h]; WALL PAINT [1162 m2]; Cost |  |  | 329 | 957 | C03E109903C0 |  | CB | C |  | 03 | E1 | PA | 099 | 03 | BILL 4 | B04 | S1 | 02 | R00 | ACF06 | 099 |  |  |  |  |  |  |  |  |  |  |  |  |  |  |  |  |
| C03E109905C0 |  | CB-03 ; Ceiling Prime & 1st coat (Exam- 1) |  | 0d | 2012-05-26 | 2012-05-26 | C03E109501C0 |  |  |  |  | 108.72d | 0d | Cost |  |  | 330 | 958 | C03E109905C0 |  | CB | C |  | 03 | E1 | PA | 099 | 05 | BILL 4 | B04 | S1 | 01 | R00 | ACF06 | 099 |  |  |  |  |  |  |  |  |  |  |  |  |  |  |  |  |
| C03E121115C0 |  | CB-03 ; 2nd Fix, Inst of Sprinkler droppers (Exam- 1) |  | 30d | 2012-05-26 | 2012-07-01 | C03E109501C0 |  |  |  |  | 42.73d | 0d | MECHANICAL [1404 h]; Cost |  |  |  |  | C03E121115C0 |  | CB | C |  | 03 | E1 | ME | 211 | 15 | BILL 4 | B04 | S1 | 2F | R00 | ACF07 | 211 |  | MEP |  |  |  |  | 2n |  |  |  |  |  |  |  |  |  |
| C03E123021C0 |  | CB-03 ; 2nd Fix, Inst of Flexible Duct & Plenum boxes (Exam- 1) |  | 42d | 2012-05-26 | 2012-07-15 | C03E109205C0, C03E109501C0 |  |  |  |  | 42.73d | 0d | MECHANICAL [903.6 h]; Cost |  |  |  |  | C03E123021C0 |  | CB | C |  | 03 | E1 | ME | 230 | 21 | BILL 4 | B04 | S1 | 2F | R00 | ACF07 | 230 |  | MEP |  |  |  |  | 2n |  |  |  |  |  |  |  |  |  |
| C03E126017C0 |  | CB-03 ; Final Fix, Inst of Ceiling rose (Exam- 1) |  | 48d | 2012-05-26 | 2012-07-22 | C03E109501C0 |  |  |  |  | 41.73d | 0d | ELECTRICAL [123.6 h]; Cost |  |  |  |  | C03E126017C0 |  | CB | C |  | 03 | E1 | ME | 260 | 17 | BILL 4 | B04 | S1 | FF | R00 | ACF07 | 260 |  | MEP |  |  |  |  | FF |  |  |  |  |  |  |  |  |  |
| C03E127002C0 |  | CB-03 ; 2nd Fix, Wiring Droppers (Exam- 1) |  | 42d | 2012-05-26 | 2012-07-15 | C03E109501C0 |  |  |  |  | 41.73d | 0d | ELECTRICAL [216 h]; Cost |  |  |  |  | C03E127002C0 |  | CB | C |  | 03 | E1 | ME | 270 | 02 | BILL 4 | B04 | S1 | 2F | R00 | ACF07 | 270 |  | MEP |  |  |  |  | 2n |  |  |  |  |  |  |  |  |  |
| C03E121113C0 |  | CB-03 ; Final Fix, Inst of Sprinklers head/ Extinguisher (Exam- 1) |  | 48d | 2012-06-02 | 2012-07-29 | C03E109501C0, C03E121115C0 SS+6d |  |  |  |  | 42.73d | 33d | MECHANICAL [278.4 h]; Cost |  |  |  |  | C03E121113C0 |  | CB | C |  | 03 | E1 | ME | 211 | 13 | BILL 4 | B04 | S1 | FF | R00 | ACF07 | 211 |  | MEP |  |  |  |  | FF |  |  |  |  |  |  |  |  |  |
| C03E123019C0 |  | CB-03 ; Final Fix, Inst of Grilles & Diffusers (Exam- 1) |  | 48d | 2012-06-02 | 2012-07-29 | C03E109501C0, C03E123021C0 SS+6d |  |  |  |  | 42.73d | 33d | MECHANICAL [1970.4 h]; Cost |  |  |  |  | C03E123019C0 |  | CB | C |  | 03 | E1 | ME | 230 | 19 | BILL 4 | B04 | S1 | FF | R00 | ACF07 | 230 |  | MEP |  |  |  |  | FF |  |  |  |  |  |  |  |  |  |
| C03E126003C0 |  | CB-03 ; Final Fix, Inst of Light fittings (Exam- 1) |  | 48d | 2012-06-03 | 2012-07-30 | C03E109501C0, C03E126017C0 SS+7d |  |  |  |  | 41.73d | 32d | ELECTRICAL [7983.6 h]; Cost |  |  |  |  | C03E126003C0 |  | CB | C |  | 03 | E1 | ME | 260 | 03 | BILL 4 | B04 | S1 | FF | R00 | ACF07 | 260 |  | MEP |  |  |  |  | FF |  |  |  |  |  |  |  |  |  |
| C03E127030C0 |  | CB-03 ; Final Fix, Inst of ELV device (Detector/Speaker) (Exam- 1) |  | 48d | 2012-06-03 | 2012-07-30 | C03E109501C0, C03E127002C0 SS+7d |  |  |  |  | 41.73d | 32d | ELECTRICAL [2054.4 h]; Cost |  |  |  |  | C03E127030C0 |  | CB | C |  | 03 | E1 | ME | 270 | 30 | BILL 4 | B04 | S1 | FF | R00 | ACF07 | 270 |  | MEP |  |  |  |  | FF |  |  |  |  |  |  |  |  |  |
| C03E122021C0 |  | CB-03 ; Final Fix, Terminate Sanitary Ware & Appliances (Exam- 1) |  | 48d | 2012-06-24 | 2012-08-21 | C03E122011C0, C03E122025C0 |  |  |  |  | 48.73d | 15d | PLUMBING [1491.6 h]; Cost |  |  |  |  | C03E122021C0 |  | CB | C |  | 03 | E1 | ME | 220 | 21 | BILL 4 | B04 | S1 | FF | R00 | ACF07 | 220 |  | MEP |  |  |  |  | FF |  |  |  |  |  |  |  |  |  |

| ID | WBS | Activity | Duration | Start | Finish | Predecessors | Complete | Remaining | Planned start | Planned finish | Total float | Free float | Resources | Cost | Actual cost | Change Order # | NEW ACTIVITY ID | change id | CCAD BUILDING(SET) | CCAD PHASE(SET) | CCAD FLOOR(SET) | CCAD ZONE(SET) | CCAD WORK(SET) | CCAD SECTION(SET) | CCAD SERIAL No.(SET) | CCAD CBS(SET) | CCAD BILL(SET) | CCAD HANDOVER(SET) | CCAD TAG(SET) | CCAD REV(SET) | CCADACF (SET) | CCAD SSCF | R3 Finish | CCAD DIVISION(SET) | CCAD SUB ZONE MEP(SET) | CCAD CSA | RENZ % COMPLETE | Act Selector % | July2011 Target% Complete | Claimed This Month | PERCENT COMPLETE | P_811 | P_711 | user_number8 | user_integer1 | user_integer2 | user_number7 | R3 Partitions | CCAD MEQ |
| --- | --- | --- | --- | --- | --- | --- | --- | --- | --- | --- | --- | --- | --- | --- | --- | --- | --- | --- | --- | --- | --- | --- | --- | --- | --- | --- | --- | --- | --- | --- | --- | --- | --- | --- | --- | --- | --- | --- | --- | --- | --- | --- | --- | --- | --- | --- | --- | --- | --- |
| C03E106101C0 |  | CB-03 ; Wood / caseworks (Exam- 1) | 54d | 2012-07-01 | 2012-09-04 | C03CO04401C0, CAFWA00113M0, CAFCI22001R02 FS+196d, C03E109601C0, CZ9GZ06153R2 FF, A10370, CV10GZ06154R2 FF |  |  |  |  | 9.72d | 0d | WOOD WORK/CASEWORK [1165.15 no]; WOOD WORK/CASEWORK [4749 h]; Cost |  |  | 332 | 960 | C03E106101C0 | CB | C | 03 | E1 | WO | 061 | 01 | BILL 4 | B04 | S1 | WW | R00 | ACF06 | 061 |  |  |  |  |  |  |  |  |  |  |  |  |  |  |  |  |  |
| C03E106102C0 |  | CB-03 ; Head Wall (Exam- 1) | 30d | 2012-07-01 | 2012-08-05 | C03CO04401C0, C03E109501C0, C03E106101C0 SS, CAFWA00113M0, CAFCI22001R02 FS+196d |  |  |  |  | 72.72d | 63d | WOOD WORK/CASEWORK [2168 h]; Cost |  |  | 332 | 960 | C03E106102C0 | CB | C | 03 | E1 | WO | 061 | 02 | BILL 4 | B04 | S1 | WW | R00 | ACF06 | 061 | R3 |  |  |  |  |  |  |  |  |  |  |  |  |  |  |  |  |
| C03E108107C0 |  | CB-03 ; Doors (Exam- 1) | 42d | 2012-07-01 | 2012-08-21 | C03E108103C0, C03E109901C0, C03E109601C0 |  |  |  |  | 33.23d | 0d | ASSORTED DOORS [660 h]; ASSORTED DOORS [66 no]; Cost |  |  | 317 | 948 | C03E108107C0 | CB | C | 03 | E1 | DO | 081 | 07 | BILL 4 | B04 | S1 | DR | R00 | ACF06 | 081 |  | 08 |  |  |  |  |  |  |  |  |  |  |  |  |  |  |  |
| C03E109701C0 |  | CB-03 ; Wall finishes (ST, WD, WC) (Exam- 1) | 36d | 2012-07-01 | 2012-08-12 | C03E127020C0 FF, C03E106101C0 SS, C03E109601C0 |  |  |  |  | 36.73d | 0d | ASSORTED WALL FINISH [1665 h]; ASSORTED WALL FINISH [1913 m2]; Cost |  |  | 105 | 1002 | C03E109701C0 | CB | C | 03 | E1 | WF | 097 | 01 | BILL 4 | B04 | S1 | 01 | R00 | ACF06 | 097 |  |  |  |  |  |  |  |  |  |  |  |  |  |  |  |  |  |
| C03E111005C0 |  | CB-03 ; Utility belt (Exam- 1) | 29d | 2012-07-12 | 2012-08-15 | C03E106101C0 SS+10d, C03E109205C0 |  |  |  |  | 9.72d | 0d | FF&E [675 h]; FF&E [359.93 no]; Cost |  |  |  |  | C03E111005C0 | CB | C | 03 | E1 | WO | 110 | 05 | BILL 4 | B04 | S1 | 05 | R00 | ACF08 | e |  |  |  |  |  |  |  |  |  |  |  |  |  |  |  |  |  |
| C03E111001C0 |  | CB-03 ; Wall Protection (WP, CG, WG, FCG) (Exam- 1) | 24d | 2012-08-12 | 2012-09-11 | C03E109701C0, C03E109903C0 SS |  |  |  |  | 42.73d | 33d | FF&E [68 h]; Cost |  |  | 326 | 1001 | C03E111001C0 | CB | C | 03 | E1 | WF | 110 | 01 | BILL 4 | B04 | S1 | 03 | R00 | ACF08 | b |  |  |  |  |  |  |  |  |  |  |  |  |  |  |  |  |  |
| C03E122029C0 |  | CB-03 ; Final Fix, Medical Gas pipe (Exam- 1) | 18d | 2012-08-15 | 2012-09-08 | C03E111005C0 |  |  |  |  | 9.72d | 0d | PLUMBING [504 h]; Cost |  |  |  |  | C03E122029C0 | CB | C | 03 | E1 | ME | 220 | 29 | BILL 4 | B04 | S1 | FF | R00 | ACF07 | 220 |  |  | FF | MEP |  |  |  |  |  |  |  |  |  |  |  |  |  |
| C03E108709C0 |  | CB-03 ; Ironmongery (Exam- 1) | 27.5d | 2012-08-21 | 2012-09-22 | C03E108107C0 |  |  |  |  | 33.23d | 23.5d | IRONMONGERY [710 h]; IRONMONGERY [71 no]; Cost |  |  | 322 | 951 | C03E108709C0 | CB | C | 03 | E1 | DO | 087 | 09 | BILL 4 | B04 | S1 | IM | R00 | ACF06 | 087 |  | 08 |  |  |  |  |  |  |  |  |  |  |  |  |  |  |  |
| C03E101006C0 |  | CB-03 ; 2nd, Ceiling Inspection by Consultants (Exam- 1) | 6d | 2012-09-08 | 2012-09-15 | C03E121115C0, C03E123009C0, C03E123015C0, C03E127002C0, C03E109501C0, C03E121113C0, C03E122029C0, C03E123019C0, C03E126017C0, C03E126003C0, C03E126015C0, C03E127030C0 |  |  |  |  | 9.72d | 0d | Labor General [0.6 h]; Cost |  |  |  |  | C03E101006C0 | CB | C | 03 | E1 | ME | 010 | 06 | BILL 4 | B04 | S1 | CI | R00 | ACF07 | 010 |  |  | 2n | MEP |  |  |  |  |  |  |  |  |  |  |  |  |  |
| C03E109503C0 |  | CB-03 ; Ceiling closure - ACT/Gypsum (Exam- 1) | 18d | 2012-09-15 | 2012-10-06 | C03E101006C0, C03E121115C0, C03E126005C0, C03E127002C0, CAFOA09503C1 FF, CAFCI22001R02 FS+79d, C03E106101C0, C03E109701C0, C03E123021C0, C03E126053C0, C03E126007C0 |  |  |  |  | 9.72d | 0d | ASSORTED CEILING FINISH [449.56 h]; CEILING GYPSUM [66.22 h]; ASSORTED CEILING FINISH [731 m2]; CEILING GYPSUM [184 m2]; Cost |  |  | 324 | 953 | C03E109503C0 | CB | C | 03 | E1 | CE | 095 | 03 | BILL 4 | B04 | S1 | 02 | R00 | ACF06 | 095 | R3 |  |  |  |  |  |  |  |  |  |  |  |  |  |  |  |  |
| C03E109678C1 |  | CB-03, Carpet Tile Finish (Exam-1 Offices/Conference) | 0d | 2012-10-06 | 2012-10-06 | C03E109903C0 SS, C03E109907C0 SS |  |  |  |  | 21.73d | 12d | Cost |  |  |  |  |  | CB | C | 03 | E1 | FF | 096 |  |  | B04 |  |  | R00 | ACF06 | CPT |  |  |  | CPT |  |  |  |  |  |  |  |  |  |  |  |  |  |
| C03E109907C0 |  | CB-03 ; Ceiling Final paint (Exam- 1) | 0d | 2012-10-06 | 2012-10-06 | C03E109601C0, C03E109905C0, C03E109503C0 |  |  |  |  | 21.73d | 0d | Cost |  |  | 331 | 959 | C03E109907C0 | CB | C | 03 | E1 | PA | 099 | 07 | BILL 4 | B04 | S1 | 02 | R00 | ACF06 | 099 |  |  |  |  |  |  |  |  |  |  |  |  |  |  |  |  |  |
| C03E111003C0 |  | CB-03 ; FF & E (Exam- 1) | 12d | 2012-10-06 | 2012-10-20 | C03E109601C0, C03E109503C0 |  |  |  |  | 9.72d | 0d | FF&E [249 h]; FF&E [132.59 no]; Cost |  |  | 333 | 961 | C03E111003C0 | CB | C | 03 | E1 | WO | 110 | 03 | BILL 4 | B04 | S1 | 04 | R00 | ACF08 | a |  |  |  |  |  |  |  |  |  |  |  |  |  |  |  |  |  |
| C03E122027C0 |  | CB-03 ; Final Fix, Inst of All drain (Exam- 1) | 12d | 2012-10-06 | 2012-10-20 | C03E109305C0, C03E109503C0, CZ9GZ22059R2 FF, CV09GZ22060R2 FF, CV10GZ22060R2 FF |  |  |  |  | 9.72d | 0d | PLUMBING [1491.6 h]; Cost |  |  |  |  | C03E122027C0 | CB | C | 03 | E1 | ME | 220 | 27 | BILL 4 | B04 | S1 | FF | R00 | ACF07 | 220 |  |  | FF | MEP |  |  |  |  |  |  |  |  |  |  |  |  |  |
| C03E126019C0 |  | CB-03 ; Final Fix, Inst of Switch/Sockets (Exam- 1) | 12d | 2012-10-06 | 2012-10-20 | C03E109503C0, CZ9GZ27061R2 FF, CV09GZ27062R2 FF |  |  |  |  | 9.72d | 0d | ELECTRICAL [427.2 h]; Cost |  |  |  |  | C03E126019C0 | CB | C | 03 | E1 | ME | 260 | 19 | BILL 4 | B04 | S1 | FF | R00 | ACF07 | 260 |  |  | FF | MEP |  |  |  |  |  |  |  |  |  |  |  |  |  |
|  | 10 | **Precommissioning Tesing & snagging (Exam 1)** |  | 2012-09-08 | 2012-11-21 |  |  |  |  |  |  |  |  |  |  |  |  |  |  |  |  |  |  |  |  |  |  |  |  |  |  |  |  |  |  |  |  |  |  |  |  |  |  |  |  |  |  |  |  |
| C03TS01801C0 |  | CB-03 ; MEP de-snag, FIREM sign-off | 12d | 2012-09-08 | 2012-09-22 | C03E122025C0, C03E126015C0, C03E121113C0, C03E123019C0, C03E122021C0, C03E122029C0, C03E126017C0, C03E126003C0, C03E127030C0, C03E111005C0 |  |  |  |  | 33.73d | 24d | TESTING & COMMISSIONING [2040 h]; Cost |  |  |  |  | C03TS01801C0 | CB | C | 03 | TS | SC | 018 | 01 | BILL 4 | B04 | S1 | 01 | R00 | ACF07 | 018 |  |  |  |  |  |  |  |  |  |  |  |  |  |  |  |  |  |
| C03TS01806C0 |  | CB-03 ; Touch-up & Clean / JV inspection /CIR /De-snag | 18d | 2012-10-20 | 2012-11-12 | C03E106101C0, C03E106102C0, C03E109701C0, C03E111001C0, C03E111003C0, C03E111005C0, C03TS01801C0, C03E105501C0, C03E108709C0, C03E109503C0, C03E109678C1, C03E122027C0, C03E126019C0 |  |  |  |  | 9.72d | 0d | TESTING & COMMISSIONING [149 h]; Cost |  |  |  |  | C03TS01802C0 | CB | C | 03 | TS | SC | 018 | 02 | BILL 4 | B04 | S1 | 02 | R00 | ACF07 | 018 |  |  |  |  |  |  |  |  |  |  |  |  |  |  |  |  |  |
| C03TS01809C0 |  | CB-03 ; Consultant's final de-snag inspection | 6.88d | 2012-11-12 | 2012-11-21 | C03TS01806C0 |  |  |  |  | 9.72d | 2.4d | Labor General [0.5 h]; Cost |  |  |  |  | C03TS01803C0 | CB | C | 03 | TS | SC | 018 | 03 | BILL 4 | B04 | S1 | 03 | R00 | ACF07 | 018 |  |  |  |  |  |  |  |  |  |  |  |  |  |  |  |  |  |
|  | 03 | **Exam 2** |  | 2011-03-28 | 2012-11-19 |  |  |  |  |  |  |  |  |  |  |  |  |  |  |  |  |  |  |  |  |  |  |  |  |  |  |  |  |  |  |  |  |  |  |  |  |  |  |  |  |  |  |  |  |
| C03E223001C0 |  | CB-03 ; 1st Fix, Inst. of Supports for MEP (Exam- 2) | 27d | 2011-03-28 A | 2011-05-29 A | C03S207808C0, C04S203335C0 | 100% |  | 2011-03-30 | 2011-05-01 |  |  | MECHANICAL [1024.8 h]; Cost [57766.2 AED] | 57,766.25 | 57,766.25 |  |  | C03E223001C0 | CB | C | 03 | E2 | ME | 230 | 01 | BILL 4 | B04 | S1 | 1F | R00 | ACF04 | 230 |  |  | 1S | MEP | 100 | M1F |  |  |  |  |  |  |  |  |  |  |  |
| C03E222019C0 |  | CB-03 ; 1st Fix, Inst of Drainage pipe (ceiling) (Exam- 2) | 200d | 2011-03-30 A | 2011-11-17 | C03E223001C0, C03E223017C0 SS+6d, C03S207808C0 | 95% | 10d | 2011-05-08 | 2012-01-07 | 19.55d | 0d | PLUMBING [1714.8 h]; Cost [92715.9 AED] | 92,715.95 | 88,080.15 |  |  | C03E222019C0 | CB | C | 03 | E2 | ME | 220 | 19 | BILL 4 | B04 | S1 | 1F | R00 | ACF04 | 220 |  |  | 1S | MEP | 80 | M1F | 95 | 16114.65 |  |  |  |  |  |  |  |  |  |
| C03E221111C0 |  | CB-03 ; 1st Fix, Inst of Sprinkler main pipe (Exam- 2) | 200d | 2011-04-21 A | 2011-11-30 | C03E222005C0 SS+6d, C03E223001C0, C03S207808C0 | 90% | 20d | 2011-05-22 | 2012-01-21 | 19.55d | 0d | MECHANICAL [686.4 h]; Cost [37438.4 AED] | 37,438.4 | 33,694.56 |  |  | C03E221111C0 | CB | C | 03 | E2 | ME | 211 | 11 | BILL 4 | B04 | S1 | 1F | R00 | ACF04 | 211 |  |  | 1S | MEP | 40 | M1F | 95 | 8689.93 | 90 |  |  |  |  |  |  |  |  |
| C03E226001C0 |  | CB-03 ; 1st Fix, Inst of Trunking/Conduiting (Exam- 2) | 120d | 2011-04-23 A | 2011-12-13 | C03E223001C0, C03E223023C0 SS+6d, C03S207808C0 | 75% | 30d | 2011-06-05 | 2011-10-26 | 19.55d | 0d | ELECTRICAL [430.8 h]; Cost [29580.4 AED] | 29,580.43 | 22,185.32 |  |  | C03E226001C0 | CB | C | 03 | E2 | ME | 260 | 01 | BILL 4 | B04 | S1 | 1F | R00 | ACF04 | 260 |  |  | 1S | MEP | 30 | M1F | 60 | 10288.8 |  | 75 | 60 |  |  |  |  |  |  |
| C03E209201C0 |  | CB-03 ; Metal Studs (Exam- 2) | 84d | 2011-05-15 A | 2011-10-29 | C03E223001C0, CAFCI09202R02 FS+62d | 90% | 8.4d | 2011-06-22 | 2011-10-02 | 19.55d | 0d | PARTITIONS [3002 h]; PARTITIONS - Metal Studs [430 m]; Cost |  |  | 313 | 944 | C03E209201C0 | CB | C | 03 | E2 | PT | 092 | 01 | BILL 4 | B04 | S1 | 1F | R00 | ACF06 | 092 |  |  |  | GP | 25 | PMS |  | 69680.36 |  | 85 | 70 | 0 | 0 | 0 | 0 | R3 |  |
| C03E209203C0 |  | CB-03 ; Partitions 1st face (Exam- 2) | 54d | 2011-05-16 A | 2011-11-20 | C03E209201C0 | 71% | 15.66d | 2011-07-07 | 2011-09-11 | 51.69d | 43.34d | PARTITIONS [430 m]; PARTITIONS [2337 h]; Cost |  |  | 314 | 945 | C03E209203C0 | CB | C | 03 | E2 | PT | 092 | 03 | BILL 4 | B04 | S1 | 2F | R00 | ACF06 | 092 |  |  |  | GP | 2 | P1F |  | 36233.79 |  | 55 | 30 | 0 | 0 | 0 | 0 |  |  |
| C03E221117C0 |  | CB-03 ; 1st Fix, Inst of Sprinkler branch pipe (Exam- 2) | 120d | 2011-06-09 A | 2011-12-29 | C03E209201C0, C03E221111C0, C03E205503C0 FF+18d | 80% | 24d | 2011-07-16 | 2011-12-11 | 67.35d | 59d | MECHANICAL [1009.2 h]; Cost [55153.8 AED] | 55,153.76 | 44,123.01 |  |  | C03E221117C0 | CB | C | 03 | E2 | ME | 211 | 17 | BILL 4 | B04 | S1 | 1F | R00 | ACF04 | 211 |  |  | 1S | MEP |  | M1F | 80 | 44754.81 |  |  |  |  |  |  |  |  |  |
| C03E227010C0 |  | CB-03 ; 1st Fix, Inst of Trunking for ELV system (Exam- 2) | 90d | 2011-06-09 A | 2011-12-10 | C03E223001C0, C03E226013C0 SS+6d, C03S207808C0 | 70% | 27d | 2011-06-29 | 2011-10-13 | 19.55d | 0d | ELECTRICAL [457.2 h]; Cost [24667.9 AED] | 24,667.88 | 17,267.51 |  |  | C03E227010C0 | CB | C | 03 | E2 | ME | 270 | 10 | BILL 4 | B04 | S1 | 1F | R00 | ACF04 | 270 |  |  | 1S | MEP |  | M1F | 95 | 27218.17 |  |  |  |  |  |  |  |  |  |
| C03E223023C0 |  | CB-03 ; 1st Fix, Inst of Main Ducting (Exam- 2) | 120d | 2011-06-14 A | 2011-12-13 | C03E221111C0 SS+6d, C03E223001C0, C03S207808C0 | 75% | 30d | 2011-06-14 | 2011-11-05 | 19.55d | 0d | MECHANICAL [16992 h]; Cost [927678 AED] | 927,677.51 | 695,758.13 |  |  | C03E223023C0 | CB | C | 03 | E2 | ME | 230 | 23 | BILL 4 | B04 | S1 | 1F | R00 | ACF04 | 230 |  |  | 1S | MEP |  | M1F | 85 | 484327.84 |  |  |  |  |  |  |  |  |  |
| C03E226013C0 |  | CB-03 ; 1st Fix, Inst of Cable Tray (Exam- 2) | 120d | 2011-06-21 A | 2011-12-13 | C03E223001C0, C03E226001C0 SS+6d, C03S207808C0 | 75% | 30d | 2011-06-21 | 2011-11-15 | 19.55d | 0d | ELECTRICAL [948 h]; Cost [17044 AED] | 17,043.96 | 12,782.97 |  |  | C03E226013C0 | CB | C | 03 | E2 | ME | 260 | 13 | BILL 4 | B04 | S1 | 1F | R00 | ACF04 | 260 |  |  | 1S | MEP |  | M1F | 95 | 18852.27 |  | 75 | 70 |  |  |  |  |  |  |
| C03E222011C0 |  | CB-03 ; 2nd Fix, Drainage/Water pipe (wall) (Exam- 2) | 48d | 2011-07-10 A | 2012-01-05 | C03E209201C0, CAFCI09201R20 FS+86d | 20% | 38.4d | 2011-07-05 | 2011-09-01 | 8.35d | 0d | PLUMBING [1714.8 h]; Cost [92715.9 AED] | 92,715.95 | 18,543.19 |  |  | C03E222011C0 | CB | C | 03 | E2 | ME | 220 | 11 | BILL 4 | B04 | S1 | 2F | R00 | ACF07 | 220 |  |  | 2n | MEP |  |  | 10 |  |  | 20 | 10 |  |  |  |  |  |  |
| C03E223015C0 |  | CB-03 ; 2nd Fix, Insulation of CHW pipe & Duct (Exam- 2) | 66d | 2011-07-10 A | 2012-01-22 | C03E223009C0 SS, C03E223017C0 SS, C03E223023C0 SS | 50% | 33d | 2011-09-28 | 2011-12-19 | 87.22d | 76d | MECHANICAL [6742.8 h]; Cost [363863 AED] | 363,863.22 | 181,931.61 |  |  | C03E223015C0 | CB | C | 03 | E2 | ME | 230 | 15 | BILL 4 | B04 | S1 | 2F | R00 | ACF07 | 230 |  |  | 2n | MEP |  |  | 20 |  |  | 50 | 35 |  |  |  |  |  |  |
| C03E223017C0 |  | CB-03 ; 1st Fix, Inst of CHW pipe (Exam- 2) | 75d | 2011-07-10 A | 2011-12-13 | C03E223001C0, C03E205503C0 FF+18d | 60% | 30d | 2011-06-30 | 2011-09-27 | 19.55d | 0d | MECHANICAL [2395.2 h]; Cost [130782 AED] | 130,781.76 | 78,469.05 |  |  | C03E223017C0 | CB | C | 03 | E2 | ME | 230 | 17 | BILL 4 | B04 | S1 | 1F | R00 | ACF04 | 230 |  |  | 1S | MEP |  | M1F | 60 |  |  |  |  |  |  |  |  |  |  |
| C03E222005C0 |  | CB-03 ; 1st Fix, Inst of Water supply pipe (ceiling) (Exam- 2) | 48d | 2011-08-10 A | 2011-12-22 | C03E222019C0 SS+6d, C03E223001C0, C03S207808C0 | 20% | 38.4d | 2011-07-31 | 2011-09-26 | 19.55d | 0d | PLUMBING [1682.4 h]; Cost [90924.8 AED] | 90,924.75 | 18,184.95 |  |  | C03E222005C0 | CB | C | 03 | E2 | ME | 220 | 05 | BILL 4 | B04 | S1 | 1F | R00 | ACF04 | 220 |  |  | 1S | MEP |  | M1F | 20 |  |  | 20 | 0 |  |  |  |  |  |  |
| C03E222007C0 |  | CB-03 ; 1st Fix, Inst of Medical Gas pipe (Exam- 2) | 48d | 2011-08-10 A | 2011-12-22 | C03E223001C0, C03E227010C0 SS+6d, C03S207808C0 | 20% | 38.4d | 2011-08-07 | 2011-10-03 | 19.55d | 0d | PLUMBING [504 h]; Cost [26046.8 AED] | 26,046.85 | 5,209.37 |  |  | C03E222007C0 | CB | C | 03 | E2 | ME | 220 | 07 | BILL 4 | B04 | S1 | 1F | R00 | ACF04 | 220 |  |  | 1S | MEP |  | M1F | 20 |  |  | 20 | 0 |  |  |  |  |  |  |
| C03E222015C0 |  | CB-03 ; 2nd Fix, Medical Gas pipe (Exam- 2) | 42d | 2011-08-10 A | 2011-12-22 | C03E209201C0, C03E222007C0 SS | 10% | 37.8d | 2011-12-31 | 2012-02-19 | 19.55d | 11.2d | PLUMBING [504 h]; Cost [26046.8 AED] | 26,046.85 | 2,604.69 |  |  | C03E222015C0 | CB | C | 03 | E2 | ME | 220 | 15 | BILL 4 | B04 | S1 | 2F | R00 | ACF07 | 220 |  |  | 2n | MEP |  |  |  |  |  | 10 | 0 |  |  |  |  |  |  |
| C03E226009C0 |  | CB-03 ; 2nd Fix, Inst of Wall conduites (Exam- 2) | 48d | 2011-08-10 A | 2011-12-18 | C03E209201C0 | 20% | 38.4d | 2011-11-24 | 2012-01-23 | 22.95d | 14.6d | ELECTRICAL [430.8 h]; Cost [29580.4 AED] | 29,580.43 | 5,916.09 |  |  | C03E226009C0 | CB | C | 03 | E2 | ME | 260 | 09 | BILL 4 | B04 | S1 | 2F | R00 | ACF07 | 260 |  |  | 2n | MEP |  |  | 20 |  |  | 20 | 0 |  |  |  |  |  |  |
| C03E227001C0 |  | CB-03 ; 1st Fix, Wiring/ Cabling work (Exam- 2) | 48d | 2011-08-10 A | 2012-01-28 | C03E226001C0, C03E226013C0, C03E227010C0 | 20% | 38.4d | 2011-09-07 | 2011-11-02 | 81.83d | 70.6d | ELECTRICAL [216 h]; Cost [15494.5 AED] | 15,494.51 | 3,098.9 |  |  | C03E227001C0 | CB | C | 03 | E2 | ME | 270 | 01 | BILL 4 | B04 | S1 | 1F | R00 | ACF04 | 270 |  |  | 1S | MEP |  | M1F | 20 |  |  | 20 | 0 |  |  |  |  |  |  |
| C03E205503C0 |  | CB-03 ; Ceiling Support for medical equipment (Exam- 2) | 20d | 2011-09-05 A | 2011-11-20 | C03E209201C0, CZ9GZ05152R2 FF | 20% | 16d | 2011-10-30 | 2011-11-27 | 19.55d | 0d | SECONDARY STEEL [156 h]; STRUCTURAL STEEL [7 T(Fe)]; Cost |  |  | 335 | 962 | C03E205503C0 | CB | C | 03 | E2 | SW | 055 | 03 | BILL 4 | B04 | S1 | 03 | R00 | ACF03 | b |  |  |  |  |  |  |  |  |  |  |  |  |  |  |  |  |  |
| C03E205511C0 |  | CB-03 ; Wall reinforcement for MEP/Medical (Exam- 2) | 24d | 2011-10-29 | 2011-11-30 | C03E209201C0 |  |  |  |  | 43.35d | 35d | SECONDARY STEEL [56 h]; Cost |  |  |  |  | C03E205511C0 | CB | C | 03 | E2 | SW | 055 | 11 | BILL 4 | B04 | S1 | 03 | R00 | ACF03 | b |  |  |  |  |  |  |  |  |  |  |  |  |  |  |  |  |  |
| C03E208103C0 |  | CB-03 ; Door Frames (Exam- 2) | 42d | 2011-12-08 | 2012-01-26 | C03E209201C0, GNHE08101C0 FS+93d, C03E108103C0 SS+3d |  |  |  |  | 33.25d | 0d | ASSORTED DOORS [124 h]; Cost |  |  | 316 | 947 | C03E208103C0 | CB | C | 03 | E2 | DO | 081 | 03 | BILL 4 | B04 | S1 | DF | R00 | ACF06 | 081 |  | 08 |  |  |  |  |  |  |  |  |  |  |  |  |  |  |  |
| C03E223008C0 |  | CB-03 ; 1st Fix, Inst of VCD's/FD's (Exam- 2) | 42d | 2011-12-13 | 2012-02-01 | C03E223023C0, C03E205503C0 FF+18d |  |  |  |  | 39.35d | 31d | MECHANICAL [2648.4 h]; Cost |  |  |  |  | C03E223008C0 | CB | C | 03 | E2 | ME | 230 | 08 | BILL 4 | B04 | S1 | 1F | R00 | ACF04 | 230 |  |  | 1S | MEP |  | M1F | 25 |  |  |  |  |  |  |  |  |  |  |
| C03E223009C0 |  | CB-03 ; 2nd Fix, Inst of VAV'S CHW connection (Exam- 2) | 30d | 2011-12-13 | 2012-01-18 | C03E223017C0 |  |  |  |  | 87.22d | 0d | MECHANICAL [1419.6 h]; Cost |  |  |  |  | C03E223009C0 | CB | C | 03 | E2 | ME | 230 | 09 | BILL 4 | B04 | S1 | 2F | R00 | ACF07 | 230 |  |  | 2n | MEP |  |  | 25 |  |  |  |  |  |  |  |  |  |  |
| C03E201005C0 |  | CB-03 ; 2nd, Wall Inspection by Consultant (Exam- 2) | 6d | 2012-01-05 | 2012-01-12 | C03E222011C0, C03E222015C0, C03E226009C0 |  |  |  |  | 8.35d | 0d | Labor General [0.6 h]; Cost |  |  |  |  | C03E201005C0 | CB | C | 03 | E2 | ME | 010 | 05 | BILL 4 | B04 | S1 | WI | R00 | ACF07 | 010 |  |  | 2n | MEP |  |  |  |  |  |  |  |  |  |  |  |  |  |
| C03E209205C0 |  | CB-03 ; Partitions Closing (Exam- 2) | 48d | 2012-01-12 | 2012-03-10 | C03E201005C0, C03E205511C0, C03E209203C0, C03E222005C0, C03E222019C0, CAFOA09204C1 FF, C03E208103C0 FF, C03E221117C0 FF, C03E223008C0 FF, CAFCI09201R20 FS+86d |  |  |  |  | 8.35d | 0d | PARTITIONS [430 m]; PARTITIONS [3002 h]; Cost |  |  | 315 | 946 | C03E209205C0 | CB | C | 03 | E2 | PT | 092 | 05 | BILL 4 | B04 | S1 | FF | R00 | ACF06 | 092 |  |  |  | GP |  | P2F |  |  |  |  |  |  |  |  |  | R3 |  |
| C03E207103C0 |  | CB-03 ; Waterproofing (Exam- 2) | 12d | 2012-03-10 | 2012-03-24 | C03E208103C0, C03E209205C0 |  |  |  |  | 57.73d | 0d | THERMAL & MOISTURE [104 h]; THERMAL & MOISTURE [679 m2]; Cost |  |  | 105 | 999 | C03E207103C0 | CB | C | 03 | E2 | FF | 071 | 03 | BILL 4 | B04 | S1 | 01 | R00 | ACF03 | 071 |  |  |  |  |  |  |  |  |  |  |  |  |  |  |  |  |  |
| C03E209901C0 |  | CB-03 ; Wall Prime & 1st coat (Exam- 2) | 36d | 2012-03-10 | 2012-04-21 | C03E209205C0, C03CO04455C0 SS+7d, C03CO04455C0 FF |  |  |  |  | 11.22d | 0d | WALL PAINT [1311 h]; WALL PAINT [1636 m2]; Cost |  |  | 328 | 956 | C03E209901C0 | CB | C | 03 | E2 | PA | 099 | 01 | BILL 4 | B04 | S1 | 01 | R00 | ACF06 | 099 |  |  |  |  |  |  |  |  |  |  |  |  |  |  |  |  |  |
| C03E226005C0 |  | CB-03 ; 2nd Fix, Wiring for Power/Lighting/Emergency (Exam- 2) | 42d | 2012-03-10 | 2012-04-28 | C03E209205C0 |  |  |  |  | 72.72d | 0d | ELECTRICAL [216 h]; Cost |  |  |  |  | C03E226005C0 | CB | C | 03 | E2 | ME | 260 | 05 | BILL 4 | B04 | S1 | 2F | R00 | ACF07 | 260 |  |  | 2n | MEP |  |  |  |  |  |  |  |  |  |  |  |  |  |
| C03E226007C0 |  | CB-03 ; 2nd Fix, Cable Pulling (Exam- 2) | 42d | 2012-03-10 | 2012-04-28 | C03E209201C0 SS+6d, C03E209205C0 |  |  |  |  | 126.72d | 115.5d | ELECTRICAL [6616.8 h]; Cost |  |  |  |  | C03E226007C0 | CB | C | 03 | E2 | ME | 260 | 07 | BILL 4 | B04 | S1 | 2F | R00 | ACF07 | 260 |  |  | 2n | MEP |  |  | 10 |  |  |  |  |  |  |  |  |  |  |
| C03E226011C0 |  | CB-03 ; 2nd Fix, Inst of Equipment (DB) (Exam- 2) | 42d | 2012-03-10 | 2012-04-28 | C03E209205C0 |  |  |  |  | 35.23d | 24d | ELECTRICAL [1266 h]; Cost |  |  |  |  | C03E226011C0 | CB | C | 03 | E2 | ME | 260 | 11 | BILL 4 | B04 | S1 | 2F | R00 | ACF04 | 260 |  |  | 2n | MEP |  |  |  |  |  |  |  |  |  |  |  |  | E |
| C03E226053C0 |  | CB-03 ; 2nd Fix, Wiring / Cabling (Exam- 2) | 30d | 2012-03-10 | 2012-04-14 | C03E209203C0, C03E209205C0 |  |  |  |  | 138.72d | 127.5d | ELECTRICAL [216 h]; Cost |  |  | 389 | 977 | C03E226053C0 | CB | C | 03 | E2 | ME | 260 | 53 | BILL 4 | B04 | S1 | 2F | R00 | ACF07 | 260 |  |  | 2n | MEP |  |  |  |  |  |  |  |  |  |  |  |  |  |
| C03E227020C0 |  | CB-03 ; 2nd Fix, Inst of ELV Equipment (Panels) (Exam- 2) | 42d | 2012-03-10 | 2012-04-28 | C03E209205C0 |  |  |  |  | 35.23d | 24d | ELECTRICAL [384 h]; Cost |  |  |  |  | C03E227020C0 | CB | C | 03 | E2 | ME | 270 | 20 | BILL 4 | B04 | S1 | 2F | R00 | ACF04 | 270 |  |  | 2n | MEP |  |  |  |  |  |  |  |  |  |  |  |  | E |
| C03E209305C0 |  | CB-03 ; Ceramic floor tile (Exam- 2) | 24d | 2012-03-24 | 2012-04-21 | C03E207103C0 |  |  |  |  | 57.73d | 0d | CERAMIC FLOOR TILES [128 h]; CERAMIC FLOOR TILES [68 m2]; Cost |  |  | 106 | 1000 | C03E209305C0 | CB | C | 03 | E2 | FF | 093 | 05 | BILL 4 | B04 | S1 | 02 | R00 | ACF06 | CT |  |  |  |  |  |  |  |  |  |  |  |  |  |  |  |  |  |
| C03E205501C0 |  | CB-03 ; Handrails & balustrade (Exam- 2) | 36d | 2012-04-21 | 2012-06-02 | C03E209901C0, CZ9GZ05152R2 FF |  |  |  |  | 126.72d | 115.5d | SECONDARY STEEL [183 h]; Cost |  |  |  |  | C03E205501C0 | CB | C | 03 | E2 | SW | 055 | 01 | BILL 4 | B04 | S1 | 01 | R00 | ACF03 | a |  |  |  |  |  |  |  |  |  |  |  |  |  |  |  |  |  |
| C03E209501C0 |  | CB-03 ; Ceiling Grid and ServiceTile (Exam- 2) | 30d | 2012-04-21 | 2012-05-26 | C03E205503C0, C03E209205C0 SS+15d, C03E221117C0, C03E223008C0, C03E223009C0, C03E223015C0, C03E227001C0, CAFCI22001R02 FS+79d, C03E226011C0 FF, C03E209901C0 |  |  |  |  | 11.22d | 0d | CEILING GRID FOR GYPSUM [1495.09 h]; CEILING GRID FOR GYPSUM [128.08 m2]; Cost |  |  | 323 | 952 | C03E209501C0 | CB | C | 03 | E2 | CE | 095 | 01 | BILL 4 | B04 | S1 | 01 | R00 | ACF06 | 095 | R3 |  |  |  |  |  |  |  |  |  |  |  |  |  |  |  |  |
| C03E222025C0 |  | CB-03 ; Final Fix, Inst of Sanitary Ware (Exam- 2) | 48d | 2012-04-21 | 2012-06-17 | C03E209205C0, C03E209305C0, A10230 FS+148d |  |  |  |  | 57.73d | 0d | PLUMBING [1491.6 h]; Cost |  |  |  |  | C03E222025C0 | CB | C | 03 | E2 | ME | 220 | 25 | BILL 4 | B04 | S1 | FF | R00 | ACF07 | 220 |  |  | FF | MEP |  |  |  |  |  |  |  |  |  |  |  |  |  |
| C03E226015C0 |  | CB-03 ; Final Fix, Termination & Gladding of Cables (Exam- 2) | 48d | 2012-04-28 | 2012-06-24 | C03E226005C0 |  |  |  |  | 72.72d | 61.5d | ELECTRICAL [826.8 h]; Cost |  |  |  |  | C03E226015C0 | CB | C | 03 | E2 | ME | 260 | 15 | BILL 4 | B04 | S1 | FF | R00 | ACF07 | 260 |  |  | FF | MEP |  |  |  |  |  |  |  |  |  |  |  |  |  |
| C03E209601C0 |  | CB-03 ; Flooring (Rubber & etc) (Exam- 2) | 30d | 2012-05-26 | 2012-07-01 | C03E209901C0, C03E209501C0, C03E227020C0 |  |  |  |  | 11.22d | 0d | RUBBER FLOOR [208 h]; RUBBER FLOOR [520 m2]; Cost |  |  | 326 | 955 | C03E209601C0 | CB | C | 03 | E2 | FF | 096 | 01 | BILL 4 | B04 | S1 | 03 | R00 | ACF06 | RF | R3 |  |  |  |  |  |  |  |  |  |  |  |  |  |  |  |  |
| C03E209903C0 |  | CB-03 ; Wall Final Paint (Exam- 2) | 36d | 2012-05-26 | 2012-07-08 | C03E209901C0, C03E209905C0 |  |  |  |  | 96.72d | 66d | WALL PAINT [707 h]; WALL PAINT [881 m2]; Cost |  |  | 329 | 957 | C03E209903C0 | CB | C | 03 | E2 | PA | 099 | 03 | BILL 4 | B04 | S1 | 02 | R00 | ACF06 | 099 |  |  |  |  |  |  |  |  |  |  |  |  |  |  |  |  |  |
| C03E209905C0 |  | CB-03 ; Ceiling Prime & 1st coat (Exam- 2) | 0d | 2012-05-26 | 2012-05-26 | C03E209501C0 |  |  |  |  | 96.72d | 0d | Cost |  |  | 330 | 958 | C03E209905C0 | CB | C | 03 | E2 | PA | 099 | 05 | BILL 4 | B04 | S1 | 01 | R00 | ACF06 | 099 |  |  |  |  |  |  |  |  |  |  |  |  |  |  |  |  |  |
| C03E221115C0 |  | CB-03 ; 2nd Fix, Inst of Sprinkler droppers (Exam- 2) | 30d | 2012-05-26 | 2012-07-01 | C03E209501C0 |  |  |  |  | 42.73d | 0d | MECHANICAL [1404 h]; Cost |  |  |  |  | C03E221115C0 | CB | C | 03 | E2 | ME | 211 | 15 | BILL 4 | B04 | S1 | 2F | R00 | ACF07 | 211 |  |  | 2n | MEP |  |  |  |  |  |  |  |  |  |  |  |  |  |
| C03E223021C0 |  | CB-03 ; 2nd Fix, Inst of Flexible Duct & Plenum boxes (Exam- 2) | 42d | 2012-05-26 | 2012-07-15 | C03E209205C0, C03E209501C0 |  |  |  |  | 42.73d | 0d | MECHANICAL [903.6 h]; Cost |  |  |  |  | C03E223021C0 | CB | C | 03 | E2 | ME | 230 | 21 | BILL 4 | B04 | S1 | 2F | R00 | ACF07 | 230 |  |  | 2n | MEP |  |  |  |  |  |  |  |  |  |  |  |  |  |
| C03E226017C0 |  | CB-03 ; Final Fix, Inst of Ceiling rose (Exam- 2) | 48d | 2012-05-26 | 2012-07-22 | C03E209501C0 |  |  |  |  | 41.73d | 0d | ELECTRICAL [123.6 h]; Cost |  |  |  |  | C03E226017C0 | CB | C | 03 | E2 | ME | 260 | 17 | BILL 4 | B04 | S1 | FF | R00 | ACF07 | 260 |  |  | FF | MEP |  |  |  |  |  |  |  |  |  |  |  |  |  |
| C03E227002C0 |  | CB-03 ; 2nd Fix, Wiring Droppers (Exam- 2) | 42d | 2012-05-26 | 2012-07-15 | C03E209501C0 |  |  |  |  | 41.73d | 0d | ELECTRICAL [216 h]; Cost |  |  |  |  | C03E227002C0 | CB | C | 03 | E2 | ME | 270 | 02 | BILL 4 | B04 | S1 | 2F | R00 | ACF07 | 270 |  |  | 2n | MEP |  |  |  |  |  |  |  |  |  |  |  |  |  |
| C03E221113C0 |  | CB-03 ; Final Fix, Inst of Sprinklers head/ Extinguisher (Exam- 2) | 48d | 2012-06-02 | 2012-07-29 | C03E209501C0, C03E221115C0 SS+6d |  |  |  |  | 42.73d | 31.5d | MECHANICAL [278.4 h]; Cost |  |  |  |  | C03E221113C0 | CB | C | 03 | E2 | ME | 211 | 13 | BILL 4 | B04 | S1 | FF | R00 | ACF07 | 211 |  |  | FF | MEP |  |  |  |  |  |  |  |  |  |  |  |  |  |
| C03E223019C0 |  | CB-03 ; Final Fix, Inst of Grilles & Diffusers (Exam- 2) | 48d | 2012-06-02 | 2012-07-29 | C03E209501C0, C03E223021C0 SS+6d |  |  |  |  | 42.73d | 31.5d | MECHANICAL [1970.4 h]; Cost |  |  |  |  | C03E223019C0 | CB | C | 03 | E2 | ME | 230 | 19 | BILL 4 | B04 | S1 | FF | R00 | ACF07 | 230 |  |  | FF | MEP |  |  |  |  |  |  |  |  |  |  |  |  |  |
| C03E226003C0 |  | CB-03 ; Final Fix, Inst of Light fittings (Exam- 2) | 48d | 2012-06-03 | 2012-07-30 | C03E226017C0 SS+7d |  |  |  |  | 41.73d | 30.5d | ELECTRICAL [7983.6 h]; Cost |  |  |  |  | C03E226003C0 | CB | C | 03 | E2 | ME | 260 | 03 | BILL 4 | B04 | S1 | FF | R00 | ACF07 | 260 |  |  | FF | MEP |  |  |  |  |  |  |  |  |  |  |  |  |  |
| C03E227030C0 |  | CB-03 ; Final Fix, Inst of ELV device (Detector/Speaker) (Exam- 2) | 48d | 2012-06-03 | 2012-07-30 | C03E209501C0, C03E227002C0 SS+7d |  |  |  |  | 41.73d | 30.5d | ELECTRICAL [2054.4 h]; Cost |  |  |  |  | C03E227030C0 | CB | C | 03 | E2 | ME | 270 | 30 | BILL 4 | B04 | S1 | FF | R00 | ACF07 | 270 |  |  | FF | MEP |  |  |  |  |  |  |  |  |  |  |  |  |  |
| C03E222021C0 |  | CB-03 ; Final Fix, Terminate Sanitary Ware & Appliances (Exam- 2) | 48d | 2012-06-17 | 2012-08-12 | C03E222011C0, C03E222025C0 |  |  |  |  | 57.73d | 19.5d | PLUMBING [1491.6 h]; Cost |  |  |  |  | C03E222021C0 | CB | C | 03 | E2 | ME | 220 | 21 | BILL 4 | B04 | S1 | FF | R00 | ACF07 | 220 |  |  | FF | MEP |  |  |  |  |  |  |  |  |  |  |  |  |  |
| C03E206101C0 |  | CB-03 ; Wood / caseworks (Exam- 2) | 54d | 2012-07-01 | 2012-09-04 | C03CO04401C0, C03E209501C0, C03E209901C0, CAFWA00113M0, CAFCI22001R02 FS+196d, C03E209601C0, A10370 |  |  |  |  | 11.22d | 0d | WOOD WORK/CASEWORK [744.94 no]; WOOD WORK/CASEWORK [3036 h]; Cost |  |  | 332 | 960 | C03E206101C0 | CB | C | 03 | E2 | WO | 061 | 01 | BILL 4 | B04 | S1 | WW | R00 | ACF06 | 061 | R3 |  |  |  |  |  |  |  |  |  |  |  |  |  |  |  |  |

| ID | WBS | Activity | Duration | Start | Finish | Predecessors | Complete | Remaining | Planned start | Planned finish | Total float | Free float | Resources | Cost | Actual cost | Change Order # | NEW ACTIVITY ID | change id | CCAD BUILDING(SET) | CCAD PHASE(SET) | CCAD FLOOR(SET) | CCAD ZONE(SET) | CCAD WORK(SET) | CCAD SECTION(SET) | CCAD SERIAL No.(SET) | CCAD CBS(SET) | CCAD BILL(SET) | CCAD HANDOVER(SET) | CCAD TAG(SET) | CCAD REV(SET) | CCADACF (SET) | CCAD SSCF | R3 Finish | CCAD DIVISION(SET) | CCAD SUB ZONE MEP(SET) | CCAD CSA | RENZ % COMPLETE | July2011 Target% Complete | Claimed This Month | Act Selector % | P_811 | P_711 | user_number8 | user_integer1 | user_integer2 | user_number7 | R3 Partitions | CCAD MEQ |
| --- | --- | --- | --- | --- | --- | --- | --- | --- | --- | --- | --- | --- | --- | --- | --- | --- | --- | --- | --- | --- | --- | --- | --- | --- | --- | --- | --- | --- | --- | --- | --- | --- | --- | --- | --- | --- | --- | --- | --- | --- | --- | --- | --- | --- | --- | --- | --- | --- |
| C03E206102C0 |  | CB-03 ; Head Wall (Exam- 2) | 29.25d | 2012-07-01 | 2012-08-04 | C03CO04401C0, C03E209501C0, C03E206101C0 SS, CAFWA00113M0, CAFCI22001R02 FS+196d |  |  |  |  | 73.47d | 62.25d | WOOD WORK/CASEWORK [1386 h]; Cost |  |  | 332 | 960 | C03E206102C0 | CB | C | 03 | E2 | WO | 061 | 02 | BILL 4 | B04 | S1 | WW | R00 | ACF06 | 061 | R3 |  |  |  |  |  |  |  |  |  |  |  |  |  |  |  |
| C03E208107C0 |  | CB-03 ; Doors (Exam- 2) | 42d | 2012-07-01 | 2012-08-21 | C03E208103C0, C03E209901C0, C03E209601C0, CZ9GZ08154R2 FF |  |  |  |  | 32.73d | 0d | ASSORTED DOORS [420 h]; ASSORTED DOORS [42 no]; Cost |  |  | 317 | 948 | C03E208107C0 | CB | C | 03 | E2 | DO | 081 | 07 | BILL 4 | B04 | S1 | DR | R00 | ACF06 | 081 |  | 08 |  |  |  |  |  |  |  |  |  |  |  |  |  |  |
| C03E209701C0 |  | CB-03 ; Wall finishes (ST, WD, WC) (Exam- 2) | 36d | 2012-07-01 | 2012-08-12 | C03E227020C0 FF, CAFCI22001R02 FS+176d, C03E206101C0 SS, C03E209601C0 |  |  |  |  | 36.73d | 0d | ASSORTED WALL FINISH [1388 h]; ASSORTED WALL FINISH [1595 m2]; Cost |  |  | 105 | 1002 | C03E209701C0 | CB | C | 03 | E2 | WF | 097 | 01 | BILL 4 | B04 | S1 | 01 | R00 | ACF06 | 097 |  |  |  |  |  |  |  |  |  |  |  |  |  |  |  |  |
| C03E211005C0 |  | CB-03 ; Utility belt (Exam- 2) | 27.5d | 2012-07-12 | 2012-08-13 | C03E206101C0 SS+10d, C03E209205C0 |  |  |  |  | 11.22d | 0d | FF&E [575 h]; FF&E [306.41 no]; Cost |  |  |  |  | C03E211005C0 | CB | C | 03 | E2 | WO | 110 | 05 | BILL 4 | B04 | S1 | 05 | R00 | ACF08 | e |  |  |  |  |  |  |  |  |  |  |  |  |  |  |  |  |
| C03E211001C0 |  | CB-03 ; Wall Protection (WP, CG, WG, FCG) (Exam- 2) | 24d | 2012-08-12 | 2012-09-11 | C03E209701C0, C03E209903C0 SS |  |  |  |  | 42.73d | 31.5d | FF&E [56 h]; Cost |  |  | 326 | 1001 | C03E211001C0 | CB | C | 03 | E2 | WF | 110 | 01 | BILL 4 | B04 | S1 | 03 | R00 | ACF08 | b |  |  |  |  |  |  |  |  |  |  |  |  |  |  |  |  |
| C03E222029C0 |  | CB-03 ; Final Fix, Medical Gas pipe (Exam- 2) | 18d | 2012-08-13 | 2012-09-05 | C03E209501C0, C03E211005C0 |  |  |  |  | 11.22d | 0d | PLUMBING [504 h]; Cost |  |  |  |  | C03E222029C0 | CB | C | 03 | E2 | ME | 220 | 29 | BILL 4 | B04 | S1 | FF | R00 | ACF07 | 220 |  |  | FF | MEP |  |  |  |  |  |  |  |  |  |  |  |  |
| C03E208709C0 |  | CB-03 ; Ironmongery (Exam- 2) | 28d | 2012-08-21 | 2012-09-23 | C03E208107C0 |  |  |  |  | 32.73d | 21.5d | IRONMONGERY [450 h]; IRONMONGERY [45 no]; Cost |  |  | 322 | 951 | C03E208709C0 | CB | C | 03 | E2 | DO | 087 | 09 | BILL 4 | B04 | S1 | IM | R00 | ACF06 | 087 |  | 08 |  |  |  |  |  |  |  |  |  |  |  |  |  |  |
| C03E201006C0 |  | CB-03 ; 2nd, Ceiling Inspection by Consultants (Exam- 2) | 6d | 2012-09-05 | 2012-09-12 | C03E221115C0, C03E223009C0, C03E223015C0, C03E227002C0, C03E209501C0, C03E221113C0, C03E222029C0, C03E223019C0, C03E226017C0, C03E227030C0, C03E226015C0, C03E226003C0 |  |  |  |  | 11.22d | 0d | Labor General [0.6 h]; Cost |  |  |  |  | C03E201006C0 | CB | C | 03 | E2 | ME | 010 | 06 | BILL 4 | B04 | S1 | CI | R00 | ACF07 | 010 |  |  | 2n | MEP |  |  |  |  |  |  |  |  |  |  |  |  |
| C03E209503C0 |  | CB-03 ; Ceiling closure - ACT/Gypsum (Exam- 2) | 18d | 2012-09-12 | 2012-10-03 | C03E201006C0, C03E221115C0, C03E226005C0, C03E227002C0, CAFOA09503C1 FF, C03E206101C0, C03E209701C0, C03E223021C0, C03E226053C0, C03E226007C0 |  |  |  |  | 11.22d | 0d | ASSORTED CEILING FINISH [285.98 h]; CEILING GYPSUM [42.02 h]; ASSORTED CEILING FINISH [465 m2]; CEILING GYPSUM [117 m2]; Cost |  |  | 324 | 953 | C03E209503C0 | CB | C | 03 | E2 | CE | 095 | 03 | BILL 4 | B04 | S1 | 02 | R00 | ACF06 | 095 | R3 |  |  |  |  |  |  |  |  |  |  |  |  |  |  |  |
| C03E209679C1 |  | CB-03, Carpet Tile Finish (Exam-2 Offices/Conference) | 0d | 2012-10-03 | 2012-10-03 | C03E209903C0 SS, C03E209907C0 SS |  |  |  |  | 23.23d | 12d | Cost |  |  |  |  |  | CB | C | 03 | E2 | FF | 096 |  |  | B04 |  |  | R00 | ACF06 | CPT |  |  |  | CPT |  |  |  |  |  |  |  |  |  |  |  |  |
| C03E209907C0 |  | CB-03 ; Ceiling Final paint (Exam- 2) | 0d | 2012-10-03 | 2012-10-03 | C03E209601C0, C03E209905C0, C03E209503C0 |  |  |  |  | 23.23d | 0d | Cost |  |  | 331 | 959 | C03E209907C0 | CB | C | 03 | E2 | PA | 099 | 07 | BILL 4 | B04 | S1 | 02 | R00 | ACF06 | 099 |  |  |  |  |  |  |  |  |  |  |  |  |  |  |  |  |
| C03E211003C0 |  | CB-03 ; FF & E (Exam- 2) | 12d | 2012-10-03 | 2012-10-17 | C03E209601C0, C03E209503C0 |  |  |  |  | 11.22d | 0d | FF&E [212 h]; FF&E [112.88 no]; Cost |  |  | 333 | 961 | C03E211003C0 | CB | C | 03 | E2 | WO | 110 | 03 | BILL 4 | B04 | S1 | 04 | R00 | ACF08 | a |  |  |  |  |  |  |  |  |  |  |  |  |  |  |  |  |
| C03E222027C0 |  | CB-03 ; Final Fix, Inst of All drain (Exam- 2) | 12d | 2012-10-03 | 2012-10-17 | C03E209305C0, C03E209503C0 |  |  |  |  | 11.22d | 0d | PLUMBING [1491.6 h]; Cost |  |  |  |  | C03E222027C0 | CB | C | 03 | E2 | ME | 220 | 27 | BILL 4 | B04 | S1 | FF | R00 | ACF07 | 220 |  |  | FF | MEP |  |  |  |  |  |  |  |  |  |  |  |  |
| C03E226019C0 |  | CB-03 ; Final Fix, Inst of Switch/Sockets (Exam- 2) | 12d | 2012-10-03 | 2012-10-17 | C03E209901C0, C03E209503C0 |  |  |  |  | 11.22d | 0d | ELECTRICAL [427.2 h]; Cost |  |  |  |  | C03E226019C0 | CB | C | 03 | E2 | ME | 260 | 19 | BILL 4 | B04 | S1 | FF | R00 | ACF07 | 260 |  |  | FF | MEP |  |  |  |  |  |  |  |  |  |  |  |  |
|  | 10 | **Precommissioning Tesing & snagging (Exam 2)** |  | 2012-09-05 | 2012-11-19 |  |  |  |  |  |  |  |  |  |  |  |  |  |  |  |  |  |  |  |  |  |  |  |  |  |  |  |  |  |  |  |  |  |  |  |  |  |  |  |  |  |  |  |
| C03TS01804C0 |  | CB-03 ; MEP de-snag, FIREM sign-off | 9d | 2012-09-05 | 2012-09-16 | C03E222025C0, C03E226015C0, C03E222021C0, C03E221113C0, C03E223019C0, C03E222029C0, C03E226017C0, C03E226003C0, C03E227030C0, C03E211005C0 |  |  |  |  | 38.23d | 27d | TESTING & COMMISSIONING [1020 h]; Cost |  |  |  |  | C03TS01801C0 | CB | C | 03 | TS | SC | 018 | 01 | BILL 4 | B04 | S1 | 01 | R00 | ACF07 | 018 |  |  |  |  |  |  |  |  |  |  |  |  |  |  |  |  |
| C03TS01807C0 |  | CB-03 ; Touch-up & Clean / JV inspection /CIR /De-snag | 17.88d | 2012-10-17 | 2012-11-10 | C03E206101C0, C03E206102C0, C03E208709C0, C03E209701C0, C03E209903C0, C03E209907C0, C03E211001C0, C03E211003C0, C03TS01804C0, C03E205501C0, C03PA08709C0, C03E209503C0, C03E209679C1, C03E226019C0, C03E222027C0 |  |  |  |  | 11.22d | 0d | TESTING & COMMISSIONING [149 h]; Cost |  |  |  |  | C03TS01802C0 | CB | C | 03 | TS | SC | 018 | 02 | BILL 4 | B04 | S1 | 02 | R00 | ACF07 | 018 |  |  |  |  |  |  |  |  |  |  |  |  |  |  |  |  |
| C03TS01810C0 |  | CB-03 ; Consultant's final de-snag inspection | 7d | 2012-11-10 | 2012-11-19 | C03TS01807C0 |  |  |  |  | 11.22d | 3.9d | Labor General [1 h]; Cost |  |  |  |  | C03TS01803C0 | CB | C | 03 | TS | SC | 018 | 03 | BILL 4 | B04 | S1 | 03 | R00 | ACF07 | 018 |  |  |  |  |  |  |  |  |  |  |  |  |  |  |  |  |
|  | 04 | **Public Area ( Elev.Lobby & Corridors )** |  | 2011-03-29 | 2012-10-20 |  |  |  |  |  |  |  |  |  |  |  |  |  |  |  |  |  |  |  |  |  |  |  |  |  |  |  |  |  |  |  |  |  |  |  |  |  |  |  |  |  |  |  |
| C03PA22019C0 |  | CB-03 ; 1st Fix, Inst of Drainage pipe (ceiling) (Public Area) | 200d | 2011-03-29 A | 2011-10-04 | C03PA21111C0 SS+10d, C03PA23001C0, C03S107807C0, C03S207808C0 | 98% | 4d | 2011-05-26 | 2012-01-25 | 49.75d | 0d | PLUMBING [1714.8 h]; Cost [92715.9 AED] | 92,715.95 | 90,861.63 |  |  | C03PA22019C0 | CB | C | 03 | PA | ME | 220 | 19 | BILL 4 | B04 | S1 | 1F | R00 | ACF04 | 220 |  |  | 1S | MEP | 40 | 90 | 48343.95 | M1F |  |  |  |  |  |  |  |  |
| C03PA23001C0 |  | CB-03 ; 1st Fix, Inst. of Supports for MEP (Public Area) | 27d | 2011-04-13 A | 2011-05-30 A | C03S107807C0, C03S207808C0, C04S103335C0, C04S203335C0 | 100% |  | 2011-03-30 | 2011-05-01 |  |  | MECHANICAL [1024.8 h]; Cost [57766.2 AED] | 57,766.25 | 57,766.25 |  |  | C03PA23001C0 | CB | C | 03 | PA | ME | 230 | 01 | BILL 4 | B04 | S1 | 1F | R00 | ACF04 | 230 |  |  | 1S | MEP | 100 |  |  | M1F |  |  |  |  |  |  |  |  |
| C03PA21111C0 |  | CB-03 ; 1st Fix, Inst of Sprinkler main pipe (Public Area) | 200d | 2011-04-16 A | 2011-10-11 | C03PA23001C0, C03PA23017C0 SS+12d, C03S107807C0, C03S207808C0 | 95% | 10d | 2011-05-15 | 2012-01-14 | 49.75d | 0d | MECHANICAL [686.4 h]; Cost [37438.4 AED] | 37,438.4 | 35,566.48 |  |  | C03PA21111C0 | CB | C | 03 | PA | ME | 211 | 11 | BILL 4 | B04 | S1 | 1F | R00 | ACF04 | 211 |  |  | 1S | MEP | 65 | 95 | 6517.35 | M1F |  |  |  |  |  |  |  |  |
| C03PA23023C0 |  | CB-03 ; 1st Fix, Inst of Main Ducting (Public Area) | 100d | 2011-05-10 A | 2011-11-15 | C03PA22005C0 SS+12d, C03PA23001C0 SS+10d, C03S107807C0, C03S207808C0 | 75% | 25d | 2011-07-06 | 2011-11-01 | 52.75d | 0d | MECHANICAL [16992 h]; Cost [927678 AED] | 927,677.51 | 695,758.13 |  |  | C03PA23023C0 | CB | C | 03 | PA | ME | 230 | 23 | BILL 4 | B04 | S1 | 1F | R00 | ACF04 | 230 |  |  | 1S | MEP | 20 | 85 | 215256.81 | M1F |  |  |  |  |  |  |  |  |
| C03PA26013C0 |  | CB-03 ; 1st Fix, Inst of Cable Tray (Public Area) | 90d | 2011-05-11 A | 2011-11-17 | C03PA23001C0, C03PA26001C0 SS+14d, C03S107807C0, C03S207808C0 | 70% | 27d | 2011-08-03 | 2011-11-21 | 52.75d | 0d | ELECTRICAL [948 h]; Cost [17044 AED] | 17,043.96 | 11,930.77 |  |  | C03PA26013C0 | CB | C | 03 | PA | ME | 260 | 13 | BILL 4 | B04 | S1 | 1F | R00 | ACF04 | 260 |  |  | 1S | MEP | 10 | 60 | 9922.24 | M1F | 70 | 60 |  |  |  |  |  |  |
| C03PA09201C0 |  | CB-03 ; Metal Studs (Public Area) | 84d | 2011-05-15 A | 2011-10-29 | C03PA23001C0 SS+12d, CAFCI09202R02 FS+62d | 90% | 8.4d | 2011-05-31 | 2011-09-10 | 19.35d | 0d | PARTITIONS [10018 h]; PARTITIONS - Metal Studs [1545 m]; Cost |  |  | 313 | 944 | C03PA09201C0 | CB | C | 03 | PA | PT | 092 | 01 | BILL 4 | B04 | S1 | 1F | R00 | ACF06 | 092 |  |  |  | GP | 25 |  | 232580.77 | PMS | 85 | 70 | 0 | 0 | 0 | 0 | R3 |  |
| C03PA26001C0 |  | CB-03 ; 1st Fix, Inst of Trunking/Conduiting (Public Area) | 100d | 2011-05-15 A | 2011-11-15 | C03PA23001C0, C03PA23023C0 SS+10d, C03S107807C0, C03S207808C0 | 75% | 25d | 2011-07-18 | 2011-11-16 | 52.75d | 0d | ELECTRICAL [430.8 h]; Cost [29580.4 AED] | 29,580.43 | 22,185.32 |  |  | C03PA26001C0 | CB | C | 03 | PA | ME | 260 | 01 | BILL 4 | B04 | S1 | 1F | R00 | ACF04 | 260 |  |  | 1S | MEP | 10 | 95 | 29151.3 | M1F | 75 | 70 |  |  |  |  |  |  |
| C03PA09203C0 |  | CB-03 ; Partitions early wall & 1st face (Public Area) | 60d | 2011-05-17 A | 2011-11-12 | C03PA09201C0 SS+12d | 71% | 17.4d | 2011-06-14 | 2011-08-24 | 58.35d | 0d | PARTITIONS [1545 m]; PARTITIONS [7817 h]; Cost |  |  | 314 | 945 | C03PA09203C0 | CB | C | 03 | PA | PT | 092 | 03 | BILL 4 | B04 | S1 | 2F | R00 | ACF06 | 092 |  |  |  | GP | 2 |  | 120934.46 | P1F | 55 | 30 | 0 | 0 | 0 | 0 |  |  |
| C03PA26009C0 |  | CB-03 ; 2nd Fix, Inst of Wall conduites (Public Area) | 48d | 2011-05-31 A | 2011-12-18 | C03PA09201C0 | 20% | 38.4d | 2011-05-31 | 2011-07-27 | 22.95d | 3.6d | ELECTRICAL [430.8 h]; Cost [29580.4 AED] | 29,580.43 | 5,916.09 |  |  | C03PA26009C0 | CB | C | 03 | PA | ME | 260 | 09 | BILL 4 | B04 | S1 | 2F | R00 | ACF07 | 260 |  |  | 2n | MEP |  | 20 |  |  |  |  |  |  |  |  |  |  |
| C03PA21117C0 |  | CB-03 ; 1st Fix, Inst of Sprinkler branch pipe (Public Area) | 150d | 2011-06-07 A | 2011-11-19 | C03PA09201C0, C03PA21111C0 | 90% | 15d | 2011-07-03 | 2012-01-03 | 52.35d | 36.6d | MECHANICAL [1009.2 h]; Cost [55153.8 AED] | 55,153.76 | 49,638.38 |  |  | C03PA21117C0 | CB | C | 03 | PA | ME | 211 | 17 | BILL 4 | B04 | S1 | 1F | R00 | ACF04 | 211 |  |  | 1S | MEP |  | 90 | 25574.18 | M1F |  |  |  |  |  |  |  |  |
| C03PA27001C0 |  | CB-03 ; 1st Fix, Wiring/ Cabling work (Public Area) | 45d | 2011-06-07 A | 2011-08-30 A | C03PA26001C0, C03PA26013C0, C03PA27010C0 | 100% |  | 2011-09-01 | 2011-10-24 |  |  | ELECTRICAL [216 h]; Cost [15494.5 AED] | 15,494.51 | 15,494.51 |  |  | C03PA27001C0 | CB | C | 03 | PA | ME | 270 | 01 | BILL 4 | B04 | S1 | 1F | R00 | ACF04 | 270 |  |  | 1S | MEP |  | 20 | 3598.69 | M1F | 100 | 20 |  |  |  |  |  |  |
| C03PA27010C0 |  | CB-03 ; 1st Fix, Inst of Trunking for ELV system (Public Area) | 75d | 2011-06-28 A | 2011-11-21 | C03PA23001C0, C03PA26013C0 SS+10d, C03S107807C0, C03S207808C0 | 60% | 30d | 2011-06-29 | 2011-09-26 | 97.75d | 0d | ELECTRICAL [457.2 h]; Cost [24667.9 AED] | 24,667.88 | 14,800.73 |  |  | C03PA27010C0 | CB | C | 03 | PA | ME | 270 | 10 | BILL 4 | B04 | S1 | 1F | R00 | ACF04 | 270 |  |  | 1S | MEP |  | 60 | 17190.43 | M1F |  |  |  |  |  |  |  |  |
| C03PA23015C0 |  | CB-03 ; 2nd Fix, Insulation of CHW pipe & Duct (Public Area) | 66d | 2011-07-10 A | 2011-12-20 | C03PA23009C0 SS, C03PA23017C0 SS, C03PA23023C0 SS | 50% | 33d | 2011-09-28 | 2011-12-19 | 75.25d | 59.5d | MECHANICAL [6742.8 h]; Cost [363863 AED] | 363,863.22 | 181,931.61 |  |  | C03PA23015C0 | CB | C | 03 | PA | ME | 230 | 15 | BILL 4 | B04 | S1 | 2F | R00 | ACF07 | 230 |  |  | 2n | MEP |  | 25 |  |  | 50 | 35 |  |  |  |  |  |  |
| C03PA23017C0 |  | CB-03 ; 1st Fix, Inst of CHW pipe (Public Area) | 90d | 2011-07-10 A | 2011-11-09 | C03PA23001C0, C03S107807C0, C03S207808C0 | 65% | 31.5d | 2011-06-30 | 2011-10-15 | 49.75d | 0d | MECHANICAL [2395.2 h]; Cost [130782 AED] | 130,781.76 | 85,008.14 |  |  | C03PA23017C0 | CB | C | 03 | PA | ME | 230 | 17 | BILL 4 | B04 | S1 | 1F | R00 | ACF04 | 230 |  |  | 1S | MEP |  | 65 |  | M1F |  |  |  |  |  |  |  |  |
| C03PA22005C0 |  | CB-03 ; 1st Fix, Inst of Water supply pipe (ceiling) (Public Area) | 42d | 2011-10-01 | 2011-11-21 | C03PA22019C0 SS+7d, C03PA23001C0, C03S107807C0, C03S207808C0 |  |  |  |  | 49.75d | 0d | PLUMBING [1682.4 h]; Cost |  |  |  |  | C03PA22005C0 | CB | C | 03 | PA | ME | 220 | 05 | BILL 4 | B04 | S1 | 1F | R00 | ACF04 | 220 |  |  | 1S | MEP |  | 50 |  | M1F |  |  |  |  |  |  |  |  |
| C03PA22011C0 |  | CB-03 ; 2nd Fix, Drainage/Water pipe (wall) (Public Area) | 42d | 2011-10-29 | 2011-12-22 | C03PA09201C0 |  |  |  |  | 19.35d | 0d | PLUMBING [1714.8 h]; Cost |  |  |  |  | C03PA22011C0 | CB | C | 03 | PA | ME | 220 | 11 | BILL 4 | B04 | S1 | 2F | R00 | ACF07 | 220 |  |  | 2n | MEP |  | 20 |  |  |  |  |  |  |  |  |  |  |
| C03PA40302C0 |  | CB-03 ; 2nd Fix, Pneumatic tube (Public Area) | 42d | 2011-10-29 | 2011-12-22 | C03PA09201C0 |  |  |  |  | 19.35d | 0d | MECHANICAL [2661.6 h]; Cost |  |  |  |  | C03E140302C0 | CB | C | 03 | PA | ME | 403 | 02 | BILL 4 | B04 | S1 | 2F | R00 | ACF07 | 403 |  |  | 2n | MEP |  | 10 |  |  |  |  |  |  |  |  |  |  |
| C03PA23009C0 |  | CB-03 ; 2nd Fix, Inst of VAV'S CHW connection (Public Area) | 30d | 2011-11-09 | 2011-12-17 | C03PA23017C0 |  |  |  |  | 75.25d | 0d | MECHANICAL [1419.6 h]; Cost |  |  |  |  | C03PA23009C0 | CB | C | 03 | PA | ME | 230 | 09 | BILL 4 | B04 | S1 | 2F | R00 | ACF07 | 230 |  |  | 2n | MEP |  | 20 |  |  |  |  |  |  |  |  |  |  |
| C03PA26053C0 |  | CB-03 ; 2nd Fix, Wiring / Cabling (Public Area) | 30d | 2011-11-12 | 2011-12-19 | C03PA09203C0 |  |  |  |  | 76.35d | 60.6d | ELECTRICAL [216 h]; Cost |  |  | 389 | 977 | C03PA26053C0 | CB | C | 03 | PA | ME | 260 | 53 | BILL 4 | B04 | S1 | 2F | R00 | ACF07 | 260 |  |  | 2n | MEP |  | 25 |  |  |  |  |  |  |  |  |  |  |
| C03PA23008C0 |  | CB-03 ; 1st Fix, Inst of VCD's/FD's (Public Area) | 42d | 2011-11-16 | 2012-01-07 | C03PA23023C0 |  |  |  |  | 60.75d | 45d | MECHANICAL [2648.4 h]; Cost |  |  |  |  | C03PA23008C0 | CB | C | 03 | PA | ME | 230 | 08 | BILL 4 | B04 | S1 | 1F | R00 | ACF04 | 230 |  |  | 1S | MEP |  | 80 |  | M1F |  |  |  |  |  |  |  |  |
| C03PA08103C0 |  | CB-03 ; Door Frames (Public Area) | 42d | 2011-12-12 | 2012-01-30 | C03PA09201C0, GNHE08101C0 FS+93d, C03E208103C0 SS+3d |  |  |  |  | 33.25d | 0d | ASSORTED DOORS [412 h]; Cost |  |  | 316 | 947 | C03PA08103C0 | CB | C | 03 | PA | DO | 081 | 03 | BILL 4 | B04 | S1 | DF | R00 | ACF06 | 081 |  | 08 |  |  |  |  |  |  |  |  |  |  |  |  |  |  |
| C03PA01005C0 |  | CB-03 ; 2nd, Wall Inspection by Consultant (Public Area) | 6d | 2011-12-22 | 2011-12-29 | C03PA22011C0, C03PA26009C0, C03PA40302C0 |  |  |  |  | 19.35d | 3.6d | Labor General [0.6 h]; Cost |  |  |  |  | C03PA01005C0 | CB | C | 03 | PA | ME | 010 | 05 | BILL 4 | B04 | S1 | WI | R00 | ACF07 | 010 |  |  | 2n | MEP |  |  |  |  |  |  |  |  |  |  |  |  |
| C03PA09205C0 |  | CB-03 ; Partitions Closing (Public Area) | 48d | 2012-01-04 | 2012-02-29 | C03PA01005C0, C03PA09203C0, C03PA22005C0, C03PA22019C0, CAFCI09201R02 FS+93d, CAFOA09204C1 FF, C03PA08103C0 FF, C03PA23023C0 FF, C03PA26001C0 FF, C03PA26013C0, C03PA21117C0, C03PA27010C0 FF, C03PA23009C0 FF, C03PA23015C0 FF, C03PA26053C0 FF, C03PA23008C0 FF |  |  |  |  | 15.75d | 0d | PARTITIONS [1545 m]; PARTITIONS [10019 h]; Cost |  |  | 315 | 946 | C03PA09205C0 | CB | C | 03 | PA | PT | 092 | 05 | BILL 4 | B04 | S1 | FF | R00 | ACF06 | 092 |  |  |  | GP |  |  |  | P2F |  |  |  |  |  |  | R3 |  |
| C03PA09901C0 |  | CB-03 ; Wall Prime & 1st coat (Public Area) | 36d | 2012-03-01 | 2012-04-11 | C03PA09205C0, C03CO04455C0 SS+7d, C03CO04455C0 FF |  |  |  |  | 34.38d | 0d | WALL PAINT [481 h]; WALL PAINT [600 m2]; Cost |  |  | 328 | 956 | C03PA09901C0 | CB | C | 03 | PA | PA | 099 | 01 | BILL 4 | B04 | S1 | 01 | R00 | ACF06 | 099 |  |  |  |  |  |  |  |  |  |  |  |  |  |  |  |  |
| C03PA26005C0 |  | CB-03 ; 2nd Fix, Wiring for Power/Lighting/Emergency (Public Area) | 42d | 2012-03-01 | 2012-04-18 | C03PA09205C0 |  |  |  |  | 64.38d | 18d | ELECTRICAL [216 h]; Cost |  |  |  |  | C03PA26005C0 | CB | C | 03 | PA | ME | 260 | 05 | BILL 4 | B04 | S1 | 2F | R00 | ACF07 | 260 |  |  | 2n | MEP |  | 25 |  |  |  |  |  |  |  |  |  |  |
| C03PA26007C0 |  | CB-03 ; 2nd Fix, Cable Pulling (Public Area) | 42d | 2012-03-01 | 2012-04-18 | C03PA09205C0 |  |  |  |  | 118.38d | 84d | ELECTRICAL [6616.8 h]; Cost |  |  |  |  | C03PA26007C0 | CB | C | 03 | PA | ME | 260 | 07 | BILL 4 | B04 | S1 | 2F | R00 | ACF07 | 260 |  |  | 2n | MEP |  | 20 |  |  |  |  |  |  |  |  |  |  |
| C03PA26011C0 |  | CB-03 ; 2nd Fix, Inst of Equipment (DB) (Public Area) | 42d | 2012-03-01 | 2012-04-18 | C03PA09205C0 |  |  |  |  | 52.38d | 18d | ELECTRICAL [1266 h]; Cost |  |  |  |  | C03PA26011C0 | CB | C | 03 | PA | ME | 260 | 11 | BILL 4 | B04 | S1 | 2F | R00 | ACF04 | 260 |  |  | 2n | MEP |  |  |  |  |  |  |  |  |  |  |  | E |
| C03PA27020C0 |  | CB-03 ; 2nd Fix, Inst of ELV Equipment (Panels) (Public Area) | 42d | 2012-03-01 | 2012-04-18 | C03PA09205C0 |  |  |  |  | 88.38d | 54d | ELECTRICAL [384 h]; Cost |  |  |  |  | C03PA27020C0 | CB | C | 03 | PA | ME | 270 | 20 | BILL 4 | B04 | S1 | 2F | R00 | ACF04 | 270 |  |  | 2n | MEP |  |  |  |  |  |  |  |  |  |  |  | E |
| C03PA05501C0 |  | CB-03 ; Handrails & balustrade (Public Area) | 36d | 2012-04-12 | 2012-05-23 | C03PA09901C0, CAFT1405509C0, CAFT1505509C0, CAFT1105509C0, CAFT1205509C0 |  |  |  |  | 58.38d | 24d | SECONDARY STEEL [650 h]; Cost |  |  |  |  | C03PA05501C0 | CB | C | 03 | PA | SW | 055 | 01 | BILL 4 | B04 | S1 | 01 | R00 | ACF03 | a |  |  |  |  |  |  |  |  |  |  |  |  |  |  |  |  |
| C03PA09501C0 |  | CB-03 ; Ceiling Grid and ServiceTile (Public Area) | 24d | 2012-04-12 | 2012-05-09 | C03PA09205C0 SS+15d, C03PA21117C0, C03PA23008C0, C03PA23009C0, C03PA23015C0, C03PA27001C0, CAFCI22001R02 FS+79d, C03PA26011C0 FF, C03PA09901C0 |  |  |  |  | 34.38d | 0d | CEILING GRID FOR GYPSUM [4982.01 h]; CEILING GRID FOR GYPSUM [426.36 m2]; Cost |  |  | 323 | 952 | C03PA09501C0 | CB | C | 03 | PA | CE | 095 | 01 | BILL 4 | B04 | S1 | 01 | R00 | ACF06 | 095 | R3 |  |  |  |  |  |  |  |  |  |  |  |  |  |  |  |
| C03PA09601C0 |  | CB-03 ; Flooring (Rubber & etc) (Public Area) | 36d | 2012-05-10 | 2012-06-21 | C03PA09901C0, C03PA09501C0, C03PA05501C0 FF |  |  |  |  | 34.38d | 0d | RUBBER FLOOR [696 h]; RUBBER FLOOR [1730 m2]; Cost |  |  | 326 | 955 | C03PA09601C0 | CB | C | 03 | PA | FF | 096 | 01 | BILL 4 | B04 | S1 | 03 | R00 | ACF06 | RF | R3 |  |  |  |  |  |  |  |  |  |  |  |  |  |  |  |
| C03PA09602C0 |  | CB-03 ; Flooring (Stone) (Public Area) | 36d | 2012-05-10 | 2012-06-21 | C03PA09901C0, CAFCI22001R02 FS+79d, C03PA09501C0, C03PA27020C0 FF |  |  |  |  | 34.38d | 0d | STONE FLOOR [15 m2]; STONE FLOOR [16 h]; Cost |  |  | 326 | 955 | C03PA09601C0 | CB | C | 03 | PA | FF | 096 | 01 | BILL 4 | B04 | S1 | 09 | R00 | ACF06 | ST | R3 |  |  |  |  |  |  |  |  |  |  |  |  |  |  |  |
| C03PA09903C0 |  | CB-03 ; Wall Final Paint (Public Area) | 36d | 2012-05-10 | 2012-06-21 | C03PA09901C0, C03PA09905C0 |  |  |  |  | 110.12d | 66d | WALL PAINT [260 h]; WALL PAINT [323 m2]; Cost |  |  | 329 | 957 | C03PA09903C0 | CB | C | 03 | PA | PA | 099 | 03 | BILL 4 | B04 | S1 | 02 | R00 | ACF06 | 099 |  |  |  |  |  |  |  |  |  |  |  |  |  |  |  |  |
| C03PA09905C0 |  | CB-03 ; Ceiling Prime & 1st coat (Public Area) | 0d | 2012-05-10 | 2012-05-10 | C03PA09501C0 |  |  |  |  | 110.12d | 0d | Cost |  |  | 330 | 958 | C03PA09905C0 | CB | C | 03 | PA | PA | 099 | 05 | BILL 4 | B04 | S1 | 01 | R00 | ACF06 | 099 |  |  |  |  |  |  |  |  |  |  |  |  |  |  |  |  |
| C03PA21115C0 |  | CB-03 ; 2nd Fix, Inst of Sprinkler droppers (Public Area) | 30d | 2012-05-10 | 2012-06-13 | C03PA09501C0 |  |  |  |  | 39.38d | 0d | MECHANICAL [1404 h]; Cost |  |  |  |  | C03PA21115C0 | CB | C | 03 | PA | ME | 211 | 15 | BILL 4 | B04 | S1 | 2F | R00 | ACF07 | 211 |  |  | 2n | MEP |  |  |  |  |  |  |  |  |  |  |  |  |
| C03PA23021C0 |  | CB-03 ; 2nd Fix, Inst of Flexible Duct & Plenum boxes (Public Area) | 42d | 2012-05-10 | 2012-06-28 | C03PA09205C0, C03PA09501C0 |  |  |  |  | 40.38d | 0d | MECHANICAL [903.6 h]; Cost |  |  |  |  | C03PA23021C0 | CB | C | 03 | PA | ME | 230 | 21 | BILL 4 | B04 | S1 | 2F | R00 | ACF07 | 230 |  |  | 2n | MEP |  |  |  |  |  |  |  |  |  |  |  |  |
| C03PA26015C0 |  | CB-03 ; Final Fix, Termination & Gladding of Cables (Public Area) | 48d | 2012-05-10 | 2012-07-05 | C03PA26005C0, C03PA09501C0 |  |  |  |  | 46.38d | 7d | ELECTRICAL [826.8 h]; Cost |  |  |  |  | C03PA26015C0 | CB | C | 03 | PA | ME | 260 | 15 | BILL 4 | B04 | S1 | FF | R00 | ACF07 | 260 |  |  | FF | MEP |  |  |  |  |  |  |  |  |  |  |  |  |
| C03PA26017C0 |  | CB-03 ; Final Fix, Inst of Ceiling rose (Public Area) | 48d | 2012-05-10 | 2012-07-05 | C03PA09501C0 |  |  |  |  | 39.38d | 0d | ELECTRICAL [123.6 h]; Cost |  |  |  |  | C03PA26017C0 | CB | C | 03 | PA | ME | 260 | 17 | BILL 4 | B04 | S1 | FF | R00 | ACF07 | 260 |  |  | FF | MEP |  |  |  |  |  |  |  |  |  |  |  |  |
| C03PA27002C0 |  | CB-03 ; 2nd Fix, Wiring Droppers (Public Area) | 42d | 2012-05-10 | 2012-06-28 | C03PA09501C0 |  |  |  |  | 52.38d | 0d | ELECTRICAL [216 h]; Cost |  |  |  |  | C03PA27002C0 | CB | C | 03 | PA | ME | 270 | 02 | BILL 4 | B04 | S1 | 2F | R00 | ACF07 | 270 |  |  | 2n | MEP |  |  |  |  |  |  |  |  |  |  |  |  |
| C03PA40303C0 |  | CB-03 ; Final Fix, Pneumatic Station (Public Area) | 48d | 2012-05-10 | 2012-07-05 | C03PA09501C0 |  |  |  |  | 88.38d | 54d | MECHANICAL [2661.6 h]; Cost |  |  |  |  | C03E140303C0 | CB | C | 03 | PA | ME | 403 | 03 | BILL 4 | B04 | S1 | FF | R00 | ACF07 | 403 |  |  | FF | MEP |  |  |  |  |  |  |  |  |  |  |  |  |
| C03PA23019C0 |  | CB-03 ; Final Fix, Inst of Grilles & Diffusers (Public Area) | 48d | 2012-05-17 | 2012-07-12 | C03PA09501C0, C03PA23021C0 SS+6d |  |  |  |  | 40.38d | 1d | MECHANICAL [1970.4 h]; Cost |  |  |  |  | C03PA23019C0 | CB | C | 03 | PA | ME | 230 | 19 | BILL 4 | B04 | S1 | FF | R00 | ACF07 | 230 |  |  | FF | MEP |  |  |  |  |  |  |  |  |  |  |  |  |
| C03PA21113C0 |  | CB-03 ; Final Fix, Inst of Sprinklers head/ Extinguisher (Public Area) | 48d | 2012-05-19 | 2012-07-14 | C03PA09501C0, C03PA21115C0 SS+7d |  |  |  |  | 39.38d | 0d | MECHANICAL [278.4 h]; Cost |  |  |  |  | C03PA21113C0 | CB | C | 03 | PA | ME | 211 | 13 | BILL 4 | B04 | S1 | FF | R00 | ACF07 | 211 |  |  | FF | MEP |  |  |  |  |  |  |  |  |  |  |  |  |
| C03PA26003C0 |  | CB-03 ; Final Fix, Inst of Light fittings (Public Area) | 48d | 2012-05-19 | 2012-07-14 | C03PA09501C0, C03PA26017C0 SS+7d |  |  |  |  | 39.38d | 0d | ELECTRICAL [7983.6 h]; Cost |  |  |  |  | C03PA26003C0 | CB | C | 03 | PA | ME | 260 | 03 | BILL 4 | B04 | S1 | FF | R00 | ACF07 | 260 |  |  | FF | MEP |  |  |  |  |  |  |  |  |  |  |  |  |
| C03PA27030C0 |  | CB-03 ; Final Fix, Inst of ELV device (Detector/Speaker) (Public Area) | 48d | 2012-05-19 | 2012-07-14 | C03PA09501C0, C03PA27002C0 SS+7d |  |  |  |  | 81.38d | 47d | ELECTRICAL [2054.4 h]; Cost |  |  |  |  | C03PA27030C0 | CB | C | 03 | PA | ME | 270 | 30 | BILL 4 | B04 | S1 | FF | R00 | ACF07 | 270 |  |  | FF | MEP |  |  |  |  |  |  |  |  |  |  |  |  |
| C03PA08107C0 |  | CB-03 ; Doors (Public Area) | 36d | 2012-06-23 | 2012-08-02 | C03PA08103C0, C03PA09901C0, C03PA09601C0, C03PA09602C0 |  |  |  |  | 56.12d | 0d | ASSORTED DOORS [1410 h]; ASSORTED DOORS [141 no]; Cost |  |  | 317 | 948 | C03PA08107C0 | CB | C | 03 | PA | DO | 081 | 07 | BILL 4 | B04 | S1 | DR | R00 | ACF06 | 081 |  | 08 |  |  |  |  |  |  |  |  |  |  |  |  |  |  |
| C03PA09701C0 |  | CB-03 ; Wall finishes (ST, WD, WC) (Public Area) | 30d | 2012-06-23 | 2012-07-26 | C03PA27020C0 FF, C03PA09601C0, C03PA09602C0 |  |  |  |  | 34.38d | 0d | ASSORTED WALL FINISH [529 h]; ASSORTED WALL FINISH [607 m2]; Cost |  |  | 105 | 1002 | C03PA09701C0 | CB | C | 03 | PA | WF | 097 | 01 | BILL 4 | B04 | S1 | 01 | R00 | ACF06 | 097 |  |  |  |  |  |  |  |  |  |  |  |  |  |  |  |  |
| C03PA01006C0 |  | CB-03 ; 2nd, Ceiling Inspection by Consultants (Public Area) | 6d | 2012-07-15 | 2012-07-21 | C03PA21115C0, C03PA23009C0, C03PA23015C0, C03PA27002C0, C03PA09501C0, C03PA21113C0, C03PA23019C0, C03PA26003C0, C03PA26017C0, C03PA26015C0 |  |  |  |  | 39.38d | 5d | Labor General [0.6 h]; Cost |  |  |  |  | C03PA01006C0 | CB | C | 03 | PA | ME | 010 | 06 | BILL 4 | B04 | S1 | CI | R00 | ACF07 | 010 |  |  | 2n | MEP |  |  |  |  |  |  |  |  |  |  |  |  |
| C03PA09503C0 |  | CB-03 ; Ceiling closure - ACT/Gypsum (Public Area) | 24d | 2012-07-28 | 2012-08-26 | C03PA01006C0, C03PA21115C0, C03PA26005C0, C03PA27002C0, CAFOA09503C1 FF, C03PA09701C0, C03PA23021C0, C03PA26007C0 |  |  |  |  | 34.38d | 0d | ASSORTED CEILING FINISH [951.4 h]; CEILING GYPSUM [139.81 h]; ASSORTED CEILING FINISH [1547 m2]; CEILING GYPSUM [390 m2]; Cost |  |  | 324 | 953 | C03PA09503C0 | CB | C | 03 | PA | CE | 095 | 03 | BILL 4 | B04 | S1 | 02 | R00 | ACF06 | 095 | R3 |  |  |  |  |  |  |  |  |  |  |  |  |  |  |  |
| C03PA11001C0 |  | CB-03 ; Wall Protection (WP, CG, WG, FCG) (Public Area) | 24d | 2012-07-28 | 2012-08-26 | C03PA09701C0, C03PA09903C0 SS |  |  |  |  | 56.12d | 21.75d | FF&E [21 h]; Cost |  |  | 326 | 1001 | C03PA11001C0 | CB | C | 03 | PA | WF | 110 | 01 | BILL 4 | B04 | S1 | 03 | R00 | ACF08 | b |  |  |  |  |  |  |  |  |  |  |  |  |  |  |  |  |
| C03PA11009C0 |  | CB-03 ; Signage (Public Area) | 12d | 2012-07-28 | 2012-08-09 | C03PA09701C0 |  |  |  |  | 68.12d | 33.75d | SIGNAGES [331 h]; SIGNAGES [331.2 no]; Cost |  |  | 322 | 951 | C03PA11009C0 | CB | C | 03 | PA | SA | 110 | 09 | BILL 4 | B04 | S1 | 09 | R00 | ACF08 | c |  | 08 |  |  |  |  |  |  |  |  |  |  |  |  |  |  |
| C03PA08709C0 |  | CB-03 ; Ironmongery (Public Area) | 18d | 2012-08-04 | 2012-08-26 | C03PA08107C0 |  |  |  |  | 56.12d | 44.9d | IRONMONGERY [1510 h]; IRONMONGERY [151 no]; Cost |  |  | 322 | 951 | C03PA08709C0 | CB | C | 03 | PA | DO | 087 | 09 | BILL 4 | B04 | S1 | IM | R00 | ACF06 | 087 |  | 08 |  |  |  |  |  |  |  |  |  |  |  |  |  |  |

| ID | WBS | Activity | Duration | Start | Finish | Predecessors | Complete | Remaining | Planned start | Planned finish | Total float | Free float | Resources | Cost | Actual cost | Change Order # | NEW ACTIVITY ID | change id | CCAD BUILDING(SET) | CCAD PHASE(SET) | CCAD FLOOR(SET) | CCAD ZONE(SET) | CCAD WORK(SET) | CCAD SECTION(SET) | CCAD SERIAL No.(SET) | CCAD CBS(SET) | CCAD BILL(SET) | CCAD HANDOVER(SET) | CCAD TAG(SET) | CCAD REV(SET) | CCADACF (SET) | CCAD SSCF | CCAD SUB ZONE MEP(SET) | CCAD CSA | user_number8 | user_integer1 | user_integer2 | user_number7 | RENZ % COMPLETE | Claimed This Month | P_811 | P_711 | Act Selector % | July2011 Target% Complete | CCAD MEQ | CCAD DIVISION(SET) | IDDD |
| --- | --- | --- | --- | --- | --- | --- | --- | --- | --- | --- | --- | --- | --- | --- | --- | --- | --- | --- | --- | --- | --- | --- | --- | --- | --- | --- | --- | --- | --- | --- | --- | --- | --- | --- | --- | --- | --- | --- | --- | --- | --- | --- | --- | --- | --- | --- | --- |
| C03PA09907C0 |  | CB-03 ; Ceiling Final paint (Public Area) | 0d | 2012-08-27 | 2012-08-27 | C03PA09601C0, C03PA09905C0, C03PA09602C0, C03PA09503C0 |  |  |  |  | 56.12d | 21.75d | Cost |  |  | 331 | 959 | C03PA09907C0 | CB | C | 03 | PA | PA | 099 | 07 | BILL 4 | B04 | S1 | 02 | R00 | ACF06 | 099 |  |  |  |  |  |  |  |  |  |  |  |  |  |  |  |
| C03PA26019C0 |  | CB-03 ; Final Fix, Inst of Switch/Sockets (Public Area) | 12d | 2012-08-27 | 2012-09-09 | C03PA09901C0, C03PA09501C0, C03PA09503C0 |  |  |  |  | 34.38d | 0d | ELECTRICAL [427.2 h]; Cost |  |  |  |  | C03PA26019C0 | CB | C | 03 | PA | ME | 260 | 19 | BILL 4 | B04 | S1 | FF | R00 | ACF07 | 260 | FF | MEP |  |  |  |  |  |  |  |  |  |  |  |  |  |
|  | 10 | **Precommissioning Tesing & snagging (Public Area)** |  | 2012-09-10 | 2012-10-20 |  |  |  |  |  |  |  |  |  |  |  |  |  |  |  |  |  |  |  |  |  |  |  |  |  |  |  |  |  |  |  |  |  |  |  |  |  |  |  |  |  |  |
| C03TS01805C0 |  | CB-03 ; MEP de-snag, FIREM sign-off | 9.75d | 2012-09-10 | 2012-09-20 | C03PA26015C0, C03PA40303C0, C03PA21113C0, C03PA23019C0, C03PA26017C0, C03PA26003C0, C03PA27030C0, C03PA26019C0 |  |  |  |  | 34.38d | 0d | TESTING & COMMISSIONING [1020 h]; Cost |  |  |  |  | C03TS01801C0 | CB | C | 03 | TS | SC | 018 | 01 | BILL 4 | B04 | S1 | 01 | R00 | ACF07 | 018 |  |  |  |  |  |  |  |  |  |  |  |  |  |  |  |
| C03TS01808C0 |  | CB-03 ; Touch-up & Clean / JV inspection /CIR /De-snag | 17.88d | 2012-09-20 | 2012-10-11 | C03PA09601C0, C03PA09701C0, C03PA09903C0, C03PA09907C0, C03PA11001C0, C03PA11009C0, C03TS01805C0, C03PA05501C0, C03PA09602C0, C03PA09503C0 |  |  |  |  | 34.38d | 0d | TESTING & COMMISSIONING [149 h]; Cost |  |  |  |  | C03TS01802C0 | CB | C | 03 | TS | SC | 018 | 02 | BILL 4 | B04 | S1 | 02 | R00 | ACF07 | 018 |  |  |  |  |  |  |  |  |  |  |  |  |  |  |  |
| C03TS01811C0 |  | CB-03 ; Consultant's final de-snag inspection | 7d | 2012-10-11 | 2012-10-20 | C03TS01808C0 |  |  |  |  | 34.38d | 27.05d | Labor General [1 h]; Cost |  |  |  |  | C03TS01803C0 | CB | C | 03 | TS | SC | 018 | 03 | BILL 4 | B04 | S1 | 03 | R00 | ACF07 | 018 |  |  |  |  |  |  |  |  |  |  |  |  |  |  |  |
|  | 06 | **TR Room** |  | 2011-05-15 | 2012-10-22 |  |  |  |  |  |  |  |  |  |  |  |  |  |  |  |  |  |  |  |  |  |  |  |  |  |  |  |  |  |  |  |  |  |  |  |  |  |  |  |  |  |  |
| C03TR09201C0 |  | CB-03 ; Metal Studs (TR RM) | 18d | 2011-05-15 A | 2011-11-13 | C03PA09201C0, A10290 FS+79d | 90% | 1.8d | 2011-06-15 | 2011-07-07 | 25.15d | 0d | PARTITIONS [664 h]; PARTITIONS - Metal Studs [95 m]; Cost |  |  | 313 | 885 | C03TR09201C0 | CB | C | 03 | TR | PT | 092 | 01 | BILL 4 | B04 | S1 | 1F | R00 | ACF06 | 092 |  | GP | 0 | 0 | 0 | 0 | 25 | 15389.53 | 85 | 70 | PMS |  |  |  |  |
| C03TR09203C0 |  | CB-03 ; Partitions 1st face (TR RM) | 40d | 2011-05-17 A | 2011-11-24 | C03TR09201C0 SS+12d | 71% | 11.6d | 2011-06-30 | 2011-08-16 | 47.15d | 31.4d | PARTITIONS [95 m]; PARTITIONS [516 h]; Cost |  |  | 314 | 886 | C03TR09203C0 | CB | C | 03 | TR | PT | 092 | 03 | BILL 4 | B04 | S1 | 2F | R00 | ACF06 | 092 |  | GP | 0 | 0 | 0 | 0 | 2 | 8004.7 | 55 | 30 | P1F |  |  |  |  |
| C03TR26026C0 |  | CB-03 ; 2nd Fix, Conduit (TR RM) | 36d | 2011-06-11 A | 2011-12-08 | C03TR09201C0 SS+6d | 40% | 21.6d | 2011-06-11 | 2011-07-24 | 25.15d | 0d | ELECTRICAL [430.8 h]; Cost [29580.4 AED] | 29,580.43 | 11,832.17 |  |  | C03TR26026C0 | CB | C | 03 | TR | ME | 260 | 26 | BILL 4 | B04 | S1 | 2F | R00 | ACF07 | 260 | 2n | MEP |  |  |  |  |  | 13718.26 |  |  |  | 40 |  |  |  |
| C03TR23013C0 |  | CB-03 ; 2nd Fix, Insulation of CHW pipe & Duct (TR RM) | 54d | 2011-07-10 A | 2012-03-11 | C03TR23009C0 SS, C03TR23011C0 SS | 50% | 27d | 2011-09-28 | 2011-12-06 | 66.75d | 22.4d | MECHANICAL [6742.8 h]; Cost [363863 AED] | 363,863.22 | 181,931.61 |  |  | C03TR23013C0 | CB | C | 03 | TR | ME | 230 | 13 | BILL 4 | B04 | S1 | 2F | R00 | ACF07 | 230 | 2n | MEP |  |  |  |  |  |  | 50 | 35 |  | 25 |  |  |  |
| C03TR26009C0 |  | CB-03 ; 2nd Fix, Inst of Equipment (DB, TR, SG,BUS) (TR RM) | 54d | 2011-08-02 A | 2012-03-27 | C03TR09201C0, C03TR09205C0 | 25% | 40.5d | 2012-02-13 | 2012-04-16 | 89.25d | 80.9d | ELECTRICAL [14013.6 h]; Cost [3188823 AED] | 3,188,823.2 | 797,205.8 |  |  | C03TR26009C0 | CB | C | 03 | TR | ME | 260 | 09 | BILL 4 | B04 | S1 | 2F | R00 | ACF04 | 260 | 2n | MEP | 0 | 0 | 0 | 0 |  |  | 20 | 0 |  |  | E |  |  |
| C03TR08101C0 |  | CB-03 ; Door Frames (TR RM) | 18d | 2011-11-27 | 2011-12-18 | C03TR09201C0, GNHE08101C0 FS+93d |  |  |  |  | 58.75d | 43d | ASSORTED DOORS [3 h]; Cost |  |  | 316 | 20001090 | C03TR08101C0 | CB | C | 03 | TR | DO | 081 | 01 | BILL 4 | B04 | S1 | DF | R00 | ACF06 | 081 |  |  |  |  |  |  |  |  |  |  |  |  |  | 08 |  |
| C03TR01005C0 |  | CB-03 ; 2nd, Wall Inspection by Consultant (TR RM) | 12d | 2011-12-08 | 2011-12-22 | C03TR26026C0 |  |  |  |  | 25.15d | 9.4d | Labor General [0.6 h]; Cost |  |  |  |  | C03TR01005C0 | CB | C | 03 | TR | ME | 010 | 05 | BILL 4 | B04 | S1 | WI | R00 | ACF07 | 010 | 2n | MEP |  |  |  |  |  |  |  |  |  |  |  |  |  |
| C03TR09205C0 |  | CB-03 ; Partitions Closing (TR RM) | 30d | 2012-01-04 | 2012-02-08 | C03TR01005C0, C03TR09201C0, C03TR09203C0, CAFOA09204C1 FF, C03TR08101C0 FF, C03PA09205C0 SS |  |  |  |  | 15.75d | 0d | PARTITIONS [95 m]; PARTITIONS [669 h]; Cost |  |  | 315 | 887 | C03TR09205C0 | CB | C | 03 | TR | PT | 092 | 05 | BILL 4 | B04 | S1 | FF | R00 | ACF06 | 092 |  | GP |  |  |  |  |  |  |  |  | P2F |  |  |  |  |
| C03TR23009C0 |  | CB-03 ; 2nd Fix, Inst of VAV'S CHW connection (TR RM) | 30d | 2012-02-09 | 2012-03-14 | C03TR09201C0, C03TR09205C0 |  |  |  |  | 63.75d | 0d | MECHANICAL [1419.6 h]; Cost |  |  |  |  | C03TR23009C0 | CB | C | 03 | TR | ME | 230 | 09 | BILL 4 | B04 | S1 | 2F | R00 | ACF07 | 230 | 2n | MEP |  |  |  |  |  |  |  |  |  | 20 |  |  |  |
| C03TR23011C0 |  | CB-03 ; 2nd Fix, Inst of VCD's/FD's (TR RM) | 30d | 2012-02-09 | 2012-03-14 | C03TR09201C0, C03TR09205C0 |  |  |  |  | 63.75d | 0d | MECHANICAL [2648.4 h]; Cost |  |  |  |  | C03TR23011C0 | CB | C | 03 | TR | ME | 230 | 11 | BILL 4 | B04 | S1 | 2F | R00 | ACF07 | 230 | 2n | MEP |  |  |  |  |  |  |  |  |  | 20 |  |  |  |
| C03TR26027C0 |  | CB-03 ; 2nd Fix, Wiring / Cabling (TR RM) | 30d | 2012-02-09 | 2012-03-14 | C03TR09203C0, C03TR09205C0 |  |  |  |  | 69.75d | 43.4d | ELECTRICAL [216 h]; Cost |  |  | 417 | 1318 | C03TR26027C0 | CB | C | 03 | TR | ME | 260 | 27 | BILL 4 | B04 | S1 | 2F | R00 | ACF07 | 260 | 2n | MEP |  |  |  |  |  |  |  |  |  | 20 |  |  |  |
| C03TR09901C0 |  | CB-03 ; Wall Prime & 1st coat (TR RM) | 18d | 2012-02-18 | 2012-03-10 | C03TR09205C0, C03CO04455C0 SS+7d, C03CO04455C0 FF |  |  |  |  | 8.35d | 0d | WALL PAINT [33 h]; WALL PAINT [39 m2]; Cost |  |  | 360 | 20001110 | C03TR09901C0 | CB | C | 03 | TR | PA | 099 | 01 | BILL 4 | B04 | S1 | 01 | R00 | ACF06 | 099 |  |  |  |  |  |  |  |  |  |  |  |  |  |  |  |
| C03TR09501C0 |  | CB-03 ; Ceiling grid and ServiceTile (TR RM) | 24d | 2012-03-10 | 2012-04-07 | C03TR09205C0 SS+15d, C03TR09901C0 |  |  |  |  | 8.35d | 0d | CEILING GRID FOR GYPSUM [214.28 h]; CEILING GRID FOR GYPSUM [18.34 m2]; Cost |  |  | 336 | 1327 | C03TR09501C0 | CB | C | 03 | TR | CE | 095 | 01 | BILL 4 | B04 | S1 | 01 | R00 | ACF06 | 095 |  |  |  |  |  |  |  |  |  |  |  |  |  |  | 1 |
| C03TR01006C0 |  | CB-03 ; 2nd, Ceiling Inspection by Consultants (TR RM) | 12d | 2012-04-07 | 2012-04-21 | C03TR23009C0, C03TR23011C0, C03TR23013C0, C03TR09501C0 |  |  |  |  | 44.35d | 36d | Labor General [0.6 h]; Cost |  |  |  |  | C03TR01006C0 | CB | C | 03 | TR | ME | 010 | 06 | BILL 4 | B04 | S1 | CI | R00 | ACF07 | 010 | 2n | MEP |  |  |  |  |  |  |  |  |  |  |  |  |  |
| C03TR09601C0 |  | CB-03 ; Floor Finishes (TR RM) | 18d | 2012-04-07 | 2012-04-28 | C03TR09501C0 |  |  |  |  | 8.35d | 0d | ASSORTED FLOOR FINISH [576 h]; ASSORTED FLOOR FINISH [318 m2]; Cost |  |  | 359 | 20001120 | C03TR09601C0 | CB | C | 03 | TR | FF | 096 | 01 | BILL 4 | B04 | S1 | 01 | R00 | ACF06 | FF |  |  |  |  |  |  |  |  |  |  |  |  |  |  |  |
| C03TR23023C0 |  | CB-03 ; 2nd Fix, Flexible ducts (TR RM) | 30d | 2012-04-07 | 2012-05-12 | C03TR09205C0, C03TR09501C0 |  |  |  |  | 26.35d | 18d | MECHANICAL [903.6 h]; Cost |  |  | 412 | 20001140 | C03TR23023C0 | CB | C | 03 | TR | ME | 230 | 23 | BILL 4 | B04 | S1 | 2F | R00 | ACF07 | 230 | 2n | MEP |  |  |  |  |  |  |  |  |  |  |  |  |  |
| C03TR26005C0 |  | CB-03 ; 2nd Fix, Wiring for Power/Lighting/Emergency (TR RM) | 30d | 2012-04-07 | 2012-05-12 | C03TR26026C0, C03TR26027C0 SS+6d, C03TR09501C0 |  |  |  |  | 26.35d | 18d | ELECTRICAL [216 h]; Cost |  |  |  |  | C03TR26005C0 | CB | C | 03 | TR | ME | 260 | 05 | BILL 4 | B04 | S1 | 2F | R00 | ACF07 | 260 | 2n | MEP |  |  |  |  |  |  |  |  |  | 20 |  |  |  |
| C03TR27002C0 |  | CB-03 ; 2nd Fix, Dressing of ELV panels (TR RM) | 30d | 2012-04-07 | 2012-05-12 | C03TR09205C0, C03TR27020C0 SS |  |  |  |  | 62.35d | 36d | ELECTRICAL [1284 h]; Cost |  |  |  |  | C03TR27002C0 | CB | C | 03 | TR | ME | 270 | 02 | BILL 4 | B04 | S1 | 2F | R00 | ACF07 | 270 | 2n | MEP |  |  |  |  |  |  |  |  |  |  |  |  |  |
| C03TR27020C0 |  | CB-03 ; 2nd Fix, Inst of ELV Equipment (Panels) (TR RM) | 30d | 2012-04-07 | 2012-05-12 | C03TR09205C0, C03TR09501C0 |  |  |  |  | 62.35d | 0d | ELECTRICAL [384 h]; Cost |  |  |  |  | C03TR27020C0 | CB | C | 03 | TR | ME | 270 | 20 | BILL 4 | B04 | S1 | 2F | R00 | ACF04 | 270 | 2n | MEP |  |  |  |  |  |  |  |  |  |  | E |  |  |
| C03TR08105C0 |  | CB-03 ; Doors (TR RM) | 18d | 2012-04-28 | 2012-05-19 | C03TR08101C0, C03TR09901C0, C03TR09601C0 |  |  |  |  | 84.35d | 0d | ASSORTED DOORS [10 h]; ASSORTED DOORS [1 no]; Cost |  |  | 317 | 1325 | C03TR08105C0 | CB | C | 03 | TR | DO | 081 | 05 | BILL 4 | B04 | S1 | DR | R00 | ACF06 | 081 |  |  |  |  |  |  |  |  |  |  |  |  |  | 08 |  |
| C03TR21115C0 |  | CB-03 ; 2nd Fix, Gaseous Fire Suppression (TR RM) | 30d | 2012-04-28 | 2012-06-02 | C03TR09601C0 |  |  |  |  | 8.35d | 0d | MECHANICAL [3854.4 h]; Cost |  |  | 411 | 20001130 | C03TR21115C0 | CB | C | 03 | TR | ME | 211 | 15 | BILL 4 | B04 | S1 | 2F | R00 | ACF07 | 211 | 2n | MEP |  |  |  |  |  |  |  |  |  | 10 |  |  |  |
| C03TR08709C0 |  | CB-03 ; Ironmongery (TR RM) | 20d | 2012-05-19 | 2012-06-11 | C03TR08105C0 |  |  |  |  | 84.35d | 76d | IRONMONGERY [100 h]; IRONMONGERY [10 no]; Cost |  |  | 322 | 20001100 | C03TR08709C0 | CB | C | 03 | TR | DO | 087 | 09 | BILL 4 | B04 | S1 | IM | R00 | ACF06 | 087 |  |  |  |  |  |  |  |  |  |  |  |  |  | 08 |  |
| C03TR09503C0 |  | CB-03 ; Ceiling closure (TR RM) | 18d | 2012-06-02 | 2012-06-24 | C03TR01006C0, C03TR21115C0, C03TR26005C0, C03TR26026C0, C03TR26027C0 FF, C03TR23023C0 |  |  |  |  | 8.35d | 0d | ASSORTED CEILING FINISH [92.25 h]; CEILING GYPSUM [5.95 h]; ASSORTED CEILING FINISH [150 m2]; CEILING GYPSUM [38 m2]; Cost |  |  | 337 | 20001080 | C03TR09503C0 | CB | C | 03 | TR | CE | 095 | 03 | BILL 4 | B04 | S1 | 02 | R00 | ACF06 | 095 |  |  |  |  |  |  |  |  |  |  |  |  |  |  |  |
| C03TR09903C0 |  | CB-03 ; Wall - Final Paint (TR RM) | 12d | 2012-06-24 | 2012-07-08 | C03TR09503C0, C03TR09901C0 |  |  |  |  | 62.35d | 54d | WALL PAINT [18 h]; WALL PAINT [21 m2]; Cost |  |  | 361 | 1312 | C03TR09903C0 | CB | C | 03 | TR | PA | 099 | 03 | BILL 4 | B04 | S1 | 02 | R00 | ACF06 | 099 |  |  |  |  |  |  |  |  |  |  |  |  |  |  |  |
| C03TR09905C0 |  | CB-03 ; Ceiling Prime & 1st coat (TR RM) | 0d | 2012-06-24 | 2012-06-24 | C03TR09503C0 |  |  |  |  | 65.5d | 0d | Cost |  |  | 362 | 1313 | C03TR09905C0 | CB | C | 03 | TR | PA | 099 | 05 | BILL 4 | B04 | S1 | 01 | R00 | ACF06 | 099 |  |  |  |  |  |  |  |  |  |  |  |  |  |  |  |
| C03TR09907C0 |  | CB-03 ; Ceiling - Final paint (TR RM) | 0d | 2012-06-24 | 2012-06-24 | C03TR09905C0 |  |  |  |  | 65.5d | 0d | Cost |  |  | 363 | 1314 | C03TR09907C0 | CB | C | 03 | TR | PA | 099 | 07 | BILL 4 | B04 | S1 | 02 | R00 | ACF06 | 099 |  |  |  |  |  |  |  |  |  |  |  |  |  |  |  |
| C03TR23074C0 |  | CB-03 ; Final Fix, Grilles, panels & diffusers (TR RM) | 30d | 2012-06-24 | 2012-07-29 | C03TR09503C0 |  |  |  |  | 26.35d | 18d | MECHANICAL [1970.4 h]; Cost |  |  | 419 | 20001160 | C03TR23074C0 | CB | C | 03 | TR | ME | 230 | 74 | BILL 4 | B04 | S1 | FF | R00 | ACF07 | 230 | FF | MEP |  |  |  |  |  |  |  |  |  |  |  |  |  |
| C03TR26015C0 |  | CB-03 ; Final Fix, Inst of Ceiling rose (TR RM) | 30d | 2012-06-24 | 2012-07-29 | C03TR09503C0 |  |  |  |  | 8.35d | 0d | ELECTRICAL [123.6 h]; Cost |  |  |  |  | C03TR26015C0 | CB | C | 03 | TR | ME | 260 | 15 | BILL 4 | B04 | S1 | FF | R00 | ACF07 | 260 | FF | MEP |  |  |  |  |  |  |  |  |  |  |  |  |  |
| C03TR27030C0 |  | CB-03 ; Final Fix, Inst of ELV device (Detector/Speaker) (TR RM) | 30d | 2012-06-24 | 2012-07-29 | C03TR09503C0, C03TR27002C0 |  |  |  |  | 26.35d | 18d | ELECTRICAL [2054.4 h]; Cost |  |  |  |  | C03TR27030C0 | CB | C | 03 | TR | ME | 270 | 30 | BILL 4 | B04 | S1 | FF | R00 | ACF07 | 270 | FF | MEP |  |  |  |  |  |  |  |  |  |  |  |  |  |
| C03TR26013C0 |  | CB-03 ; Final Fix, Termination & Gladding of Cables (TR RM) | 30d | 2012-07-01 | 2012-08-05 | C03TR09503C0, C03TR26015C0 SS+6d, C03TR26009C0 |  |  |  |  | 8.35d | 0d | ELECTRICAL [826.8 h]; Cost |  |  |  |  | C03TR26013C0 | CB | C | 03 | TR | ME | 260 | 13 | BILL 4 | B04 | S1 | FF | R00 | ACF07 | 260 | FF | MEP |  |  |  |  |  |  |  |  |  |  |  |  |  |
| C03TR26017C0 |  | CB-03 ; Final Fix, Inst of Switch/Sockets (TR RM) | 12d | 2012-07-08 | 2012-07-22 | C03TR09503C0, C03TR09901C0, C03TR26013C0 SS+6d, C03TR09503C0 FF |  |  |  |  | 8.35d | 0d | ELECTRICAL [427.2 h]; Cost |  |  |  |  | C03TR26017C0 | CB | C | 03 | TR | ME | 260 | 17 | BILL 4 | B04 | S1 | FF | R00 | ACF07 | 260 | FF | MEP |  |  |  |  |  |  |  |  |  |  |  |  |  |
| C03TR26076C0 |  | CB-03 ; Final Fix, Lighting fittings (TR RM) | 30d | 2012-07-15 | 2012-08-21 | C03TR09503C0, C03TR26017C0 SS+6d |  |  |  |  | 8.35d | 0d | ELECTRICAL [7983.6 h]; Cost |  |  | 420 | 20001170 | C03TR26076C0 | CB | C | 03 | TR | ME | 260 | 76 | BILL 4 | B04 | S1 | FF | R00 | ACF07 | 260 | FF | MEP |  |  |  |  |  |  |  |  |  |  |  |  |  |
| C03TR01802C0 |  | CB-03 ; MEP de-snag, FIREM sign-off | 18d | 2012-08-21 | 2012-09-11 | C03TR26076C0, C03TR26017C0, C03TR27030C0, C03TR23074C0 |  |  |  |  | 8.35d | 0d | TESTING & COMMISSIONING [510 h]; Cost |  |  | 396 |  | CP3TR01851C0 | CB | C | 03 | TR | SC | 018 | 53 | BILL 4 | B04 | S1 | 01 | R00 | ACF07 | 018 |  |  |  |  |  |  |  |  |  |  |  |  |  |  |  |
| C03TR01801C0 |  | CB-03 ; Touch-up & Clean / JV inspection /CIR /De-snag | 24d | 2012-09-11 | 2012-10-09 | C03TR01802C0, C03TR09601C0, C03TR09903C0, C03TR09907C0, C03TR08709C0 |  |  |  |  | 8.35d | 0d | TESTING & COMMISSIONING [85 h]; Cost |  |  | 396 |  | C03TR01851C0 | CB | C | 03 | TR | SC | 018 | 51 | BILL 4 | B04 | S1 | 02 | R00 | ACF07 | 018 |  |  |  |  |  |  |  |  |  |  |  |  |  |  |  |
| C03TR01803C0 |  | CB-03 ; Consultant's final de-snag inspection | 11.25d | 2012-10-09 | 2012-10-22 | C03TR01801C0 |  |  |  |  | 8.35d | 0d | Labor General [1 h]; Cost |  |  |  |  | CP3TS01803C0 | CB | C | 03 | TR | SC | 018 | 03 | BILL 4 | B04 | S1 | 03 | R00 | ACF07 | 018 |  |  |  |  |  |  |  |  |  |  |  |  |  |  |  |

| ID | WBS | Activity | Type | Duration | Start | Finish | Predecessors | Complete | Remaining | Planned start | Planned finish | Total float | Free float | Constraint | Resources | Change Order # | NEW ACTIVITY ID | change id | RENZ % COMPLETE | CCAD BUILDING(SET) | CCAD PHASE(SET) | CCAD DIVISION(SET) | CCAD FLOOR(SET) | CCAD ZONE(SET) | CCAD WORK(SET) | CCAD SECTION(SET) | CCAD SERIAL No.(SET) | CCAD CBS(SET) | CCAD BILL(SET) | CCAD HANDOVER(SET) | CCAD TAG(SET) | CCAD REV(SET) | CCADACF (SET) | CCAD SSCF | Actual Cost | CCAD CSA | Claimed This Month | user_number8 | user_integer1 | user_integer2 | user_number7 | P_811 | P_711 |
| --- | --- | --- | --- | --- | --- | --- | --- | --- | --- | --- | --- | --- | --- | --- | --- | --- | --- | --- | --- | --- | --- | --- | --- | --- | --- | --- | --- | --- | --- | --- | --- | --- | --- | --- | --- | --- | --- | --- | --- | --- | --- | --- | --- |
|  | 04 | **Level 4** |  |  | 2010-10-24 | 2012-11-21 |  |  |  |  |  |  |  |  |  |  |  |  |  |  |  |  |  |  |  |  |  |  |  |  |  |  |  |  |  |  |  |  |  |  |  |  |  |
|  | 01 | **Structure & Envelopment** |  |  | 2010-10-24 | 2012-06-04 |  |  |  |  |  |  |  |  |  |  |  |  |  |  |  |  |  |  |  |  |  |  |  |  |  |  |  |  |  |  |  |  |  |  |  |  |  |
| C04SD03311C0 |  | CB-04 ; Corewall concrete (Zone SD) |  | 5.88d | 2010-10-24 A | 2010-10-30 A | C03SD03311C0 | 100% |  | 2010-12-02 | 2010-12-09 |  |  |  | CONCRETE [4968 h]; CONCRETE [125 m3]; Cost | 301 | 326 | C04SD03311C0 | 100 | CB | C | 03 | 04 | SD | CT | 033 | 11 | BILL 4 | B04 | S1 | 04 | R00 | ACF03 | 033 |  |  |  |  |  |  |  |  |  |
| C04SC03311C0 |  | CB-04 ; Corewall concrete (Zone SC) |  | 6d | 2010-10-29 A | 2010-11-25 A | C03SC03311C0 | 100% |  | 2010-11-25 | 2010-12-01 |  |  |  | CONCRETE [4968 h]; CONCRETE [125 m3]; Cost | 301 | 322 | C04SC03311C0 | 100 | CB | C | 03 | 04 | SC | CT | 033 | 11 | BILL 4 | B04 | S1 | 04 | R00 | ACF03 | 033 |  |  |  |  |  |  |  |  |  |
| C04S105101C0 |  | CB-04 ; Erection of Structural Steel (Zone S1) |  | 7.42d | 2010-11-29 A | 2011-01-30 A | C03S105101C0, C03S105103C0, C04SC03311C0 | 100% |  | 2011-01-17 | 2011-01-25 |  |  |  | STRUCTURAL STEEL [5147 h]; STRUCTURAL STEEL [198 T(Fe)]; Cost | 297 | 318 | C04S105101C0 | 100 | CB | C |  | 04 | S1 | ST | 051 | 01 | BILL 4 | B04 | S1 | 01 | R00 | ACF03 | 051 | 1773027.51 | ST |  |  |  |  |  |  |  |
| C04S205101C0 |  | CB-04 ; Erection of Structural Steel (Zone S2) |  | 7.28d | 2010-12-03 A | 2011-01-31 A | C03S205101C0, C03S205103C0, C04SD03311C0 | 100% |  | 2011-01-12 | 2011-01-20 |  |  |  | STRUCTURAL STEEL [9994 h]; STRUCTURAL STEEL [385 T(Fe)]; Cost | 297 | 324 | C04S205101C0 | 100 | CB | C |  | 04 | S2 | ST | 051 | 01 | BILL 4 | B04 | S1 | 01 | R00 | ACF03 | 051 | 2350292.28 | ST |  |  |  |  |  |  |  |
| C04S105103C0 |  | CB-04 ; Alignment & welding (Zone S1) |  | 5d | 2010-12-15 A | 2011-02-18 A | C04S105101C0 | 100% |  | 2011-02-21 | 2011-02-27 |  |  |  | STRUCTURAL STEEL [473 h]; Cost | 298 | 319 | C04S105103C0 | 100 | CB | C |  | 04 | S1 | ST | 051 | 03 | BILL 4 | B04 | S1 | 02 | R00 | ACF03 | 051 |  | ST |  |  |  |  |  |  |  |
| C04S205103C0 |  | CB-04 ; Alignment & welding (Zone S2) |  | 5d | 2010-12-16 A | 2011-02-26 A | C04S205101C0 | 100% |  | 2011-02-16 | 2011-02-22 |  |  |  | STRUCTURAL STEEL [627 h]; Cost | 298 | 325 | C04S205103C0 | 100 | CB | C |  | 04 | S2 | ST | 051 | 03 | BILL 4 | B04 | S1 | 02 | R00 | ACF03 | 051 |  | ST |  |  |  |  |  |  |  |
| C04S105305C0 |  | CB-04 ; Metal Decking (Zone S1) |  | 16d | 2011-01-13 A | 2011-04-06 A | C04S105103C0, CR5S105101C0, S05S205101C0 | 100% |  | 2011-01-31 | 2011-02-19 |  |  |  | METAL DECKING [2038 h]; METAL DECKING [2580 m2]; Cost | 299 | 320 | C04S105305C0 | 100 | CB | C |  | 04 | S1 | ST | 053 | 05 | BILL 4 | B04 | S1 | 03 | R00 | ACF03 | 053 | 302975.64 | ST |  |  |  |  |  |  |  |
| C04S205305C0 |  | CB-04 ; Metal Decking (Zone S2) |  | 16d | 2011-01-15 A | 2011-04-07 A | C04S205103C0, CR5S205101C0 | 100% |  | 2011-01-23 | 2011-02-10 |  |  |  | METAL DECKING [2702 h]; METAL DECKING [3420 m2]; Cost | 299 | 327 | C04S205305C0 | 100 | CB | C |  | 04 | S2 | ST | 053 | 05 | BILL 4 | B04 | S1 | 03 | R00 | ACF03 | 053 | 401618.88 | ST |  |  |  |  |  |  |  |
| C04S103335C0 |  | CB-04 ; Concrete on metal decking (Zone S1) |  | 10d | 2011-02-09 A | 2011-04-11 A | C04S105305C0 | 100% |  | 2011-02-22 | 2011-03-06 |  |  |  | CONCRETE [13392 h]; CONCRETE [337 m3]; Cost | 302 | 323 | C04S103335C0 | 100 | CB | C | 03 | 04 | S1 | CT | 033 | 35 | BILL 4 | B04 | S1 | 08 | R00 | ACF03 | 033 |  |  |  |  |  |  |  |  |  |
| C04S203335C0 |  | CB-04 ; Concrete on metal decking (Zone S2) |  | 10d | 2011-02-14 A | 2011-04-12 A | C04S205305C0 | 100% |  | 2011-02-22 | 2011-03-06 |  |  |  | CONCRETE [17808 h]; CONCRETE [448 m3]; Cost | 302 | 328 | C04S203335C0 | 100 | CB | C | 03 | 04 | S2 | CT | 033 | 35 | BILL 4 | B04 | S1 | 08 | R00 | ACF03 | 033 |  |  |  |  |  |  |  |  |  |
| C04S107807C0 |  | CB-04 ; Cementitious Fire Proofing (Zone S1) |  | 10d | 2011-04-10 A | 2011-06-05 A | CR5S103335C0 | 100% |  | 2011-04-02 | 2011-04-13 |  |  |  | CEMENTITIOUS FIREPROOFING [1415 h]; CEMENTITIOUS FIREPROOFING [2829 m2]; Cost | 300 | 321 | C04S107807C0 | 95 | CB | C |  | 04 | S1 | ST | 078 | 07 | BILL 4 | B04 | S1 | 04 | R00 | ACF03 | 078 |  | ST | 12235.17 |  |  |  |  |  |  |
| C04S207808C0 |  | CB-04 ; Cementitious Fire Proofing (Zone S2) |  | 12d | 2011-05-01 A | 2011-06-05 A | CR5S203335C0 | 100% |  | 2011-05-31 | 2011-06-13 |  |  |  | CEMENTITIOUS FIREPROOFING [1875 h]; CEMENTITIOUS FIREPROOFING [3750 m2]; Cost | 300 | 329 | C04S207808C0 | 95 | CB | C |  | 04 | S2 | ST | 078 | 08 | BILL 4 | B04 | S1 | 04 | R00 | ACF03 | 078 |  | ST | 16218.44 |  |  |  |  |  |  |
| C04GN00808C0 |  | CB-04 ; Temporary Enclosure | level of effort | 89.25d | 2011-07-10 A | 2012-06-04 | C04TR09203C0 SS, C04M109203C0 SS |  | 206d | 2011-11-13 | 2012-02-29 | 94.9d | 0d |  | Labor General [0.6 h]; Cost |  |  |  |  | CB | C |  | 04 | GEN | FA | GEN |  |  | B04 |  | TE | R00 | ACF05 | 010 |  | FA |  |  |  |  |  |  |  |
| C04CO04401C0 |  | CB-04 ; S1 - Ex. partitions (Common Zone) |  | 66d | 2011-08-10 A | 2011-12-11 | C03CO04401C0 SS+28d, CR5S103335C0, CR5S203335C0, C04GN00808C0 FF | 30% | 46.2d | 2011-08-21 | 2011-11-10 | 61.05d | 0d |  | PARTITIONS [1594.73 m]; PARTITIONS [7942 h]; Cost | 940 | 193 | C04CO04401C0 |  | CB | C |  | 04 | CO | FA | 044 | 01 | BILL 4 | B04 | S1 | FS1 | R00 | ACF05 | 044 |  | FA |  | 0 | 0 | 0 | 0 | 20 | 0 |
| C04CO04408C0 |  | CB-04 ; Louvers Bracket (Common Zone) |  | 12d | 2011-08-10 A | 2011-08-30 A | C04CO04401C0 SS | 100% |  | 2011-08-21 | 2011-09-05 |  |  |  | FACADE SAND LOUVERS [1210.9 h]; Cost |  |  | I05CO04405C0 |  | CB | C |  | 04 | CO | FA | 044 | 05 | BILL 4 | B04 | S2 | FSL | R00 | ACF05 | 044 |  | FA |  |  |  |  |  | 100 | 0 |
| C04CO04415C0 |  | CB-04 ; PSG Steel grill transom & mullion (Common Zone) |  | 90d | 2011-08-10 A | 2011-12-21 | C04CO04401C0 | 90% | 9d | 2011-09-06 | 2011-12-25 | 182.93d | 48.8d |  | FACADE STEEL GRILL [1475.7 h]; Cost |  |  | I05CO04415C0 |  | CB | C |  | 04 | CO | FA | 044 | 15 | BILL 8 | B04 | S2 | PSG | R00 | ACF05 | 044 |  | FA |  |  |  |  |  | 50 | 0 |
| C04CO04417C1 |  | CB-04 ; Louvers transom & mullion (Common Zone) |  | 90d | 2011-08-10 A | 2011-10-22 | C04CO04408C0 | 90% | 9d | 2011-09-06 | 2011-12-25 | 205.12d | 71d |  | FACADE SAND LOUVERS [4842 h]; Cost |  |  | I05CO04417C0 |  | CB | C |  | 04 | CO | FA | 044 | 17 | BILL 4 | B04 | S2 | FSL | R00 | ACF05 | 044 |  | FA |  | 0 | 0 | 0 | 0 | 50 | 0 |
| C04CO04409C0 |  | CB-04 ; S1 Onyx Stone (Common Zone) |  | 66d | 2011-10-12 | 2012-01-03 | C04CO04401C0 SS, C03CO04409C0 SS |  |  |  |  | 62.13d | 0d |  | FACADE METAL PANEL 2 [3189.7 h]; FACADE STONE PANEL 1 [4230.1 h]; FACADE METAL PANEL 2 [1166 m2]; FACADE STONE PANEL 1 [1546 m2]; FACADE TOTAL QUANTITY m2 [2712 m2]; Cost | 941 | 194 | C04CO04409C0 |  | CB | C |  | 04 | CO | FA | 044 | 09 | BILL 4 | B04 | S1 | FS1 | R00 | ACF05 | 044 |  | FA |  |  |  |  |  |  |  |
| C04CO04455C0 |  | CB-04 ; S1 Inner Side of External Partition (Common Zone) |  | 48d | 2011-12-11 | 2012-02-07 | C04CO04401C0, C04M109205C0 SS |  |  |  |  | 61.05d | 52.04d |  | FACADE STONE PANEL 1 [7332.7 h]; Cost |  |  | DP3CO04415C0 |  | CB | C |  | 04 | CO | FA | 044 | 15 | BILL 5 | B04 | S1 | FS1 | R00 | ACF05 | 044 |  | FA |  |  |  |  |  |  |  |
| C04CO04413C1 |  | CB-04 ; Louvers installation (Common Zone) |  | 48d | 2012-01-21 | 2012-03-17 | C04CO04417C1 |  |  |  |  | 134.12d | 0d | start on or after 2012-01-20 | FACADE STEEL GRILL [2017.7 h]; Cost |  |  | I05CO04413C0 |  | CB | C |  | 04 | CO | FA | 044 | 13 | BILL 4 | B04 | S2 | FSL | R00 | ACF05 | 044 |  | FA |  |  |  |  |  |  |  |
| C04CO04412C0 |  | CB-04 ; PSG Steel grill (Common Zone) |  | 48d | 2012-02-19 | 2012-04-14 | C04CO04415C0, C04CO04413C1 SS+24d |  |  |  |  | 134.12d | 0d |  | FACADE STEEL GRILL [3541.5 h]; Cost |  |  | I05CO04411C0 |  | CB | C |  | 04 | CO | FA | 044 | 11 | BILL 8 | B04 | S2 | PSG | R00 | ACF05 | 044 |  | FA |  |  |  |  |  |  |  |
| C04CO04413C0 |  | CB-04 ; PSG Steel grill Bracket (Common Zone) |  | 42d | 2012-02-19 | 2012-04-07 | C04CO04412C0 SS |  |  |  |  | 257.5d | 0d |  | FACADE STEEL GRILL [885.5 h]; Cost |  |  | I05CO04407C0 |  | CB | C |  | 04 | CO | FA | 044 | 07 | BILL 8 | B04 | S2 | PSG | R00 | ACF05 | 044 |  | FA |  |  |  |  |  |  |  |
| C04CO04403C0 |  | CB-04 ; C3 - Bracket, mullion & transom (Panoramic Lifts) |  | 84d | 2012-02-28 | 2012-06-04 | C04S107807C0, C04S207808C0, CGLCO04405C0 |  |  |  |  | 94.9d | 0d |  | FACADE CURTAIN WALL 3 [448.8 h]; Cost | 938 | 191 | C04CO04403C0 |  | CB | C |  | 04 | CO | FA | 044 | 03 | BILL 4 | B04 | S1 | FC3 | R00 | ACF05 | 044 |  | FA |  |  |  |  |  |  |  |
| C04CO04405C0 |  | CB-04 ; C3 single glass (Panoramic Lifts) |  | 84d | 2012-02-28 | 2012-06-04 | C04CO04403C0 SS, C04GN00808C0 FF, C04CO04403C0 FF |  |  |  |  | 94.9d | 0d |  | FACADE CURTAIN WALL 3 [323.4 h]; FACADE CURTAIN WALL 3 [118 m2]; FACADE TOTAL QUANTITY m2 [118 m2]; Cost | 939 | 192 | C04CO04405C0 |  | CB | C |  | 04 | CO | FA | 044 | 05 | BILL 4 | B04 | S1 | FC3 | R00 | ACF05 | 044 |  | FA |  |  |  |  |  |  |  |

| ID | WBS | Activity | Duration | Start | Finish | Predecessors | Complete | Remaining | Planned start | Planned finish | Total float | Free float | Resources | Cost | Actual cost | change id | RENZ % COMPLETE | July2011 Target% Complete | P_811 | P_711 | CCAD BUILDING(SET) | CCAD PHASE(SET) | CCAD FLOOR(SET) | CCAD ZONE(SET) | CCAD WORK(SET) | CCAD SECTION(SET) | CCAD SERIAL No.(SET) | CCAD SUB ZONE MEP(SET) | CCAD CBS(SET) | CCAD BILL(SET) | CCAD HANDOVER(SET) | CCAD TAG(SET) | CCAD REV(SET) | CCADACF (SET) | CCAD CSA | CCAD SSCF | Act Selector % | Claimed This Month | user_number8 | user_integer1 | user_integer2 | user_number7 | Change Order # | NEW ACTIVITY ID | CCAD DIVISION(SET) | CCAD MEQ | TO BE DELETED |
| --- | --- | --- | --- | --- | --- | --- | --- | --- | --- | --- | --- | --- | --- | --- | --- | --- | --- | --- | --- | --- | --- | --- | --- | --- | --- | --- | --- | --- | --- | --- | --- | --- | --- | --- | --- | --- | --- | --- | --- | --- | --- | --- | --- | --- | --- | --- | --- |
|  | 04 | **Public Area ( Elev.Lobby & Corridors )** |  | 2011-04-04 | 2012-11-21 |  |  |  |  |  |  |  |  |  |  |  |  |  |  |  |  |  |  |  |  |  |  |  |  |  |  |  |  |  |  |  |  |  |  |  |  |  |  |  |  |  |  |
| C04PA23001C0 |  | CB-04 ; 1st Fix, Inst. of Supports for MEP (Public Area) | 120d | 2011-04-04 A | 2011-11-03 | C04S107807C0, C04S207808C0, CR5S103335C0, CR5S203335C0 | 75% | 30d | 2011-04-13 | 2011-09-04 | 9.01d | 0d | MECHANICAL [1024.8 h]; Cost [57766.2 AED] | 57,766.25 | 43,324.69 | C04PA23001C0 | 50 | 100 | 75 | 50 | CB | C | 04 | PA | ME | 230 | 01 | 1S | BILL 4 | B04 | S1 | 1F | R00 | ACF04 | MEP | 230 | M1F |  |  |  |  |  |  |  |  |  |  |
| C04PA26001C0 |  | CB-04 ; 1st Fix, Inst of Trunking/Conduiting (Public Area) | 60d | 2011-05-15 A | 2011-11-14 | C04PA23001C0 SS, C04S107807C0, C04S207808C0 | 40% | 36d | 2011-07-13 | 2011-09-24 | 31.01d | 0d | ELECTRICAL [430.8 h]; Cost [29580.4 AED] | 29,580.43 | 11,832.17 | C04PA26001C0 | 40 | 60 |  |  | CB | C | 04 | PA | ME | 260 | 01 | 1S | BILL 4 | B04 | S1 | 1F | R00 | ACF04 | MEP | 260 | M1F | 6859.13 |  |  |  |  |  |  |  |  |  |
| C04PA09201C0 |  | CB-04 ; Metal Studs (Public Area) | 60d | 2011-06-09 A | 2011-11-14 | C04PA23001C0 SS+12d, CAFAF26039C0 FF | 40% | 36d | 2011-10-10 | 2011-12-24 | 9.01d | 0d | PARTITIONS [1992 h]; PARTITIONS - Metal Studs [143 m]; Cost |  |  | C04PA09201C0 |  |  | 35 | 33 | CB | C | 04 | PA | PT | 092 | 01 |  | BILL 4 | B04 | S1 | 1F | R00 | ACF06 | GP | 092 | PMS | 53154.94 | 0 | 0 | 0 | 0 | 313 | 944 |  |  |  |
| C04PA09205C0 |  | CB-04 ; Partitions Closing (Public Area) | 48d | 2011-07-10 A | 2012-03-04 | C04PA01005C0, C04PA22005C0, C04PA22019C0, CAFAF26039C0 FF, CAFAF26045C0 FF, CAFOA09204C1 FF, C04PA08103C0 FF, C04PA23008C0 FF, C04PA21117C0 FF | 12% | 42.24d | 2012-01-11 | 2012-03-07 | 9.01d | 0d | PARTITIONS [54 m]; PARTITIONS [1881 h]; Cost |  |  | C04PA09205C0 |  |  | 10 | 5 | CB | C | 04 | PA | PT | 092 | 05 |  | BILL 4 | B04 | S1 | FF | R00 | ACF06 | GP | 092 | P2F |  | 0 | 0 | 0 | 0 | 315 | 946 |  |  |  |
| C04PA21111C0 |  | CB-04 ; 1st Fix, Inst of Sprinkler main pipe (Public Area) | 70d | 2011-07-10 A | 2011-12-25 | C04PA22005C0 SS+14d, C04PA23001C0 SS | 50% | 35d | 2011-08-24 | 2011-11-20 | 47.25d | 0d | MECHANICAL [686.4 h]; Cost [37438.4 AED] | 37,438.4 | 18,719.2 | C04PA21111C0 |  | 25 | 50 | 10 | CB | C | 04 | PA | ME | 211 | 11 | 1S | BILL 4 | B04 | S1 | 1F | R00 | ACF04 | MEP | 211 | M1F |  | 0 | 0 | 0 | 0 |  |  |  |  |  |
| C04PA21117C0 |  | CB-04 ; 1st Fix, Inst of Sprinkler branch pipe (Public Area) | 70d | 2011-07-10 A | 2011-12-25 | C04PA09201C0 SS, C04PA21111C0 SS | 50% | 35d | 2011-11-23 | 2012-02-16 | 66.25d | 57.24d | MECHANICAL [1009.2 h]; Cost [55153.8 AED] | 55,153.76 | 27,576.88 | C04PA21117C0 |  | 25 | 50 | 10 | CB | C | 04 | PA | ME | 211 | 17 | 1S | BILL 4 | B04 | S1 | 1F | R00 | ACF04 | MEP | 211 | M1F |  | 0 | 0 | 0 | 0 |  |  |  |  |  |
| C04PA22019C0 |  | CB-04 ; 1st Fix, Inst of Drainage pipe (ceiling) (Public Area) | 70d | 2011-07-10 A | 2011-12-08 | C04PA23001C0 SS, C04PA26013C0 SS+10d | 50% | 35d | 2011-08-08 | 2011-10-31 | 31.01d | 0d | PLUMBING [1714.8 h]; Cost [92715.9 AED] | 92,715.95 | 46,357.98 | C04PA22019C0 |  | 25 | 50 | 10 | CB | C | 04 | PA | ME | 220 | 19 | 1S | BILL 4 | B04 | S1 | 1F | R00 | ACF04 | MEP | 220 | M1F |  | 0 | 0 | 0 | 0 |  |  |  |  |  |
| C04PA23008C0 |  | CB-04 ; 1st Fix, Inst of VCD's/FD's (Public Area) | 42d | 2011-10-01 | 2011-11-21 | C04PA23023C0 SS |  |  |  |  | 93.25d | 84.24d | MECHANICAL [2648.4 h]; Cost |  |  | C04PA23008C0 |  | 35 |  |  | CB | C | 04 | PA | ME | 230 | 08 | 1S | BILL 4 | B04 | S1 | 1F | R00 | ACF04 | MEP | 230 | M1F |  |  |  |  |  |  |  |  |  |  |
| C04PA23023C0 |  | CB-04 ; 1st Fix, Inst of Main Ducting (Public Area) | 63d | 2011-10-01 | 2011-12-18 | C04PA23001C0 SS |  |  |  |  | 93.25d | 0d | MECHANICAL [15576 h]; Cost |  |  | C04PA23023C0 |  | 85 |  |  | CB | C | 04 | PA | ME | 230 | 23 | 1S | BILL 4 | B04 | S1 | 1F | R00 | ACF04 | MEP | 230 | M1F |  |  |  |  |  |  |  |  |  |  |
| C04PA27010C0 |  | CB-04 ; 1st Fix, Inst of Trunking for ELV system (Public Area) | 42d | 2011-10-01 | 2011-11-21 | C04PA23001C0 SS, C04PA26001C0 SS+12d, C04S107807C0, C04S207808C0 |  |  |  |  | 31.01d | 0d | ELECTRICAL [457.2 h]; Cost |  |  | C04PA27010C0 |  | 60 |  |  | CB | C | 04 | PA | ME | 270 | 10 | 1S | BILL 4 | B04 | S1 | 1F | R00 | ACF04 | MEP | 270 | M1F | 17190.43 |  |  |  |  |  |  |  |  |  |
| C04PA26013C0 |  | CB-04 ; 1st Fix, Inst of Cable Tray (Public Area) | 42d | 2011-10-12 | 2011-12-05 | C04PA23001C0 SS, C04PA27010C0 SS+10d, C04S107807C0, C04S207808C0 |  |  |  |  | 31.01d | 0d | ELECTRICAL [948 h]; Cost |  |  | C04PA26013C0 |  | 35 |  |  | CB | C | 04 | PA | ME | 260 | 13 | 1S | BILL 4 | B04 | S1 | 1F | R00 | ACF04 | MEP | 260 | M1F | 6945.57 |  |  |  |  |  |  |  |  |  |
| C04PA22005C0 |  | CB-04 ; 1st Fix, Inst of Water supply pipe (ceiling) (Public Area) | 42d | 2011-10-24 | 2011-12-17 | C04PA22019C0 SS, C04PA23001C0 SS |  |  |  |  | 31.01d | 0d | PLUMBING [1682.4 h]; Cost |  |  | C04PA22005C0 |  | 90 |  |  | CB | C | 04 | PA | ME | 220 | 05 | 1S | BILL 4 | B04 | S1 | 1F | R00 | ACF04 | MEP | 220 | M1F |  |  |  |  |  |  |  |  |  |  |
| C04PA23017C0 |  | CB-04 ; 1st Fix, Inst of CHW pipe (Public Area) | 42d | 2011-11-13 | 2012-01-03 | C04PA21111C0 SS+12d, C04PA23001C0 SS |  |  |  |  | 47.25d | 0d | MECHANICAL [2395.2 h]; Cost |  |  | C04PA23017C0 |  | 25 |  |  | CB | C | 04 | PA | ME | 230 | 17 | 1S | BILL 4 | B04 | S1 | 1F | R00 | ACF04 | MEP | 230 | M1F |  |  |  |  |  |  |  |  |  |  |
| C04PA22011C0 |  | CB-04 ; 2nd Fix, Drainage/Water pipe (wall) (Public Area) | 30d | 2011-11-15 | 2011-12-21 | C04PA09201C0 |  |  |  |  | 21.01d | 12d | PLUMBING [1714.8 h]; Cost |  |  | C04PA22011C0 |  | 25 |  |  | CB | C | 04 | PA | ME | 220 | 11 | 2n | BILL 4 | B04 | S1 | 2F | R00 | ACF07 | MEP | 220 |  |  |  |  |  |  |  |  |  |  |  |
| C04PA26009C0 |  | CB-04 ; 2nd Fix, Inst of Wall conduites (Public Area) | 42d | 2011-11-15 | 2012-01-05 | C04PA09201C0 |  |  |  |  | 9.01d | 0d | ELECTRICAL [430.8 h]; Cost |  |  | C04PA26009C0 |  | 30 |  |  | CB | C | 04 | PA | ME | 260 | 09 | 2n | BILL 4 | B04 | S1 | 2F | R00 | ACF07 | MEP | 260 |  | 10288.7 |  |  |  |  |  |  |  |  |  |
| C04PA27001C0 |  | CB-04 ; 1st Fix, Wiring/ Cabling work (Public Area) | 42d | 2011-12-06 | 2012-01-24 | C04PA26001C0, C04PA26013C0, C04PA27010C0 |  |  |  |  | 95.25d | 86.24d | ELECTRICAL [216 h]; Cost |  |  | C04PA27001C0 |  | 20 |  |  | CB | C | 04 | PA | ME | 270 | 01 | 1S | BILL 4 | B04 | S1 | 1F | R00 | ACF04 | MEP | 270 | M1F | 3598.69 |  |  |  |  |  |  |  |  |  |
| C04PA08103C0 |  | CB-04 ; Door Frames (Public Area) | 42d | 2011-12-15 | 2012-02-02 | C04PA09201C0, GNHE08101C0 FS+93d, C03PA08103C0 SS+3d |  |  |  |  | 33.25d | 24.24d | ASSORTED DOORS [129 h]; Cost |  |  | C04PA08103C0 |  |  |  |  | CB | C | 04 | PA | DO | 081 | 03 |  | BILL 4 | B04 | S1 | DF | R00 | ACF06 |  | 081 |  |  |  |  |  |  | 316 | 947 | 08 |  |  |
| C04PA23009C0 |  | CB-04 ; 2nd Fix, Inst of VAV'S CHW connection (Public Area) | 42d | 2012-01-04 | 2012-02-22 | C04PA23017C0 |  |  |  |  | 47.25d | 0d | MECHANICAL [1419.6 h]; Cost |  |  | C04PA23009C0 |  | 45 |  |  | CB | C | 04 | PA | ME | 230 | 09 | 2n | BILL 4 | B04 | S1 | 2F | R00 | ACF07 | MEP | 230 |  |  |  |  |  |  |  |  |  |  |  |
| C04PA23015C0 |  | CB-04 ; 2nd Fix, Insulation of CHW pipe & Duct (Public Area) | 36d | 2012-01-04 | 2012-02-15 | C04PA23009C0 SS, C04PA23017C0, C04PA23023C0 SS |  |  |  |  | 53.25d | 44.24d | MECHANICAL [6742.8 h]; Cost |  |  | C04PA23015C0 |  | 25 |  |  | CB | C | 04 | PA | ME | 230 | 15 | 2n | BILL 4 | B04 | S1 | 2F | R00 | ACF07 | MEP | 230 |  |  |  |  |  |  |  |  |  |  |  |
| C04PA01005C0 |  | CB-04 ; 2nd, Wall Inspection by Consultant (Public Area) | 6d | 2012-01-07 | 2012-01-12 | C04PA22011C0, C04PA26009C0 |  |  |  |  | 9.01d | 0d | Labor General [1.2 h]; Cost |  |  | C04PA01005C0 |  |  |  |  | CB | C | 04 | PA | ME | 010 | 05 | 2n | BILL 4 | B04 | S1 | WI | R00 | ACF07 | MEP | 010 |  |  |  |  |  |  |  |  |  |  |  |
| C04PA09901C0 |  | CB-04 ; Wall Prime & 1st coat (Public Area) | 30d | 2012-03-04 | 2012-04-08 | C04PA09205C0, C04CO04455C0 FF |  |  |  |  | 9.01d | 0d | WALL PAINT [159 h]; WALL PAINT [197 m2]; Cost |  |  | C04PA09901C0 |  |  |  |  | CB | C | 04 | PA | PA | 099 | 01 |  | BILL 4 | B04 | S1 | 01 | R00 | ACF06 |  | 099 |  |  |  |  |  |  | 328 | 956 |  |  |  |
| C04PA23011C0 |  | CB-04 ; 2nd Fix, Inst of Equipment (FCU,FAN) (Public Area) | 42d | 2012-03-04 | 2012-04-22 | C04PA09205C0 |  |  |  |  | 117.01d | 108d | MECHANICAL [988.8 h]; Cost |  |  | C04PA23011C0 |  |  |  |  | CB | C | 04 | PA | ME | 230 | 11 | 2n | BILL 4 | B04 | S1 | 2F | R00 | ACF04 | MEP | 230 |  |  |  |  |  |  |  |  |  | H |  |
| C04PA26005C0 |  | CB-04 ; 2nd Fix, Wiring for Power/Lighting/Emergency (Public Area) | 42d | 2012-03-04 | 2012-04-22 | C04PA09205C0 |  |  |  |  | 69.01d | 0d | ELECTRICAL [216 h]; Cost |  |  | C04PA26005C0 |  |  |  |  | CB | C | 04 | PA | ME | 260 | 05 | 2n | BILL 4 | B04 | S1 | 2F | R00 | ACF07 | MEP | 260 |  |  |  |  |  |  |  |  |  |  |  |
| C04PA26007C0 |  | CB-04 ; 2nd Fix, Cable Pulling (Public Area) | 42d | 2012-03-04 | 2012-04-22 | C04PA09201C0 SS+6d, C04PA09205C0 |  |  |  |  | 123.01d | 114d | ELECTRICAL [6616.8 h]; Cost |  |  | C04PA26007C0 |  | 25 |  |  | CB | C | 04 | PA | ME | 260 | 07 | 2n | BILL 4 | B04 | S1 | 2F | R00 | ACF07 | MEP | 260 |  |  |  |  |  |  |  |  |  |  |  |
| C04PA26011C0 |  | CB-04 ; 2nd Fix, Inst of Equipment (DB) (Public Area) | 42d | 2012-03-04 | 2012-04-22 | C04PA09205C0 |  |  |  |  | 21.01d | 12d | ELECTRICAL [1266 h]; Cost |  |  | C04PA26011C0 |  |  |  |  | CB | C | 04 | PA | ME | 260 | 11 | 2n | BILL 4 | B04 | S1 | 2F | R00 | ACF04 | MEP | 260 |  |  |  |  |  |  |  |  |  | E |  |
| C04PA26053C0 |  | CB-04 ; 2nd Fix, Wiring / Cabling (Public Area) | 30d | 2012-03-04 | 2012-04-08 | C04PA09205C0 |  |  |  |  | 135.01d | 126d | ELECTRICAL [216 h]; Cost |  |  | C04PA26053C0 |  |  |  |  | CB | C | 04 | PA | ME | 260 | 53 | 2n | BILL 4 | B04 | S1 | 2F | R00 | ACF07 | MEP | 260 |  |  |  |  |  |  | 389 | 977 |  |  |  |
| C04PA27020C0 |  | CB-04 ; 2nd Fix, Inst of ELV Equipment (Panels) (Public Area) | 42d | 2012-03-04 | 2012-04-22 | C04PA09205C0 |  |  |  |  | 87.01d | 28d | ELECTRICAL [384 h]; Cost |  |  | C04PA27020C0 |  |  |  |  | CB | C | 04 | PA | ME | 270 | 20 | 2n | BILL 4 | B04 | S1 | 2F | R00 | ACF04 | MEP | 270 |  |  |  |  |  |  |  |  |  | E |  |
| C04PA05501C0 |  | CB-04 ; Handrails & balustrade (Public Area) | 36d | 2012-04-08 | 2012-05-20 | C04PA09901C0, CAFT1405509C0, CAFT1505509C0, CAFT1105509C0, CAFT1205509C0 |  |  |  |  | 129.01d | 120d | SECONDARY STEEL [1121 h]; Cost |  |  | C04PA05501C0 |  |  |  |  | CB | C | 04 | PA | SW | 055 | 01 |  | BILL 4 | B04 | S1 | 01 | R00 | ACF03 |  | a |  |  |  |  |  |  |  |  |  |  |  |
| C04PA09501C0 |  | CB-04 ; Ceiling Grid and ServiceTile (Public Area) | 24d | 2012-04-08 | 2012-05-06 | C04PA09205C0 SS+12d, C04PA21117C0, C04PA23008C0, C04PA23009C0, C04PA23015C0, C04PA27001C0 SS+18d, C04PA26011C0 FF, C04PA09901C0 |  |  |  |  | 9.01d | 0d | CEILING GRID FOR GYPSUM [1451.26 h]; CEILING GRID FOR GYPSUM [124.14 m2]; Cost |  |  | C04PA09501C0 |  |  |  |  | CB | C | 04 | PA | CE | 095 | 01 |  | BILL 4 | B04 | S1 | 01 | R00 | ACF06 |  | 095 |  |  |  |  |  |  | 323 | 952 |  |  |  |
| C04PA26015C0 |  | CB-04 ; Final Fix, Termination & Gladding of Cables (Public Area) | 48d | 2012-04-22 | 2012-06-18 | C04PA26005C0 |  |  |  |  | 69.01d | 60d | ELECTRICAL [826.8 h]; Cost |  |  | C04PA26015C0 |  |  |  |  | CB | C | 04 | PA | ME | 260 | 15 | FF | BILL 4 | B04 | S1 | FF | R00 | ACF07 | MEP | 260 |  |  |  |  |  |  |  |  |  |  |  |
| C04PA09601C0 |  | CB-04 ; Floor Finishes (Public Area) | 16d | 2012-05-06 | 2012-05-24 | C04PA09901C0, C04PA09501C0, C04PA27020C0 FF |  |  |  |  | 59.01d | 0d | ASSORTED FLOOR FINISH [816 h]; ASSORTED FLOOR FINISH [449 m2]; Cost |  |  | C04PA09601C0 |  |  |  |  | CB | C | 04 | PA | FF | 096 | 01 |  | BILL 4 | B04 | S1 | 01 | R00 | ACF06 |  | FF |  |  |  |  |  |  | 326 | 955 |  |  | RENAME |
| C04PA09903C0 |  | CB-04 ; Wall Final Paint (Public Area) | 30d | 2012-05-06 | 2012-06-10 | C04PA09901C0, C04PA09905C0 |  |  |  |  | 120.01d | 52d | WALL PAINT [85 h]; WALL PAINT [106 m2]; Cost |  |  | C04PA09903C0 |  |  |  |  | CB | C | 04 | PA | PA | 099 | 03 |  | BILL 4 | B04 | S1 | 02 | R00 | ACF06 |  | 099 |  |  |  |  |  |  | 329 | 957 |  |  |  |
| C04PA09905C0 |  | CB-04 ; Ceiling Prime & 1st coat (Public Area) | 0d | 2012-05-06 | 2012-05-06 | C04PA09501C0 |  |  |  |  | 120.01d | 0d | Cost |  |  | C04PA09905C0 |  |  |  |  | CB | C | 04 | PA | PA | 099 | 05 |  | BILL 4 | B04 | S1 | 01 | R00 | ACF06 |  | 099 |  |  |  |  |  |  | 330 | 958 |  |  |  |
| C04PA21115C0 |  | CB-04 ; 2nd Fix, Inst of Sprinkler droppers (Public Area) | 42d | 2012-05-06 | 2012-06-25 | C04PA09501C0 |  |  |  |  | 15.01d | 0d | MECHANICAL [1404 h]; Cost |  |  | C04PA21115C0 |  |  |  |  | CB | C | 04 | PA | ME | 211 | 15 | 2n | BILL 4 | B04 | S1 | 2F | R00 | ACF07 | MEP | 211 |  |  |  |  |  |  |  |  |  |  |  |
| C04PA23021C0 |  | CB-04 ; 2nd Fix, Inst of Flexible Duct & Plenum boxes (Public Area) | 42d | 2012-05-06 | 2012-06-25 | C04PA23023C0, C04PA09205C0, C04PA09501C0 |  |  |  |  | 15.01d | 0d | MECHANICAL [903.6 h]; Cost |  |  | C04PA23021C0 |  |  |  |  | CB | C | 04 | PA | ME | 230 | 21 | 2n | BILL 4 | B04 | S1 | 2F | R00 | ACF07 | MEP | 230 |  |  |  |  |  |  |  |  |  |  |  |
| C04PA26017C0 |  | CB-04 ; Final Fix, Inst of Ceiling rose (Public Area) | 48d | 2012-05-06 | 2012-07-02 | C04PA09501C0 |  |  |  |  | 9.01d | 0d | ELECTRICAL [123.6 h]; Cost |  |  | C04PA26017C0 |  |  |  |  | CB | C | 04 | PA | ME | 260 | 17 | FF | BILL 4 | B04 | S1 | FF | R00 | ACF07 | MEP | 260 |  |  |  |  |  |  |  |  |  |  |  |
| C04PA27002C0 |  | CB-04 ; 2nd Fix, Wiring Droppers (Public Area) | 42d | 2012-05-06 | 2012-06-25 | C04PA09501C0 |  |  |  |  | 15.01d | 0d | ELECTRICAL [216 h]; Cost |  |  | C04PA27002C0 |  |  |  |  | CB | C | 04 | PA | ME | 270 | 02 | 2n | BILL 4 | B04 | S1 | 2F | R00 | ACF07 | MEP | 270 |  |  |  |  |  |  |  |  |  |  |  |
| C04PA08107C0 |  | CB-04 ; Doors (Public Area) | 20d | 2012-05-24 | 2012-06-18 | C04PA08103C0, C04PA09901C0, C04PA09601C0 |  |  |  |  | 94.01d | 0d | ASSORTED DOORS [440 h]; ASSORTED DOORS [44 no]; Cost |  |  | C04PA08107C0 |  |  |  |  | CB | C | 04 | PA | DO | 081 | 07 |  | BILL 4 | B04 | S1 | DR | R00 | ACF06 |  | 081 |  |  |  |  |  |  | 317 | 948 | 08 |  |  |
| C04PA09701C0 |  | CB-04 ; Wall finishes (ST, WD, WC) (Public Area) | 36d | 2012-05-24 | 2012-07-07 | C04PA27020C0 FF, C04PA09601C0 |  |  |  |  | 59.01d | 0d | ASSORTED WALL FINISH [1432 h]; ASSORTED WALL FINISH [1646 m2]; Cost |  |  | C04PA09701C0 |  |  |  |  | CB | C | 04 | PA | WF | 097 | 01 |  | BILL 4 | B04 | S1 | 01 | R00 | ACF06 |  | 097 |  |  |  |  |  |  | 105 | 1002 |  |  |  |
| C04PA08709C0 |  | CB-04 ; Ironmongery (Public Area) | 20d | 2012-06-18 | 2012-07-11 | C04PA08107C0 |  |  |  |  | 94.01d | 85d | IRONMONGERY [190 h]; IRONMONGERY [19 no]; Cost |  |  | C04PA08709C0 |  |  |  |  | CB | C | 04 | PA | DO | 087 | 09 |  | BILL 4 | B04 | S1 | IM | R00 | ACF06 |  | 087 |  |  |  |  |  |  | 322 | 951 | 08 |  |  |
| C04PA21113C0 |  | CB-04 ; Final Fix, Inst of Sprinklers head/ Extinguisher (Public Area) | 48d | 2012-06-25 | 2012-08-22 | C04PA09501C0, C04PA21115C0, CZ9GZ21158R2 FF |  |  |  |  | 15.01d | 6d | MECHANICAL [278.4 h]; Cost |  |  | C04PA21113C0 |  |  |  |  | CB | C | 04 | PA | ME | 211 | 13 | FF | BILL 4 | B04 | S1 | FF | R00 | ACF07 | MEP | 211 |  |  |  |  |  |  |  |  |  |  |  |
| C04PA23019C0 |  | CB-04 ; Final Fix, Inst of Grilles & Diffusers (Public Area) | 48d | 2012-06-25 | 2012-08-22 | C04PA09501C0, C04PA23021C0, CZ9GZ23060R2 FF, CV10GZ23061R2 FF |  |  |  |  | 15.01d | 6d | MECHANICAL [1970.4 h]; Cost |  |  | C04PA23019C0 |  |  |  |  | CB | C | 04 | PA | ME | 230 | 19 | FF | BILL 4 | B04 | S1 | FF | R00 | ACF07 | MEP | 230 |  |  |  |  |  |  |  |  |  |  |  |
| C04PA27030C0 |  | CB-04 ; Final Fix, Inst of ELV device (Detector/Speaker) (Public Area) | 48d | 2012-06-25 | 2012-08-22 | C04PA09501C0, C04PA27002C0, CZ9GZ28063R2 FF, CZ9GZ26562R2 FF, CV09GZ28064R2 FF |  |  |  |  | 15.01d | 6d | ELECTRICAL [2054.4 h]; Cost |  |  | C04PA27030C0 |  |  |  |  | CB | C | 04 | PA | ME | 270 | 30 | FF | BILL 4 | B04 | S1 | FF | R00 | ACF07 | MEP | 270 |  |  |  |  |  |  |  |  |  |  |  |
| C04PA26003C0 |  | CB-04 ; Final Fix, Inst of Light fittings (Public Area) | 48d | 2012-07-02 | 2012-08-29 | C04PA26017C0 |  |  |  |  | 9.01d | 0d | ELECTRICAL [7983.6 h]; Cost |  |  | C04PA26003C0 |  |  |  |  | CB | C | 04 | PA | ME | 260 | 03 | FF | BILL 4 | B04 | S1 | FF | R00 | ACF07 | MEP | 260 |  |  |  |  |  |  |  |  |  |  |  |
| C04PA11001C0 |  | CB-04 ; Wall Protection (WP, CG, WG, FCG) (Public Area) | 24d | 2012-07-07 | 2012-08-04 | C04PA09701C0, C04PA09903C0 SS |  |  |  |  | 74.01d | 65d | FF&E [7 h]; Cost |  |  | C04PA11001C0 |  |  |  |  | CB | C | 04 | PA | WF | 110 | 01 |  | BILL 4 | B04 | S1 | 03 | R00 | ACF08 |  | b |  |  |  |  |  |  | 326 | 1001 |  |  |  |
| C04PA11009C0 |  | CB-04 ; Signage (Public Area) | 12d | 2012-07-07 | 2012-07-21 | C04PA09701C0 |  |  |  |  | 86.01d | 77d | SIGNAGES [221 h]; SIGNAGES [220.8 no]; Cost |  |  | C04PA11009C0 |  |  |  |  | CB | C | 04 | PA | SA | 110 | 09 |  | BILL 4 | B04 | S1 | 09 | R00 | ACF08 |  | c |  |  |  |  |  |  | 322 | 951 | 08 |  |  |
| C04PA01006C0 |  | CB-04 ; 2nd, Ceiling Inspection by Consultants (Public Area) | 6d | 2012-08-29 | 2012-09-05 | C04PA21115C0, C04PA23009C0, C04PA23011C0, C04PA23015C0, C04PA27002C0, C04PA09501C0, C04PA21113C0, C04PA23019C0, C04PA26017C0, C04PA27030C0, C04PA26015C0, C04PA26003C0 |  |  |  |  | 9.01d | 0d | Labor General [1.2 h]; Cost |  |  | C04PA01006C0 |  |  |  |  | CB | C | 04 | PA | ME | 010 | 06 | 2n | BILL 4 | B04 | S1 | CI | R00 | ACF07 | MEP | 010 |  |  |  |  |  |  |  |  |  |  |  |
| C04PA09503C0 |  | CB-04 ; Ceiling closure - ACT/Gypsum (Public Area) | 18d | 2012-09-05 | 2012-09-26 | C04PA01006C0, C04PA21115C0, C04PA26005C0, C04PA27001C0, C04PA27002C0, CAFOA09503C1 FF, C04PA09701C0, C04PA23021C0, C04PA26053C0, C04PA26007C0 |  |  |  |  | 9.01d | 0d | ASSORTED CEILING FINISH [276.75 h]; CEILING GYPSUM [40.8 h]; ASSORTED CEILING FINISH [450 m2]; CEILING GYPSUM [113 m2]; Cost |  |  | C04PA09503C0 |  |  |  |  | CB | C | 04 | PA | CE | 095 | 03 |  | BILL 4 | B04 | S1 | 02 | R00 | ACF06 |  | 095 |  |  |  |  |  |  | 324 | 953 |  |  |  |
| C04PA09907C0 |  | CB-04 ; Ceiling Final paint (Public Area) | 0d | 2012-09-26 | 2012-09-26 | C04PA09601C0, C04PA09905C0, C04PA09503C0 |  |  |  |  | 30.01d | 21d | Cost |  |  | C04PA09907C0 |  |  |  |  | CB | C | 04 | PA | PA | 099 | 07 |  | BILL 4 | B04 | S1 | 02 | R00 | ACF06 |  | 099 |  |  |  |  |  |  | 331 | 959 |  |  |  |
| C04PA26019C0 |  | CB-04 ; Final Fix, Inst of Switch/Sockets (Public Area) | 12d | 2012-09-26 | 2012-10-10 | C04PA09901C0, C04PA05501C0 FF, C04PA09503C0 |  |  |  |  | 9.01d | 0d | ELECTRICAL [320.4 h]; Cost |  |  | C04PA26019C0 |  |  |  |  | CB | C | 04 | PA | ME | 260 | 19 | FF | BILL 4 | B04 | S1 | FF | R00 | ACF07 | MEP | 260 |  |  |  |  |  |  |  |  |  |  |  |

| ID | WBS | Activity | Duration | Start | Finish | Predecessors | Complete | Remaining | Planned start | Planned finish | Total float | Free float | Calendar | Resources | Cost | Actual cost | change id | CCAD BUILDING(SET) | CCAD PHASE(SET) | CCAD FLOOR(SET) | CCAD ZONE(SET) | CCAD WORK(SET) | CCAD SECTION(SET) | CCAD SERIAL No.(SET) | CCAD CBS(SET) | CCAD BILL(SET) | CCAD HANDOVER(SET) | CCAD TAG(SET) | CCAD REV(SET) | CCADACF (SET) | CCAD SSCF | user_number8 | user_integer1 | user_integer2 | user_number7 | Change Order # | NEW ACTIVITY ID | Claimed This Month | CCAD CSA | Act Selector % | P_811 | P_711 | CCAD SUB ZONE MEP(SET) | CCAD MEQ | July2011 Target% Complete | CCAD DIVISION(SET) | IDDD |
| --- | --- | --- | --- | --- | --- | --- | --- | --- | --- | --- | --- | --- | --- | --- | --- | --- | --- | --- | --- | --- | --- | --- | --- | --- | --- | --- | --- | --- | --- | --- | --- | --- | --- | --- | --- | --- | --- | --- | --- | --- | --- | --- | --- | --- | --- | --- | --- |
|  | 10 | **Precommissioning Tesing & snagging (Public Area)** |  | 2012-10-10 | 2012-11-21 |  |  |  |  |  |  |  |  |  |  |  |  |  |  |  |  |  |  |  |  |  |  |  |  |  |  |  |  |  |  |  |  |  |  |  |  |  |  |  |  |  |  |
| C04TS01801C0 |  | CB-04 ; MEP de-snag, FIREM sign-off | 9d | 2012-10-10 | 2012-10-21 | C04PA26015C0, C04PA21113C0, C04PA23019C0, C04PA26017C0, C04PA26003C0, C04PA27030C0, C04PA26019C0, C04CO04413C1, C04CO04412C0 |  |  |  |  | 9.01d | 0d |  | TESTING & COMMISSIONING [2040 h]; Cost |  |  | C04TS01801C0 | CB | C | 04 | TS | SC | 018 | 01 | BILL 4 | B04 | S1 | 01 | R00 | ACF07 | 018 |  |  |  |  |  |  |  |  |  |  |  |  |  |  |  |  |
| C04TS01804C0 |  | CB-04 ; Touch-up & Clean / JV inspection /CIR /De-snag | 17.75d | 2012-10-21 | 2012-11-12 | C04PA08709C0, C04PA09601C0, C04PA09701C0, C04PA09903C0, C04PA09907C0, C04PA11001C0, C04PA11009C0, C04TS01801C0, C04PA05501C0, C04PA09503C0 |  |  |  |  | 9.01d | 0d |  | TESTING & COMMISSIONING [149 h]; Cost |  |  | C04TS01802C0 | CB | C | 04 | TS | SC | 018 | 02 | BILL 4 | B04 | S1 | 02 | R00 | ACF07 | 018 |  |  |  |  |  |  |  |  |  |  |  |  |  |  |  |  |
| C04TS01806C0 |  | CB-04 ; Consultant's final de-snag inspection | 7d | 2012-11-12 | 2012-11-21 | C04TS01804C0 |  |  |  |  | 9.01d | 1.69d |  | Labor General [1 h]; Cost |  |  | C04TS01803C0 | CB | C | 04 | TS | SC | 018 | 03 | BILL 4 | B04 | S1 | 03 | R00 | ACF07 | 018 |  |  |  |  |  |  |  |  |  |  |  |  |  |  |  |  |
|  | 06 | **TR Room** |  | 2011-06-09 | 2012-09-27 |  |  |  |  |  |  |  |  |  |  |  |  |  |  |  |  |  |  |  |  |  |  |  |  |  |  |  |  |  |  |  |  |  |  |  |  |  |  |  |  |  |  |
| C04TR09201C0 |  | CB-04 ; Metal Studs (TR RM) | 18d | 2011-06-09 A | 2011-11-23 | C04S207808C0, A10290 FS+79d | 40% | 10.8d | 2011-10-24 | 2011-11-16 | 29.1d | 0d |  | PARTITIONS [375 h]; PARTITIONS - Metal Studs [27 m]; Cost |  |  | C04TR09201C0 | CB | C | 04 | TR | PT | 092 | 01 | BILL 4 | B04 | S1 | 1F | R00 | ACF06 | 092 | 0 | 0 | 0 | 0 | 313 | 885 | 9771.13 | GP | PMS |  |  |  |  |  |  |  |
| C04TR09203C0 |  | CB-04 ; Partitions 1st face (TR RM) | 36d | 2011-07-10 A | 2011-12-20 | C04TR09201C0 SS+12d | 12% | 31.68d | 2011-11-23 | 2012-01-07 | 50.22d | 21.12d |  | PARTITIONS [27 m]; PARTITIONS [290 h]; Cost |  |  | C04TR09203C0 | CB | C | 04 | TR | PT | 092 | 03 | BILL 4 | B04 | S1 | 2F | R00 | ACF06 | 092 | 0 | 0 | 0 | 0 | 314 | 886 |  | GP | P1F | 10 | 5 |  |  |  |  |  |
| C04TR26009C0 |  | CB-04 ; 2nd Fix, Inst of Equipment (DB, TR, SG,BUS) (TR RM) | 54d | 2011-09-05 A | 2012-03-04 | C04TR09201C0, C04TR09205C0 SS | 25% | 40.5d | 2011-12-13 | 2012-02-15 | 126.6d | 97.5d |  | ELECTRICAL [14013.6 h]; Cost [3188823 AED] | 3,188,823.2 | 797,205.8 | C04TR26009C0 | CB | C | 04 | TR | ME | 260 | 09 | BILL 4 | B04 | S1 | 2F | R00 | ACF04 | 260 |  |  |  |  |  |  |  | MEP |  |  |  | 2n | E |  |  |  |
| C04TR26026C0 |  | CB-04 ; 2nd Fix, Conduit (TR RM) | 30d | 2011-11-23 | 2011-12-31 | C04TR09201C0 |  |  |  |  | 29.1d | 0d |  | ELECTRICAL [430.8 h]; Cost |  |  | C04TR26026C0 | CB | C | 04 | TR | ME | 260 | 26 | BILL 4 | B04 | S1 | 2F | R00 | ACF07 | 260 |  |  |  |  |  |  |  | MEP |  |  |  | 2n |  | 10 |  |  |
| C04TR08101C0 |  | CB-04 ; Door Frames (TR RM) | 18.12d | 2011-11-27 | 2011-12-19 | C04TR09201C0, GNHE08101C0 FS+93d |  |  |  |  | 81.78d | 52.67d |  | ASSORTED DOORS [4 h]; Cost |  |  | C04TR08101C0 | CB | C | 04 | TR | DO | 081 | 01 | BILL 4 | B04 | S1 | DF | R00 | ACF06 | 081 |  |  |  |  | 316 | 20001090 |  |  |  |  |  |  |  |  | 08 |  |
| C04TR01005C0 |  | CB-04 ; 2nd, Wall Inspection by Consultant (TR RM) | 12d | 2011-12-31 | 2012-01-15 | C04TR26026C0 |  |  |  |  | 29.1d | 0d |  | Labor General [1.2 h]; Cost |  |  | C04TR01005C0 | CB | C | 04 | TR | ME | 010 | 05 | BILL 4 | B04 | S1 | WI | R00 | ACF07 | 010 |  |  |  |  |  |  |  | MEP |  |  |  | 2n |  |  |  |  |
| C04TR09205C0 |  | CB-04 ; Partitions Closing (TR RM) | 30d | 2012-01-15 | 2012-02-20 | C04TR01005C0, C04TR09201C0, C04TR09203C0, CAFOA09204C1 FF, C03TR09205C0 SS+6d, C04TR08101C0 FF |  |  |  |  | 29.1d | 0d |  | PARTITIONS [27 m]; PARTITIONS [362 h]; Cost |  |  | C04TR09205C0 | CB | C | 04 | TR | PT | 092 | 05 | BILL 4 | B04 | S1 | FF | R00 | ACF06 | 092 |  |  |  |  | 315 | 887 |  | GP | P2F |  |  |  |  |  |  |  |
| C04TR09901C0 |  | CB-04 ; Wall Prime & 1st coat (TR RM) | 18d | 2012-02-20 | 2012-03-12 | C04TR09205C0 |  |  |  |  | 29.1d | 0d |  | WALL PAINT [556 h]; WALL PAINT [693 m2]; Cost |  |  | C04TR09901C0 | CB | C | 04 | TR | PA | 099 | 01 | BILL 4 | B04 | S1 | 01 | R00 | ACF06 | 099 |  |  |  |  | 360 | 20001110 |  |  |  |  |  |  |  |  |  |  |
| C04TR23009C0 |  | CB-04 ; 2nd Fix, Inst of VAV'S CHW connection (TR RM) | 30d | 2012-02-20 | 2012-03-26 | C04TR09201C0, C04TR09205C0 |  |  |  |  | 77.1d | 0d |  | MECHANICAL [1419.6 h]; Cost |  |  | C04TR23009C0 | CB | C | 04 | TR | ME | 230 | 09 | BILL 4 | B04 | S1 | 2F | R00 | ACF07 | 230 |  |  |  |  |  |  |  | MEP |  |  |  | 2n |  |  |  |  |
| C04TR23011C0 |  | CB-04 ; 2nd Fix, Inst of VCD's/FD's (TR RM) | 30d | 2012-02-20 | 2012-03-26 | C04TR09201C0, C04TR09205C0 |  |  |  |  | 77.1d | 0d |  | MECHANICAL [2648.4 h]; Cost |  |  | C04TR23011C0 | CB | C | 04 | TR | ME | 230 | 11 | BILL 4 | B04 | S1 | 2F | R00 | ACF07 | 230 |  |  |  |  |  |  |  | MEP |  |  |  | 2n |  |  |  |  |
| C04TR23013C0 |  | CB-04 ; 2nd Fix, Insulation of CHW pipe & Duct (TR RM) | 30d | 2012-02-20 | 2012-03-26 | C04TR23009C0 SS, C04TR23011C0 SS, C04TR09205C0 |  |  |  |  | 77.1d | 12d |  | MECHANICAL [6742.8 h]; Cost |  |  | C04TR23013C0 | CB | C | 04 | TR | ME | 230 | 13 | BILL 4 | B04 | S1 | 2F | R00 | ACF07 | 230 |  |  |  |  |  |  |  | MEP |  |  |  | 2n |  |  |  |  |
| C04TR26027C0 |  | CB-04 ; 2nd Fix, Wiring / Cabling (TR RM) | 30d | 2012-02-20 | 2012-03-26 | C04TR09205C0 |  |  |  |  | 83.1d | 36d |  | ELECTRICAL [216 h]; Cost |  |  | C04TR26027C0 | CB | C | 04 | TR | ME | 260 | 27 | BILL 4 | B04 | S1 | 2F | R00 | ACF07 | 260 |  |  |  |  | 417 | 1318 |  | MEP |  |  |  | 2n |  |  |  |  |
| C04TR09501C0 |  | CB-04 ; Ceiling grid and Service Tile (TR RM) | 24d | 2012-03-12 | 2012-04-09 | C04TR09205C0 SS+12d, C04TR09901C0 |  |  |  |  | 29.1d | 0d |  | CEILING GRID FOR GYPSUM [3102.19 h]; CEILING GRID FOR GYPSUM [265.49 m2]; Cost |  |  | C04TR09501C0 | CB | C | 04 | TR | CE | 095 | 01 | BILL 4 | B04 | S1 | 01 | R00 | ACF06 | 095 |  |  |  |  | 336 | 1327 |  |  |  |  |  |  |  |  |  | 1 |
| C04TR09903C0 |  | CB-04 ; Wall - Final Paint (TR RM) | 12d | 2012-03-12 | 2012-03-26 | C04TR09901C0 |  |  |  |  | 155.1d | 126d |  | WALL PAINT [300 h]; WALL PAINT [373 m2]; Cost |  |  | C04TR09903C0 | CB | C | 04 | TR | PA | 099 | 03 | BILL 4 | B04 | S1 | 02 | R00 | ACF06 | 099 |  |  |  |  | 361 | 1312 |  |  |  |  |  |  |  |  |  |  |
| C04TR01006C0 |  | CB-04 ; 2nd, Ceiling Inspection by Consultants (TR RM) | 12d | 2012-04-09 | 2012-04-23 | C04TR23009C0, C04TR23011C0, C04TR23013C0, C04TR09501C0 |  |  |  |  | 65.1d | 36d |  | Labor General [1.2 h]; Cost |  |  | C04TR01006C0 | CB | C | 04 | TR | ME | 010 | 06 | BILL 4 | B04 | S1 | CI | R00 | ACF07 | 010 |  |  |  |  |  |  |  | MEP |  |  |  | 2n |  |  |  |  |
| C04TR09601C0 |  | CB-04 ; Floor Finishes (TR RM) | 18d | 2012-04-09 | 2012-04-30 | C04TR09501C0 |  |  |  |  | 29.1d | 0d |  | ASSORTED FLOOR FINISH [824 h]; ASSORTED FLOOR FINISH [457 m2]; Cost |  |  | C04TR09601C0 | CB | C | 04 | TR | FF | 096 | 01 | BILL 4 | B04 | S1 | 01 | R00 | ACF06 | FF |  |  |  |  | 359 | 20001120 |  |  |  |  |  |  |  |  |  |  |
| C04TR23023C0 |  | CB-04 ; 2nd Fix, Flexible ducts (TR RM) | 30d | 2012-04-09 | 2012-05-14 | C04TR09205C0, C04TR09501C0 |  |  |  |  | 47.1d | 18d |  | MECHANICAL [903.6 h]; Cost |  |  | C04TR23023C0 | CB | C | 04 | TR | ME | 230 | 23 | BILL 4 | B04 | S1 | 2F | R00 | ACF07 | 230 |  |  |  |  | 412 | 20001140 |  | MEP |  |  |  | 2n |  |  |  |  |
| C04TR26005C0 |  | CB-04 ; 2nd Fix, Wiring for Power/Lighting/Emergency (TR RM) | 30d | 2012-04-09 | 2012-05-14 | C04TR26026C0, C04TR26027C0 SS+6d, C04TR09501C0 |  |  |  |  | 47.1d | 18d |  | ELECTRICAL [216 h]; Cost |  |  | C04TR26005C0 | CB | C | 04 | TR | ME | 260 | 05 | BILL 4 | B04 | S1 | 2F | R00 | ACF07 | 260 |  |  |  |  |  |  |  | MEP |  |  |  | 2n |  |  |  |  |
| C04TR27002C0 |  | CB-04 ; 2nd Fix, Dressing of ELV panels (TR RM) | 30d | 2012-04-09 | 2012-05-14 | C04TR09205C0, C04TR27020C0 SS |  |  |  |  | 83.1d | 36d |  | ELECTRICAL [1284 h]; Cost |  |  | C04TR27002C0 | CB | C | 04 | TR | ME | 270 | 02 | BILL 4 | B04 | S1 | 2F | R00 | ACF07 | 270 |  |  |  |  |  |  |  | MEP |  |  |  | 2n |  |  |  |  |
| C04TR27020C0 |  | CB-04 ; 2nd Fix, Inst of ELV Equipment (Panels) (TR RM) | 30d | 2012-04-09 | 2012-05-14 | C04TR09201C0, C04TR09205C0, C04TR09501C0 |  |  |  |  | 83.1d | 0d |  | ELECTRICAL [384 h]; Cost |  |  | C04TR27020C0 | CB | C | 04 | TR | ME | 270 | 20 | BILL 4 | B04 | S1 | 2F | R00 | ACF04 | 270 |  |  |  |  |  |  |  | MEP |  |  |  | 2n | E |  |  |  |
| C04TR08105C0 |  | CB-04 ; Doors (TR RM) | 18d | 2012-04-30 | 2012-05-21 | C04TR08101C0, C04TR09901C0, C04TR09601C0 |  |  |  |  | 91.22d | 0d |  | ASSORTED DOORS [10 h]; ASSORTED DOORS [1 no]; Cost |  |  | C04TR08105C0 | CB | C | 04 | TR | DO | 081 | 05 | BILL 4 | B04 | S1 | DR | R00 | ACF06 | 081 |  |  |  |  | 317 | 1325 |  |  |  |  |  |  |  |  | 08 |  |
| C04TR21115C0 |  | CB-04 ; 2nd Fix, Gaseous Fire Suppression (TR RM) | 30d | 2012-04-30 | 2012-06-04 | C04TR09601C0 |  |  |  |  | 29.1d | 0d |  | MECHANICAL [3854.4 h]; Cost |  |  | C04TR21115C0 | CB | C | 04 | TR | ME | 211 | 15 | BILL 4 | B04 | S1 | 2F | R00 | ACF07 | 211 |  |  |  |  | 411 | 20001130 |  | MEP |  |  |  | 2n |  |  |  |  |
| C04TR08709C0 |  | CB-04 ; Ironmongery (TR RM) | 15.88d | 2012-05-21 | 2012-06-09 | C04TR08105C0 |  |  |  |  | 91.22d | 62.12d |  | IRONMONGERY [60 h]; IRONMONGERY [6 no]; Cost |  |  | C04TR08709C0 | CB | C | 04 | TR | DO | 087 | 09 | BILL 4 | B04 | S1 | IM | R00 | ACF06 | 087 |  |  |  |  | 322 | 20001100 |  |  |  |  |  |  |  |  | 08 |  |
| C04TR09503C0 |  | CB-04 ; Ceiling closure (TR RM) | 18d | 2012-06-04 | 2012-06-26 | C04TR01006C0, C04TR09501C0, C04TR21115C0, C04TR26005C0, C04TR26026C0, C04TR26027C0, C04TR23023C0 |  |  |  |  | 29.1d | 0d |  | ASSORTED CEILING FINISH [1332.7 h]; CEILING GYPSUM [87.12 h]; ASSORTED CEILING FINISH [2167 m2]; CEILING GYPSUM [546 m2]; Cost |  |  | C04TR09503C0 | CB | C | 04 | TR | CE | 095 | 03 | BILL 4 | B04 | S1 | 02 | R00 | ACF06 | 095 |  |  |  |  | 337 | 20001080 |  |  |  |  |  |  |  |  |  |  |
| C04TR09905C0 |  | CB-04 ; Ceiling Prime & 1st coat (TR RM) | 0d | 2012-06-26 | 2012-06-26 | C04TR09503C0 |  |  |  |  | 59.1d | 11.6d |  | Cost |  |  | C04TR09905C0 | CB | C | 04 | TR | PA | 099 | 05 | BILL 4 | B04 | S1 | 01 | R00 | ACF06 | 099 |  |  |  |  | 362 | 1313 |  |  |  |  |  |  |  |  |  |  |
| C04TR23074C0 |  | CB-04 ; Final Fix, Grilles, panels & diffusers (TR RM) | 30d | 2012-06-26 | 2012-07-31 | C04TR09503C0 |  |  |  |  | 29.1d | 0d |  | MECHANICAL [1970.4 h]; Cost |  |  | C04TR23074C0 | CB | C | 04 | TR | ME | 230 | 74 | BILL 4 | B04 | S1 | FF | R00 | ACF07 | 230 |  |  |  |  | 419 | 20001160 |  | MEP |  |  |  | FF |  |  |  |  |
| C04TR26013C0 |  | CB-04 ; Final Fix, Termination & Gladding of Cables (TR RM) | 30d | 2012-06-26 | 2012-07-31 | C04TR09503C0, C04TR26015C0 SS, C04TR26009C0 |  |  |  |  | 29.1d | 0d |  | ELECTRICAL [826.8 h]; Cost |  |  | C04TR26013C0 | CB | C | 04 | TR | ME | 260 | 13 | BILL 4 | B04 | S1 | FF | R00 | ACF07 | 260 |  |  |  |  |  |  |  | MEP |  |  |  | FF |  |  |  |  |
| C04TR26015C0 |  | CB-04 ; Final Fix, Inst of Ceiling rose (TR RM) | 30d | 2012-06-26 | 2012-07-31 | C04TR09503C0 |  |  |  |  | 29.1d | 0d |  | ELECTRICAL [123.6 h]; Cost |  |  | C04TR26015C0 | CB | C | 04 | TR | ME | 260 | 15 | BILL 4 | B04 | S1 | FF | R00 | ACF07 | 260 |  |  |  |  |  |  |  | MEP |  |  |  | FF |  |  |  |  |
| C04TR26017C0 |  | CB-04 ; Final Fix, Inst of Switch/Sockets (TR RM) | 12d | 2012-06-26 | 2012-07-10 | C04TR09901C0, C04TR26013C0 SS |  |  |  |  | 29.1d | 0d |  | ELECTRICAL [427.2 h]; Cost |  |  | C04TR26017C0 | CB | C | 04 | TR | ME | 260 | 17 | BILL 4 | B04 | S1 | FF | R00 | ACF07 | 260 |  |  |  |  |  |  |  | MEP |  |  |  | FF |  |  |  |  |
| C04TR26076C0 |  | CB-04 ; Final Fix, Lighting fittings (TR RM) | 30d | 2012-06-26 | 2012-07-31 | C04TR09503C0, C04TR26017C0 SS |  |  |  |  | 29.1d | 0d |  | ELECTRICAL [7983.6 h]; Cost |  |  | C04TR26076C0 | CB | C | 04 | TR | ME | 260 | 76 | BILL 4 | B04 | S1 | FF | R00 | ACF07 | 260 |  |  |  |  | 420 | 20001170 |  | MEP |  |  |  | FF |  |  |  |  |
| C04TR27030C0 |  | CB-04 ; Final Fix, Inst of ELV device (Detector/Speaker) (TR RM) | 30d | 2012-06-26 | 2012-07-31 | C04TR09503C0, C04TR27002C0 |  |  |  |  | 47.1d | 18d |  | ELECTRICAL [2054.4 h]; Cost |  |  | C04TR27030C0 | CB | C | 04 | TR | ME | 270 | 30 | BILL 4 | B04 | S1 | FF | R00 | ACF07 | 270 |  |  |  |  |  |  |  | MEP |  |  |  | FF |  |  |  |  |
| C04TR09907C0 |  | CB-04 ; Ceiling - Final paint (TR RM) | 0d | 2012-07-10 | 2012-07-10 | C03TR09907C0 SS+14d, C04TR09905C0 |  |  |  |  | 65.5d | 36.4d |  | Cost |  |  | C04TR09907C0 | CB | C | 04 | TR | PA | 099 | 07 | BILL 4 | B04 | S1 | 02 | R00 | ACF06 | 099 |  |  |  |  | 363 | 1314 |  |  |  |  |  |  |  |  |  |  |
| C04TR01802C0 |  | CB-04 ; MEP de-snag, FIREM sign-off | 18d | 2012-07-31 | 2012-08-23 | C04TR26076C0, C04TR26017C0, C04TR26015C0, C04TR26013C0, C04TR26076C0 FF, C04TR23074C0, C04TR09905C0 |  |  |  |  | 29.1d | 0d |  | TESTING & COMMISSIONING [510 h]; Cost |  |  | CP3TR01851C0 | CB | C | 04 | TR | SC | 018 | 53 | BILL 4 | B04 | S1 | 01 | R00 | ACF07 | 018 |  |  |  |  | 396 |  |  |  |  |  |  |  |  |  |  |  |
| C04TR01801C0 |  | CB-04 ; Touch-up & Clean / JV inspection /CIR /De-snag | 24d | 2012-08-23 | 2012-09-16 | C04CO04401C0, C04CO04403C0, C04CO04405C0, C04CO04409C0, C04TR01802C0, C04TR08101C0, C04TR08105C0, C04TR08709C0, C04TR09201C0, C04TR09203C0, C04TR09205C0, C04TR09501C0, C04TR09503C0, C04TR09601C0, C04TR09901C0, C04TR09903C0, C04TR09905C0, C04TR09907C0, C04TR23074C0, C04TR26013C0, C04TR26015C0, C04TR26017C0, C04TR26076C0, C04TR27030C0 |  |  |  |  | 34.1d | 0d | R00-C02, Calendar day | TESTING & COMMISSIONING [85 h]; Cost |  |  | C04TR01851C0 | CB | C | 04 | TR | SC | 018 | 51 | BILL 4 | B04 | S1 | 02 | R00 | ACF07 | 018 |  |  |  |  | 396 |  |  |  |  |  |  |  |  |  |  |  |
| C04TR01803C0 |  | CB-04 ; Consultant's final de-snag inspection | 10.1d | 2012-09-16 | 2012-09-27 | C04TR01801C0 |  |  |  |  | 29.1d | 20.75d |  | Labor General [1 h]; Cost |  |  | CP3TS01803C0 | CB | C | 04 | TR | SC | 018 | 03 | BILL 4 | B04 | S1 | 03 | R00 | ACF07 | 018 |  |  |  |  |  |  |  |  |  |  |  |  |  |  |  |  |

| ID | WBS | Activity | Duration | Start | Finish | Predecessors | Complete | Remaining | Planned start | Planned finish | Total float | Free float | Resources | Cost | Actual cost | change id | RENZ % COMPLETE | July2011 Target% Complete | P_811 | P_711 | CCAD BUILDING(SET) | CCAD PHASE(SET) | CCAD FLOOR(SET) | CCAD ZONE(SET) | CCAD WORK(SET) | CCAD SECTION(SET) | CCAD SERIAL No.(SET) | CCAD SUB ZONE MEP(SET) | CCAD CBS(SET) | CCAD BILL(SET) | CCAD HANDOVER(SET) | CCAD TAG(SET) | CCAD REV(SET) | CCADACF (SET) | CCAD CSA | CCAD SSCF | Act Selector % | user_number8 | user_integer1 | user_integer2 | user_number7 | Claimed This Month | Change Order # | NEW ACTIVITY ID | CCAD MEQ | CCAD DIVISION(SET) |
| --- | --- | --- | --- | --- | --- | --- | --- | --- | --- | --- | --- | --- | --- | --- | --- | --- | --- | --- | --- | --- | --- | --- | --- | --- | --- | --- | --- | --- | --- | --- | --- | --- | --- | --- | --- | --- | --- | --- | --- | --- | --- | --- | --- | --- | --- | --- |
|  | 07 | **MEP (Trans, HV, Elec etc) Rooms** |  | 2011-04-05 | 2012-09-01 |  |  |  |  |  |  |  |  |  |  |  |  |  |  |  |  |  |  |  |  |  |  |  |  |  |  |  |  |  |  |  |  |  |  |  |  |  |  |  |  |  |
| C04M123001C0 |  | CB-04 ; 1st Fix, Inst. of Supports for MEP (Mech RM) | 120d | 2011-04-05 A | 2011-11-03 | C04S107807C0, C04S207808C0, CR5S103335C0, CR5S203335C0 | 75% | 30d | 2011-04-13 | 2011-09-04 | 62.12d | 0d | MECHANICAL [1024.8 h]; Cost [57766.2 AED] | 57,766.25 | 43,324.69 | C04ME23001C0 | 50 | 100 | 75 | 50 | CB | C | 04 | M1 | ME | 230 | 01 | 1S | BILL 4 | B04 | S1 | 1F | R00 | ACF04 | MEP | 230 | M1F |  |  |  |  |  |  |  |  |  |
| C04M109201C0 |  | CB-04 ; Metal Studs (Mech RM) | 60d | 2011-06-09 A | 2011-11-14 | C04M123001C0 SS | 40% | 36d | 2011-10-10 | 2011-12-24 | 64.45d | 0d | PARTITIONS [3637 h]; PARTITIONS - Metal Studs [261 m]; Cost |  |  | C04ME09201C0 |  |  | 35 | 33 | CB | C | 04 | M1 | PT | 092 | 01 |  | BILL 4 | B04 | S1 | 1F | R00 | ACF06 | GP | 092 | PMS | 0 | 0 | 0 | 0 | 96594.59 |  |  |  |  |
| C04M109203C0 |  | CB-04 ; Partitions 1st face (Mech RM) | 60d | 2011-07-10 A | 2011-12-06 | C04M109201C0 SS+12d | 12% | 52.8d | 2011-11-13 | 2012-01-24 | 64.45d | 0d | PARTITIONS [404 m]; PARTITIONS [2837 h]; Cost |  |  | C04ME09203C0 |  |  | 10 | 5 | CB | C | 04 | M1 | PT | 092 | 03 |  | BILL 4 | B04 | S1 | 2F | R00 | ACF06 | GP | 092 | P1F | 0 | 0 | 0 | 0 |  | 314 | 1463 |  |  |
| C04M122011C0 |  | CB-04 ; 1st Fix, Inst of Drainage pipe (Mech RM) | 70d | 2011-07-10 A | 2011-11-13 | C04M123001C0 SS | 50% | 35d | 2011-08-04 | 2011-10-26 | 75.25d | 0d | PLUMBING [1714.8 h]; Cost [92715.9 AED] | 92,715.95 | 46,357.98 | C04ME22011C0 |  | 90 |  |  | CB | C | 04 | M1 | ME | 220 | 11 | 1S | BILL 4 | B04 | S1 | 1F | R00 | ACF04 | MEP | 220 | M1F | 0 | 0 | 0 | 0 |  |  |  |  |  |
| C04M123013C0 |  | CB-04 ; 2nd Fix, Inst of Equipment (AHU) (Mech RM) | 70d | 2011-08-02 A | 2011-12-28 | C04M109201C0 FS+15d, C04M122011C0 FF, C04M123001C0 SS | 70% | 21d | 2011-12-08 | 2012-02-29 | 71.12d | 0d | MECHANICAL [84114 h]; Cost [19960177 AED] | 19,960,176.6 | 13,972,123.62 | C04ME23013C0 |  | 10 | 10 | 0 | CB | C | 04 | M1 | ME | 230 | 13 | 2n | BILL 4 | B04 | S1 | 2F | R00 | ACF04 | MEP | 230 |  | 0 | 0 | 0 | 0 |  |  |  | H |  |
| C04M121111C0 |  | CB-04 ; 1st Fix, Inst of Sprinkler main pipe (Mech RM) | 70d | 2011-08-10 A | 2011-11-24 | C04M122006C0 SS+10d, C04M123001C0 SS | 50% | 35d | 2011-09-18 | 2011-12-13 | 131.72d | 0d | MECHANICAL [686.4 h]; Cost [37438.4 AED] | 37,438.4 | 18,719.2 | C04ME21111C0 |  | 90 | 50 | 0 | CB | C | 04 | M1 | ME | 211 | 11 | 1S | BILL 4 | B04 | S1 | 1F | R00 | ACF04 | MEP | 211 | M1F | 0 | 0 | 0 | 0 |  |  |  |  |  |
| C04M121119C0 |  | CB-04 ; 1st Fix, Inst of Sprinkler branch pipe (Mech RM) | 42d | 2011-09-05 A | 2012-01-02 | C04M121111C0 | 30% | 29.4d | 2011-10-24 | 2011-12-17 | 131.72d | 14.4d | MECHANICAL [1009.2 h]; Cost [55153.8 AED] | 55,153.76 | 16,546.13 | C04ME21119C0 |  |  |  |  | CB | C | 04 | M1 | ME | 211 | 19 | 1S | BILL 4 | B04 | S1 | 1F | R00 | ACF04 | MEP | 211 | M1F |  |  |  |  |  |  |  |  |  |
| C04M126009C0 |  | CB-04 ; 2nd Fix, Inst of Equipment (DB, TR, SG) (Mech RM) | 60d | 2011-09-05 A | 2012-02-07 | C04M109201C0 FS+15d | 10% | 54d | 2011-11-03 | 2012-01-18 | 113.12d | 0d | ELECTRICAL [4905.6 h]; Cost [1116278 AED] | 1,116,277.83 | 111,627.78 | C04ME26009C0 |  |  |  |  | CB | C | 04 | M1 | ME | 260 | 09 | 2n | BILL 4 | B04 | S1 | 2F | R00 | ACF04 | MEP | 260 |  |  |  |  |  |  |  |  | E |  |
| C04M122006C0 |  | CB-04 ; 1st Fix, Inst of Water supply pipe (Mech RM) | 42d | 2011-10-01 | 2011-11-21 | C04M122011C0 SS+7d, C04M123001C0 SS |  |  |  |  | 75.25d | 0d | PLUMBING [1682.4 h]; Cost |  |  | C04ME22006C0 |  | 35 |  |  | CB | C | 04 | M1 | ME | 220 | 06 | 1S | BILL 4 | B04 | S1 | 1F | R00 | ACF04 | MEP | 220 | M1F |  |  |  |  |  |  |  |  |  |
| C04M123005C0 |  | CB-04 ; 1st Fix, Inst of Ducting (Mech RM) | 60d | 2011-10-01 | 2011-12-14 | C04M123001C0 SS |  |  |  |  | 62.12d | 0d | MECHANICAL [16992 h]; Cost |  |  | C04ME23005C0 |  | 20 |  |  | CB | C | 04 | M1 | ME | 230 | 05 | 1S | BILL 4 | B04 | S1 | 1F | R00 | ACF04 | MEP | 230 | M1F |  |  |  |  |  |  |  |  |  |
| C04M126001C0 |  | CB-04 ; 1st Fix, Inst of Trunking/Conduiting (Mech RM) | 42d | 2011-10-01 | 2011-11-21 | C04M123001C0 SS |  |  |  |  | 122.12d | 60d | ELECTRICAL [430.8 h]; Cost |  |  | C04ME26001C0 |  | 60 |  |  | CB | C | 04 | M1 | ME | 260 | 01 | 1S | BILL 4 | B04 | S1 | 1F | R00 | ACF04 | MEP | 260 | M1F |  |  |  |  | 20577.39 |  |  |  |  |
| C04M123017C0 |  | CB-04 ; 2nd Fix, Insulation of CHW pipe & Duct (Mech RM) | 42d | 2011-10-12 | 2011-12-05 | C04M123005C0 SS, C04M123019C0 SS |  |  |  |  | 148.12d | 50d | MECHANICAL [6742.8 h]; Cost |  |  | C04ME23017C0 |  |  |  |  | CB | C | 04 | M1 | ME | 230 | 17 | 2n | BILL 4 | B04 | S1 | 2F | R00 | ACF07 | MEP | 230 |  |  |  |  |  |  |  |  |  |  |
| C04M123019C0 |  | CB-04 ; 1st Fix, Inst of CHW pipe (Mech RM) | 42d | 2011-10-12 | 2011-12-05 | C04M121111C0 SS+14d, C04M123001C0 SS |  |  |  |  | 148.12d | 0d | MECHANICAL [2395.2 h]; Cost |  |  | C04ME23019C0 |  | 25 |  |  | CB | C | 04 | M1 | ME | 230 | 19 | 1S | BILL 4 | B04 | S1 | 1F | R00 | ACF04 | MEP | 230 | M1F |  |  |  |  |  |  |  |  |  |
| C04M108101C0 |  | CB-04 ; Metal Door Frames (Mech RM) | 42d | 2011-11-27 | 2012-01-16 | C04M109201C0, GNHE08101C0 FS+93d |  |  |  |  | 66.25d | 1.8d | METAL DOORS [304 h]; Cost |  |  | C04ME08101C0 |  |  |  |  | CB | C | 04 | M1 | DO | 081 | 01 |  | BILL 4 | B04 | S1 | DF | R00 | ACF06 |  | 081 |  |  |  |  |  |  | 316 | 1465 |  | 08 |
| C04M123011C0 |  | CB-04 ; 2nd Fix, Inst of Equipment (FCU,FAN,PUMP) (Mech RM) | 42d | 2011-12-05 | 2012-01-23 | C04M123013C0 SS |  |  |  |  | 113.12d | 0d | MECHANICAL [1296 h]; Cost |  |  | C04ME23011C0 |  |  |  |  | CB | C | 04 | M1 | ME | 230 | 11 | 2n | BILL 4 | B04 | S1 | 2F | R00 | ACF04 | MEP | 230 |  |  |  |  |  |  |  |  | H |  |
| C04M126011C0 |  | CB-04 ; 1st Fix, Inst of Cable Tray (Mech RM) | 42d | 2011-12-05 | 2012-01-23 | C04M123013C0 SS |  |  |  |  | 71.12d | 0d | ELECTRICAL [948 h]; Cost |  |  | C04ME26011C0 |  | 60 |  |  | CB | C | 04 | M1 | ME | 260 | 11 | 1S | BILL 4 | B04 | S1 | 1F | R00 | ACF04 | MEP | 260 | M1F |  |  |  |  | 11906.69 |  |  |  |  |
| C04M109205C0 |  | CB-04 ; Partitions Closing (Mech RM) | 36d | 2011-12-06 | 2012-01-18 | C04M109201C0, C04M109203C0, C04M122006C0, C04M122011C0, CAFOA09204C1 FF, C04M108101C0 FF |  |  |  |  | 64.45d | 0d | PARTITIONS [350 m]; PARTITIONS [3653 h]; Cost |  |  | C04ME09205C0 |  |  |  |  | CB | C | 04 | M1 | PT | 092 | 05 |  | BILL 4 | B04 | S1 | FF | R00 | ACF06 | GP | 092 | P2F |  |  |  |  |  | 315 | 1464 |  |  |
| C04M123015C0 |  | CB-04 ; 2nd Fix, Inst of VCD's/FD's (Mech RM) | 42d | 2011-12-15 | 2012-02-02 | C04M123005C0 |  |  |  |  | 98.12d | 0d | MECHANICAL [2648.4 h]; Cost |  |  | C04ME23015C0 |  | 25 |  |  | CB | C | 04 | M1 | ME | 230 | 15 | 2n | BILL 4 | B04 | S1 | 2F | R00 | ACF07 | MEP | 230 |  |  |  |  |  |  |  |  |  |  |
| C04M127010C0 |  | CB-04 ; 1st Fix, Inst of Trunking for ELV system (Mech RM) | 42d | 2011-12-15 | 2012-02-02 | C04M123005C0 |  |  |  |  | 62.12d | 0d | ELECTRICAL [457.2 h]; Cost |  |  | C04ME27010C0 |  | 45 |  |  | CB | C | 04 | M1 | ME | 270 | 10 | 1S | BILL 4 | B04 | S1 | 1F | R00 | ACF04 | MEP | 270 | M1F |  |  |  |  | 12892.82 |  |  |  |  |
| C04M121117C0 |  | CB-04 ; 2nd Fix, Inst of Zone Control Valve (Mech RM) | 30d | 2011-12-29 | 2012-02-02 | C04M123013C0, C04M123019C0 |  |  |  |  | 146.12d | 42d | MECHANICAL [1209.6 h]; Cost |  |  | C04ME21117C0 |  |  |  |  | CB | C | 04 | M1 | ME | 211 | 17 | 2n | BILL 4 | B04 | S1 | 2F | R00 | ACF07 | MEP | 211 |  |  |  |  |  |  |  |  |  |  |
| C04M127020C0 |  | CB-04 ; 2nd Fix, Inst of ELV Equipment (Panels) (Mech RM) | 42d | 2011-12-29 | 2012-02-18 | C04M123013C0 |  |  |  |  | 134.12d | 21d | ELECTRICAL [384 h]; Cost |  |  | C04ME27020C0 |  |  |  |  | CB | C | 04 | M1 | ME | 270 | 20 | 2n | BILL 4 | B04 | S1 | 2F | R00 | ACF04 | MEP | 270 |  |  |  |  |  |  |  |  | E |  |
| C04M109901C0 |  | CB-04 ; Wall Prime & 1st coat (Mech RM) | 30d | 2012-01-18 | 2012-02-23 | C04M109205C0 |  |  |  |  | 129.32d | 0d | WALL PAINT [619 h]; WALL PAINT [772 m2]; Cost |  |  | C04ME09901C0 |  |  |  |  | CB | C | 04 | M1 | PA | 099 | 01 |  | BILL 4 | B04 | S1 | 01 | R00 | ACF06 |  | 099 |  |  |  |  |  |  | 328 | 1469 |  |  |
| C04M121115C0 |  | CB-04 ; 2nd Fix, Inst of Sprinkler droppers (Mech RM) | 42d | 2012-01-18 | 2012-03-08 | C04M109205C0, C04M121119C0 |  |  |  |  | 117.33d | 0d | MECHANICAL [1404 h]; Cost |  |  | C04ME21115C0 |  |  |  |  | CB | C | 04 | M1 | ME | 211 | 15 | 2n | BILL 4 | B04 | S1 | 2F | R00 | ACF07 | MEP | 211 |  |  |  |  |  |  |  |  |  |  |
| C04M121123C0 |  | CB-04 ; Final Fix, Inst of Fire Extinguishers/FHC (Mech RM) | 48d | 2012-01-18 | 2012-03-15 | C04M109205C0 |  |  |  |  | 159.32d | 97.2d | MECHANICAL [4239.6 h]; Cost |  |  | C04ME21123C0 |  |  |  |  | CB | C | 04 | M1 | ME | 211 | 23 | FF | BILL 4 | B04 | S1 | FF | R00 | ACF07 | MEP | 211 |  |  |  |  |  |  |  |  |  |  |
| C04M126015C0 |  | CB-04 ; Final Fix, Inst of Ceiling rose (Mech RM) | 48d | 2012-01-18 | 2012-03-15 | C04M109205C0 |  |  |  |  | 111.33d | 0d | ELECTRICAL [123.6 h]; Cost |  |  | C04ME26015C0 |  |  |  |  | CB | C | 04 | M1 | ME | 260 | 15 | FF | BILL 4 | B04 | S1 | FF | R00 | ACF07 | MEP | 260 |  |  |  |  |  |  |  |  |  |  |
| C04M123009C0 |  | CB-04 ; 2nd Fix, Inst of VAV'S CHW connection (Mech RM) | 42d | 2012-01-24 | 2012-03-13 | C04M123011C0 |  |  |  |  | 113.12d | 0d | MECHANICAL [1419.6 h]; Cost |  |  | C04ME23009C0 |  |  |  |  | CB | C | 04 | M1 | ME | 230 | 09 | 2n | BILL 4 | B04 | S1 | 2F | R00 | ACF07 | MEP | 230 |  |  |  |  |  |  |  |  |  |  |
| C04M126007C0 |  | CB-04 ; 2nd Fix, Cable Pulling (Mech RM) | 42d | 2012-01-24 | 2012-03-13 | C04M126011C0 |  |  |  |  | 71.12d | 9d | ELECTRICAL [6616.8 h]; Cost |  |  | C04ME26007C0 |  | 25 |  |  | CB | C | 04 | M1 | ME | 260 | 07 | 2n | BILL 4 | B04 | S1 | 2F | R00 | ACF07 | MEP | 260 |  |  |  |  |  |  |  |  |  |  |
| C04M123023C0 |  | CB-04 ; 2nd Fix, Inst of Flexible Duct & Plenum boxes (Mech RM) | 48d | 2012-02-05 | 2012-03-31 | C04M123015C0, C04M123017C0 |  |  |  |  | 98.12d | 0d | MECHANICAL [903.6 h]; Cost |  |  | C04ME23023C0 |  |  |  |  | CB | C | 04 | M1 | ME | 230 | 23 | FF | BILL 4 | B04 | S1 | FF | R00 | ACF07 | MEP | 230 |  |  |  |  |  |  |  |  |  |  |
| C04M127001C0 |  | CB-04 ; 1st Fix, Wiring/ Cabling work (Mech RM) | 42d | 2012-02-05 | 2012-03-24 | C04M126001C0, C04M126011C0, C04M127010C0 |  |  |  |  | 62.12d | 0d | ELECTRICAL [216 h]; Cost |  |  | C04ME27001C0 |  |  |  |  | CB | C | 04 | M1 | ME | 270 | 01 | 1S | BILL 4 | B04 | S1 | 1F | R00 | ACF04 | MEP | 270 | M1F |  |  |  |  |  |  |  |  |  |
| C04M107101C0 |  | CB-P3 ; Waterproofing (Mech RM) | 12d | 2012-02-08 | 2012-02-21 | C04M126009C0 |  |  |  |  | 113.12d | 0d | THERMAL & MOISTURE [256 h]; THERMAL & MOISTURE [1679.2 m2]; Cost |  |  | I05ME09901C0 |  |  |  |  | CB | C | 04 | M1 | FF | 071 | 01 |  | BILL 4 | B04 | S1 | 01 | R00 | ACF03 |  | 071 |  |  |  |  |  |  | 328 | 1469 |  |  |
| C04M109601C0 |  | CB-04 ; Floor Finishes (Mech RM) | 24d | 2012-02-22 | 2012-03-20 | C04M107101C0, C04M109205C0 |  |  |  |  | 113.12d | 0d | ASSORTED FLOOR FINISH [8072 h]; ASSORTED FLOOR FINISH [4481 m2]; Cost |  |  | C04ME09601C0 |  |  |  |  | CB | C | 04 | M1 | FF | 096 | 01 |  | BILL 4 | B04 | S1 | 01 | R00 | ACF06 |  | FF |  |  |  |  |  |  | 326 | 1501 |  |  |
| C04M109903C0 |  | CB-04 ; Wall - Final Paint (Mech RM) | 30d | 2012-02-23 | 2012-03-29 | C04M109901C0 |  |  |  |  | 159.32d | 97.2d | WALL PAINT [334 h]; WALL PAINT [415 m2]; Cost |  |  | C04ME09903C0 |  |  |  |  | CB | C | 04 | M1 | PA | 099 | 03 |  | BILL 4 | B04 | S1 | 02 | R00 | ACF06 |  | 099 |  |  |  |  |  |  | 329 | 1470 |  |  |
| C04M126017C0 |  | CB-04 ; Final Fix, Inst of Switch/Sockets (Mech RM) | 12d | 2012-02-23 | 2012-03-08 | C04M109901C0 |  |  |  |  | 165.32d | 103.2d | ELECTRICAL [427.2 h]; Cost |  |  | C04ME26017C0 |  |  |  |  | CB | C | 04 | M1 | ME | 260 | 17 | FF | BILL 4 | B04 | S1 | FF | R00 | ACF07 | MEP | 260 |  |  |  |  |  |  |  |  |  |  |
| C04M121121C0 |  | CB-04 ; Final Fix, Inst of Sprinklers head (Mech RM) | 48d | 2012-03-08 | 2012-05-03 | C04M121115C0, C04M121115C0 FF |  |  |  |  | 117.33d | 55.2d | MECHANICAL [278.4 h]; Cost |  |  | C04ME21121C0 |  |  |  |  | CB | C | 04 | M1 | ME | 211 | 21 | FF | BILL 4 | B04 | S1 | FF | R00 | ACF07 | MEP | 211 |  |  |  |  |  |  |  |  |  |  |
| C04M127030C0 |  | CB-04 ; Final Fix, Inst of ELV device (Detector/Speaker) (Mech RM) | 48d | 2012-03-14 | 2012-05-08 | C04M109901C0, C04M123009C0, C04M127020C0 |  |  |  |  | 113.12d | 51d | ELECTRICAL [2054.4 h]; Cost |  |  | C04ME27030C0 |  |  |  |  | CB | C | 04 | M1 | ME | 270 | 30 | FF | BILL 4 | B04 | S1 | FF | R00 | ACF07 | MEP | 270 |  |  |  |  |  |  |  |  |  |  |
| C04M126019C0 |  | CB-04 ; Final Fix, Inst of Light fittings (Mech RM) | 48d | 2012-03-15 | 2012-05-10 | C04M109901C0, C04M126015C0 |  |  |  |  | 111.33d | 49.2d | ELECTRICAL [7983.6 h]; Cost |  |  | C04ME26019C0 |  |  |  |  | CB | C | 04 | M1 | ME | 260 | 19 | FF | BILL 4 | B04 | S1 | FF | R00 | ACF07 | MEP | 260 |  |  |  |  |  |  |  |  |  |  |
| C04M108105C0 |  | CB-04 ; Metal Doors (Mech RM) | 24d | 2012-03-21 | 2012-04-17 | C04M108101C0, C04M109901C0, C04M109601C0 |  |  |  |  | 113.12d | 0d | METAL DOORS [1060 h]; METAL DOORS [106 no]; Cost |  |  | C04ME08105C0 |  |  |  |  | CB | C | 04 | M1 | DO | 081 | 05 |  | BILL 4 | B04 | S1 | DR | R00 | ACF06 |  | 081 |  |  |  |  |  |  | 317 | 1466 |  | 08 |
| C04M122003C0 |  | CB-04 ; Final Fix, Inst of All drain (Mech RM) | 18d | 2012-03-21 | 2012-04-10 | C04M109601C0 |  |  |  |  | 137.12d | 75d | PLUMBING [1305.6 h]; Cost |  |  | C04ME22003C0 |  |  |  |  | CB | C | 04 | M1 | ME | 220 | 03 | FF | BILL 4 | B04 | S1 | FF | R00 | ACF07 | MEP | 220 |  |  |  |  |  |  |  |  |  |  |
| C04M126005C0 |  | CB-04 ; 2nd Fix, Wiring for Power/Lighting/Emergency (Mech RM) | 42d | 2012-03-25 | 2012-05-12 | C04M126001C0, C04M126007C0, C04M126011C0, C04M127001C0, C04M127010C0 |  |  |  |  | 62.12d | 0d | ELECTRICAL [216 h]; Cost |  |  | C04ME26005C0 |  |  |  |  | CB | C | 04 | M1 | ME | 260 | 05 | 2n | BILL 4 | B04 | S1 | 2F | R00 | ACF07 | MEP | 260 |  |  |  |  |  |  |  |  |  |  |
| C04M127003C0 |  | CB-04 ; Final Fix, BMS connection work to Equipment (Mech RM) | 48d | 2012-03-25 | 2012-05-19 | C04M121117C0, C04M123011C0, C04M123013C0 SS, C04M123015C0, C04M126009C0, C04M127001C0, C04M127020C0 |  |  |  |  | 104.12d | 42d | ELECTRICAL [53611.2 h]; Cost |  |  | C04ME27003C0 |  |  |  |  | CB | C | 04 | M1 | ME | 270 | 03 | FF | BILL 4 | B04 | S1 | FF | R00 | ACF07 | MEP | 270 |  |  |  |  |  |  |  |  |  |  |
| C04M123021C0 |  | CB-04 ; Final Fix, Inst of Grilles & Diffusers (Mech RM) | 48d | 2012-04-01 | 2012-05-26 | C04M123023C0 |  |  |  |  | 98.12d | 36d | MECHANICAL [1970.4 h]; Cost |  |  | C04ME23021C0 |  |  |  |  | CB | C | 04 | M1 | ME | 230 | 21 | FF | BILL 4 | B04 | S1 | FF | R00 | ACF07 | MEP | 230 |  |  |  |  |  |  |  |  |  |  |
| C04M108709C0 |  | CB-04 ; Ironmongery (Mech RM) | 30d | 2012-04-18 | 2012-05-22 | C04M108105C0 |  |  |  |  | 113.12d | 51d | IRONMONGERY [550 h]; IRONMONGERY [55 no]; Cost |  |  | C04ME08709C0 |  |  |  |  | CB | C | 04 | M1 | DO | 087 | 09 |  | BILL 4 | B04 | S1 | IM | R00 | ACF06 |  | 087 |  |  |  |  |  |  | 322 | 1467 |  | 08 |
| C04M126013C0 |  | CB-04 ; Final Fix, Termination & Gladding of Cables (Mech RM) | 48d | 2012-05-13 | 2012-07-08 | C04M126005C0 |  |  |  |  | 62.12d | 0d | ELECTRICAL [826.8 h]; Cost |  |  | C04ME26013C0 |  |  |  |  | CB | C | 04 | M1 | ME | 260 | 13 | FF | BILL 4 | B04 | S1 | FF | R00 | ACF07 | MEP | 260 |  |  |  |  |  |  |  |  |  |  |

| ID | WBS | Activity | Duration | Start | Finish | Predecessors | Complete | Remaining | Planned start | Planned finish | Total float | Free float | Resources | change id | CCAD BUILDING(SET) | CCAD PHASE(SET) | CCAD FLOOR(SET) | CCAD ZONE(SET) | CCAD WORK(SET) | CCAD SECTION(SET) | CCAD SERIAL No.(SET) | CCAD CBS(SET) | CCAD BILL(SET) | CCAD HANDOVER(SET) | CCAD TAG(SET) | CCAD REV(SET) | CCADACF (SET) | CCAD SSCF | Change Order # | NEW ACTIVITY ID | RENZ % COMPLETE | CCAD CSA | CCAD DIVISION(SET) | ACCESS DATES | user_number8 | user_integer1 | user_integer2 | user_number7 | P_811 | P_711 | user_text2 |
| --- | --- | --- | --- | --- | --- | --- | --- | --- | --- | --- | --- | --- | --- | --- | --- | --- | --- | --- | --- | --- | --- | --- | --- | --- | --- | --- | --- | --- | --- | --- | --- | --- | --- | --- | --- | --- | --- | --- | --- | --- | --- |
|  | 10 | **Precommissioning Tesing & snagging (MEP Rooms)** |  | 2012-07-09 | 2012-09-01 |  |  |  |  |  |  |  |  |  |  |  |  |  |  |  |  |  |  |  |  |  |  |  |  |  |  |  |  |  |  |  |  |  |  |  |  |
| C04TS01801C10 |  | CB-04 ; MEP de-snag | 12d | 2012-07-09 | 2012-07-22 | C04M121123C0, C04M126015C0, C04M126017C0, C04M126019C0, C04M123023C0, C04M122003C0, C04M127003C0, C04M127030C0, C04M123021C0, C04M121121C0, C04M126013C0, C04CO04412C0, C04CO04413C1 |  |  |  |  | 62.12d | 0d | TESTING & COMMISSIONING [1020 h]; Cost | C04TS01801C0 | CB | C | 04 | TS | SC | 018 | 01 | BILL 4 | B04 | S1 | 01 | R00 | ACF07 | 018 |  |  |  |  |  |  |  |  |  |  |  |  |  |
| C04TS01805C0 |  | CB-04 ; Touch-up & Clean / JV inspection /CIR /De-snag | 15.5d | 2012-07-23 | 2012-08-09 | C04M108709C0, C04M109601C0, C04M109901C0, C04M109903C0, C04TS01801C10 |  |  |  |  | 62.12d | 12.18d | TESTING & COMMISSIONING [149 h]; Cost | C04TS01802C0 | CB | C | 04 | TS | SC | 018 | 02 | BILL 4 | B04 | S1 | 02 | R00 | ACF07 | 018 |  |  |  |  |  |  |  |  |  |  |  |  |  |
| C04TS01807C0 |  | CB-04 ; Consultant's final de-snag inspection | 5.25d | 2012-08-26 | 2012-09-01 | C04TS01805C0, CP3TS01809C0 |  |  |  |  | 49.95d | 0d | Labor General [1 h]; Cost | C04TS01803C0 | CB | C | 04 | TS | SC | 018 | 03 | BILL 4 | B04 | S1 | 03 | R00 | ACF07 | 018 |  |  |  |  |  |  |  |  |  |  |  |  |  |
|  | R5 | **Level 5 Roof** |  | 2011-02-01 | 2012-10-16 |  |  |  |  |  |  |  |  |  |  |  |  |  |  |  |  |  |  |  |  |  |  |  |  |  |  |  |  |  |  |  |  |  |  |  |  |
|  | 01 | **Structure & Envelopment** |  | 2011-02-01 | 2012-06-02 |  |  |  |  |  |  |  |  |  |  |  |  |  |  |  |  |  |  |  |  |  |  |  |  |  |  |  |  |  |  |  |  |  |  |  |  |
| CR5S205305C0 |  | CB-R5 ; Metal Decking (Zone S2) | 14d | 2011-02-01 A | 2011-04-17 A | CR5S205103C0 | 100% |  | 2011-02-22 | 2011-03-10 |  |  | METAL DECKING [1882 h]; METAL DECKING [2382 m2]; Cost | CR5S205305C0 | CB | C | R5 | S2 | ST | 053 | 05 | BILL 4 | B04 | S1 | 03 | R00 | ACF03 | 053 | 299 | 339 | 100 | ST |  |  |  |  |  |  |  |  |  |
| CR5S105305C0 |  | CB-R5 ; Metal Decking (Zone S1) | 8d | 2011-02-12 A | 2011-04-14 A | CR5S105103C0 | 100% |  | 2011-02-23 | 2011-03-05 |  |  | METAL DECKING [1556 h]; METAL DECKING [1969 m2]; Cost | CR5S105305C0 | CB | C | R5 | S1 | ST | 053 | 05 | BILL 4 | B04 | S1 | 03 | R00 | ACF03 | 053 | 299 | 332 | 100 | ST |  |  |  |  |  |  |  |  |  |
| CR5S203335C0 |  | CB-R5 ; Concrete on metal decking (Zone S2) | 10d | 2011-02-25 A | 2011-04-26 A | CR5S205305C0 | 100% |  | 2011-03-10 | 2011-03-22 |  |  | CONCRETE [17808 h]; CONCRETE [448 m3]; Cost | CR5S203335C0 | CB | C | R5 | S2 | CT | 033 | 35 | BILL 4 | B04 | S1 | 08 | R00 | ACF03 | 033 | 302 | 340 | 100 |  | 03 |  |  |  |  |  |  |  |  |
| CR5S105101C0 |  | CB-R5 ; Erection of Structural Steel for parapet (Zone S1) | 9.25d | 2011-03-07 A | 2011-03-23 A | C04S105101C0, C04S105103C0, C04SC03311C0 | 100% |  | 2011-03-02 | 2011-03-13 |  |  | STRUCTURAL STEEL [999 h]; STRUCTURAL STEEL [38 T(Fe)]; Cost | CR5S105101C0 | CB | C | R5 | S1 | ST | 051 | 01 | BILL 4 | B04 | S1 | 01 | R00 | ACF03 | 051 | 297 | 330 | 100 | ST |  | ACCESS |  |  |  |  |  |  |  |
| CR5S205101C0 |  | CB-R5 ; Erection of Structural Steel for parapet (Zone S2) | 9.25d | 2011-03-07 A | 2011-03-23 A | C04S205101C0, C04S205103C0, C04SD03311C0 | 100% |  | 2011-03-02 | 2011-03-13 |  |  | STRUCTURAL STEEL [999 h]; STRUCTURAL STEEL [38 T(Fe)]; Cost | CR5S205101C0 | CB | C | R5 | S2 | ST | 051 | 01 | BILL 4 | B04 | S1 | 01 | R00 | ACF03 | 051 | 297 | 336 | 100 | ST |  |  |  |  |  |  |  |  |  |
| CR5S103335C0 |  | CB-R5 ; Concrete on metal decking (Zone S1) | 10d | 2011-03-14 A | 2011-04-21 A | CR5S105305C0 | 100% |  | 2011-03-21 | 2011-04-02 |  |  | CONCRETE [13392 h]; CONCRETE [337 m3]; Cost | CR5S103335C0 | CB | C | R5 | S1 | CT | 033 | 35 | BILL 4 | B04 | S1 | 08 | R00 | ACF03 | 033 | 302 | 335 | 100 |  | 03 |  |  |  |  |  |  |  |  |
| CR5S105103C0 |  | CB-R5 ; Alignment & welding for parapet(S1) (Zone S1) | 5d | 2011-03-14 A | 2011-03-26 A | CR5S105101C0 | 100% |  | 2011-03-14 | 2011-03-20 |  |  | STRUCTURAL STEEL [1120 h]; Cost | CR5S105103C0 | CB | C | R5 | S1 | ST | 051 | 03 | BILL 4 | B04 | S1 | 02 | R00 | ACF03 | 051 | 298 | 331 | 100 | ST |  |  |  |  |  |  |  |  |  |
| CR5S205103C0 |  | CB-R5 ; Alignment & welding for parapet (Zone S2) | 5d | 2011-03-14 A | 2011-03-26 A | CR5S205101C0 | 100% |  | 2011-03-14 | 2011-03-20 |  |  | STRUCTURAL STEEL [124 h]; Cost | CR5S205103C0 | CB | C | R5 | S2 | ST | 051 | 03 | BILL 4 | B04 | S1 | 02 | R00 | ACF03 | 051 | 298 | 337 | 100 | ST |  |  |  |  |  |  |  |  |  |
| CR5CO04413C0 |  | CB-R5 ; M2 Bracket (Common Zone) | 90d | 2011-08-10 A | 2011-10-10 | CR5S103335C0, CR5S203335C0, CR5S105101C0, CR5S205101C0 | 90% | 9d | 2011-07-31 | 2011-11-17 | 192.4d | 13d | FACADE METAL PANEL 2 [4190.7 h]; Cost | CR5CO04413C0 | CB | C | R5 | CO | FA | 044 | 13 | BILL 4 | B04 | S1 | FM2 | R00 | ACF05 | 044 | 940 | 254 |  | FA |  |  | 0 | 0 | 0 | 0 | 35 | 0 |  |
| CR5CO04415C0 |  | CB-R5 ; M2 Metal Panel (Common Zone) | 54d | 2011-10-26 | 2012-01-03 | C04CO04409C0 SS, C04CO04409C0 FF, CR5CO04413C0 |  |  |  |  | 179.4d | 0d | FACADE METAL PANEL 2 [10122.3 h]; FACADE METAL PANEL 2 [3700 m2]; FACADE TOTAL QUANTITY m2 [3700 m2]; Cost | CR5CO04415C0 | CB | C | R5 | CO | FA | 044 | 15 | BILL 4 | B04 | S1 | FM2 | R00 | ACF05 | 044 | 941 | 255 |  | FA |  |  |  |  |  |  |  |  |  |
| CR5CO04406C0 |  | CB-R5 ; SG Catwalk Installation (Common Zone) | 48d | 2012-04-08 | 2012-06-02 | CR5CO04415C0 SS, C04CO04412C0 SS, C04CO04413C0 |  |  |  |  | 257.5d | 92d | Labor General [3205.7 h]; Cost | C04CO04401C0 | CB | C | R5 | CO | FA | 044 | 01 | BILL 4 | B04 | S1 | SG | R00 | ACF05 | 044 | 940 | 193 |  | FA |  |  |  |  |  |  |  |  |  |
|  | 09 | **Roof** |  |  |  |  |  |  |  |  |  |  |  |  |  |  |  |  |  |  |  |  |  |  |  |  |  |  |  |  |  |  |  |  |  |  |  |  |  |  |  |
|  | 10 | **BMU** |  | 2011-04-12 | 2011-10-02 |  |  |  |  |  |  |  |  |  |  |  |  |  |  |  |  |  |  |  |  |  |  |  |  |  |  |  |  |  |  |  |  |  |  |  |  |
| CR5BM03301C0 |  | CB-R5 ; Concrete Plinth (BMU-A5-1,2) | 18d | 2011-04-12 A | 2011-04-28 A | CR5S103335C0, CR5S203335C0 | 100% |  | 2011-04-02 | 2011-04-23 |  |  | CONCRETE [7080 h]; CONCRETE [178 m3]; Cost | CR5BM03301C0 | CB | C | R5 | BM | CT | 033 | 01 | BILL 4 | B04 | S1 | 10 | R00 | ACF03 | 033 | 302 | 335 | 100 |  | 03 |  |  |  |  |  |  |  |  |
| CR5BM05501C0 |  | CB-R5 ; Steel Tracking (BMU-A5-1,2) | 42d | 2011-08-10 A | 2011-09-29 A | CR5BM03301C0, OGNMU00053S0 | 100% |  | 2011-07-31 | 2011-09-19 |  |  | SECONDARY STEEL [1164 h]; Cost | CR5BM05501C0 | CB | C | R5 | BM | BMU | 055 | 01 | BILL 4 | B04 | S1 | BMU | R00 | ACF03 | BMU | 302 | 335 |  | BMU | 03 |  |  |  |  |  | 95 | 0 |  |
| CR5BM11001C0 |  | CB-R5 ; BMU Machine (BMU-A5-1,2) | 30d | 2011-08-10 A | 2011-10-02 | CR5BM05501C0 | 95% | 1.5d | 2012-01-25 | 2012-03-01 | 450d | 270.5d | FF&E [3954 h]; FF&E [1318.11 no]; MECHANICAL [14418 h]; Cost | CR5BM11001C0 | CB | C | R5 | BM | BMU | 110 | 01 | BILL 4 | B04 | S1 | BMU | R00 |  | BMU | 302 | 335 |  | BMU | 03 |  |  |  |  |  | 95 | 0 |  |
|  | 11 | **Landscaping** |  | 2011-05-15 | 2012-09-20 |  |  |  |  |  |  |  |  |  |  |  |  |  |  |  |  |  |  |  |  |  |  |  |  |  |  |  |  |  |  |  |  |  |  |  |  |
| CR5LS03301C0 |  | CB-R5 ; Features Concrete (Landscaping) | 24d | 2011-05-15 A | 2011-05-30 A | CR5BM03301C0 FF, CR5S103335C0, CR5S203335C0 | 100% |  | 2011-07-07 | 2011-08-04 |  |  | CONCRETE [1048 h]; Cost | CR5LS03301C0 | CB | C | R5 | LS | CT | 033 | 01 | BILL 4 | B12 | S1 | 10 | R00 | ACF03 | 033 | 302 | 335 | 100 |  | 03 |  |  |  |  |  |  |  |  |
| CR5RF07101C0 |  | CB-R5 ; Water Proofing Membrane (Roof) | 24d | 2011-10-01 | 2011-10-27 | CR5BM03301C0, CR5LS03301C0, CR5S103335C0, CR5S105103C0, CR5S203335C0, CR5S205103C0 |  |  |  |  | 302.5d | 0d | THERMAL & MOISTURE [680 h]; Cost | CR5RF07101C0 | CB | C | R5 | RF | FF | 071 | 01 | BILL 4 | B04 | S1 | 01 | R00 | ACF03 | 071 | 302 | 335 |  |  | 03 |  |  |  |  |  |  |  |  |
| CR5LS05301C0 |  | CB-R5 ; Steel Bracket for Corten (Landscaping) | 24d | 2011-10-29 | 2011-11-29 | CR5LS03301C0, CR5RF07101C0 |  |  |  |  | 302.5d | 0d | SECONDARY STEEL [2330 h]; Cost | CR5LS05301C0 | CB | C | R5 | LS | SW | 053 | 01 | BILL 4 | B12 | S1 | 06 | R00 | ACF03 | 053 | 302 | 335 |  | MEP | 03 |  |  |  |  |  |  |  |  |
| CR5LS32113C0 |  | CB-R5 ; Irrigation - pipes & fittings (Landscaping) | 12d | 2011-10-29 | 2011-11-14 | CR5RF07101C0 |  |  |  |  | 326.5d | 24d | Labor General [0.5 h]; Cost | CR5LS32113C0 | CB | C | R5 | LS | LN | 321 | 13 | BILL 12 | B12 | S1 | 05 | R00 | ACF09 | 328 | 1087 | 202 |  |  |  |  |  |  |  |  |  |  |  |
| CR5LS10201C0 |  | CB-R5 ; Corten (Landscaping) | 36d | 2011-11-05 | 2011-12-21 | CR5LS05301C0 SS+6d |  |  |  |  | 317.5d | 0d | LANDSCAPING [575 h]; Cost | CR5LS10201C0 | CB | C | R5 | LS | LN | 102 | 01 | BILL 12 | B12 | S1 | 03 | R00 | ACF09 | 102 | 302 | 335 |  |  | 03 |  |  |  |  |  |  |  |  |
| CR5LS32105C0 |  | CB-R5 ; Storm drainage utilities (Landscaping) | 12d | 2011-11-30 | 2011-12-14 | CR5LS03301C0, CR5LS05301C0 |  |  |  |  | 302.5d | 0d | LANDSCAPING [16 h]; Cost | CR5LS32105C0 | CB | C | R5 | LS | LN | 321 | 05 | BILL 12 | B12 | S1 | 05 | R00 | ACF09 | 328 | 1081 | 196 |  |  |  |  |  |  |  |  |  |  |  |
| CR5LS07101C0 |  | CB-R5 ; Water Proofing - Leave out (Landscaping) | 21d | 2011-12-15 | 2012-01-09 | CP1CO04411C0, C01CO04411C0, CR5LS05301C0 SS, CR5LS32105C0, CR5LS32113C0 |  |  |  |  | 302.5d | 0d | THERMAL & MOISTURE [48 h]; Cost | CR5LS07101C0 | CB | C | R5 | LS | FF | 071 | 01 | BILL 4 | B04 | S1 | 01 | R00 | ACF03 | 071 | 302 | 335 |  |  | 03 |  |  |  |  |  |  |  |  |
| CR5LS32111C10 |  | CB-R5 ; Planting Media | 0d | 2011-12-22 | 2011-12-22 | CR5LS10201C0, CR5LS32113C0 |  |  |  |  | 317.5d | 15d | Cost |  | CB | C | R5 | LS | LN | 321 |  |  | B12 |  | L5 | R00 |  | 329 |  |  |  |  |  |  |  |  |  |  |  |  |  |
| CR5RF09601C0 |  | CB-R5 ; Paving / Surfacing (Roof) | 30d | 2012-01-10 | 2012-02-14 | CR5LS32111C10, CR5LS07101C0, CR5LS05301C0 |  |  |  |  | 302.5d | 0d | ASSORTED FLOOR FINISH [1344 h]; Cost | CR5RF09601C0 | CB | C | R5 | RF | FF | 096 | 01 | BILL 4 | B12 | S1 | 02 | R00 | ACF06 | PV | 302 | 335 |  |  | 03 |  |  |  |  |  |  |  |  |
| CR5LS11001C0 |  | CB-R5 ; SIte Furniture's (Landscaping) | 24d | 2012-02-15 | 2012-03-13 | CR5RF09601C10 |  |  |  |  | 302.5d | 137d | FF&E [169 h]; FF&E [56.46 no]; Cost | CR5LS11001C0 | CB | C | R5 | LS | LN | 110 | 01 | BILL 12 | B12 | S1 | 04 | R00 | ACF10 | e | 302 | 335 |  |  | 03 |  |  |  |  |  |  |  |  |
| CR5RF09601C10 |  | CB-R5 ; Wooden Deck (Landscaping) | 0d | 2012-02-15 | 2012-02-15 | CR5RF09601C0 |  |  |  |  | 302.5d | 0d | Cost | CR5RF09601C0 | CB | C | R5 | RF | FF | 096 | 01 | BILL 4 | B12 | S1 | 02 | R00 | ACF06 | WD | 302 | 335 |  |  | 60 |  |  |  |  |  |  |  |  |
| CR5LS32111C0 |  | CB-R5 ; Plants & planing (Landscaping) | 24d | 2012-08-25 | 2012-09-20 | CR5LS32105C0, CR5LS32111C10, LP31L07104R72 |  |  |  |  | 165.5d | 0d | LANDSCAPING [1101 h]; Cost | CR5LS32111C0 | CB | C | R5 | LS | LN | 321 | 11 | BILL 12 | B12 | S1 | 06 | R00 | ACF09 | 329 | 1083 | 198 |  |  |  |  |  |  |  |  |  |  |  |
| LP31L07104R72 |  | CB-R5 ; Leave-out surface and paving (Landscaping) | 0d | 2012-08-25 | 2012-08-25 | TEXCO04413C0 FS+12d, CR5LS11001C0, CR5LS32113C0 |  |  |  |  | 165.5d | 0d | Cost |  | CB |  | R5 | LS | XW | 312 |  |  | B12 |  |  | R00 |  | 312 |  |  |  |  |  |  |  |  |  |  |  |  | new |

| ID | WBS | Activity | Duration | Start | Finish | Predecessors | Complete | Remaining | Planned start | Planned finish | Total float | Free float | Resources | Cost | Actual cost | change id | CCAD BUILDING(SET) | CCAD PHASE(SET) | CCAD FLOOR(SET) | CCAD ZONE(SET) | CCAD WORK(SET) | CCAD SECTION(SET) | CCAD SERIAL No.(SET) | CCAD CBS(SET) | CCAD BILL(SET) | CCAD HANDOVER(SET) | CCAD TAG(SET) | CCAD REV(SET) | CCADACF (SET) | CCAD SSCF | Change Order # | NEW ACTIVITY ID | RENZ % COMPLETE | July2011 Target% Complete | P_811 | P_711 | CCAD SUB ZONE MEP(SET) | CCAD CSA | Claimed This Month | PERCENT COMPLETE | user_number8 | user_integer1 | user_integer2 | user_number7 |
| --- | --- | --- | --- | --- | --- | --- | --- | --- | --- | --- | --- | --- | --- | --- | --- | --- | --- | --- | --- | --- | --- | --- | --- | --- | --- | --- | --- | --- | --- | --- | --- | --- | --- | --- | --- | --- | --- | --- | --- | --- | --- | --- | --- | --- |
|  | 1 | **Precommissioning Tesing & snagging** |  | 2012-08-25 | 2012-10-16 |  |  |  |  |  |  |  |  |  |  |  |  |  |  |  |  |  |  |  |  |  |  |  |  |  |  |  |  |  |  |  |  |  |  |  |  |  |  |  |
| CR5TS01801C0 |  | CB-R5 ; MEP de-snag, FIREM sign-off | 10d | 2012-08-25 | 2012-09-04 | CR5BM11001C0, CR5LS32113C0, LP31L07104R72, LP31L07104R82 |  |  |  |  | 179.5d | 14d | TESTING & COMMISSIONING [1530 h]; Cost |  |  | CR5TS01801C0 | CB | C | R5 | TS | SC | 018 | 01 | BILL 4 | B04 | S1 | 01 | R00 | ACF07 | 018 |  |  |  |  |  |  |  |  |  |  |  |  |  |  |
| CR5TS01802C0 |  | CB-R5 ; Touch-up & Clean / JV inspection /CIR /De-snag | 14.5d | 2012-09-22 | 2012-10-08 | CAFT1105509C0, CAFT1205509C0, CAFT1505509C0, CR5CO04406C0, CR5CO04415C0, CR5LS11001C0, CR5TS01801C0, DAFT905509C0, CR5LS32111C0 |  |  |  |  | 165.5d | 0d | TESTING & COMMISSIONING [255 h]; Cost |  |  | CR5TS01802C0 | CB | C | R5 | TS | SC | 018 | 02 | BILL 4 | B04 | S1 | 02 | R00 | ACF07 | 018 |  |  |  |  |  |  |  |  |  |  |  |  |  |  |
| CR5TS01803C0 |  | CB-R5 ; Consultant's final de-snag inspection | 7d | 2012-10-08 | 2012-10-16 | CR5TS01802C0 |  |  |  |  | 165.5d | 162.62d | Labor General [0.5 h]; Cost |  |  | CR5TS01803C0 | CB | C | R5 | TS | SC | 018 | 03 | BILL 4 | B04 | S1 | 03 | R00 | ACF07 | 018 |  |  |  |  |  |  |  |  |  |  |  |  |  |  |
|  | AF | **MEP Risers** |  | 2010-07-10 | 2012-09-09 |  |  |  |  |  |  |  |  |  |  |  |  |  |  |  |  |  |  |  |  |  |  |  |  |  |  |  |  |  |  |  |  |  |  |  |  |  |  |  |
|  | 01 | **MEP Risers** |  | 2010-07-10 | 2012-02-14 |  |  |  |  |  |  |  |  |  |  |  |  |  |  |  |  |  |  |  |  |  |  |  |  |  |  |  |  |  |  |  |  |  |  |  |  |  |  |  |
| CAFAF26043C0 |  | CB-AF ; Risers-Lightning protection cables (All Floor) | 200d | 2010-07-10 A | 2011-10-11 | CR5S103335C0, CR5S203335C0 | 95% | 10d | 2011-04-16 | 2011-12-14 | 288.88d | 91d | ELECTRICAL [26284.8 h]; Cost [1434832 AED] | 1,434,832 | 1,363,090.4 | CAFAF26043C0 | CB | C | AF | AF | ME | 260 | 43 | BILL 11 | B04 | S1 | MEL | R00 | ACF04 | 260 | 1131 | 1524 | 50 | 95 | 95 | 90 | RI | MEP |  |  |  |  |  |  |
| CAFAF23025C0 |  | CB-AF ; Risers-Secondary Steel for Main Ducts (All Floor) | 18d | 2011-03-12 A | 2011-07-30 A | CR5S105101C0, CR5S205101C0 | 100% |  | 2011-03-14 | 2011-04-04 |  |  | Cost [257349 AED] | 257,348.8 | 257,348.8 | CAFAF23025C0 | CB | C | AF | AF | ME | 230 | 25 | BILL 11 | B04 | S1 | RI | R00 | ACF04 | 230 | 1127 | 229 | 50 | 100 |  |  | RI | MEP |  |  |  |  |  |  |
| CAFAF23027C0 |  | CB-AF ; Risers-Secondary Steel for Chilled water & heat recovery pip (All Floor) | 18d | 2011-03-12 A | 2011-05-09 A | CR5S105101C0, CR5S205101C0 SS | 100% |  | 2011-03-14 | 2011-04-04 |  |  | Cost [174732 AED] | 174,731.75 | 174,731.75 | CAFAF23027C0 | CB | C | AF | AF | ME | 230 | 27 | BILL 11 | B04 | S1 | RI | R00 | ACF04 | 230 | 1128 | 230 | 100 |  |  |  | RI | MEP |  |  |  |  |  |  |
| CAFAF23029C0 |  | CB-AF ; Risers-Chilled water & heat recovery pip (All Floor) | 200d | 2011-03-24 A | 2011-10-23 | CAFAF23027C0 | 90% | 20d | 2011-04-04 | 2011-12-01 | 175d | 41d | MECHANICAL [58879.2 h]; Cost [3040332 AED] | 3,040,332.45 | 2,736,299.2 | CAFAF23029C0 | CB | C | AF | AF | ME | 230 | 29 | BILL 11 | B04 | S1 | RI | R00 | ACF04 | 230 | 1128 | 1521 | 45 | 95 |  |  | RI | MEP | 1234355.5 |  |  |  |  |  |
| CAFAF21101C0 |  | CB-AF ; Risers-Secondary Steel for fire Suppression (All Floor) | 200d | 2011-04-04 A | 2011-10-01 | CR5S105101C0, CR5S205101C0 | 100% | 0d | 2011-03-14 | 2011-11-09 | 278.88d | 0d | Cost [57729 AED] | 57,729 | 54,842.55 | CAFAF21101C0 | CB | C | AF | AF | ME | 211 | 01 | BILL 11 | B04 | S1 | 1F | R00 | ACF04 | 211 | 1121 | 223 | 80 |  |  |  | RI | MEP |  |  |  |  |  |  |
| CAFAF22005C0 |  | CB-AF ; Risers-Secondary Steel for Domestic cold water risers (All Floor) | 18d | 2011-04-04 A | 2011-07-30 A | CR5S105101C0, CR5S205101C0 | 100% |  | 2011-03-14 | 2011-04-04 |  |  | Cost [4823.8 AED] | 4,823.8 | 4,823.8 | CAFAF22005C0 | CB | C | AF | AF | ME | 220 | 05 | BILL 11 | B04 | S1 | RI | R00 | ACF04 | 220 | 1122 | 224 | 70 | 100 |  |  | RI | MEP |  |  |  |  |  |  |
| CAFAF22011C0 |  | CB-AF ; Risers-Secondary Steel for Soil, waste & vent ris (All Floor) | 120d | 2011-04-04 A | 2011-10-01 | CR5S105101C0, CR5S205101C0 | 100% | 0d | 2011-03-14 | 2011-08-02 | 268.88d | 0d | Cost [25598 AED] | 25,597.95 | 19,198.46 | CAFAF22011C0 | CB | C | AF | AF | ME | 220 | 11 | BILL 11 | B04 | S1 | RI | R00 | ACF04 | 220 | 1125 | 227 | 100 |  |  |  | RI | MEP |  |  |  |  |  |  |
| CAFAF22021C0 |  | CB-AF ; Risers-Hot water risers (All Floor) | 150d | 2011-04-04 A | 2011-10-17 | CAFAF22007C0 | 90% | 15d | 2011-04-04 | 2011-09-29 | 283.88d | 86d | PLUMBING [6603.6 h]; Cost [341376 AED] | 341,375.82 | 307,238.24 | CAFAF22021C0 | CB | C | AF | AF | ME | 220 | 21 | BILL 11 | B04 | S1 | RI | R00 | ACF04 | 220 | 1123 | 1516 | 20 | 90 |  |  | RI | MEP |  |  |  |  |  |  |
| CAFAF22009C0 |  | CB-AF ; Risers-Secondary Steel for Medical Gas/air/vacuum risers (All Floor) | 17d | 2011-04-05 A | 2011-07-30 A | CR5S105101C0, CR5S205101C0 | 100% |  | 2011-03-15 | 2011-04-03 |  |  | Cost [8696.5 AED] | 8,696.5 | 8,696.5 | CAFAF22009C0 | CB | C | AF | AF | ME | 220 | 09 | BILL 11 | B04 | S1 | RI | R00 | ACF04 | 220 | 1124 | 226 | 50 | 100 |  |  | RI | MEP |  |  |  |  |  |  |
| CAFAF22013C0 |  | CB-AF ; Risers-Secondary Steel for Storm water drainage risers (All Floor) | 18d | 2011-04-05 A | 2011-08-30 A | CR5S105101C0, CR5S205101C0 | 100% |  | 2011-03-14 | 2011-04-04 |  |  | Cost [46437.9 AED] | 46,437.9 | 46,437.9 | CAFAF22013C0 | CB | C | AF | AF | ME | 220 | 13 | BILL 11 | B04 | S1 | RI | R00 | ACF04 | 220 | 1126 | 228 | 70 |  | 100 | 70 | RI | MEP |  |  |  |  |  |  |
| CAFAF22007C0 |  | CB-AF ; Risers-Secondary Steel for Hot water risers (All Floor) | 18d | 2011-04-12 A | 2011-07-30 A | CR5S105101C0, CR5S205101C0 | 100% |  | 2011-03-14 | 2011-04-04 |  |  | Cost [19619.3 AED] | 19,619.3 | 19,619.3 | CAFAF22007C0 | CB | C | AF | AF | ME | 220 | 07 | BILL 11 | B04 | S1 | RI | R00 | ACF04 | 220 | 1123 | 225 | 50 | 100 |  |  | RI | MEP |  |  |  |  |  |  |
| CAFAF21103C0 |  | CB-AF ; Risers-Fire Suppression risers (All Floor) | 200d | 2011-04-17 A | 2011-10-23 | CAFAF21101C0 | 90% | 20d | 2011-04-04 | 2011-12-01 | 278.88d | 81d | MECHANICAL [19456.8 h]; Cost [1004485 AED] | 1,004,484.6 | 904,036.14 | CAFAF21103C0 | CB | C | AF | AF | ME | 211 | 03 | BILL 11 | B04 | S1 | 1F | R00 | ACF04 | 211 | 1121 | 1514 | 70 | 90 | 90 | 85 | RI | MEP |  |  |  |  |  |  |
| CAFAF23031C0 |  | CB-AF ; Risers-Risers - Main Ducts (All Floor) | 200d | 2011-04-17 A | 2011-10-11 | CAFAF23025C0 | 95% | 10d | 2011-04-04 | 2011-12-01 | 288.88d | 91d | MECHANICAL [84295.2 h]; Cost [4477869 AED] | 4,477,869.12 | 4,253,975.66 | CAFAF23031C0 | CB | C | AF | AF | ME | 230 | 31 | BILL 11 | B04 | S1 | RI | R00 | ACF04 | 230 | 1127 | 1520 | 85 | 95 |  |  | RI | MEP | 519282.2 |  |  |  |  |  |
| CAFAF22017C0 |  | CB-AF ; Risers-Storm water drainage risers (All Floor) | 60d | 2011-04-18 A | 2011-08-30 A | CAFAF22013C0 | 100% |  | 2011-04-04 | 2011-06-13 |  |  | PLUMBING [15649.2 h]; Cost [808019 AED] | 808,019.46 | 808,019.46 | CAFAF22017C0 | CB | C | AF | AF | ME | 220 | 17 | BILL 11 | B04 | S1 | RI | R00 | ACF04 | 220 | 1126 | 1519 | 75 | 90 | 100 | 85 | RI | MEP | 46866 |  |  |  |  |  |
| CAFAF22023C0 |  | CB-AF ; Risers-Soil, waste & vent risers (All Floor) | 200d | 2011-04-18 A | 2011-11-03 | CAFAF22011C0 | 85% | 30d | 2011-04-04 | 2011-12-01 | 268.88d | 71d | PLUMBING [8619.6 h]; Cost [445404 AED] | 445,404.33 | 378,593.68 | CAFAF22023C0 | CB | C | AF | AF | ME | 220 | 23 | BILL 11 | B04 | S1 | RI | R00 | ACF04 | 220 | 1125 | 1518 | 75 | 90 | 95 | 90 | RI | MEP | 77445.3 | 85 |  |  |  |  |
| CAFAF26033C0 |  | CB-AF ; Risers-Tray for High voltage cables (All Floor) | 200d | 2011-05-15 A | 2011-10-11 | CR5S105101C0, CR5S205101C0 | 95% | 10d | 2011-05-31 | 2012-01-29 | 25.01d | 0d | ELECTRICAL [5881.2 h]; Cost [321257 AED] | 321,256.64 | 305,193.81 | CAFAF26033C0 | CB | C | AF | AF | ME | 260 | 33 | BILL 11 | B04 | S1 | MEL | R00 | ACF04 | 260 | 1129 | 231 | 10 | 95 |  |  | RI | MEP | 316617.73 |  |  |  |  |  |
| CAFAF26035C0 |  | CB-AF ; Risers-Tray for Low voltage cables (power, comm) (All Floor) | 200d | 2011-05-15 A | 2011-12-04 | CR5S105101C0, CR5S205101C0, A10290 FS+88d | 95% | 10d | 2011-05-31 | 2012-01-29 | 24.25d | 0d | ELECTRICAL [13233.6 h]; Cost [908818 AED] | 908,818.13 | 863,377.22 | CAFAF26035C0 | CB | C | AF | AF | ME | 260 | 35 | BILL 11 | B04 | S1 | MEL | R00 | ACF04 | 260 | 1130 | 232 | 10 | 95 |  |  | RI | MEP |  |  |  |  |  |  |
| CAFAF22019C0 |  | CB-AF ; Risers-Domestic cold water risers (All Floor) | 150d | 2011-05-22 A | 2011-11-03 | CAFAF22005C0 | 80% | 30d | 2011-04-04 | 2011-09-29 | 268.88d | 71d | PLUMBING [1626 h]; Cost [83934.1 AED] | 83,934.12 | 67,147.3 | CAFAF22019C0 | CB | C | AF | AF | ME | 220 | 19 | BILL 11 | B04 | S1 | RI | R00 | ACF04 | 220 | 1122 | 1515 | 10 | 90 | 80 | 15 | RI | MEP |  |  | 0 | 0 | 0 | 0 |
| CAFAF26039C0 |  | CB-AF ; Risers-High voltage cables (All Floor) | 200d | 2011-06-15 A | 2011-10-23 | CAFAF26033C0 | 95% | 10d | 2011-08-02 | 2012-04-01 | 25.01d | 16d | ELECTRICAL [43215.6 h]; Cost [2359147 AED] | 2,359,146.8 | 2,241,189.46 | CAFAF26039C0 | CB | C | AF | AF | ME | 260 | 39 | BILL 11 | B04 | S1 | MEL | R00 | ACF04 | 260 | 1129 | 1522 |  | 95 | 95 | 90 | RI | MEP | 2600373.74 |  |  |  |  |  |
| CAFAF22015C0 |  | CB-AF ; Risers-Medical Gas/air/vacuum risers (All Floor) | 150d | 2011-07-10 A | 2011-10-26 | CAFAF22009C0 | 85% | 22.5d | 2011-07-11 | 2012-01-10 | 276.38d | 78.5d | PLUMBING [2930.4 h]; Cost [151319 AED] | 151,319.1 | 128,621.23 | CAFAF22015C0 | CB | C | AF | AF | ME | 220 | 15 | BILL 11 | B04 | S1 | RI | R00 | ACF04 | 220 | 1124 | 1517 |  | 75 | 80 | 40 | RI | MEP |  |  | 0 | 0 | 0 | 0 |
| CAFAF26037C0 |  | CB-AF ; Risers-Tray for ELV risers (All Floor) | 60d | 2011-08-10 A | 2012-01-11 | CR5S105101C0, CR5S205101C0, A10290 FS+88d | 30% | 42d | 2011-07-31 | 2011-10-10 | 215.88d | 18d | ELECTRICAL [5413.2 h]; Cost [295596 AED] | 295,596 | 88,678.8 | CAFAF26037C0 | CB | C | AF | AF | ME | 260 | 37 | BILL 11 | B04 | S1 | MEL | R00 | ACF04 | 260 | 1132 | 233 |  | 85 | 30 | 0 | RI | MEP |  |  |  |  |  |  |
| CAFAF26041C0 |  | CB-AF ; Risers-ELV Cables (All Floor) | 60d | 2011-11-21 | 2012-02-01 | CAFAF21103C0 FF, CAFAF22015C0 FF, CAFAF22017C0 FF, CAFAF22019C0 FF, CAFAF22021C0 FF, CAFAF22023C0 FF, CAFAF23029C0 SS+56d, CAFAF23031C0 FF, CAFAF26037C0 FF, CAFAF26043C0 FF, A10290 FS+88d |  |  |  |  | 197.88d | 10d | ELECTRICAL [7154.4 h]; Cost |  |  | CAFAF26041C0 | CB | C | AF | AF | ME | 260 | 41 | BILL 11 | B04 | S1 | MEL | R00 | ACF04 | 260 | 1132 | 1525 |  | 95 |  |  | RI | MEP | 430486.71 |  |  |  |  |  |
| CAFAF26045C0 |  | CB-AF ; Risers-Low voltage cables (power, comm, security) (All Floor) | 60d | 2011-12-05 | 2012-02-14 | CAFAF26035C0, A10290 FS+88d |  |  |  |  | 24.25d | 0d | ELECTRICAL [52934.4 h]; Cost |  |  | CAFAF26045C0 | CB | C | AF | AF | ME | 260 | 45 | BILL 11 | B04 | S1 | MEL | R00 | ACF04 | 260 | 1130 | 1523 |  | 60 |  |  | RI | MEP | 1897596.85 |  |  |  |  |  |

| ID | WBS | Activity | Type | Duration | Start | Finish | Predecessors | Total float | Free float | Constraint | Resources | change id | CCAD BUILDING(SET) | CCAD PHASE(SET) | CCAD FLOOR(SET) | CCAD ZONE(SET) | CCAD WORK(SET) | CCAD SECTION(SET) | CCAD SERIAL No.(SET) | CCAD CBS(SET) | CCAD BILL(SET) | CCAD HANDOVER(SET) | CCAD TAG(SET) | CCAD REV(SET) | CCADACF (SET) | CCAD SSCF | Change Order # | NEW ACTIVITY ID | CCAD CSA | user_end_date3 | user_end_date4 | Phase |
| --- | --- | --- | --- | --- | --- | --- | --- | --- | --- | --- | --- | --- | --- | --- | --- | --- | --- | --- | --- | --- | --- | --- | --- | --- | --- | --- | --- | --- | --- | --- | --- | --- |
|  | 04 | **Hand Over** |  |  |  |  |  |  |  |  |  |  |  |  |  |  |  |  |  |  |  |  |  |  |  |  |  |  |  |  |  |  |
|  | 10 | **Precommissioning Tesing & snagging** |  |  | 2012-02-15 | 2012-09-09 |  |  |  |  |  |  |  |  |  |  |  |  |  |  |  |  |  |  |  |  |  |  |  |  |  |  |
| CAFTS01801C0 |  | CB-AF ; MEP de-snag, FIREM sign-off |  | 12d | 2012-02-15 | 2012-02-28 | CAFAF26039C0, CAFAF26041C0, CAFAF26045C0, CVT3914253C0, CVTVT14305C0 | 187.88d | 0d |  | TESTING & COMMISSIONING [2040 h]; Cost | CAFTS01801C0 | CB | C | AF | TS | SC | 018 | 01 | BILL 11 | B04 | S1 | 01 | R00 | ACF07 | 018 |  |  |  |  |  |  |
| CAFTS01802C0 |  | CB-AF ; Touch-up & Clean / JV inspection /CIR /De-snag |  | 18d | 2012-02-29 | 2012-03-20 | CAFTS01801C0, CVT3914253C0, CVTVT14305C0 | 187.88d | 137.93d |  | TESTING & COMMISSIONING [340 h]; Cost | CAFTS01802C0 | CB | C | AF | TS | SC | 018 | 02 | BILL 11 | B04 | S1 | 02 | R00 | ACF07 | 018 |  |  |  |  |  |  |
| CAFTS01803C0 |  | CB-AF ; Consultant's final de-snag inspection |  | 7d | 2012-09-01 | 2012-09-09 | CAFTS01802C0, C04TS01807C0 | 49.95d | 0d |  | Labor General [0.5 h]; Cost | CAFTS01803C0 | CB | C | AF | TS | SC | 018 | 03 | BILL 11 | B04 | S1 | 03 | R00 | ACF07 | 018 |  |  |  |  |  |  |
|  | VT | **Vertical Transportation** |  |  | 2011-09-05 | 2012-11-24 |  |  |  |  |  |  |  |  |  |  |  |  |  |  |  |  |  |  |  |  |  |  |  |  |  |  |
|  | EL | **Lift (#39~40)** |  |  | 2011-11-15 | 2012-11-24 |  |  |  |  |  |  |  |  |  |  |  |  |  |  |  |  |  |  |  |  |  |  |  |  |  |  |
| CVT3914203C0 |  | CB-AF ; Ele(#39,40)-Fixing template, Plumbing (Lift) |  | 3d | 2011-11-15 | 2011-11-17 | BLZTC01544C0, C04SC03311C0, C04SD03311C0, CR5S103335C0 FS+21d, CR5S203335C0 FS+21d, GNHE08101C10 FS+75d | 41.48d | 0d |  | SERVICE LIFTS [7 h]; Cost | CVT3914203C0 | CB | C | VT | 39 | EL | 142 | 03 | BILL 11 | B11 | S1 | 09 | R00 | ACF11 | 142 | 1102 | 204 | LE |  |  |  |
| CVT3914205C0 |  | CB-AF ; Ele(#39,40)-Install first rails (Lift) |  | 4d | 2011-11-19 | 2011-11-22 | CVT3914203C0, CVT3914203C0 SS | 41.48d | 0d |  | SERVICE LIFTS [15 h]; Cost | CVT3914205C0 | CB | C | VT | 39 | EL | 142 | 05 | BILL 11 | B11 | S1 | 09 | R00 | ACF11 | 142 |  |  | LE |  |  |  |
| CVT3914207C0 |  | CB-AF ; Ele(#39,40)-Build false car (Lift) |  | 3d | 2011-11-23 | 2011-11-27 | CVT3914205C0 | 41.48d | 0d |  | SERVICE LIFTS [22 h]; Cost | CVT3914207C0 | CB | C | VT | 39 | EL | 142 | 07 | BILL 11 | B11 | S1 | 09 | R00 | ACF11 | 142 | 1104 | 8010 | LE |  |  |  |
| CVT3914209C0 |  | CB-AF ; Ele(#39,40)-Install brackets, rails (Lift) |  | 8d | 2011-11-28 | 2011-12-07 | CVT3914207C0 | 41.48d | 0d |  | SERVICE LIFTS [254 h]; Cost | CVT3914209C0 | CB | C | VT | 39 | EL | 142 | 09 | BILL 11 | B11 | S1 | 09 | R00 | ACF11 | 142 | 1105 | 207 | LE |  |  |  |
| CVT3914211C0 |  | CB-AF ; Ele(#39,40)-Install Entrance frames & doors (Lift) |  | 4d | 2011-12-08 | 2011-12-12 | CVT3914209C0 | 41.48d | 0d |  | SERVICE LIFTS [187 h]; Cost | CVT3914211C0 | CB | C | VT | 39 | EL | 142 | 11 | BILL 11 | B11 | S1 | 09 | R00 | ACF11 | 142 |  |  | LE |  |  |  |
| CVT3914213C0 |  | CB-AF ; Ele(#39,40)-Install Machine & Controller (Lift) |  | 5d | 2011-12-13 | 2011-12-18 | CVT3914211C0 | 41.48d | 0d |  | SERVICE LIFTS [269 h]; Cost | CVT3914213C0 | CB | C | VT | 39 | EL | 142 | 13 | BILL 11 | B11 | S1 | 09 | R00 | ACF11 | 142 | 1107 | 209 | LE |  |  |  |
| CVT3914215C0 |  | CB-AF ; Ele(#39,40)-Install Governor & rope (Lift) |  | 3d | 2011-12-19 | 2011-12-21 | CVT3914213C0 | 41.48d | 0d |  | SERVICE LIFTS [52 h]; Cost | CVT3914215C0 | CB | C | VT | 39 | EL | 142 | 15 | BILL 11 | B11 | S1 | 09 | R00 | ACF11 | 142 | 1108 | 210 | LE |  |  |  |
| CVT3914217C0 |  | CB-AF ; Ele(#39,40)-Install counterweight frame (Lift) |  | 2d | 2011-12-22 | 2011-12-24 | CVT3914215C0 | 41.48d | 0d |  | SERVICE LIFTS [52 h]; Cost | CVT3914217C0 | CB | C | VT | 39 | EL | 142 | 17 | BILL 11 | B11 | S1 | 09 | R00 | ACF11 | 142 | 1109 | 211 | LE | 2011-08-13 |  |  |
| CVT3914219C0 |  | CB-AF ; Ele(#39,40)-Hoistway truncking & Wiring (Lift) |  | 4d | 2011-12-25 | 2011-12-28 | CVT3914217C0 | 41.48d | 0d |  | SERVICE LIFTS [60 h]; Cost | CVT3914219C0 | CB | C | VT | 39 | EL | 142 | 19 | BILL 11 | B11 | S1 | 09 | R00 | ACF11 | 142 | 1110 | 212 | LE | 2011-08-13 | 2011-08-15 |  |
| CVT3914221C0 |  | CB-AF ; Ele(#39,40)-Machine room wiring (Lift) |  | 4d | 2011-12-29 | 2012-01-03 | CVT3914219C0 | 41.48d | 0d |  | SERVICE LIFTS [15 h]; Cost | CVT3914221C0 | CB | C | VT | 39 | EL | 142 | 21 | BILL 11 | B11 | S1 | 09 | R00 | ACF11 | 142 | 1111 | 213 | LE | 2011-08-16 | 2011-08-18 |  |
| CVT3914223C0 |  | CB-AF ; Ele(#39,40)-Build car frame (Lift) |  | 2d | 2012-01-04 | 2012-01-05 | CVT3914221C0 | 41.48d | 0d |  | SERVICE LIFTS [97 h]; Cost | CVT3914223C0 | CB | C | VT | 39 | EL | 142 | 23 | BILL 11 | B11 | S1 | 09 | R00 | ACF11 | 142 | 1112 | 214 | LE | 2011-08-20 | 2011-08-22 |  |
| CVT3914225C0 |  | CB-AF ; Ele(#39,40)-Main roping (Lift) |  | 4d | 2012-01-07 | 2012-01-10 | CVT3914223C0 | 41.48d | 0d |  | SERVICE LIFTS [52 h]; Cost | CVT3914225C0 | CB | C | VT | 39 | EL | 142 | 25 | BILL 11 | B11 | S1 | 09 | R00 | ACF11 | 142 |  |  | LE | 2011-08-23 |  |  |
| CVT3914227C0 |  | CB-AF ; Ele(#39,40)-Loading counterweights (Lift) |  | 2d | 2012-01-11 | 2012-01-12 | CVT3914225C0 | 41.48d | 0d |  | SERVICE LIFTS [15 h]; Cost | CVT3914227C0 | CB | C | VT | 39 | EL | 142 | 27 | BILL 11 | B11 | S1 | 09 | R00 | ACF11 | 142 | 1114 | 216 | LE | 2011-09-11 | 2011-09-19 |  |
| CVT3914229C0 |  | CB-AF ; Ele(#39,40)-Dismantling false car (Lift) |  | 4d | 2012-01-14 | 2012-01-17 | CVT3914227C0 | 41.48d | 0d |  | SERVICE LIFTS [7 h]; Cost | CVT3914229C0 | CB | C | VT | 39 | EL | 142 | 29 | BILL 11 | B11 | S1 | 09 | R00 | ACF11 | 142 |  |  | LE |  |  |  |
| CVT3914231C0 |  | CB-AF ; Ele(#39,40)-Build cab & Wiring (Lift) |  | 12d | 2012-01-18 | 2012-01-31 | CVT3914229C0 | 41.48d | 0d |  | SERVICE LIFTS [97 h]; Cost | CVT3914231C0 | CB | C | VT | 39 | EL | 142 | 31 | BILL 11 | B11 | S1 | 09 | R00 | ACF11 | 142 | 1116 | 218 | LE |  |  |  |
| CVT3914253C0 |  | CB-AF ; Ele(#39,40)-Permanent power supply (Lift) |  | 0.12d | 2012-02-01 | 2012-02-01 | CVT3914231C0 | 41.48d | 0d |  | SERVICE LIFTS [0.5 h]; Cost | CVT3914253C0 | CB | C | VT | 39 | EL | 142 | 53 | BILL 11 | B11 | S1 | 09 | R00 | ACF11 | 142 | 1117 | 219 | LE |  |  |  |
| CVT3914241C0 |  | CB-AF ; Ele(#39,40)-Adjusting (Lift) |  | 15d | 2012-02-01 | 2012-02-20 | CVT3914253C0 | 41.48d | 0d |  | SERVICE LIFTS [30 h]; Cost | CVT3914241C0 | CB | C | VT | 39 | EL | 142 | 41 | BILL 11 | B11 | S1 | 09 | R00 | ACF11 | 142 |  | 9000 | LE |  |  |  |
| CVT3914247C0 |  | CB-AF ; Ele(#39,40)-Inspection, Testing & Commis (Lift) |  | 6d | 2012-02-20 | 2012-02-27 | CVT3914241C0 | 41.48d | 0d |  | SERVICE LIFTS [37 h]; Cost | CVT3914247C0 | CB | C | VT | 39 | EL | 142 | 47 | BILL 11 | B11 | S1 | 09 | R00 | ACF11 | 142 |  | 1531 | LE |  |  |  |
| CVT3914245C0 |  | CB-AF ; Ele(39,40)-CTU | level of effort | 191.68d | 2012-02-27 | 2012-10-10 | CVT3914247C0 | 7.33d | 0d |  | Labor General [0.5 h]; Cost |  |  |  |  |  |  |  |  |  | B11 |  |  | R00 | ACF00 | GEN |  |  |  |  |  | Z2 |
| CVT3914248C0 |  | CB-AF ; Ele(#39,40)-Refurbishment |  | 34.88d | 2012-10-10 | 2012-11-24 | CVT3914245C0, CVT3914247C0 | 7.33d | 0d | as late as possible | Labor General [0.5 h]; Cost | CVT3914247C0 | CB | C | VT | 39 | EL | 142 | 47 | BILL 11 | B11 | S1 | 09 | R00 | ACF11 | 142 |  | 1531 | LE |  |  |  |

| ID | WBS | Activity | Duration | Start | Finish | Predecessors | Complete | Remaining | Planned start | Planned finish | Total float | Free float | Resources | Change Order # | NEW ACTIVITY ID | change id | CCAD BUILDING(SET) | CCAD PHASE(SET) | CCAD FLOOR(SET) | CCAD ZONE(SET) | CCAD WORK(SET) | CCAD SECTION(SET) | CCAD SERIAL No.(SET) | CCAD CBS(SET) | CCAD BILL(SET) | CCAD HANDOVER(SET) | CCAD TAG(SET) | CCAD REV(SET) | CCADACF (SET) | CCAD CSA | CCAD SSCF | P_811 | P_711 | U% | RENZ % COMPLETE | CCAD DIVISION(SET) | Claimed This Month |
| --- | --- | --- | --- | --- | --- | --- | --- | --- | --- | --- | --- | --- | --- | --- | --- | --- | --- | --- | --- | --- | --- | --- | --- | --- | --- | --- | --- | --- | --- | --- | --- | --- | --- | --- | --- | --- | --- |
|  | ES | **Escalators** |  | 2011-09-05 | 2011-10-22 |  |  |  |  |  |  |  |  |  |  |  |  |  |  |  |  |  |  |  |  |  |  |  |  |  |  |  |  |  |  |  |  |
| CVTVT14301C0 |  | CB-VT ; Esc(3 Nos)-Escalators installation (Escalator) | 4d | 2011-09-05 A | 2011-10-01 | CR5S203335C0, CR5S103335C0 | 95% | 0.2d | 2012-05-19 | 2012-05-22 | 202.8d | 0d | SERVICE LIFTS [1518 h]; Cost | 1118 | 220 | CVTVT14301C0 | CB | C | VT | VT | EL | 143 | 01 | BILL 11 | B11 | S1 | ES | R00 | ACF11 | LE | 143 |  |  |  |  |  |  |
| CVTVT14303C0 |  | CB-VT ; Esc(3 Nos)-Final inspection (Escalator) | 4d | 2011-10-01 | 2011-10-05 | CVTVT14301C0 |  |  |  |  | 202.8d | 0d | SERVICE LIFTS [90 h]; Cost | 1120 | 222 | CVTVT14303C0 | CB | C | VT | VT | EL | 143 | 03 | BILL 11 | B11 | S1 | ES | R00 | ACF11 | LE | 143 |  |  |  |  |  |  |
| CVTVT14305C0 |  | CB-VT ; Esc(3 Nos)-Final Test (Escalator) | 14d | 2011-10-05 | 2011-10-22 | CVTVT14303C0 |  |  |  |  | 202.8d | 92.8d | SERVICE LIFTS [180 h]; Cost | 1119 | 221 | CVTVT14305C0 | CB | C | VT | VT | EL | 143 | 05 | BILL 11 | B11 | S1 | ES | R00 | ACF11 | LE | 143 |  |  |  |  |  |  |
|  | CZ | **Controlled Zone** |  | 2012-11-24 | 2013-03-19 |  |  |  |  |  |  |  |  |  |  |  |  |  |  |  |  |  |  |  |  |  |  |  |  |  |  |  |  |  |  |  |  |
| CGNCZ01010G0 |  | CB-GN ; Minor Punch List (Controlled Zone) | 96d | 2012-11-24 | 2013-03-19 | MGNCZ00101M0 |  |  |  |  | 39.33d | 0d | TESTING & COMMISSIONING [850 h]; Cost |  |  | CGNCZ01010G0 | CB | G | GN | CZ | SC | 010 | 10 | BILL 4 | B04 | S1 | PI | R00 | ACF07 |  | 010 |  |  |  |  |  |  |
| CGNCZ01810G0 |  | CB-GN ; Medical Equipment Installation , T&C by 3rd Party (Controlled Zone) | 96d | 2012-11-24 | 2013-03-19 | MGNCZ00101M0 |  |  |  |  | 39.33d | 0d | TESTING & COMMISSIONING [5098 h]; Cost |  |  | CGNCZ01810G0 | CB | G | GN | CZ | SC | 018 | 10 | BILL 4 | B04 | S1 | 01 | R00 | ACF07 |  | 018 |  |  |  |  |  |  |
| CGNCZ01811G0 |  | CB-GN ; Fire Alarm , PMCS & EMCS Testing & Commissioning (Controlled Zone) | 96d | 2012-11-24 | 2013-03-19 | MGNCZ00101M0 |  |  |  |  | 39.33d | 0d | TESTING & COMMISSIONING [5098 h]; Cost |  |  | CGNCZ01811G0 | CB | G | GN | CZ | SC | 018 | 11 | BILL 4 | B04 | S1 | 01 | R00 | ACF07 |  | 018 |  |  |  |  |  |  |
| CGNCZ11010G0 |  | CB-GN ; Loose FF & E (Controlled Zone) | 0d | 2012-11-24 | 2012-11-24 | MGNCZ00101M0 |  |  |  |  | 135.32d | 96d | Cost |  |  | CGNCZ11010G0 | CB | G | GN | CZ | FI | 110 | 10 | BILL 4 | B04 | S1 | 02 | R00 | ACF08 |  | a |  |  |  |  |  |  |
| CGNCZ11020G0 |  | CB-GN ; Wall Mounted / Sensitive Equipment Install (Controlled Zone) | 96d | 2012-11-24 | 2013-03-19 | MGNCZ00101M0 |  |  |  |  | 39.33d | 0d | FF&E [38 h]; Cost |  |  | CGNCZ11020G0 | CB | G | GN | CZ | SC | 110 | 20 | BILL 4 | B04 | S1 | 02 | R00 | ACF08 |  | d |  |  |  |  |  |  |
| CGNCZ11100G0 |  | CB-GN ; Cleaning & Final Inspection (Controlled Zone) | 0d | 2013-03-19 | 2013-03-19 | CGNCZ11010G0, CGNCZ01010G0, CGNCZ01810G0, CGNCZ11020G0, CGNCZ01811G0 |  |  |  |  | 39.33d | 36.45d | Cost |  |  | TGNCZ01020G0 | PT | G | GN | CZ | SC | 010 | 20 | BILL 10 | B10 | S3 | IN | R00 | ACF07 |  | 010 |  |  |  |  |  |  |
|  | DT | **D&T(Diagnostic & Treatment)** |  | 2010-04-14 | 2013-03-18 |  |  |  |  |  |  |  |  |  |  |  |  |  |  |  |  |  |  |  |  |  |  |  |  |  |  |  |  |  |  |  |  |
|  | OA | **Overall** |  | 2011-05-17 | 2011-12-05 |  |  |  |  |  |  |  |  |  |  |  |  |  |  |  |  |  |  |  |  |  |  |  |  |  |  |  |  |  |  |  |  |
| DAFT205509C0 |  | DT - Steel Staircase Installation (Stair # 2) (P3 to GF) | 21d | 2011-05-17 A | 2011-06-21 A | BAFT205509C1 FS+3d | 100% |  | 2011-07-04 | 2011-07-27 |  |  | STRUCTURAL STEEL [22 T(Fe)]; Cost |  |  | IP3SE03305C0 | DT | C | AF | GEN | SW | 055 | 05 |  | B05 | S1 | 01 | R00 | ACF03 | ST | 055 |  |  |  |  |  |  |
| DAFT805509C0 |  | DT - Steel Staircase Installation (Stair # 8) (P3 to 5F) | 49.88d | 2011-06-01 A | 2011-10-05 | BAFT805509C1 FS+3d | 90% | 4.99d | 2011-07-04 | 2011-09-01 | 155.39d | 0d | STRUCTURAL STEEL [97 T(Fe)]; Cost |  |  | IP3SE03305C0 | DT | C | AF | GEN | SW | 055 | 05 |  | B05 | S1 | 01 | R00 | ACF03 | ST | 055 | 70 | 60 |  |  |  |  |
| DAFT905509C0 |  | DT - Steel Staircase Installation (Stair # 9) (P3 to 4F) | 44d | 2011-06-08 A | 2011-10-05 | BAFT905509C1 FS+6d | 90% | 4.4d | 2011-07-07 | 2011-08-27 | 217.1d | 141.5d | STRUCTURAL STEEL [71 T(Fe)]; Cost |  |  | IP3SE03305C0 | DT | C | AF | GEN | SW | 055 | 05 |  | B05 | S1 | 01 | R00 | ACF03 | ST | 055 | 80 | 50 | 95 |  |  |  |
| DAFT305509C0 |  | DT - Steel Staircase Installation (Stair # 3) (GF to 4F) | 27d | 2011-07-04 A | 2011-10-06 | BAFT305509C1 FS+4d | 80% | 5.4d | 2011-08-04 | 2011-09-06 | 216.1d | 152.7d | STRUCTURAL STEEL [43 T(Fe)]; Cost |  |  | IP3SE03305C0 | DT | C | AF | GEN | SW | 055 | 05 |  | B05 | S1 | 01 | R00 | ACF03 | ST | 055 | 50 | 5 | 80 |  |  |  |
| DAFT105509C0 |  | DT - Steel Staircase Installation (Stair # 1) (GF to 5F) | 30d | 2011-08-02 A | 2011-10-10 | BAFT105509C1 FS+2d | 70% | 9d | 2011-08-02 | 2011-09-07 | 164.05d | 0d | STRUCTURAL STEEL [68 T(Fe)]; Cost |  |  | IP3SE03305C0 | DT | C | AF | GEN | SW | 055 | 05 |  | B05 | S1 | 01 | R00 | ACF03 | ST | 055 | 30 | 0 |  |  |  |  |
| DAFT1005509C0 |  | DT - Steel Staircase Installation (Stair # 10) (P3 to 5F) | 40d | 2011-08-04 A | 2011-10-23 | BAFT1005509C1 FS+4d | 50% | 20d | 2011-08-04 | 2011-09-21 | 201.5d | 0d | STRUCTURAL STEEL [76 T(Fe)]; Cost |  |  | IP3SE03305C0 | DT | C | AF | GEN | SW | 055 | 05 |  | B05 | S1 | 01 | R00 | ACF03 | ST | 055 | 20 | 0 |  |  |  |  |
| DAFT2205509C0 |  | DT - Steel Staircase Installation (Stair # 22) (2F to 3F) | 10d | 2011-09-05 A | 2011-10-11 | BAFT2205509C1 FS+9d | 90% | 1d | 2011-09-12 | 2011-09-22 | 239.25d | 160.2d | STRUCTURAL STEEL [3 T(Fe)]; Cost |  |  | IP3SE03305C0 | DT | C | AF | GEN | SW | 055 | 05 |  | B05 | S1 | 01 | R00 | ACF03 | ST | 055 |  |  |  |  |  |  |
| DAFT505509C0 |  | DT - Steel Staircase Installation (Stair # 5) (P3 to 4F) | 49d | 2011-10-04 | 2011-12-05 | BAFT505509C1 FS+3d |  |  |  |  | 169.5d | 93.9d | STRUCTURAL STEEL [71 T(Fe)]; Cost |  |  | IP3SE03305C0 | DT | C | AF | GEN | SW | 055 | 05 |  | B05 | S1 | 01 | R00 | ACF03 | ST | 055 |  |  |  |  |  |  |
|  | FN | **Foundation** |  | 2010-04-14 | 2011-10-13 |  |  |  |  |  |  |  |  |  |  |  |  |  |  |  |  |  |  |  |  |  |  |  |  |  |  |  |  |  |  |  |  |
|  | S1 | **Zone S1** |  | 2010-04-14 | 2011-07-19 |  |  |  |  |  |  |  |  |  |  |  |  |  |  |  |  |  |  |  |  |  |  |  |  |  |  |  |  |  |  |  |  |
| DFNS131233C0 |  | DT-FN ; Pilecap-Excavation & Compaction (Zone S1) | 18d | 2010-04-14 A | 2010-05-04 A | MGNMI00101M0 FS+38d | 100% |  |  |  |  |  | EXCAVATION & BACKFILLING [360 h]; EXCAVATION & BACKFILLING [241 m3]; Cost | 23 | 23 | DFNS131233C0 | DT | C | FN | S1 | CT | 312 | 33 | BILL 5 | B05 | S1 | 03 | R00 | ACF02 |  | 312 |  |  |  | 100 |  |  |
| DFNS131235C0 |  | DT-FN ; Pilecap-Pilecap treatment (Zone S1) | 24d | 2010-04-20 A | 2010-05-17 A | DFNS131233C0 SS+5d | 100% |  |  |  |  |  | ANTI-TERMITE [1216 h]; ANTI-TERMITE [843 m2]; Cost | 24 | 24 | DFNS131235C0 | DT | C | FN | S1 | CT | 312 | 35 | BILL 5 | B05 | S1 | 03 | R00 | ACF02 |  | 312 |  |  |  | 100 |  |  |
| DFNS103305C0 |  | DT-FN ; Pilecap-Blinding concrete (Zone S1) | 24.62d | 2010-04-22 A | 2010-05-20 A | DFNS131235C0 SS+2d | 100% |  |  |  |  |  | ANTI-TERMITE [1728 h]; CONCRETE [2784 h]; CONCRETE [70 m3]; ANTI-TERMITE [52 m2]; Cost | 25 | 25 | DFNS103305C0 | DT | C | FN | S1 | CT | 033 | 05 | BILL 5 | B05 | S1 | 01 | R00 | ACF02 |  | 033 |  |  |  | 100 | 03 |  |
| DFNS131229C0 |  | DT-FN ; Grade beam-Excavation & Compaction (Zone S1) | 22d | 2010-04-28 A | 2010-05-23 A | DFNS131233C0 SS+12d | 100% |  |  |  |  |  | EXCAVATION & BACKFILLING [153 m3]; EXCAVATION & BACKFILLING [232 h]; Cost | 29 | 29 | DFNS131229C0 | DT | C | FN | S1 | CT | 312 | 29 | BILL 5 | B05 | S1 | 03 | R00 | ACF02 |  | 312 |  |  |  | 100 |  |  |
| DFNS107101C0 |  | DT-FN ; Pilecap-Horizontal waterproofing (Zone S1) | 18.01d | 2010-05-02 A | 2010-05-22 A | DFNS103305C0 SS+8d | 100% |  | 2010-05-02 | 2010-05-23 |  |  | THERMAL & MOISTURE [1048 h]; THERMAL & MOISTURE [1391 m2]; Cost | 3 | 3 | DFNS107101C0 | DT | C | FN | S1 | CT | 071 | 01 | BILL 5 | B05 | S1 | 02 | R00 | ACF02 |  | 071 |  |  |  | 100 |  |  |
| DFNS103317C0 |  | DT-FN ; Pilecap-Pilecap concrete (Zone S1) | 70d | 2010-05-15 A | 2010-08-04 A | DFNS107101C0 SS+11d | 100% |  |  |  |  |  | CONCRETE [14544 h]; CONCRETE [366 m3]; Cost | 26 | 26 | DFNS103317C0 | DT | C | FN | S1 | CT | 033 | 17 | BILL 5 | B05 | S1 | 02 | R00 | ACF02 |  | 033 |  |  |  | 100 | 03 |  |
| DFNS103307C0 |  | DT-FN ; Grade beam-Blinding concrete (Zone S1) | 18d | 2010-05-19 A | 2010-06-08 A | DFNS131229C0 SS+18d | 100% |  |  |  |  |  | ANTI-TERMITE [2776 h]; CONCRETE [912 h]; CONCRETE [23 m3]; ANTI-TERMITE [21 m2]; Cost | 30 | 30 | DFNS103307C0 | DT | C | FN | S1 | CT | 033 | 07 | BILL 5 | B05 | S1 | 01 | R00 | ACF02 |  | 033 |  |  |  | 100 | 03 |  |
| DFNS103319C0 |  | DT-FN ; Grade beam-Grade beam concrete (Zone S1) | 42.05d | 2010-05-26 A | 2010-07-14 A | DFNS103317C0 SS, DFNS107105C0 SS | 100% |  | 2010-05-26 | 2010-07-15 |  |  | CONCRETE [4776 h]; CONCRETE [120 m3]; Cost | 32 | 32 | DFNS103319C0 | DT | C | FN | S1 | CT | 033 | 19 | BILL 5 | B05 | S1 | 02 | R00 | ACF02 |  | 033 |  |  |  | 100 | 03 |  |
| DFNS107105C0 |  | DT-FN ; Grade beam-Horizontal waterproofing (Zone S1) | 21.41d | 2010-05-26 A | 2010-06-19 A | DFNS103307C0 SS+6d | 100% |  | 2010-05-26 | 2010-06-20 |  |  | THERMAL & MOISTURE [312 h]; THERMAL & MOISTURE [408 m2]; Cost | 31 | 31 | DFNS107105C0 | DT | C | FN | S1 | CT | 071 | 05 | BILL 5 | B05 | S1 | 02 | R00 | ACF02 |  | 071 |  |  |  | 100 |  |  |
| DFNS107103C0 |  | DT-FN ; Pilecap-Vertical waterproofing (Zone S1) | 12.01d | 2010-07-06 A | 2010-07-20 A | DFNS103317C0 SS+45d | 100% |  | 2010-07-06 | 2010-07-21 |  |  | THERMAL & MOISTURE [2440 h]; THERMAL & MOISTURE [3245 m2]; Cost | 27 | 27 | DFNS107103C0 | DT | C | FN | S1 | CT | 071 | 03 | BILL 5 | B05 | S1 | 03 | R00 | ACF02 |  | 071 |  |  |  | 100 |  |  |
| DFNS131231C0 |  | DT-FN ; Pilecap-Backfilling & compaction (Zone S1) | 18d | 2010-07-21 A | 2010-08-10 A | DFNS107103C0 | 100% |  |  |  |  |  | EXCAVATION & BACKFILLING [3552 h]; EXCAVATION & BACKFILLING [2370 m3]; Cost | 28 | 28 | DFNS131231C0 | DT | C | FN | S1 | CT | 312 | 31 | BILL 5 | B05 | S1 | 03 | R00 | ACF02 |  | 312 |  |  |  | 100 |  |  |
| DFNS131223C0 |  | DT-FN ; Drainage-Excavation & Compaction (Zone S1) | 11.88d | 2010-09-25 A | 2011-03-29 A | DFNS103317C0 SS+42d, DP2S105305C0 | 100% |  | 2010-09-25 | 2010-10-07 |  |  | EXCAVATION & BACKFILLING [552 h]; EXCAVATION & BACKFILLING [369 m3]; Cost | 4 | 4 | DFNS131223C0 | DT | C | FN | S1 | CT | 312 | 23 | BILL 5 | B05 | S1 | 04 | R00 | ACF02 |  | 312 |  |  |  | 100 |  |  |
| DFNS107107C0 |  | DT-FN ; Grade beam-Vertical waterproofing (Zone S1) | 15.88d | 2010-10-02 A | 2010-10-21 A | DFNS103319C0 SS+42d, DP2S105305C0 | 100% |  | 2010-10-02 | 2010-10-19 |  |  | THERMAL & MOISTURE [1224 h]; THERMAL & MOISTURE [1633 m2]; Cost | 33 | 33 | DFNS107107C0 | DT | C | FN | S1 | CT | 071 | 07 | BILL 5 | B05 | S1 | 03 | R00 | ACF02 |  | 071 |  |  |  | 100 |  |  |
| DFNS131227C0 |  | DT-FN ; Grade beam-Backfilling & compaction (Zone S1) | 11.88d | 2010-10-23 A | 2011-05-24 A | DFNS107107C0 | 100% |  | 2010-10-23 | 2010-11-04 |  |  | EXCAVATION & BACKFILLING [3616 h]; EXCAVATION & BACKFILLING [2370 m3]; Cost | 34 | 34 | DFNS131227C0 | DT | C | FN | S1 | CT | 312 | 27 | BILL 5 | B05 | S1 | 03 | R00 | ACF02 |  | 312 |  |  |  | 100 |  |  |
| DFNS131221C0 |  | DT-FN ; Drainage-Backfilling & compaction (Zone S1) | 18.15d | 2010-10-28 A | 2011-05-30 A | DFNS131225C0 | 100% |  | 2010-12-02 | 2010-12-25 |  |  | EXCAVATION & BACKFILLING [376 h]; EXCAVATION & BACKFILLING [246 m3]; Cost | 36 | 36 | DFNS131221C0 | DT | C | FN | S1 | CT | 312 | 21 | BILL 5 | B05 | S1 | 04 | R00 | ACF02 |  | 312 |  |  |  | 100 |  |  |
| DFNS103309C0 |  | DT-FN ; Slab on Grade-Blinding concrete (Zone S1) | 18.01d | 2010-11-02 A | 2011-06-01 A | DFNS131221C0, DFNS131227C0, DFNS131231C0, DFNSA31201C0, DFNSB31211C0 | 100% |  | 2010-12-25 | 2011-01-16 |  |  | ANTI-TERMITE [832 h]; CONCRETE [8232 h]; CONCRETE [207 m3]; ANTI-TERMITE [408 m2]; Cost | 37 | 37 | DFNS103309C0 | DT | C | FN | S1 | CT | 033 | 09 | BILL 5 | B05 | S1 | 01 | R00 | ACF02 |  | 033 |  |  |  | 99 | 03 | 1540.86 |
| DFNS107109C0 |  | DT-FN ; Slab on Grade-Horizontal waterproofing (Zone S1) | 12.01d | 2010-11-05 A | 2011-06-01 A | DFNS103309C0 | 100% |  | 2011-01-16 | 2011-01-30 |  |  | THERMAL & MOISTURE [4600 h]; THERMAL & MOISTURE [6124 m2]; Cost | 38 | 38 | DFNS107109C0 | DT | C | FN | S1 | CT | 071 | 09 | BILL 5 | B05 | S1 | 02 | R00 | ACF02 |  | 071 |  |  |  | 99 |  | 6317.1 |
| DFNS131225C0 |  | DT-FN ; Drainage-Pipe laying (Zone S1) | 12d | 2010-11-10 A | 2011-05-30 A | DFNS131223C0 | 100% |  | 2010-11-18 | 2010-12-01 |  |  | Labor General [1 h]; Cost | 35 | 35 | DFNS131225C0 | DT | C | FN | S1 | CT | 312 | 25 | BILL 5 | B05 | S1 | 04 | R00 | ACF02 |  | 312 |  |  |  | 100 |  |  |
| DFNS103323C0 |  | DT-FN ; Slab on Grade-SOG concrete (Zone S1) | 48.04d | 2010-11-21 A | 2011-07-19 A | DFNS107109C0 | 100% |  | 2010-11-18 | 2011-01-16 |  |  | ANTI-TERMITE [1864 h]; CONCRETE [42568 h]; CONCRETE [1079 m3]; ANTI-TERMITE [3550 m2]; Cost | 39 | 39 | DFNS103323C0 | DT | C | FN | S1 | CT | 033 | 23 | BILL 5 | B05 | S1 | 06 | R00 | ACF02 |  | 033 |  |  |  | 99 | 03 |  |

| ID | WBS | Activity | Duration | Start | Finish | Predecessors | Complete | Planned start | Planned finish | Total float | Free float | Resources | Change Order # | NEW ACTIVITY ID | change id | RENZ % COMPLETE | CCAD BUILDING(SET) | CCAD PHASE(SET) | CCAD FLOOR(SET) | CCAD ZONE(SET) | CCAD WORK(SET) | CCAD SECTION(SET) | CCAD SERIAL No.(SET) | CCAD CBS(SET) | CCAD BILL(SET) | CCAD HANDOVER(SET) | CCAD TAG(SET) | CCAD REV(SET) | CCADACF (SET) | CCAD SSCF | CCAD DIVISION(SET) | Claimed This Month |
| --- | --- | --- | --- | --- | --- | --- | --- | --- | --- | --- | --- | --- | --- | --- | --- | --- | --- | --- | --- | --- | --- | --- | --- | --- | --- | --- | --- | --- | --- | --- | --- | --- |
|  | S2 | **Zone S2** |  | 2010-04-15 | 2011-10-13 |  |  |  |  |  |  |  |  |  |  |  |  |  |  |  |  |  |  |  |  |  |  |  |  |  |  |  |
| DFNS231259C0 |  | DT-FN ; Grade beam-Excavation & Compaction (Zone S2) | 18.29d | 2010-04-15 A | 2010-05-05 A | DFNS231271C0 SS | 100% | 2010-04-15 | 2010-05-06 |  |  | EXCAVATION & BACKFILLING [189 m3]; EXCAVATION & BACKFILLING [288 h]; Cost | 46 | 46 | DFNS231259C0 | 100 | DT | C | FN | S2 | CT | 312 | 59 | BILL 5 | B05 | S1 | 03 | R00 | ACF02 | 312 |  |  |
| DFNS231271C0 |  | DT-FN ; Pilecap-Excavation & Compaction (Zone S2) | 18d | 2010-04-15 A | 2010-05-05 A | DFNS131233C0 SS+1d | 100% |  |  |  |  | EXCAVATION & BACKFILLING [448 h]; EXCAVATION & BACKFILLING [299 m3]; Cost | 40 | 40 | DFNS231271C0 | 100 | DT | C | FN | S2 | CT | 312 | 71 | BILL 5 | B05 | S1 | 03 | R00 | ACF02 | 312 |  |  |
| DFNS231273C0 |  | DT-FN ; Pilecap-Pilecap treatment (Zone S2) | 24.01d | 2010-04-18 A | 2010-05-15 A | DFNS231271C0 SS+2d | 100% | 2010-04-18 | 2010-05-16 |  |  | ANTI-TERMITE [1360 h]; ANTI-TERMITE [1256 m2]; Cost | 41 | 41 | DFNS231273C0 | 100 | DT | C | FN | S2 | CT | 312 | 73 | BILL 5 | B05 | S1 | 03 | R00 | ACF02 | 312 |  |  |
| DFNS203305C0 |  | DT-FN ; Pilecap-Blinding concrete (Zone S2) | 18d | 2010-04-21 A | 2010-05-11 A | DFNS231273C0 SS+3d | 100% |  |  |  |  | ANTI-TERMITE [792 h]; CONCRETE [3336 h]; CONCRETE [84 m3]; ANTI-TERMITE [76 m2]; Cost | 42 | 42 | DFNS203305C0 | 100 | DT | C | FN | S2 | CT | 033 | 05 | BILL 5 | B05 | S1 | 01 | R00 | ACF02 | 033 | 03 |  |
| DFNS207101C0 |  | DT-FN ; Pilecap-Horizontal waterproofing (Zone S2) | 18.01d | 2010-04-28 A | 2010-05-18 A | DFNS203305C0 SS+6d | 100% | 2010-04-28 | 2010-05-19 |  |  | THERMAL & MOISTURE [1296 h]; THERMAL & MOISTURE [1727 m2]; Cost | 43 | 43 | DFNS207101C0 | 100 | DT | C | FN | S2 | CT | 071 | 01 | BILL 5 | B05 | S1 | 02 | R00 | ACF02 | 071 |  |  |
| DFNS203317C0 |  | DT-FN ; Pilecap-Pilecap concrete (Zone S2) | 94d | 2010-05-13 A | 2010-08-31 A | DFNS207101C0 SS+13d | 100% |  |  |  |  | CONCRETE [21664 h]; CONCRETE [545 m3]; Cost | 5 | 5 | DFNS203317C0 | 100 | DT | C | FN | S2 | CT | 033 | 17 | BILL 5 | B05 | S1 | 02 | R00 | ACF02 | 033 | 03 |  |
| DFNS203307C0 |  | DT-FN ; Grade beam-Blinding concrete (Zone S2) | 117d | 2010-05-27 A | 2010-10-13 A | DFNS203317C0 SS+12d, DFNS231259C0 SS | 100% | 2010-05-27 | 2010-10-12 |  |  | ANTI-TERMITE [640 h]; CONCRETE [1120 h]; CONCRETE [28 m3]; ANTI-TERMITE [27 m2]; Cost | 47 | 47 | DFNS203307C0 | 100 | DT | C | FN | S2 | CT | 033 | 07 | BILL 5 | B05 | S1 | 01 | R00 | ACF02 | 033 | 03 |  |
| DFNS207103C0 |  | DT-FN ; Pilecap-Vertical waterproofing (Zone S2) | 64.66d | 2010-06-03 A | 2010-08-18 A | DFNS203317C0 SS+18d | 100% |  |  |  |  | THERMAL & MOISTURE [3024 h]; THERMAL & MOISTURE [4030 m2]; Cost | 44 | 44 | DFNS207103C0 | 100 | DT | C | FN | S2 | CT | 071 | 03 | BILL 5 | B05 | S1 | 03 | R00 | ACF02 | 071 |  |  |
| DFNS207105C0 |  | DT-FN ; Grade beam-Horizontal waterproofing (Zone S2) | 65.26d | 2010-06-10 A | 2010-08-25 A | DFNS203307C0 SS+12d | 100% | 2010-06-10 | 2010-08-26 |  |  | THERMAL & MOISTURE [384 h]; THERMAL & MOISTURE [507 m2]; Cost | 48 | 48 | DFNS207105C0 | 100 | DT | C | FN | S2 | CT | 071 | 05 | BILL 5 | B05 | S1 | 02 | R00 | ACF02 | 071 |  |  |
| DFNS231269C0 |  | DT-FN ; Pilecap-Backfilling & compaction (Zone S2) | 82.03d | 2010-06-24 A | 2010-09-29 A | DFNS207103C0 SS+18d | 100% | 2010-06-24 | 2010-09-30 |  |  | EXCAVATION & BACKFILLING [4240 h]; EXCAVATION & BACKFILLING [2823 m3]; Cost | 45 | 45 | DFNS231269C0 | 100 | DT | C | FN | S2 | CT | 312 | 69 | BILL 5 | B05 | S1 | 03 | R00 | ACF02 | 312 |  |  |
| DFNS203319C0 |  | DT-FN ; Grade beam-Grade beam concrete (Zone S2) | 96.88d | 2010-07-19 A | 2010-10-19 A | DFNS203317C0 SS, DFNS207105C0 SS+32d | 100% | 2010-07-19 | 2010-11-09 |  |  | CONCRETE [7120 h]; CONCRETE [179 m3]; Cost | 49 | 49 | DFNS203319C0 | 100 | DT | C | FN | S2 | CT | 033 | 19 | BILL 5 | B05 | S1 | 02 | R00 | ACF02 | 033 | 03 |  |
| DFNS231257C0 |  | DT-FN ; Grade beam-Backfilling & compaction (Zone S2) | 13.01d | 2010-09-08 A | 2010-09-15 A | DFNS207107C0 | 100% | 2010-10-13 | 2010-10-28 |  |  | EXCAVATION & BACKFILLING [4240 h]; EXCAVATION & BACKFILLING [2823 m3]; Cost | 51 | 51 | DFNS231257C0 | 100 | DT | C | FN | S2 | CT | 312 | 57 | BILL 5 | B05 | S1 | 03 | R00 | ACF02 | 312 |  |  |
| DFNS203309C0 |  | DT-FN ; MEP trench-Blinding concrete (Zone S2) | 23.12d | 2010-09-18 A | 2010-10-07 A | DFNS203307C0, DFNS231263C0 | 100% | 2010-10-13 | 2010-11-09 |  |  | ANTI-TERMITE [1072 h]; CONCRETE [120 h]; CONCRETE [3 m3]; ANTI-TERMITE [284 m2]; Cost | 6 | 6 | DFNS203309C0 | 100 | DT | C | FN | S2 | CT | 033 | 09 | BILL 5 | B05 | S1 | 01 | R00 | ACF02 | 033 | 03 |  |
| DFNS231263C0 |  | DT-FN ; MEP trench-Excavation & Compaction (Zone S2) | 6.32d | 2010-09-23 A | 2010-09-30 A | DFNS203317C0 SS+42d, DP2S205305C0 | 100% | 2010-09-29 | 2010-10-06 |  |  | EXCAVATION & BACKFILLING [76 m3]; EXCAVATION & BACKFILLING [120 h]; Cost | 52 | 52 | DFNS231263C0 | 100 | DT | C | FN | S2 | CT | 312 | 63 | BILL 5 | B05 | S1 | 04 | R00 | ACF02 | 312 |  |  |
| DFNS203313C0 |  | DT-FN ; Slab on Grade-Blinding concrete (Zone S2) | 19d | 2010-09-28 A | 2011-06-04 A | DFNS231241C0, DFNS231247C0, DFNS231257C0, DFNS231261C0, DFNS231269C0 SS+12d | 100% | 2011-01-30 | 2011-02-20 |  |  | ANTI-TERMITE [424 h]; CONCRETE [9904 h]; CONCRETE [249 m3]; ANTI-TERMITE [409 m2]; Cost | 68 | 68 | DFNS203313C0 | 99 | DT | C | FN | S2 | CT | 033 | 13 | BILL 5 | B05 | S1 | 01 | R00 | ACF02 | 033 | 03 | 1543.23 |
| DFNS207107C0 |  | DT-FN ; Grade beam-Vertical waterproofing (Zone S2) | 12.02d | 2010-09-29 A | 2010-10-12 A | DFNS203319C0 SS+42d, DP2S205305C0 | 100% | 2010-09-29 | 2010-10-13 |  |  | THERMAL & MOISTURE [1528 h]; THERMAL & MOISTURE [2028 m2]; Cost | 50 | 50 | DFNS207107C0 | 100 | DT | C | FN | S2 | CT | 071 | 07 | BILL 5 | B05 | S1 | 03 | R00 | ACF02 | 071 |  |  |
| DFNS207109C0 |  | DT-FN ; MEP trench-Horizontal waterproofing (Zone S2) | 6.03d | 2010-09-29 A | 2010-10-03 A | DFNS203309C0 SS+6d | 100% | 2010-10-20 | 2010-10-27 |  |  | THERMAL & MOISTURE [304 h]; THERMAL & MOISTURE [398 m2]; Cost | 53 | 53 | DFNS207109C0 | 100 | DT | C | FN | S2 | CT | 071 | 09 | BILL 5 | B05 | S1 | 02 | R00 | ACF02 | 071 |  |  |
| DFNS231243C0 |  | DT-FN ; Drainage-Excavation & Compaction (Zone S2) | 6d | 2010-09-29 A | 2010-12-15 A | DFNS203317C0 SS+42d, DP2S205305C0 | 100% | 2010-09-29 | 2010-10-05 |  |  | EXCAVATION & BACKFILLING [688 h]; EXCAVATION & BACKFILLING [459 m3]; Cost | 65 | 65 | DFNS231243C0 | 100 | DT | C | FN | S2 | CT | 312 | 43 | BILL 5 | B05 | S1 | 04 | R00 | ACF02 | 312 |  |  |
| DFNS203325C0 |  | DT-FN ; MEP trench-Trench Slab concrete (Zone S2) | 24.45d | 2010-10-03 A | 2010-10-13 A | DFNS207109C0 | 100% | 2010-10-27 | 2010-11-28 |  |  | CONCRETE [328 h]; CONCRETE [8 m3]; Cost | 54 | 54 | DFNS203325C0 | 100 | DT | C | FN | S2 | CT | 033 | 25 | BILL 5 | B05 | S1 | 09 | R00 | ACF02 | 033 | 03 |  |
| DFNS207113C0 |  | DT-FN ; Slab on Grade-Horizontal waterproofing (Zone S2) | 13d | 2010-10-10 A | 2011-06-05 A | DFNS203313C0 | 100% | 2011-02-08 | 2011-02-23 |  |  | THERMAL & MOISTURE [58504 h]; THERMAL & MOISTURE [7606 m2]; Cost | 69 | 69 | DFNS207113C0 | 98 | DT | C | FN | S2 | CT | 071 | 13 | BILL 5 | B05 | S1 | 02 | R00 | ACF02 | 071 |  | 7844.92 |
| DFNS203315C0 |  | DT-FN ; MEP trench-Trench wall concrete (Zone S2) | 24d | 2010-10-13 A | 2010-10-20 A | DFNS203325C0 | 100% | 2010-11-28 | 2010-12-27 |  |  | CONCRETE [640 h]; CONCRETE [16 m3]; Cost | 55 | 55 | DFNS203315C0 | 100 | DT | C | FN | S2 | CT | 033 | 15 | BILL 5 | B05 | S1 | 09 | R00 | ACF02 | 033 | 03 |  |
| DFNS231241C0 |  | DT-FN ; Drainage-Backfilling & compaction (Zone S2) | 18d | 2010-10-15 A | 2010-12-15 A | DFNS231245C0 | 100% | 2010-11-11 | 2010-12-05 |  |  | EXCAVATION & BACKFILLING [456 h]; EXCAVATION & BACKFILLING [306 m3]; Cost | 67 | 67 | DFNS231241C0 | 100 | DT | C | FN | S2 | CT | 312 | 41 | BILL 5 | B05 | S1 | 04 | R00 | ACF02 | 312 |  |  |
| DFNS207111C0 |  | DT-FN ; MEP trench-Vertical waterproofing (Zone S2) | 6d | 2010-10-23 A | 2010-11-02 A | DFNS203315C0 | 100% | 2010-12-27 | 2011-01-04 |  |  | THERMAL & MOISTURE [696 h]; THERMAL & MOISTURE [928 m2]; Cost | 56 | 56 | DFNS207111C0 | 100 | DT | C | FN | S2 | CT | 071 | 11 | BILL 5 | B05 | S1 | 03 | R00 | ACF02 | 071 |  |  |
| DFNS203329C0 |  | DT-FN ; Storage/Water Tank-Floor concrete (Zone S2) | 18d | 2010-11-06 A | 2010-11-30 A | DFNS203319C0 SS+42d, DFNS203319C0, DP2S205305C0 | 100% | 2010-11-01 | 2010-11-24 |  |  | CONCRETE [1912 h]; CONCRETE [48 m3]; Cost |  |  |  | 100 | DT | C | FN | S2 | CT | 033 | 29 | BILL 5 | B05 | S1 | 10 | R00 | ACF03 | 033 |  |  |
| DFNS231261C0 |  | DT-FN ; MEP trench-Backfilling & compaction (Zone S2) | 12d | 2010-11-07 A | 2010-12-15 A | DFNS207111C0 | 100% | 2010-11-20 | 2010-12-04 |  |  | EXCAVATION & BACKFILLING [1056 h]; EXCAVATION & BACKFILLING [706 m3]; Cost | 59 | 59 | DFNS231261C0 | 100 | DT | C | FN | S2 | CT | 312 | 61 | BILL 5 | B05 | S1 | 04 | R00 | ACF02 | 312 |  |  |
| DFNS231245C0 |  | DT-FN ; Drainage-Pipe laying (Zone S2) | 10d | 2010-11-10 A | 2011-05-30 A | DFNS231243C0 | 100% | 2010-10-06 | 2010-10-17 |  |  | Labor General [1 h]; Cost | 66 | 66 | DFNS231245C0 | 100 | DT | C | FN | S2 | CT | 312 | 45 | BILL 5 | B05 | S1 | 04 | R00 | ACF02 | 312 |  |  |
| DFNS203323C0 |  | DT-FN ; Slab on Grade-SOG concrete (Zone S2) | 36.36d | 2010-11-21 A | 2011-07-19 A | DFNS203327C0 FF, DFNS207113C0, DFNS231265C0 | 100% | 2011-02-28 | 2011-04-11 |  |  | ANTI-TERMITE [616 h]; CONCRETE [64000 h]; CONCRETE [1610 m3]; ANTI-TERMITE [3429 m2]; Cost | 70 | 70 | DFNS203323C0 | 98 | DT | C | FN | S2 | CT | 033 | 23 | BILL 5 | B05 | S1 | 06 | R00 | ACF02 | 033 | 03 |  |
| DFNS203327C0 |  | DT-FN ; Storage/Water Tank-Wall & slab concrete (Zone S2) | 36d | 2010-12-08 A | 2011-05-30 A | DFNS203329C0 | 100% | 2011-01-19 | 2011-03-01 |  |  | CONCRETE [9504 h]; CONCRETE [239 m3]; Cost |  |  |  | 100 | DT | C | FN | S2 | CT | 033 | 27 | BILL 5 | B05 | S1 | 10 | R00 | ACF03 | 033 |  |  |
| DFNS231251C0 |  | DT-FN ; Duct bank-Excavation & Compaction (Zone S2) | 6d | 2011-02-20 A | 2011-03-05 A | DFNS203317C0 SS+42d, DP2S205305C0 | 100% | 2011-02-01 | 2011-02-07 |  |  | EXCAVATION & BACKFILLING [76 m3]; EXCAVATION & BACKFILLING [120 h]; Cost | 60 | 60 | DFNS231251C0 | 100 | DT | C | FN | S2 | CT | 312 | 51 | BILL 5 | B05 | S1 | 04 | R00 | ACF02 | 312 |  |  |
| DFNS203311C0 |  | DT-FN ; Duct bank-Blinding concrete (Zone S2) | 25d | 2011-03-02 A | 2011-05-16 A | DFNS203307C0, DFNS231251C0 | 100% | 2011-03-05 | 2011-04-03 |  |  | ANTI-TERMITE [1576 h]; CONCRETE [120 h]; CONCRETE [3 m3]; ANTI-TERMITE [282 m2]; Cost | 61 | 61 | DFNS203311C0 | 100 | DT | C | FN | S2 | CT | 033 | 11 | BILL 5 | B05 | S1 | 01 | R00 | ACF02 | 033 | 03 |  |
| DFNS231255C0 |  | DT-FN ; Duct bank-Rebar laying (Zone S2) | 12d | 2011-03-10 A | 2011-03-17 A | DFNS203311C0 SS+6d | 100% | 2011-03-12 | 2011-03-26 |  |  | CONCRETE [168 h]; Cost | 7 | 7 | DFNS231255C0 | 100 | DT | C | FN | S2 | CT | 033 | 55 | BILL 5 | B05 | S1 | 09 | R00 | ACF02 | 033 |  |  |
| DFNS231253C0 |  | DT-FN ; Duct bank-Pipe laying (Zone S2) | 12d | 2011-03-11 A | 2011-03-17 A | DFNS231255C0 | 100% | 2011-03-26 | 2011-04-09 |  |  | Labor General [1 h]; Cost | 62 | 62 | DFNS231253C0 | 100 | DT | C | FN | S2 | CT | 312 | 53 | BILL 5 | B05 | S1 | 04 | R00 | ACF02 | 312 |  |  |
| DFNS231267C0 |  | DT-FN ; MEP trench-Steel supports (Zone S2) | 12d | 2011-04-03 A | 2011-06-22 A | DFNS207111C0 | 100% | 2011-02-28 | 2011-03-13 |  |  | Labor General [1 h]; Cost | 57 | 57 | DFNS231267C0 | 90 | DT | C | FN | S2 | CT | 312 | 67 | BILL 5 | B05 | S1 | 10 | R00 | ACF02 | 312 |  |  |
| DFNS203333C0 |  | DT-FN ; Duct bank-Duct bank concrete (Zone S2) | 18d | 2011-04-05 A | 2011-06-01 A | DFNS231253C0 | 100% | 2011-04-09 | 2011-04-30 |  |  | CONCRETE [1912 h]; CONCRETE [48 m3]; Cost | 63 | 63 | DFNS203333C0 | 90 | DT | C | FN | S2 | CT | 033 | 33 | BILL 5 | B05 | S1 | 09 | R00 | ACF02 | 033 | 03 | 19578.73 |
| DFNS231247C0 |  | DT-FN ; Duct bank-Backfilling & compaction (Zone S2) | 18d | 2011-04-23 A | 2011-06-04 A | DFNS203333C0 | 100% | 2011-04-30 | 2011-05-21 |  |  | EXCAVATION & BACKFILLING [1056 h]; EXCAVATION & BACKFILLING [706 m3]; Cost | 64 | 64 | DFNS231247C0 | 90 | DT | C | FN | S2 | CT | 312 | 47 | BILL 5 | B05 | S1 | 04 | R00 | ACF02 | 312 |  | 3951.68 |
| DFNS231265C0 |  | DT-FN ; MEP trench-Grating cover (Zone S2) | 12d | 2011-10-01 | 2011-10-13 | DFNS231267C0 |  |  |  | 18.5d | 0d | Labor General [1 h]; Cost | 58 | 58 | DFNS231265C0 |  | DT | C | FN | S2 | SW | 312 | 65 | BILL 5 | B05 | S1 | 10 | R00 | ACF02 | 312 |  |  |

| ID | WBS | Activity | Duration | Start | Finish | Predecessors | Complete | Planned start | Planned finish | Total float | Free float | Resources | Change Order # | NEW ACTIVITY ID | change id | RENZ % COMPLETE | CCAD BUILDING(SET) | CCAD PHASE(SET) | CCAD FLOOR(SET) | CCAD ZONE(SET) | CCAD WORK(SET) | CCAD SECTION(SET) | CCAD SERIAL No.(SET) | CCAD CBS(SET) | CCAD BILL(SET) | CCAD HANDOVER(SET) | CCAD TAG(SET) | CCAD REV(SET) | CCADACF (SET) | CCAD SSCF | CCAD DIVISION(SET) | user_integer1 | Claimed This Month |
| --- | --- | --- | --- | --- | --- | --- | --- | --- | --- | --- | --- | --- | --- | --- | --- | --- | --- | --- | --- | --- | --- | --- | --- | --- | --- | --- | --- | --- | --- | --- | --- | --- | --- |
|  | S3 | **Zone S3** |  | 2010-04-29 | 2011-10-13 |  |  |  |  |  |  |  |  |  |  |  |  |  |  |  |  |  |  |  |  |  |  |  |  |  |  |  |  |
| DFNS331202C0 |  | DT-FN ; Pilecap-Excavation & Compaction (Zone S3) | 18d | 2010-04-29 A | 2010-05-19 A | DFNSB31213C0 SS+4d | 100% |  |  |  |  | EXCAVATION & BACKFILLING [496 h]; EXCAVATION & BACKFILLING [330 m3]; Cost | 40 | 40 | DFNS331202C0 | 100 | DT | C | FN | S3 | CT | 312 | 02 | BILL 5 | B05 | S1 | 03 | R00 | ACF02 | 312 |  |  |  |
| DFNS331289C0 |  | DT-FN ; Grade beam-Excavation & Compaction (Zone S3) | 18d | 2010-04-29 A | 2010-05-19 A | DFNS331202C0 SS | 100% |  |  |  |  | EXCAVATION & BACKFILLING [209 m3]; EXCAVATION & BACKFILLING [312 h]; Cost | 46 | 46 | DFNS331289C0 | 100 | DT | C | FN | S3 | CT | 312 | 89 | BILL 5 | B05 | S1 | 03 | R00 | ACF02 | 312 |  |  |  |
| DFNS331204C0 |  | DT-FN ; Pilecap-Pilecap treatment (Zone S3) | 18.04d | 2010-05-11 A | 2010-05-31 A | DFNS331202C0 SS+10d | 100% | 2010-05-11 | 2010-06-01 |  |  | ANTI-TERMITE [984 h]; ANTI-TERMITE [1384 m2]; Cost | 41 | 41 | DFNS331204C0 | 100 | DT | C | FN | S3 | CT | 312 | 04 | BILL 5 | B05 | S1 | 03 | R00 | ACF02 | 312 |  |  |  |
| DFNS303305C0 |  | DT-FN ; Pilecap-Blinding concrete (Zone S3) | 12.01d | 2010-05-13 A | 2010-05-26 A | DFNS331204C0 SS+2d | 100% | 2010-05-13 | 2010-05-27 |  |  | ANTI-TERMITE [424 h]; CONCRETE [4536 h]; CONCRETE [114 m3]; ANTI-TERMITE [83 m2]; Cost | 42 | 42 | DFNS303305C0 | 100 | DT | C | FN | S3 | CT | 033 | 05 | BILL 5 | B05 | S1 | 01 | R00 | ACF02 | 033 | 03 |  |  |
| DFNS307101C0 |  | DT-FN ; Pilecap-Horizontal waterproofing (Zone S3) | 10.01d | 2010-05-18 A | 2010-05-29 A | DFNS303305C0 SS+4d | 100% | 2010-05-18 | 2010-05-30 |  |  | THERMAL & MOISTURE [1432 h]; THERMAL & MOISTURE [1903 m2]; Cost | 43 | 43 | DFNS307101C0 | 100 | DT | C | FN | S3 | CT | 071 | 01 | BILL 5 | B05 | S1 | 02 | R00 | ACF02 | 071 |  |  |  |
| DFNS303307C0 |  | DT-FN ; Grade beam-Blinding concrete (Zone S3) | 12.04d | 2010-05-20 A | 2010-06-02 A | DFNS331289C0 SS+18d | 100% | 2010-05-20 | 2010-06-03 |  |  | ANTI-TERMITE [672 h]; CONCRETE [1480 h]; CONCRETE [37 m3]; ANTI-TERMITE [29 m2]; Cost | 47 | 47 | DFNS303307C0 | 100 | DT | C | FN | S3 | CT | 033 | 07 | BILL 5 | B05 | S1 | 01 | R00 | ACF02 | 033 | 03 |  |  |
| DFNS303317C0 |  | DT-FN ; Pilecap-Pilecap concrete (Zone S3) | 100.03d | 2010-05-25 A | 2010-09-20 A | DAFOA31202C1 FF, DFNS307101C0 SS+6d | 100% | 2010-05-25 | 2010-09-21 |  |  | CONCRETE [23856 h]; CONCRETE [600 m3]; Cost | 5 | 5 | DFNS303317C0 | 100 | DT | C | FN | S3 | CT | 033 | 17 | BILL 5 | B05 | S1 | 02 | R00 | ACF02 | 033 | 03 |  |  |
| DFNS307105C0 |  | DT-FN ; Grade beam-Horizontal waterproofing (Zone S3) | 6.01d | 2010-06-03 A | 2010-06-09 A | DFNS303307C0 SS+12d | 100% | 2010-06-03 | 2010-06-10 |  |  | THERMAL & MOISTURE [424 h]; THERMAL & MOISTURE [559 m2]; Cost | 48 | 48 | DFNS307105C0 | 100 | DT | C | FN | S3 | CT | 071 | 05 | BILL 5 | B05 | S1 | 02 | R00 | ACF02 | 071 |  |  |  |
| DFNS303319C0 |  | DT-FN ; Grade beam-Grade beam concrete (Zone S3) | 131.08d | 2010-06-10 A | 2010-11-30 A | DFNS303317C0 SS, DFNS307105C0 | 100% | 2010-06-10 | 2010-11-13 |  |  | CONCRETE [7840 h]; CONCRETE [197 m3]; Cost | 49 | 49 | DFNS303319C0 | 100 | DT | C | FN | S3 | CT | 033 | 19 | BILL 5 | B05 | S1 | 02 | R00 | ACF02 | 033 | 03 | 5221 |  |
| DFNS303325C0 |  | DT-FN ; MEP trench-Trench Slab concrete (Zone S3) | 25.47d | 2010-09-01 A | 2010-11-22 A | DFNS307109C0 | 100% | 2010-11-01 | 2010-12-04 |  |  | CONCRETE [328 h]; CONCRETE [8 m3]; Cost | 54 | 54 | DFNS303325C0 | 100 | DT | C | FN | S3 | CT | 033 | 25 | BILL 5 | B05 | S1 | 09 | R00 | ACF02 | 033 | 03 |  |  |
| DFNS303315C0 |  | DT-FN ; MEP trench-Trench wall concrete (Zone S3) | 36d | 2010-10-01 A | 2010-11-30 A | DFNS303325C0 | 100% | 2010-12-04 | 2011-01-16 |  |  | CONCRETE [640 h]; CONCRETE [16 m3]; Cost | 55 | 55 | DFNS303315C0 | 100 | DT | C | FN | S3 | CT | 033 | 15 | BILL 5 | B05 | S1 | 09 | R00 | ACF02 | 033 | 03 |  |  |
| DFNS307103C0 |  | DT-FN ; Pilecap-Vertical waterproofing (Zone S3) | 4.01d | 2010-10-11 A | 2010-10-17 A | DFNS303317C0 SS+10d, DP2S305305C0 | 100% | 2010-10-11 | 2010-10-16 |  |  | THERMAL & MOISTURE [3336 h]; THERMAL & MOISTURE [4440 m2]; Cost | 44 | 44 | DFNS307103C0 | 100 | DT | C | FN | S3 | CT | 071 | 03 | BILL 5 | B05 | S1 | 03 | R00 | ACF02 | 071 |  |  |  |
| DFNS307107C0 |  | DT-FN ; Grade beam-Vertical waterproofing (Zone S3) | 4.01d | 2010-10-11 A | 2010-10-17 A | DFNS303319C0 SS+30d, DP2S305305C0 | 100% | 2010-10-11 | 2010-10-16 |  |  | THERMAL & MOISTURE [1680 h]; THERMAL & MOISTURE [2235 m2]; Cost | 50 | 50 | DFNS307107C0 | 100 | DT | C | FN | S3 | CT | 071 | 07 | BILL 5 | B05 | S1 | 03 | R00 | ACF02 | 071 |  |  |  |
| DFNS331293C0 |  | DT-FN ; MEP trench-Excavation & Compaction (Zone S3) | 4d | 2010-10-11 A | 2010-10-17 A | DFNS303317C0 SS+30d, DP2S305305C0 | 100% | 2010-10-11 | 2010-10-14 |  |  | EXCAVATION & BACKFILLING [83 m3]; EXCAVATION & BACKFILLING [120 h]; Cost | 52 | 52 | DFNS331293C0 | 100 | DT | C | FN | S3 | CT | 312 | 93 | BILL 5 | B05 | S1 | 04 | R00 | ACF02 | 312 |  |  |  |
| DFNS303309C0 |  | DT-FN ; MEP trench-Blinding concrete (Zone S3) | 25.3d | 2010-10-18 A | 2010-10-30 A | DFNS331293C0 | 100% | 2010-10-18 | 2010-11-20 |  |  | ANTI-TERMITE [384 h]; CONCRETE [160 h]; CONCRETE [4 m3]; ANTI-TERMITE [569 m2]; Cost | 6 | 6 | DFNS303309C0 | 100 | DT | C | FN | S3 | CT | 033 | 09 | BILL 5 | B05 | S1 | 01 | R00 | ACF02 | 033 | 03 |  |  |
| DFNS331287C0 |  | DT-FN ; Grade beam-Backfilling & compaction (Zone S3) | 18.02d | 2010-10-18 A | 2010-12-04 A | DFNS307107C0 | 100% | 2010-10-18 | 2010-11-08 |  |  | EXCAVATION & BACKFILLING [5256 h]; EXCAVATION & BACKFILLING [3500 m3]; Cost | 51 | 51 | DFNS331287C0 | 100 | DT | C | FN | S3 | CT | 312 | 87 | BILL 5 | B05 | S1 | 03 | R00 | ACF02 | 312 |  |  |  |
| DFNS331299C0 |  | DT-FN ; Pilecap-Backfilling & compaction (Zone S3) | 18.02d | 2010-10-18 A | 2010-10-30 A | DFNS307103C0 | 100% | 2010-10-18 | 2010-11-08 |  |  | EXCAVATION & BACKFILLING [5256 h]; EXCAVATION & BACKFILLING [3500 m3]; Cost | 45 | 45 | DFNS331299C0 | 100 | DT | C | FN | S3 | CT | 312 | 99 | BILL 5 | B05 | S1 | 03 | R00 | ACF02 | 312 |  |  |  |
| DFNS307109C0 |  | DT-FN ; MEP trench-Horizontal waterproofing (Zone S3) | 6d | 2010-10-25 A | 2010-10-31 A | DFNS303309C0 SS+6d | 100% |  |  |  |  | THERMAL & MOISTURE [328 h]; THERMAL & MOISTURE [438 m2]; Cost | 53 | 53 | DFNS307109C0 | 100 | DT | C | FN | S3 | CT | 071 | 09 | BILL 5 | B05 | S1 | 02 | R00 | ACF02 | 071 |  |  |  |
| DFNS331283C0 |  | DT-FN ; Drainage-Excavation & Compaction (Zone S3) | 6d | 2010-10-25 A | 2010-12-08 A | DFNS303317C0 SS+30d | 100% | 2010-11-01 | 2010-11-07 |  |  | EXCAVATION & BACKFILLING [760 h]; EXCAVATION & BACKFILLING [505 m3]; Cost | 65 | 65 | DFNS331283C0 | 100 | DT | C | FN | S3 | CT | 312 | 83 | BILL 5 | B05 | S1 | 04 | R00 | ACF02 | 312 |  |  |  |
| DFNS307111C0 |  | DT-FN ; MEP trench-Vertical waterproofing (Zone S3) | 6.02d | 2010-10-29 A | 2010-11-27 A | DFNS303315C0 | 100% | 2010-12-04 | 2010-12-12 |  |  | THERMAL & MOISTURE [768 h]; THERMAL & MOISTURE [1021 m2]; Cost | 56 | 56 | DFNS307111C0 | 100 | DT | C | FN | S3 | CT | 071 | 11 | BILL 5 | B05 | S1 | 03 | R00 | ACF02 | 071 |  |  |  |
| DFNS303313C0 |  | DT-FN ; Slab on Grade-Blinding concrete (Zone S3) | 19d | 2010-11-02 A | 2011-05-24 A | DFNS331281C0, DFNS331287C0, DFNS331291C0, DFNS331299C0 | 100% | 2010-12-19 | 2011-01-11 |  |  | ANTI-TERMITE [640 h]; CONCRETE [13392 h]; CONCRETE [337 m3]; ANTI-TERMITE [505 m2]; Cost | 68 | 68 | DFNS303313C0 | 100 | DT | C | FN | S3 | CT | 033 | 13 | BILL 5 | B05 | S1 | 01 | R00 | ACF02 | 033 | 03 |  |  |
| DFNS331291C0 |  | DT-FN ; MEP trench-Backfilling & compaction (Zone S3) | 6d | 2010-11-07 A | 2010-11-30 A | DFNS307111C0 | 100% | 2010-12-12 | 2010-12-19 |  |  | EXCAVATION & BACKFILLING [1168 h]; EXCAVATION & BACKFILLING [778 m3]; Cost | 59 | 59 | DFNS331291C0 | 100 | DT | C | FN | S3 | CT | 312 | 91 | BILL 5 | B05 | S1 | 04 | R00 | ACF02 | 312 |  |  |  |
| DFNS331281C0 |  | DT-FN ; Drainage-Backfilling & compaction (Zone S3) | 6d | 2010-11-08 A | 2011-05-30 A | DFNS331285C0 | 100% | 2010-11-08 | 2010-11-14 |  |  | EXCAVATION & BACKFILLING [504 h]; EXCAVATION & BACKFILLING [337 m3]; Cost | 67 | 67 | DFNS331281C0 | 100 | DT | C | FN | S3 | CT | 312 | 81 | BILL 5 | B05 | S1 | 04 | R00 | ACF02 | 312 |  |  |  |
| DFNS331285C0 |  | DT-FN ; Drainage-Pipe laying (Zone S3) | 12d | 2010-11-10 A | 2011-05-30 A | DFNS331283C0 | 100% | 2010-10-27 | 2010-11-09 |  |  | Labor General [1 h]; Cost | 66 | 66 | DFNS331285C0 | 100 | DT | C | FN | S3 | CT | 312 | 85 | BILL 5 | B05 | S1 | 04 | R00 | ACF02 | 312 |  |  |  |
| DFNS307113C0 |  | DT-FN ; Slab on Grade-Horizontal waterproofing (Zone S3) | 12d | 2011-01-04 A | 2011-06-01 A | DFNS303313C0 | 100% | 2011-01-11 | 2011-01-25 |  |  | THERMAL & MOISTURE [6288 h]; THERMAL & MOISTURE [8379 m2]; Cost | 69 | 69 | DFNS307113C0 | 99 | DT | C | FN | S3 | CT | 071 | 13 | BILL 5 | B05 | S1 | 02 | R00 | ACF02 | 071 |  |  | 8642.96 |
| DFNS303323C0 |  | DT-FN ; Slab on Grade-SOG concrete (Zone S3) | 42d | 2011-01-06 A | 2011-07-19 A | DFNS307113C0, DFNS331295C0 | 100% | 2011-02-06 | 2011-03-26 |  |  | ANTI-TERMITE [1128 h]; CONCRETE [70408 h]; CONCRETE [1771 m3]; ANTI-TERMITE [4286 m2]; Cost | 70 | 70 | DFNS303323C0 | 99 | DT | C | FN | S3 | CT | 033 | 23 | BILL 5 | B05 | S1 | 06 | R00 | ACF02 | 033 | 03 |  |  |
| DFNS331297C0 |  | DT-FN ; MEP trench-Steel supports (Zone S3) | 18d | 2011-04-04 A | 2011-06-29 A | DFNS307111C0 | 100% | 2011-02-28 | 2011-03-20 |  |  | Labor General [1 h]; Cost | 57 | 57 | DFNS331297C0 | 90 | DT | C | FN | S3 | CT | 312 | 97 | BILL 5 | B05 | S1 | 10 | R00 | ACF02 | 312 |  |  |  |
| DFNS331295C0 |  | DT-FN ; MEP trench-Grating cover (Zone S3) | 12d | 2011-10-01 | 2011-10-13 | DFNS331297C0 |  |  |  | 20.35d | 0d | Labor General [1 h]; Cost | 58 | 58 | DFNS331295C0 |  | DT | C | FN | S3 | SW | 312 | 95 | BILL 5 | B05 | S1 | 10 | R00 | ACF02 | 312 |  |  |  |

| ID | WBS | Activity | Type | Duration | Start | Finish | Predecessors | Complete | Remaining | Planned start | Planned finish | Total float | Free float | Resources | Change Order # | NEW ACTIVITY ID | change id | RENZ % COMPLETE | CCAD BUILDING(SET) | CCAD PHASE(SET) | CCAD FLOOR(SET) | CCAD ZONE(SET) | CCAD WORK(SET) | CCAD SECTION(SET) | CCAD SERIAL No.(SET) | CCAD CBS(SET) | CCAD BILL(SET) | CCAD HANDOVER(SET) | CCAD TAG(SET) | CCAD REV(SET) | CCADACF (SET) | CCAD SSCF | CCAD DIVISION(SET) | Actual Cost | Phase | Area/ Department | Grids | Are | Weight & Nos | Process | Levels | CCAD CSA | Claimed This Month | N_% | P_811 | P_711 |
| --- | --- | --- | --- | --- | --- | --- | --- | --- | --- | --- | --- | --- | --- | --- | --- | --- | --- | --- | --- | --- | --- | --- | --- | --- | --- | --- | --- | --- | --- | --- | --- | --- | --- | --- | --- | --- | --- | --- | --- | --- | --- | --- | --- | --- | --- | --- |
|  | SA | **Zone SA** |  |  | 2010-04-21 | 2010-07-25 |  |  |  |  |  |  |  |  |  |  |  |  |  |  |  |  |  |  |  |  |  |  |  |  |  |  |  |  |  |  |  |  |  |  |  |  |  |  |  |  |
| DFNSA31203C0 |  | DT-FN ; Lift Core-Excavation & Compaction (Zone SA) |  | 3d | 2010-04-21 A | 2010-04-24 A | DFNS231271C0 SS+5d | 100% |  |  |  |  |  | EXCAVATION & BACKFILLING [1000 h]; EXCAVATION & BACKFILLING [667 m3]; Cost | 16 | 16 | DFNSA31203C0 | 100 | DT | C | FN | SA | CT | 312 | 03 | BILL 5 | B05 | S1 | 03 | R00 | ACF02 | 312 |  |  |  |  |  |  |  |  |  |  |  |  |  |  |
| DFNSA31205C0 |  | DT-FN ; Lift Core-Pilecap treatment (Zone SA) |  | 12.07d | 2010-04-25 A | 2010-05-08 A | DFNSA31203C0 | 100% |  | 2010-04-25 | 2010-05-09 |  |  | ANTI-TERMITE [784 h]; ANTI-TERMITE [80 m2]; Cost | 2 | 2 | DFNSA31205C0 | 100 | DT | C | FN | SA | CT | 312 | 05 | BILL 5 | B05 | S1 | 02 | R00 | ACF02 | 312 |  |  |  |  |  |  |  |  |  |  |  |  |  |  |
| DFNSA03305C0 |  | DT-FN ; Lift Core-Blinding concrete (Zone SA) |  | 3d | 2010-05-09 A | 2010-05-11 A | DFNSA31205C0 | 100% |  |  |  |  |  | ANTI-TERMITE [592 h]; CONCRETE [1152 h]; CONCRETE [29 m3]; ANTI-TERMITE [9 m2]; Cost | 17 | 17 | DFNSA03305C0 | 100 | DT | C | FN | SA | CT | 033 | 05 | BILL 5 | B05 | S1 | 04 | R00 | ACF03 | 033 | 03 |  |  |  |  |  |  |  |  |  |  |  |  |  |
| DFNSA07107C0 |  | DT-FN ; Lift Core-Horizontal waterproofing (Zone SA) |  | 3d | 2010-05-12 A | 2010-05-15 A | DFNSA03305C0 | 100% |  |  |  |  |  | THERMAL & MOISTURE [288 h]; THERMAL & MOISTURE [389 m2]; Cost | 18 | 18 | DFNSA07107C0 | 100 | DT | C | FN | SA | CT | 071 | 07 | BILL 5 | B05 | S1 | 02 | R00 | ACF02 | 071 |  |  |  |  |  |  |  |  |  |  |  |  |  |  |
| DFNSA03309C0 |  | DT-FN ; Lift Core-Raft concrete (Zone SA) |  | 18d | 2010-05-16 A | 2010-06-05 A | DFNSA07107C0 | 100% |  | 2010-05-16 | 2010-06-06 |  |  | CONCRETE [29064 h]; CONCRETE [731 m3]; Cost | 19 | 19 | DFNSA03309C0 | 100 | DT | C | FN | SA | CT | 033 | 09 | BILL 5 | B05 | S1 | 04 | R00 | ACF03 | 033 | 03 |  |  |  |  |  |  |  |  |  |  |  |  |  |
| DFNSA03311C0 |  | DT-FN ; Lift Core-Wall concrete (Zone SA) |  | 26d | 2010-06-06 A | 2010-07-05 A | DFNSA03309C0 | 100% |  |  |  |  |  | CONCRETE [5488 h]; CONCRETE [138 m3]; Cost | 20 | 20 | DFNSA03311C0 | 100 | DT | C | FN | SA | CT | 033 | 11 | BILL 5 | B05 | S1 | 04 | R00 | ACF03 | 033 | 03 |  |  |  |  |  |  |  |  |  |  |  |  |  |
| DFNSA07113C0 |  | DT-FN ; Lift Core-Vertical waterproofing (Zone SA) |  | 4.02d | 2010-07-06 A | 2010-07-11 A | DFNSA03311C0 | 100% |  | 2010-07-06 | 2010-07-12 |  |  | THERMAL & MOISTURE [688 h]; THERMAL & MOISTURE [907 m2]; Cost | 21 | 21 | DFNSA07113C0 | 100 | DT | C | FN | SA | CT | 071 | 13 | BILL 5 | B05 | S1 | 03 | R00 | ACF02 | 071 |  |  |  |  |  |  |  |  |  |  |  |  |  |  |
| DFNSA31201C0 |  | DT-FN ; Lift Core-Backfilling & compaction (Zone SA) |  | 12d | 2010-07-12 A | 2010-07-25 A | DFNSA07113C0 | 100% |  |  |  |  |  | EXCAVATION & BACKFILLING [672 h]; EXCAVATION & BACKFILLING [451 m3]; Cost | 22 | 22 | DFNSA31201C0 | 100 | DT | C | FN | SA | CT | 312 | 01 | BILL 5 | B05 | S1 | 03 | R00 | ACF02 | 312 |  |  |  |  |  |  |  |  |  |  |  |  |  |  |
|  | SB | **Zone SB** |  |  | 2010-04-25 | 2010-08-09 |  |  |  |  |  |  |  |  |  |  |  |  |  |  |  |  |  |  |  |  |  |  |  |  |  |  |  |  |  |  |  |  |  |  |  |  |  |  |  |  |
| DFNSB31213C0 |  | DT-FN ; Lift Core-Excavation & Compaction (Zone SB) |  | 18d | 2010-04-25 A | 2010-05-15 A | DFNSA31203C0 | 100% |  |  |  |  |  | EXCAVATION & BACKFILLING [1000 h]; EXCAVATION & BACKFILLING [665 m3]; Cost | 1 | 1 | DFNSB31213C0 | 100 | DT | C | FN | SB | CT | 312 | 13 | BILL 5 | B05 | S1 | 03 | R00 | ACF02 | 312 |  |  |  |  |  |  |  |  |  |  |  |  |  |  |
| DFNSB31215C0 |  | DT-FN ; Lift Core-Pilecap treatment (Zone SB) |  | 3d | 2010-05-16 A | 2010-05-18 A | DFNSB31213C0 | 100% |  |  |  |  |  | ANTI-TERMITE [1024 h]; ANTI-TERMITE [88 m2]; Cost | 8 | 8 | DFNSB31215C0 | 100 | DT | C | FN | SB | CT | 312 | 15 | BILL 5 | B05 | S1 | 03 | R00 | ACF02 | 312 |  |  |  |  |  |  |  |  |  |  |  |  |  |  |
| DFNSB03305C0 |  | DT-FN ; Lift Core-Blinding concrete (Zone SB) |  | 6.03d | 2010-05-19 A | 2010-05-25 A | DFNSB31215C0 | 100% |  | 2010-05-19 | 2010-05-26 |  |  | ANTI-TERMITE [640 h]; CONCRETE [1240 h]; CONCRETE [31 m3]; ANTI-TERMITE [10 m2]; Cost | 9 | 9 | DFNSB03305C0 | 100 | DT | C | FN | SB | CT | 033 | 05 | BILL 5 | B05 | S1 | 04 | R00 | ACF03 | 033 | 03 |  |  |  |  |  |  |  |  |  |  |  |  |  |
| DFNSB07107C0 |  | DT-FN ; Lift Core-Horizontal waterproofing (Zone SB) |  | 6d | 2010-05-26 A | 2010-06-01 A | DFNSB03305C0 | 100% |  |  |  |  |  | THERMAL & MOISTURE [288 h]; THERMAL & MOISTURE [389 m2]; Cost | 10 | 10 | DFNSB07107C0 | 100 | DT | C | FN | SB | CT | 071 | 07 | BILL 5 | B05 | S1 | 02 | R00 | ACF02 | 071 |  |  |  |  |  |  |  |  |  |  |  |  |  |  |
| DFNSB03309C0 |  | DT-FN ; Lift Core-Raft concrete (Zone SB) |  | 6d | 2010-06-02 A | 2010-06-08 A | DFNSB07107C0 | 100% |  |  |  |  |  | CONCRETE [29136 h]; CONCRETE [733 m3]; Cost | 11 | 11 | DFNSB03309C0 | 100 | DT | C | FN | SB | CT | 033 | 09 | BILL 5 | B05 | S1 | 04 | R00 | ACF03 | 033 | 03 |  |  |  |  |  |  |  |  |  |  |  |  |  |
| DFNSB03311C0 |  | DT-FN ; Lift Core-Wall concrete (Zone SB) |  | 35.66d | 2010-06-09 A | 2010-07-21 A | DFNSB03309C0 | 100% |  |  |  |  |  | CONCRETE [5536 h]; CONCRETE [139 m3]; Cost | 12 | 12 | DFNSB03311C0 | 100 | DT | C | FN | SB | CT | 033 | 11 | BILL 5 | B05 | S1 | 04 | R00 | ACF03 | 033 | 03 |  |  |  |  |  |  |  |  |  |  |  |  |  |
| DFNSB07113C0 |  | DT-FN ; Lift Core-Vertical waterproofing (Zone SB) |  | 4.02d | 2010-07-21 A | 2010-07-26 A | DFNSB03311C0 | 100% |  |  |  |  |  | THERMAL & MOISTURE [688 h]; THERMAL & MOISTURE [908 m2]; Cost | 13 | 13 | DFNSB07113C0 | 100 | DT | C | FN | SB | CT | 071 | 13 | BILL 5 | B05 | S1 | 03 | R00 | ACF02 | 071 |  |  |  |  |  |  |  |  |  |  |  |  |  |  |
| DFNSB31211C0 |  | DT-FN ; Lift Core-Backfilling & compaction (Zone SB) |  | 12.1d | 2010-07-26 A | 2010-08-09 A | DFNSB07113C0 | 100% |  |  |  |  |  | EXCAVATION & BACKFILLING [744 h]; EXCAVATION & BACKFILLING [492 m3]; Cost | 14 | 14 | DFNSB31211C0 | 100 | DT | C | FN | SB | CT | 312 | 11 | BILL 5 | B05 | S1 | 03 | R00 | ACF02 | 312 |  |  |  |  |  |  |  |  |  |  |  |  |  |  |
|  | P3 | **Level Podium 3** |  |  | 2010-07-18 | 2013-01-10 |  |  |  |  |  |  |  |  |  |  |  |  |  |  |  |  |  |  |  |  |  |  |  |  |  |  |  |  |  |  |  |  |  |  |  |  |  |  |  |  |
|  | 01 | **Structure & Envelopment** |  |  | 2010-07-18 | 2012-08-25 |  |  |  |  |  |  |  |  |  |  |  |  |  |  |  |  |  |  |  |  |  |  |  |  |  |  |  |  |  |  |  |  |  |  |  |  |  |  |  |  |
| DP3SA03301C0 |  | DT-P3 ; Corewall concrete (Zone SA) |  | 8.01d | 2010-07-18 A | 2010-07-22 A | DFNSA03311C0 | 100% |  | 2010-07-06 | 2010-07-17 |  |  | CONCRETE [6448 h]; CONCRETE [162 m3]; Cost |  |  | DP3SA03301C0 | 100 | DT | C | P3 | SA | CT | 033 | 01 | BILL 5 | B05 | S1 | 04 | R00 | ACF03 | 033 |  |  |  |  |  |  |  |  |  |  |  |  |  |  |
| DP3S205101C0 |  | DT-P3 ; Erection of Structural Steel of POD 3 Floor (Zone S2) |  | 27.77d | 2010-07-25 A | 2010-10-23 A | DFNS203317C0 SS+61d | 100% |  | 2010-07-25 | 2010-08-25 |  |  | STRUCTURAL STEEL [8047 h]; STRUCTURAL STEEL [315 T(Fe)]; Cost |  |  | DP3S205101C0 | 100 | DT | C | P3 | S2 | ST | 051 | 01 | BILL 5 | B05 | S1 | 01 | R00 | ACF03 | 051 |  | 3102737 | Z2 | DT | P03 | O | A3 | EREC | 1FLR | ST |  |  |  |  |
| DP3S305101C0 |  | DT-P3 ; Erection of Structural Steel of POD 3 Floor (Zone S3) |  | 27.76d | 2010-07-25 A | 2010-10-25 A | DFNS303317C0 SS+55d, DFNS303319C0 SS+35d | 100% |  | 2010-07-29 | 2010-08-30 |  |  | STRUCTURAL STEEL [2199 h]; STRUCTURAL STEEL [86 T(Fe)]; Cost |  |  | DP3S305101C0 | 100 | DT | C | P3 | S3 | ST | 051 | 01 | BILL 5 | B05 | S1 | 01 | R00 | ACF03 | 051 |  | 3418422 | Z2 | DT | P03 | O | A3 | EREC | 1FLR | ST |  |  |  |  |
| DP3S205103C0 |  | DT-P3 ; Alignment & welding of POD 3 Floor (Zone S2) |  | 24.91d | 2010-07-26 A | 2010-10-25 A | DP3S205101C0 SS+6d, DP3S205101C0 FF | 100% |  | 2010-08-01 | 2010-08-29 |  |  | STRUCTURAL STEEL [824 h]; Cost |  |  | DP3S205103C0 | 100 | DT | C | P3 | S2 | ST | 051 | 03 | BILL 5 | B05 | S1 | 02 | R00 | ACF03 | 051 |  | 344749 | Z2 | DT | P03 | O | A3 | EREC | 1FLR | ST |  |  |  |  |
| DP3S305103C0 |  | DT-P3 ; Alignment & welding of POD 3 Floor (Zone S3) |  | 20d | 2010-07-26 A | 2010-10-30 A | DP3S305101C0 SS+12d, DP3S305101C0 FF | 100% |  | 2010-08-12 | 2010-09-04 |  |  | STRUCTURAL STEEL [912 h]; Cost |  |  | DP3S305103C0 | 100 | DT | C | P3 | S3 | ST | 051 | 03 | BILL 5 | B05 | S1 | 02 | R00 | ACF03 | 051 |  | 379825 | Z2 | DT | P03 | O | A3 | EREC | 1FLR | ST |  |  |  |  |
| DP3S105101C0 |  | DT-P3 ; Erection of Structural Steel of POD 3 Floor (Zone S1) |  | 26.7d | 2010-07-31 A | 2010-10-22 A | DFNS103317C0 SS+62d, DFNS103319C0 SS+42d, DFNSA03311C0, DFNSB03311C0 SS+20d, OGNMU00005S0 | 100% |  | 2010-07-27 | 2010-08-26 |  |  | STRUCTURAL STEEL [3946 h]; STRUCTURAL STEEL [154 T(Fe)]; Cost |  |  | DP3S105101C0 | 100 | DT | C | P3 | S1 | ST | 051 | 01 | BILL 5 | B05 | S1 | 01 | R00 | ACF03 | 051 |  | 2498425 | Z2 | DT | P03 | O | A3 | EREC | 1FLR | ST |  |  |  |  |
| DP3S105103C0 |  | DT-P3 ; Alignment & welding of POD 3 Floor (Zone S1) |  | 24.93d | 2010-08-01 A | 2010-10-25 A | DP3S105101C0 SS+6d, DP3S105101C0 FF | 100% |  | 2010-08-03 | 2010-08-31 |  |  | STRUCTURAL STEEL [664 h]; Cost |  |  | DP3S105103C0 | 100 | DT | C | P3 | S1 | ST | 051 | 03 | BILL 5 | B05 | S1 | 02 | R00 | ACF03 | 051 |  | 277603 | Z2 | DT | P03 | O | A3 | EREC | 1FLR | ST |  |  |  |  |
| DP3SB03303C0 |  | DT-P3 ; Corewall concrete (Zone SB) |  | 9.01d | 2010-08-03 A | 2010-08-14 A | DFNSB03311C0 | 100% |  | 2010-07-21 | 2010-08-01 |  |  | CONCRETE [6448 h]; CONCRETE [162 m3]; Cost |  |  | DP3SB03303C0 | 100 | DT | C | P3 | SB | CT | 033 | 03 | BILL 5 | B05 | S1 | 04 | R00 | ACF03 | 033 |  |  |  |  |  |  |  |  |  |  |  |  |  |  |
| DP3S107807C0 |  | DT-P3 ; Cementitious Fire Proofing works POD 3 FLR (Zone S1) |  | 10d | 2011-02-04 A | 2011-06-01 A | DFNS103323C0, DP2S103399C0 | 100% |  | 2011-02-28 | 2011-03-12 |  |  | CEMENTITIOUS FIREPROOFING [1251 h]; CEMENTITIOUS FIREPROOFING [2502 m2]; Cost |  |  | DP3S107807C0 | 90 | DT | C | P3 | S1 | ST | 078 | 07 | BILL 5 | B05 | S1 | 04 | R00 | ACF03 | 078 |  |  | Z2 | DT | P03 | O | A3 | FIRE | 1FLR | ST | 23567.98 |  |  |  |
| DP3S207807C0 |  | DT-P3 ; Cementitious Fire Proofing works POD 3 FLR (Zone S2) |  | 9.88d | 2011-02-06 A | 2011-06-01 A | DP2S203399C0 | 100% |  | 2011-02-28 | 2011-03-10 |  |  | CEMENTITIOUS FIREPROOFING [1554 h]; CEMENTITIOUS FIREPROOFING [3108 m2]; Cost |  |  | DP3S207807C0 | 90 | DT | C | P3 | S2 | ST | 078 | 07 | BILL 5 | B05 | S1 | 04 | R00 | ACF03 | 078 |  |  | Z2 | DT | P03 | O | A3 | FIRE | 1FLR | ST | 29268.54 |  |  |  |
| DP3S307807C0 |  | DT-P3 ; Cementitious Fire Proofing works POD 3 FLR (Zone S3) |  | 9.88d | 2011-02-15 A | 2011-06-01 A | DP2S303399C0 | 100% |  | 2011-02-28 | 2011-03-10 |  |  | CEMENTITIOUS FIREPROOFING [1712 h]; CEMENTITIOUS FIREPROOFING [3424 m2]; Cost |  |  | DP3S307807C0 | 85 | DT | C | P3 | S3 | ST | 078 | 07 | BILL 5 | B05 | S1 | 04 | R00 | ACF03 | 078 |  |  | Z2 | DT | P03 | O | A3 | FIRE | 1FLR | ST | 48370.05 |  |  |  |
| DP3S205101C10 |  | DT-P3 ; Secondary Steel for Mech Trenches (Zone S2) |  | 2d | 2011-06-08 A | 2011-07-29 A | DP3S207807C0 | 100% |  | 2011-06-30 | 2011-07-02 |  |  | STRUCTURAL STEEL [3 T(Fe)]; Cost |  |  | DP3S205101C0 |  | DT | C | P3 | S2 | SW | 055 | 01 | BILL 5 | B05 | S1 | 01 | R00 | ACF03 | 055 |  | 3102737 | Z2 | DT | P03 | O | A3 | EREC | 1FLR |  | 31903.35 |  |  |  |
| DP3CO04001C0 |  | DT-P3 ; Blockworks (Common Zone) |  | 35d | 2011-06-16 A | 2011-06-28 A | DFNS103323C0, DFNS203323C0, DFNS303323C0 | 100% |  | 2011-06-16 | 2011-07-28 |  |  | BLOCKWORKS [4949 h]; BLOCKWORKS [1414 m2]; Cost | 73 | 73 | DP3CO04001C0 |  | DT | C | P3 | CO | BL | 040 | 01 | BILL 5 | B05 | S1 | BL | R00 | ACF06 | 040 | 04 |  |  |  |  |  |  |  |  |  | 283343.42 |  |  |  |
| DP3GN00901C0 |  | DT-P3 ; Temporary Enclosure | level of effort | 259d | 2011-06-18 A | 2012-08-15 | DP3PA09203C0 SS, DP3FW09203C0 SS, DP3SR09203C0 SS, DP3TR09203C0 SS |  | 266.06d | 2011-06-19 | 2012-04-28 | 192.95d | 0d | Labor General [0.6 h]; Cost |  |  |  |  | DT | C | P3 | GEN | FA | GEN |  |  | B05 |  | TE | R00 | ACF05 | 010 |  |  |  |  |  |  |  |  |  | FA |  | 23 | 31.96 | 0 |
| DP3CO04003C0 |  | DT-P3 ; Plaster to Blockwork (Common Zone) |  | 24d | 2011-06-19 A | 2011-06-30 A | DP3CO04001C0 | 100% |  | 2011-07-28 | 2011-08-25 |  |  | BLOCKWORKS [174 h]; Cost |  |  | DP3CO04003C0 |  | DT | C | P3 | CO | BL | 040 | 03 | BILL 5 | B05 | S1 | BL | R00 | ACF06 | 040 |  |  |  |  |  |  |  |  |  |  | 159456.58 |  |  |  |
| DP3S305101C10 |  | DT-P3 ; Secondary Steel for Mech Trenches (Zone S3) |  | 2d | 2011-07-06 A | 2011-07-28 A | DP3S307807C0 | 100% |  | 2011-07-31 | 2011-08-01 |  |  | STRUCTURAL STEEL [7 T(Fe)]; Cost |  |  | DP3S205101C0 |  | DT | C | P3 | S3 | SW | 055 | 01 | BILL 5 | B05 | S1 | 01 | R00 | ACF03 | 055 |  | 3102737 | Z2 | DT | P03 | O | A3 | EREC | 1FLR |  |  |  |  |  |
| DP3CO04413C0 |  | DT-P3 ; M1 Bracket (Common Zone) |  | 12d | 2011-09-08 A | 2012-01-10 | DP3S107807C0, DP3S207807C0, DP3S307807C0, PGLS403392C0 | 80% | 2.4d | 2011-12-28 | 2012-01-12 | 47.55d | 0d | FACADE METAL PANEL 1 [93.8 h]; Cost |  |  | DP3CO04413C0 |  | DT | C | P3 | CO | FA | 044 | 13 | BILL 5 | B05 | S1 | FM1 | R00 | ACF05 | 044 |  |  |  |  |  |  |  |  |  | FA |  | 80 |  |  |
| DP3CO04415C0 |  | DT-P3 ; M1 External Partition (Common Zone) |  | 18d | 2011-09-11 A | 2012-01-24 | DP3CO04413C0 SS+15d, DP3GN00901C0 FF, DP3CO04413C0 FF | 20% | 14.4d | 2012-01-16 | 2012-02-07 | 47.55d | 0d | PARTITIONS [253.21 m]; PARTITIONS [1261.2 h]; Cost |  |  | DP3CO04415C0 |  | DT | C | P3 | CO | FA | 044 | 15 | BILL 5 | B05 | S1 | FM1 | R00 | ACF05 | 044 |  |  |  |  |  |  |  |  |  | FA |  | 60 |  |  |
| DP3CO04403C0 |  | DT-P3 ; C4 Bracket (Common Zone) |  | 48d | 2011-10-01 | 2011-11-29 | DP3S107807C0, DP3S207807C0, DP3S307807C0, OGNMU00039S0 |  |  |  |  | 110d | 0d | FACADE CURTAIN WALL 4 [451.3 h]; Cost |  |  | DP3CO04403C0 |  | DT | C | P3 | CO | FA | 044 | 03 | BILL 5 | B05 | S1 | FC4 | R00 | ACF05 | 044 |  |  |  |  |  |  |  |  |  | FA |  |  |  |  |
| DP3CO04405C0 |  | DT-P3 ; C4 Transom & Mullion (Common Zone) |  | 54d | 2011-11-30 | 2012-02-02 | DP3CO04403C0 |  |  |  |  | 110d | 0d | FACADE CURTAIN WALL 4 [1805.7 h]; Cost |  |  | DP3CO04405C0 |  | DT | C | P3 | CO | FA | 044 | 05 | BILL 5 | B05 | S1 | FC4 | R00 | ACF05 | 044 |  |  |  |  |  |  |  |  |  | FA |  | 80 |  |  |
| DP3CO04417C0 |  | DT-P3 ; M1 Metal Panel (Common Zone) |  | 38d | 2012-01-08 | 2012-02-22 | DP3CO04415C0 SS+15d |  |  |  |  | 166.7d | 4.7d | FACADE METAL PANEL 1 [2735.8 h]; FACADE METAL PANEL 1 [1000 m2]; FACADE TOTAL QUANTITY m2 [1000 m2]; Cost |  |  | DP3CO04417C0 |  | DT | C | P3 | CO | FA | 044 | 17 | BILL 5 | B05 | S1 | FM1 | R00 | ACF05 | 044 |  |  |  |  |  |  |  |  |  | FA |  |  |  |  |
| DP3CO04407C0 |  | DT-P3 ; C4 Glazing (Common Zone) |  | 48d | 2012-02-05 | 2012-03-31 | DP3CO04405C0, DP3GN00901C0 FF |  |  |  |  | 110d | 67.5d | FACADE CURTAIN WALL 4 [1077.8 h]; FACADE CURTAIN WALL 4 [394 m2]; FACADE TOTAL QUANTITY m2 [394 m2]; Cost |  |  | DP3CO04407C0 |  | DT | C | P3 | CO | FA | 044 | 07 | BILL 5 | B05 | S1 | FC4 | R00 | ACF05 | 044 |  |  |  |  |  |  |  |  |  | FA |  |  |  |  |
| DP3CO04455C0 |  | DT-P3 ; M1 Inner Side of External Partition (Common Zone) |  | 42d | 2012-02-06 | 2012-03-26 | DP3CO04415C0, DP3FW09205C0 SS, DP3PA09205C0 SS |  |  |  |  | 37.75d | 0.4d | FACADE METAL PANEL 1 [1973.1 h]; Cost |  |  | DP3CO04415C0 |  | DT | C | P3 | CO | FA | 044 | 15 | BILL 5 | B05 | S1 | FM1 | R00 | ACF05 | 044 |  |  |  |  |  |  |  |  |  | FA |  |  |  |  |
| DP3CO04401C0 |  | DT-P3 ; VE Vestibule (Common Zone) |  | 30d | 2012-02-11 | 2012-03-17 | DP3CO04415C0 FF, PGLS403392C0 FS+28d |  |  |  |  | 228.82d | 208.47d | Labor General [0.6 h]; Cost |  |  | DP3CO04403C0 |  | DT | C | P3 | CO | FA | 044 | 03 | BILL 5 | B05 | S1 | VE | R00 | ACF05 | 044 |  |  |  |  |  |  |  |  |  | FA |  |  |  |  |
| DP3CO04423C0 |  | DT-P3 ; S2 Bracket (Common Zone - to be S11 - Stair F13) |  | 30d | 2012-06-05 | 2012-07-11 | DP3S107807C0, DP3S207807C0, DP3S307807C0, PGLS503391C0 FS+14d, PAF1305509C0 |  |  |  |  | 136.25d | 0d | FACADE NATURAL STONE PANEL [17.1 h]; Cost |  |  | DP3CO04423C0 |  | DT | C | P3 | CO | FA | 044 | 23 | BILL 5 | B05 | S1 | FS2 | R00 | ACF05 | 044 |  |  |  |  |  |  |  |  |  | FA |  | 60 |  |  |
| DP3CO04425C0 |  | DT-P3 ; S2 External Partition (Common Zone - to be S11 - Stair F13) |  | 30d | 2012-07-11 | 2012-08-15 | DP3CO04423C0, DP3GN00901C0 FF |  |  |  |  | 192.95d | 0d | PARTITIONS [11.74 m]; PARTITIONS [58.6 h]; Cost |  |  | DP3CO04425C0 |  | DT | C | P3 | CO | FA | 044 | 25 | BILL 5 | B05 | S1 | FS2 | R00 | ACF05 | 044 |  |  |  |  |  |  |  |  |  | FA |  |  |  |  |
| DP3CO04427C0 |  | DT-P3 ; S2 Stone Panel (Common Zone - to be S11 - Stair F13) |  | 36d | 2012-07-11 | 2012-08-25 | DP3CO04425C0 SS, DP3CO04425C0 FF |  |  |  |  | 192.95d | 56.7d | FACADE NATURAL STONE PANEL [1028 h]; FACADE NATURAL STONE PANEL [375 m2]; FACADE TOTAL QUANTITY m2 [375 m2]; Cost |  |  | DP3CO04427C0 |  | DT | C | P3 | CO | FA | 044 | 27 | BILL 5 | B05 | S1 | FS2 | R00 | ACF05 | 044 |  |  |  |  |  |  |  |  |  | FA |  |  |  |  |

| ID | WBS | Activity | Duration | Start | Finish | Predecessors | Complete | Remaining | Planned start | Planned finish | Total float | Free float | Resources | Cost | Actual cost | change id | RENZ % COMPLETE | CCAD BUILDING(SET) | CCAD PHASE(SET) | CCAD FLOOR(SET) | CCAD ZONE(SET) | CCAD WORK(SET) | CCAD SECTION(SET) | CCAD SERIAL No.(SET) | CCAD SUB ZONE MEP(SET) | CCAD CBS(SET) | CCAD BILL(SET) | CCAD HANDOVER(SET) | CCAD TAG(SET) | CCAD REV(SET) | CCADACF (SET) | CCAD CSA | CCAD SSCF | Act Selector % | July2011 Target% Complete | P_811 | P_711 | Claimed This Month | user_number8 | user_integer1 | user_integer2 | user_number7 | PERCENT COMPLETE | Change Order # | NEW ACTIVITY ID | CCAD MEQ | CCAD DIVISION(SET) |
| --- | --- | --- | --- | --- | --- | --- | --- | --- | --- | --- | --- | --- | --- | --- | --- | --- | --- | --- | --- | --- | --- | --- | --- | --- | --- | --- | --- | --- | --- | --- | --- | --- | --- | --- | --- | --- | --- | --- | --- | --- | --- | --- | --- | --- | --- | --- | --- |
|  | 02 | **Fire water tank / Grey water tank** |  | 2010-11-10 | 2012-12-30 |  |  |  |  |  |  |  |  |  |  |  |  |  |  |  |  |  |  |  |  |  |  |  |  |  |  |  |  |  |  |  |  |  |  |  |  |  |  |  |  |  |  |
| DP3FW22019C0 |  | DT-P3 ; 1st Fix, Inst of Drainage pipe (ceiling) (Fire water tank) | 61.89d | 2010-11-10 A | 2011-05-30 A | DP3FW23001C0, DP3FW26013C0 SS+6d, DP3S207807C0 | 100% |  | 2011-06-08 | 2011-08-20 |  |  | PLUMBING [1171.2 h]; Cost [61888.2 AED] | 61,888.15 | 61,888.15 | DP3FW22019C0 | 100 | DT | C | P3 | FW | ME | 220 | 19 | 1S | BILL 5 | B05 | S1 | 1F | R00 | ACF04 | MEP | 220 | M1F |  |  |  |  |  |  |  |  |  |  |  |  |  |
| DP3FW23001C0 |  | DT-P3 ; 1st Fix, Inst. of Supports for MEP (Fire water tank) | 26d | 2011-04-18 A | 2011-08-30 A | DFNS103323C0, DFNS203323C0, DP3S207807C0 SS | 100% |  | 2011-06-01 | 2011-07-03 |  |  | MECHANICAL [1717.2 h]; Cost [75432.9 AED] | 75,432.94 | 75,432.94 | DP3FW23001C0 | 25 | DT | C | P3 | FW | ME | 230 | 01 | 1S | BILL 5 | B05 | S1 | 1F | R00 | ACF04 | MEP | 230 | M1F | 90 | 100 | 90 |  |  |  |  |  |  |  |  |  |  |
| DP3FW07113C0 |  | DT-P3 ; Waterproofing Inside Tank (Fire water tank) | 18d | 2011-04-24 A | 2011-06-22 A | DFNS203327C0 FS+21d, DP2S103399C0, DP2S203399C0, DP2S303399C0 | 100% |  | 2011-04-05 | 2011-04-26 |  |  | THERMAL & MOISTURE [490 m2]; THERMAL & MOISTURE [80 h]; Cost |  |  | DP3FW26013C0 | 10 | DT | C | P3 | FW | FF | 071 | 13 | 1S | BILL 5 | B05 | S1 | 03 | R00 | ACF03 |  | 071 |  |  |  |  | 17953.55 |  |  |  |  |  |  |  |  |  |
| DP3FW26016C0 |  | DT-P3 ; MEP Equipment (Fire water tank) | 150d | 2011-04-26 A | 2011-11-21 | DFNS103323C0, DFNS203323C0, DP3FW07113C0 | 80% | 30d | 2011-09-10 | 2012-03-10 | 165.2d | 34.6d | ELECTRICAL [29845.2 h]; Cost [6791548 AED] | 6,791,548.4 | 5,433,238.72 | DP3FW21115C0 | 45 | DT | C | P3 | FW | ME | 260 | 16 | 2n | BILL 5 | B05 | S1 | MEL | R00 | ACF07 | MEP | 260 |  | 80 |  |  | 2757361.32 |  |  |  |  |  |  |  |  |  |
| DP3FW22005C0 |  | DT-P3 ; 1st Fix, Inst of Water supply pipe (ceiling) (Fire water tank) | 78d | 2011-05-15 A | 2011-12-27 | DP3FW22019C0 SS+5d, DP3FW23001C0, DP3S207807C0 | 25% | 58.5d | 2011-08-21 | 2011-11-27 | 53.6d | 0d | PLUMBING [4896 h]; Cost [264473 AED] | 264,473.49 | 66,118.37 | DP3FW22005C0 | 20 | DT | C | P3 | FW | ME | 220 | 05 | 1S | BILL 5 | B05 | S1 | 1F | R00 | ACF04 | MEP | 220 | M1F | 70 | 25 | 20 |  | 0 | 0 | 0 | 0 |  |  |  |  |  |
| DP3FW21117C0 |  | DT-P3 ; 1st Fix, Inst of Sprinkler branch pipe (Fire water tank) | 248d | 2011-06-07 A | 2012-01-04 | DP3FW09201C0, DP3FW21111C0, DP3FW26016C0 FF, DP3S207807C0 | 90% | 25d | 2011-10-02 | 2012-07-26 | 130.6d | 110d | MECHANICAL [1441.2 h]; Cost [78749.8 AED] | 78,749.79 | 70,874.81 | DP3FW21117C0 |  | DT | C | P3 | FW | ME | 211 | 17 | 1S | BILL 5 | B05 | S1 | 1F | R00 | ACF04 | MEP | 211 | M1F | 55 | 92 | 75 | 50210.21 | 0 | 0 | 0 | 0 | 90 |  |  |  |  |
| DP3FW27001C0 |  | DT-P3 ; 1st Fix, Wiring/ Cabling work (Fire water tank) | 84d | 2011-06-07 A | 2012-02-27 | DP3FW26001C0, DP3FW26013C0, DP3FW27010C0, DP3S207807C0 | 35% | 54.6d | 2011-10-16 | 2012-01-29 | 86d | 65.4d | ELECTRICAL [436.8 h]; Cost [21894.9 AED] | 21,894.91 | 7,663.22 | DP3FW27001C0 |  | DT | C | P3 | FW | ME | 270 | 01 | 1S | BILL 5 | B05 | S1 | 1F | R00 | ACF04 | MEP | 270 | M1F | 35 |  |  | 9027.43 |  |  |  |  |  |  |  |  |  |
| DP3FW21111C0 |  | DT-P3 ; 1st Fix, Inst of Sprinkler main pipe (Fire water tank) | 250d | 2011-06-08 A | 2011-11-15 | DP3FW22005C0 SS+5d, DP3FW23001C0, DP3S207807C0 | 90% | 25d | 2011-08-08 | 2012-06-05 | 86d | 0d | MECHANICAL [1122 h]; Cost [53543.7 AED] | 53,543.69 | 48,189.32 | DP3FW21111C0 |  | DT | C | P3 | FW | ME | 211 | 11 | 1S | BILL 5 | B05 | S1 | 1F | R00 | ACF04 | MEP | 211 | M1F | 55 | 92 | 75 | 39250.25 | 0 | 0 | 0 | 0 | 90 |  |  |  |  |
| DP3FW09201C0 |  | DT-P3 ; Metal Studs (Fire water tank) | 90d | 2011-06-11 A | 2011-12-05 | DP3FW23001C0 | 56% | 39.6d | 2011-07-10 | 2011-10-25 | 18.5d | 0d | PARTITIONS [4850 h]; PARTITIONS - Metal Studs [716 m]; Cost |  |  | DP3FW09201C0 |  | DT | C | P3 | FW | PT | 092 | 01 |  | BILL 5 | B05 | S1 | 1F | R00 | ACF06 | GP | 092 | PMS |  | 48 | 34 | 93312.33 | 0 | 0 | 0 | 0 |  | 313 | 944 |  |  |
| DP3FW26001C0 |  | DT-P3 ; 1st Fix, Inst of Trunking/Conduiting (Fire water tank) | 84d | 2011-06-14 A | 2011-12-22 | DFNS103323C0, DFNS203323C0, DP3FW23001C0, DP3S207807C0 | 35% | 54.6d | 2011-07-10 | 2011-10-18 | 53.6d | 0d | ELECTRICAL [824.4 h]; Cost [42423.2 AED] | 42,423.24 | 14,848.13 | DP3FW26001C0 |  | DT | C | P3 | FW | ME | 260 | 01 | 1S | BILL 5 | B05 | S1 | 1F | R00 | ACF04 | MEP | 260 | M1F | 35 |  |  | 17495.32 |  |  |  |  |  |  |  |  |  |
| DP3FW26009C0 |  | DT-P3 ; 2nd Fix, Inst of Wall conduites (Fire water tank) | 54d | 2011-06-14 A | 2012-01-29 | DP3FW09201C0 | 15% | 45.9d | 2011-07-17 | 2011-09-20 | 20.6d | 0d | ELECTRICAL [824.4 h]; Cost [42423.2 AED] | 42,423.24 | 6,363.49 | DP3FW26009C0 |  | DT | C | P3 | FW | ME | 260 | 09 | 2n | BILL 5 | B05 | S1 | 2F | R00 | ACF07 | MEP | 260 |  | 10 | 15 | 10 | 4998.66 |  |  |  |  |  |  |  |  |  |
| DP3FW27010C0 |  | DT-P3 ; 1st Fix, Inst of Trunking for ELV system (Fire water tank) | 90d | 2011-06-14 A | 2011-12-11 | DFNS103323C0, DFNS203323C0, DP3FW23001C0, DP3FW26001C0 SS+10d, DP3S207807C0 | 50% | 45d | 2011-07-21 | 2011-11-09 | 53.6d | 0d | ELECTRICAL [1689.6 h]; Cost [88597.9 AED] | 88,597.89 | 44,298.95 | DP3FW27010C0 |  | DT | C | P3 | FW | ME | 270 | 10 | 1S | BILL 5 | B05 | S1 | 1F | R00 | ACF04 | MEP | 270 | M1F | 35 | 50 | 35 | 35974.46 |  |  |  |  |  |  |  |  |  |
| DP3FW22011C0 |  | DT-P3 ; 2nd Fix, Drainage/Water pipe (wall) (Fire water tank) | 78d | 2011-06-15 A | 2012-01-21 | DP3FW09201C0 | 50% | 39d | 2011-07-17 | 2011-10-18 | 27.5d | 6.9d | PLUMBING [1173.6 h]; Cost [61888.2 AED] | 61,888.15 | 30,944.08 | DP3FW22011C0 |  | DT | C | P3 | FW | ME | 220 | 11 | 2n | BILL 5 | B05 | S1 | 2F | R00 | ACF07 | MEP | 220 |  | 70 | 50 | 10 | 7350.18 |  |  |  |  |  |  |  |  |  |
| DP3FW26013C0 |  | DT-P3 ; 1st Fix, Inst of Cable Tray (Fire water tank) | 90d | 2011-06-15 A | 2011-12-11 | DFNS103323C0, DFNS203323C0, DP3FW23001C0, DP3FW27010C0 SS+9d, DP3S207807C0 | 50% | 45d | 2011-08-01 | 2011-11-20 | 53.6d | 0d | ELECTRICAL [430.8 h]; Cost [23263.3 AED] | 23,263.34 | 11,631.67 | DP3FW26013C0 |  | DT | C | P3 | FW | ME | 260 | 13 | 1S | BILL 5 | B05 | S1 | 1F | R00 | ACF04 | MEP | 260 | M1F | 35 | 50 | 35 | 9450.59 |  |  |  |  |  |  |  |  |  |
| DP3FW09203C0 |  | DT-P3 ; Partitions 1st face (Fire water tank) | 90d | 2011-06-24 A | 2011-12-20 | DP3FW09201C0 SS+12d | 42% | 52.2d | 2011-07-24 | 2011-11-12 | 59.9d | 39.3d | PARTITIONS [716 m]; PARTITIONS [3804 h]; Cost |  |  | DP3FW09203C0 |  | DT | C | P3 | FW | PT | 092 | 03 |  | BILL 5 | B05 | S1 | 2F | R00 | ACF06 | GP | 092 | P1F |  | 30 | 11 | 21772.88 | 0 | 0 | 0 | 0 |  | 314 | 945 |  |  |
| DP3FW23023C0 |  | DT-P3 ; 1st Fix, Inst of Main Ducting (Fire water tank) | 78d | 2011-07-10 A | 2011-12-13 | DP3FW23001C0, DP3FW23017C0 SS+12d, DP3S207807C0 | 40% | 46.8d | 2011-08-21 | 2011-11-27 | 89.6d | 0d | MECHANICAL [11402.4 h]; Cost [622619 AED] | 622,619.08 | 249,047.63 | DP3FW23023C0 |  | DT | C | P3 | FW | ME | 230 | 23 | 1S | BILL 5 | B05 | S1 | 1F | R00 | ACF04 | MEP | 230 | M1F | 55 |  |  |  | 0 | 0 | 0 | 0 |  |  |  |  |  |
| DP3FW23011C0 |  | DT-P3 ; 2nd Fix, Inst of Equipment (FCU,FAN) (Fire water tank) | 79d | 2011-08-02 A | 2012-05-13 | DP3FW09205C0 | 56% | 35.1d | 2012-04-03 | 2012-07-05 | 20.6d | 0d | MECHANICAL [1588.8 h]; Cost [361645 AED] | 361,645.02 | 198,904.76 | DP3FW23011C0 |  | DT | C | P3 | FW | ME | 230 | 11 | 2n | BILL 5 | B05 | S1 | 2F | R00 | ACF04 | MEP | 230 |  |  | 50 | 0 |  |  |  |  |  |  |  |  | H |  |
| DP3FW23015C0 |  | DT-P3 ; 2nd Fix, Insulation of CHW pipe & Duct (Fire water tank) | 60d | 2011-08-02 A | 2012-02-27 | DP3FW23009C0, DP3FW23017C0, DP3FW23023C0 | 40% | 36d | 2011-11-19 | 2012-01-31 | 86d | 65.4d | MECHANICAL [5311.2 h]; Cost [286617 AED] | 286,617.06 | 114,646.82 | DP3FW23015C0 |  | DT | C | P3 | FW | ME | 230 | 15 | 2n | BILL 5 | B05 | S1 | 2F | R00 | ACF07 | MEP | 230 |  |  | 30 | 20 |  | 0 | 0 | 0 | 0 |  |  |  |  |  |
| DP3FW23017C0 |  | DT-P3 ; 1st Fix, Inst of CHW pipe (Fire water tank) | 100d | 2011-08-02 A | 2011-11-21 | DP3FW21111C0 SS+5d, DP3FW23001C0, DP3S207807C0 | 70% | 30d | 2011-09-08 | 2012-01-10 | 86d | 0d | MECHANICAL [6325.2 h]; Cost [345418 AED] | 345,418.28 | 241,792.8 | DP3FW23017C0 |  | DT | C | P3 | FW | ME | 230 | 17 | 1S | BILL 5 | B05 | S1 | 1F | R00 | ACF04 | MEP | 230 | M1F | 55 | 70 | 0 |  |  |  |  |  |  |  |  |  |  |
| DP3FW23008C0 |  | DT-P3 ; 1st Fix, Inst of VCD's/FD's (Fire water tank) | 84d | 2011-08-10 A | 2012-02-22 | DP3FW23023C0, DP3S207807C0 | 30% | 58.8d | 2011-11-29 | 2012-03-10 | 89.6d | 69d | MECHANICAL [4312.8 h]; Cost [232964 AED] | 232,964.23 | 69,889.27 | DP3FW23008C0 |  | DT | C | P3 | FW | ME | 230 | 08 | 1S | BILL 5 | B05 | S1 | 1F | R00 | ACF04 | MEP | 230 | M1F |  | 30 | 0 |  |  |  |  |  |  |  |  |  |  |
| DP3FW23009C0 |  | DT-P3 ; 2nd Fix, Inst of VAV'S CHW connection (Fire water tank) | 54d | 2011-08-10 A | 2012-01-15 | DP3FW23017C0, DV08P302201R2 | 20% | 43.2d | 2011-10-31 | 2012-01-09 | 86d | 0d | MECHANICAL [1684.8 h]; Cost [91006.1 AED] | 91,006.06 | 18,201.21 | DP3FW23009C0 |  | DT | C | P3 | FW | ME | 230 | 09 | 2n | BILL 5 | B05 | S1 | 2F | R00 | ACF07 | MEP | 230 |  | 25 | 20 | 0 |  |  |  |  |  |  |  |  |  |  |
| DP3FW08103C0 |  | DT-P3 ; Door Frames (Fire water tank) | 24d | 2011-10-15 | 2011-11-14 | DP3FW09201C0 SS+10d, GNHE08101C0 |  |  |  |  | 136.1d | 115.5d | ASSORTED DOORS [462 h]; Cost |  |  | DP3FW08103C0 |  | DT | C | P3 | FW | DO | 081 | 03 |  | BILL 5 | B05 | S1 | DR | R00 | ACF06 |  | 081 |  |  |  |  |  |  |  |  |  |  | 316 | 947 |  | 08 |
| DP3FW01005C0 |  | DT-P3 ; 2nd, Wall Inspection by Consultant (Fire water tank) | 6d | 2012-01-29 | 2012-02-06 | DP3FW22011C0, DP3FW26009C0 |  |  |  |  | 20.6d | 0d | Labor General [1.2 h]; Cost |  |  | DP3FW01005C0 |  | DT | C | P3 | FW | ME | 010 | 05 | 2n | BILL 5 | B05 | S1 | WI | R00 | ACF07 | MEP | 010 |  |  |  |  |  |  |  |  |  |  |  |  |  |  |
| DP3FW09205C0 |  | DT-P3 ; Partitions Closing (Fire water tank) | 48d | 2012-02-06 | 2012-04-02 | DAFOA09206C1 FF, DP3FW01005C0, DP3FW09203C0, DP3FW22005C0, DP3FW22019C0, DP3FW08103C0 FF |  |  |  |  | 20.6d | 0d | PARTITIONS [716 m]; PARTITIONS [4865 h]; Cost |  |  | DP3FW09205C0 |  | DT | C | P3 | FW | PT | 092 | 05 |  | BILL 5 | B05 | S1 | FF | R00 | ACF06 | GP | 092 | P2F |  |  |  |  |  |  |  |  |  | 315 | 946 |  |  |
| DP3FW07103C0 |  | DT-P3 ; Waterproofing (Fire water tank) | 12d | 2012-04-02 | 2012-04-16 | DP3FW08103C0, DP3FW09205C0, DP3FW26016C0 |  |  |  |  | 69.7d | 0d | THERMAL & MOISTURE [328 h]; THERMAL & MOISTURE [2159 m2]; Cost |  |  | DP3FW07103C0 |  | DT | C | P3 | FW | FF | 071 | 03 |  | BILL 5 | B05 | S1 | 01 | R00 | ACF03 |  | 071 |  |  |  |  |  |  |  |  |  |  | 105 | 999 |  |  |
| DP3FW09901C0 |  | DT-P3 ; Wall Prime & 1st coat (Fire water tank) | 30d | 2012-04-02 | 2012-05-07 | DP3CO04003C0, DP3FW09205C0 |  |  |  |  | 25.7d | 0d | WALL PAINT [588 h]; WALL PAINT [734 m2]; Cost |  |  | DP3FW09901C0 |  | DT | C | P3 | FW | PA | 099 | 01 |  | BILL 5 | B05 | S1 | 01 | R00 | ACF06 |  | 099 |  |  |  |  |  |  |  |  |  |  | 328 | 956 |  |  |
| DP3FW26005C0 |  | DT-P3 ; 2nd Fix, Wiring for Power/Lighting/Emergency (Fire water tank) | 36d | 2012-04-02 | 2012-05-14 | DP3FW09205C0 |  |  |  |  | 79.7d | 0d | ELECTRICAL [436.8 h]; Cost |  |  | DP3FW26005C0 |  | DT | C | P3 | FW | ME | 260 | 05 | 2n | BILL 5 | B05 | S1 | 2F | R00 | ACF07 | MEP | 260 |  |  |  |  |  |  |  |  |  |  |  |  |  |  |
| DP3FW26007C0 |  | DT-P3 ; 2nd Fix, Cable Pulling (Fire water tank) | 42d | 2012-04-02 | 2012-05-21 | DP3FW09201C0, DP3FW09205C0 |  |  |  |  | 127.7d | 107.1d | ELECTRICAL [6634.8 h]; Cost |  |  | DP3FW26007C0 |  | DT | C | P3 | FW | ME | 260 | 07 | 2n | BILL 5 | B05 | S1 | 2F | R00 | ACF07 | MEP | 260 |  | 25 |  |  |  |  |  |  |  |  |  |  |  |  |
| DP3FW26011C0 |  | DT-P3 ; 2nd Fix, Inst of Equipment (DB) (Fire water tank) | 48d | 2012-04-02 | 2012-05-28 | DP3FW09205C0 |  |  |  |  | 85.7d | 59.1d | ELECTRICAL [4054.8 h]; Cost |  |  | DP3FW26011C0 |  | DT | C | P3 | FW | ME | 260 | 11 | 2n | BILL 5 | B05 | S1 | 2F | R00 | ACF04 | MEP | 260 |  |  |  |  |  |  |  |  |  |  |  |  | P |  |
| DP3FW26053C0 |  | DT-P3 ; 2nd Fix, Wiring / Cabling (Fire water tank) | 36d | 2012-04-02 | 2012-05-14 | DP3FW26009C0, DP3FW09205C0 |  |  |  |  | 133.7d | 113.1d | ELECTRICAL [436.8 h]; Cost |  |  | DP3FW26053C0 |  | DT | C | P3 | FW | ME | 260 | 53 | 2n | BILL 5 | B05 | S1 | 2F | R00 | ACF07 | MEP | 260 |  |  |  |  |  |  |  |  |  |  | 389 | 977 |  |  |
| DP3FW09305C0 |  | DT-P3 ; Ceramic floor tile (Fire water tank) | 34d | 2012-04-16 | 2012-05-26 | DP3FW07103C0 |  |  |  |  | 69.7d | 0d | CERAMIC FLOOR TILES [320 h]; CERAMIC FLOOR TILES [174 m2]; Cost |  |  | DP3FW09305C0 |  | DT | C | P3 | FW | FF | 093 | 05 |  | BILL 5 | B05 | S1 | 02 | R00 | ACF06 |  | CT |  |  |  |  |  |  |  |  |  |  | 106 | 1000 |  |  |
| DP3FW05501C0 |  | DT-P3 ; Handrails & balustrade (Fire water tank) | 36d | 2012-05-07 | 2012-06-19 | DP3FW09901C0 |  |  |  |  | 67.7d | 41.1d | SECONDARY STEEL [125 h]; Cost |  |  | DP3FW05501C0 |  | DT | C | P3 | FW | SW | 055 | 01 |  | BILL 5 | B05 | S1 | 01 | R00 | ACF03 |  | a |  |  |  |  |  |  |  |  |  |  |  |  |  |  |
| DP3FW09905C0 |  | DT-P3 ; Ceiling Prime & 1st coat (Fire water tank) | 30d | 2012-05-07 | 2012-06-11 | DP3FW09901C0 |  |  |  |  | 133.7d | 0d | ASSORTED CEILING FINISH [279 h]; Cost |  |  | DP3FW09905C0 |  | DT | C | P3 | FW | PA | 099 | 05 |  | BILL 5 | B05 | S1 | 01 | R00 | ACF06 |  | 099 |  |  |  |  |  |  |  |  |  |  | 330 | 958 |  |  |
| DP3FW26019C0 |  | DT-P3 ; Final Fix, Inst of Switch/Sockets (Fire water tank) | 18d | 2012-05-07 | 2012-05-28 | DP3FW09901C0 |  |  |  |  | 121.7d | 101.1d | ELECTRICAL [610.8 h]; Cost |  |  | DP3FW26019C0 |  | DT | C | P3 | FW | ME | 260 | 19 | FF | BILL 5 | B05 | S1 | FF | R00 | ACF07 | MEP | 260 |  |  |  |  |  |  |  |  |  |  |  |  |  |  |
| DP3FW09501C0 |  | DT-P3 ; Ceiling Grid and Service Tile (Fire water tank) | 36d | 2012-05-13 | 2012-06-25 | DP3FW09205C0 SS+15d, DP3FW21117C0, DP3FW23008C0, DP3FW23009C0, DP3FW23015C0, DP3FW27001C0, DP3S205101C10, DP3S305101C10, DP3FW23011C0, DP3FW09901C0 |  |  |  |  | 20.6d | 0d | CEILING GRID FOR GYPSUM [7762.78 h]; CEILING GRID FOR GYPSUM [664.2 m2]; Cost |  |  | DP3FW09501C0 |  | DT | C | P3 | FW | CE | 095 | 01 |  | BILL 5 | B05 | S1 | 01 | R00 | ACF06 |  | 095 |  |  |  |  |  |  |  |  |  |  | 323 | 952 |  |  |
| DP3FW26015C0 |  | DT-P3 ; Final Fix, Termination & Gladding of Cables (Fire water tank) | 48d | 2012-05-14 | 2012-07-10 | DP3FW26005C0, DP3FW26016C0 |  |  |  |  | 79.7d | 59.1d | ELECTRICAL [368.4 h]; Cost |  |  | DP3FW26015C0 |  | DT | C | P3 | FW | ME | 260 | 15 | FF | BILL 5 | B05 | S1 | FF | R00 | ACF07 | MEP | 260 |  |  |  |  |  |  |  |  |  |  |  |  |  |  |
| DP3FW22025C0 |  | DT-P3 ; Final Fix, Inst of Sanitary Ware (Fire water tank) | 48d | 2012-05-26 | 2012-07-22 | DP3FW09205C0, DP3FW09305C0, A10230 FS+148d |  |  |  |  | 69.7d | 0d | PLUMBING [1917.6 h]; Cost |  |  | DP3FW22025C0 |  | DT | C | P3 | FW | ME | 220 | 25 | FF | BILL 5 | B05 | S1 | FF | R00 | ACF07 | MEP | 220 |  |  |  |  |  |  |  |  |  |  |  |  |  |  |
| DP3FW09903C0 |  | DT-P3 ; Wall Final Paint (Fire water tank) | 30d | 2012-06-11 | 2012-07-17 | DP3FW09901C0, DP3FW09905C0 |  |  |  |  | 133.7d | 83.1d | WALL PAINT [318 h]; WALL PAINT [395 m2]; Cost |  |  | DP3FW09903C0 |  | DT | C | P3 | FW | PA | 099 | 03 |  | BILL 5 | B05 | S1 | 02 | R00 | ACF06 |  | 099 |  |  |  |  |  |  |  |  |  |  | 329 | 957 |  |  |
| DP3FW09601C0 |  | DT-P3 ; Flooring (Rubber & etc) (Fire water tank) | 36d | 2012-06-25 | 2012-08-06 | DP3FW09901C0, DP3FW09501C0, DP3FW05501C0 FF |  |  |  |  | 26.6d | 0d | RUBBER FLOOR [424 h]; RUBBER FLOOR [1061 m2]; Cost |  |  | DP3FW09601C0 |  | DT | C | P3 | FW | FF | 096 | 01 |  | BILL 5 | B05 | S1 | 03 | R00 | ACF06 |  | RF |  |  |  |  |  |  |  |  |  |  | 326 | 955 |  |  |
| DP3FW21115C0 |  | DT-P3 ; 2nd Fix, Inst of Sprinkler droppers (Fire water tank) | 36d | 2012-06-25 | 2012-08-06 | DP3FW09501C0 |  |  |  |  | 38.6d | 0d | MECHANICAL [2067.6 h]; Cost |  |  | DP3FW21115C0 |  | DT | C | P3 | FW | ME | 211 | 15 | 2n | BILL 5 | B05 | S1 | 2F | R00 | ACF07 | MEP | 211 |  |  |  |  |  |  |  |  |  |  |  |  |  |  |
| DP3FW23019C0 |  | DT-P3 ; Final Fix, Inst of Grilles & Diffusers (Fire water tank) | 60d | 2012-06-25 | 2012-09-05 | DP3FW09501C0 |  |  |  |  | 32.6d | 12d | MECHANICAL [2560.8 h]; Cost |  |  | DP3FW23019C0 |  | DT | C | P3 | FW | ME | 230 | 19 | FF | BILL 5 | B05 | S1 | FF | R00 | ACF07 | MEP | 230 |  |  |  |  |  |  |  |  |  |  |  |  |  |  |
| DP3FW23021C0 |  | DT-P3 ; 2nd Fix, Inst of Flexible Duct & Plenum boxes (Fire water tank) | 36d | 2012-06-25 | 2012-08-06 | DP3FW09205C0, DP3FW09501C0 |  |  |  |  | 62.6d | 42d | MECHANICAL [274.8 h]; Cost |  |  | DP3FW23021C0 |  | DT | C | P3 | FW | ME | 230 | 21 | 2n | BILL 5 | B05 | S1 | 2F | R00 | ACF07 | MEP | 230 |  |  |  |  |  |  |  |  |  |  |  |  |  |  |
| DP3FW26017C0 |  | DT-P3 ; Final Fix, Inst of Ceiling rose (Fire water tank) | 36d | 2012-06-25 | 2012-08-06 | DP3FW09501C0 |  |  |  |  | 20.6d | 0d | ELECTRICAL [67.2 h]; Cost |  |  | DP3FW26017C0 |  | DT | C | P3 | FW | ME | 260 | 17 | FF | BILL 5 | B05 | S1 | FF | R00 | ACF07 | MEP | 260 |  |  |  |  |  |  |  |  |  |  |  |  |  |  |
| DP3FW27002C0 |  | DT-P3 ; 2nd Fix, Wiring Droppers (Fire water tank) | 36d | 2012-06-25 | 2012-08-06 | DP3FW09501C0 |  |  |  |  | 32.6d | 0d | ELECTRICAL [436.8 h]; Cost |  |  | DP3FW27002C0 |  | DT | C | P3 | FW | ME | 270 | 02 | 2n | BILL 5 | B05 | S1 | 2F | R00 | ACF07 | MEP | 270 |  |  |  |  |  |  |  |  |  |  |  |  |  |  |
| DP3FW27020C0 |  | DT-P3 ; 2nd Fix, Inst of ELV Equipment (Panels) (Fire water tank) | 42d | 2012-06-25 | 2012-08-13 | DP3FW09205C0, DP3FW09501C0 |  |  |  |  | 56.6d | 30d | ELECTRICAL [1723.2 h]; Cost |  |  | DP3FW27020C0 |  | DT | C | P3 | FW | ME | 270 | 20 | 2n | BILL 5 | B05 | S1 | 2F | R00 | ACF04 | MEP | 270 |  |  |  |  |  |  |  |  |  |  |  |  | P |  |
| DP3FW21113C0 |  | DT-P3 ; Final Fix, Inst of Sprinklers head/ Extinguisher (Fire water tank) | 48d | 2012-07-02 | 2012-08-29 | DP3FW09501C0, DP3FW21115C0 SS+6d |  |  |  |  | 38.6d | 18d | MECHANICAL [403.2 h]; Cost |  |  | DP3FW21113C0 |  | DT | C | P3 | FW | ME | 211 | 13 | FF | BILL 5 | B05 | S1 | FF | R00 | ACF07 | MEP | 211 |  |  |  |  |  |  |  |  |  |  |  |  |  |  |
| DP3FW27030C0 |  | DT-P3 ; Final Fix, Inst of ELV device (Detector/Speaker) (Fire water tank) | 54d | 2012-07-02 | 2012-09-05 | DP3FW09501C0, DP3FW27002C0 SS+6d |  |  |  |  | 32.6d | 12d | ELECTRICAL [2152.8 h]; Cost |  |  | DP3FW27030C0 |  | DT | C | P3 | FW | ME | 270 | 30 | FF | BILL 5 | B05 | S1 | FF | R00 | ACF07 | MEP | 270 |  |  |  |  |  |  |  |  |  |  |  |  |  |  |
| DP3FW22021C0 |  | DT-P3 ; Final Fix, Terminate Sanitary Ware & Appliances (Fire water tank) | 48d | 2012-07-22 | 2012-09-18 | DP3FW22011C0, DP3FW22025C0 |  |  |  |  | 69.7d | 49.1d | PLUMBING [1917.6 h]; Cost |  |  | DP3FW22021C0 |  | DT | C | P3 | FW | ME | 220 | 21 | FF | BILL 5 | B05 | S1 | FF | R00 | ACF07 | MEP | 220 |  |  |  |  |  |  |  |  |  |  |  |  |  |  |
| DP3FW08107C0 |  | DT-P3 ; Doors (Fire water tank) | 22d | 2012-08-06 | 2012-09-03 | DP3FW08103C0, DP3FW09901C0, DP3FW09601C0 |  |  |  |  | 60.6d | 0d | ASSORTED DOORS [750 h]; ASSORTED DOORS [75 no]; Cost |  |  | DP3FW08107C0 |  | DT | C | P3 | FW | DO | 081 | 07 |  | BILL 5 | B05 | S1 | DR | R00 | ACF06 |  | 081 |  |  |  |  |  |  |  |  |  |  | 317 | 948 |  | 08 |
| DP3FW09701C0 |  | DT-P3 ; Wall finishes (ST, WD, WC) (Fire water tank) | 36d | 2012-08-06 | 2012-09-19 | DP3FW26011C0, DP3FW27020C0 FF, DP3FW09601C0 |  |  |  |  | 26.6d | 0d | ASSORTED WALL FINISH [893 h]; ASSORTED WALL FINISH [1026 m2]; Cost |  |  | DP3FW09701C0 |  | DT | C | P3 | FW | WF | 097 | 01 |  | BILL 5 | B05 | S1 | 01 | R00 | ACF06 |  | 097 |  |  |  |  |  |  |  |  |  |  | 105 | 1002 |  |  |
| DP3FW26003C0 |  | DT-P3 ; Final Fix, Inst of Light fittings (Fire water tank) | 36d | 2012-08-06 | 2012-09-19 | DP3FW09501C0, DP3FW26017C0 |  |  |  |  | 20.6d | 0d | ELECTRICAL [6626.4 h]; Cost |  |  | DP3FW26003C0 |  | DT | C | P3 | FW | ME | 260 | 03 | FF | BILL 5 | B05 | S1 | FF | R00 | ACF07 | MEP | 260 |  |  |  |  |  |  |  |  |  |  |  |  |  |  |
| DP3FW08709C0 |  | DT-P3 ; Ironmongery (Fire water tank) | 34d | 2012-09-03 | 2012-10-13 | DP3FW08107C0 |  |  |  |  | 60.6d | 40d | IRONMONGERY [900 h]; IRONMONGERY [90 no]; Cost |  |  | DP3FW08709C0 |  | DT | C | P3 | FW | DO | 087 | 09 |  | BILL 5 | B05 | S1 | IM | R00 | ACF06 |  | 087 |  |  |  |  |  |  |  |  |  |  | 322 | 951 |  | 08 |
| DP3FW01006C0 |  | DT-P3 ; 2nd, Ceiling Inspection by Consultants (Fire water tank) | 6d | 2012-09-19 | 2012-09-26 | DP3FW21115C0, DP3FW23009C0, DP3FW23011C0, DP3FW23015C0, DP3FW27002C0, DP3FW09501C0, DP3FW21113C0, DP3FW23019C0, DP3FW26003C0, DP3FW26017C0, DP3FW27030C0, DP3FW26015C0 |  |  |  |  | 20.6d | 0d | Labor General [1.2 h]; Cost |  |  | DP3FW01006C0 |  | DT | C | P3 | FW | ME | 010 | 06 | 2n | BILL 5 | B05 | S1 | CI | R00 | ACF07 | MEP | 010 |  |  |  |  |  |  |  |  |  |  |  |  |  |  |
| DP3FW11001C0 |  | DT-P3 ; Wall Protection (WP, CG, WG, FCG) (Fire water tank) | 24d | 2012-09-19 | 2012-10-17 | DP3FW09701C0, DP3FW09903C0 SS |  |  |  |  | 56.6d | 36d | FF&E [2240 h]; Cost |  |  | DP3FW11001C0 |  | DT | C | P3 | FW | WF | 110 | 01 |  | BILL 5 | B05 | S1 | 03 | R00 | ACF08 |  | b |  |  |  |  |  |  |  |  |  |  | 326 | 1001 |  |  |
| DP3FW09503C0 |  | DT-P3 ; Ceiling closure - ACT/Gypsum (Fire water tank) | 24d | 2012-09-26 | 2012-10-24 | DAFOA09505C1 FF, DP3FW01006C0, DP3FW21115C0, DP3FW26005C0, DP3FW27002C0, DP3FW09701C0, DP3FW26019C0, DP3FW23021C0, DP3FW26053C0, DP3FW26007C0 |  |  |  |  | 20.6d | 0d | ASSORTED CEILING FINISH [1572.56 h]; CEILING GYPSUM [217.91 h]; ASSORTED CEILING FINISH [2557 m2]; CEILING GYPSUM [664 m2]; Cost |  |  | DP3FW09503C0 |  | DT | C | P3 | FW | CE | 095 | 03 |  | BILL 5 | B05 | S1 | 02 | R00 | ACF06 |  | 095 |  |  |  |  |  |  |  |  |  |  | 324 | 953 |  |  |
| DP3FW09907C0 |  | DT-P3 ; Ceiling Final paint (Fire water tank) | 18d | 2012-10-24 | 2012-11-18 | DP3FW09601C0, DP3FW09905C0, DP3FW09503C0 |  |  |  |  | 32.6d | 12d | ASSORTED CEILING FINISH [151 h]; Cost |  |  | DP3FW09907C0 |  | DT | C | P3 | FW | PA | 099 | 07 |  | BILL 5 | B05 | S1 | 02 | R00 | ACF06 |  | 099 |  |  |  |  |  |  |  |  |  |  | 331 | 959 |  |  |
| DP3FW22027C0 |  | DT-P3 ; Final Fix, Inst of All drain (Fire water tank) | 18d | 2012-10-24 | 2012-11-18 | DP3FW09305C0, DP3FW09503C0 |  |  |  |  | 20.6d | 0d | PLUMBING [1173.6 h]; Cost |  |  | DP3FW22027C0 |  | DT | C | P3 | FW | ME | 220 | 27 | FF | BILL 5 | B05 | S1 | FF | R00 | ACF07 | MEP | 220 |  |  |  |  |  |  |  |  |  |  |  |  |  |  |

| ID | WBS | Activity | Duration | Start | Finish | Predecessors | Complete | Remaining | Planned start | Planned finish | Total float | Free float | Resources | Cost | Actual cost | change id | CCAD BUILDING(SET) | CCAD PHASE(SET) | CCAD FLOOR(SET) | CCAD ZONE(SET) | CCAD WORK(SET) | CCAD SECTION(SET) | CCAD SERIAL No.(SET) | CCAD CBS(SET) | CCAD BILL(SET) | CCAD HANDOVER(SET) | CCAD TAG(SET) | CCAD REV(SET) | CCADACF (SET) | CCAD SSCF | RENZ % COMPLETE | July2011 Target% Complete | Claimed This Month | P_811 | P_711 | CCAD SUB ZONE MEP(SET) | CCAD CSA | Act Selector % | user_number8 | user_integer1 | user_integer2 | user_number7 | Change Order # | NEW ACTIVITY ID | PERCENT COMPLETE | CCAD MEQ | CCAD DIVISION(SET) | R3 Finish |
| --- | --- | --- | --- | --- | --- | --- | --- | --- | --- | --- | --- | --- | --- | --- | --- | --- | --- | --- | --- | --- | --- | --- | --- | --- | --- | --- | --- | --- | --- | --- | --- | --- | --- | --- | --- | --- | --- | --- | --- | --- | --- | --- | --- | --- | --- | --- | --- | --- |
|  | 10 | **Precommissioning Tesing & snagging (Fire water tank / Grey water tank)** |  | 2012-11-18 | 2012-12-30 |  |  |  |  |  |  |  |  |  |  |  |  |  |  |  |  |  |  |  |  |  |  |  |  |  |  |  |  |  |  |  |  |  |  |  |  |  |  |  |  |  |  |  |
| DP3TS01801C0 |  | DT-P3 ; MEP de-snag, FIREM sign-off | 12d | 2012-11-18 | 2012-12-02 | DP3FW22027C0, DP3FW26003C0, DP3FW22021C0 |  |  |  |  | 20.6d | 0d | TESTING & COMMISSIONING [2040 h]; Cost |  |  | DP3TS01801C0 | DT | C | P3 | TS | SC | 018 | 01 | BILL 5 | B05 | S1 | 01 | R00 | ACF07 | 018 |  |  |  |  |  |  |  |  |  |  |  |  |  |  |  |  |  |  |
| DP3TS01806C0 |  | DT-P3 ; Touch-up & Clean / JV inspection /CIR /De-snag | 15.8d | 2012-12-02 | 2012-12-22 | DP3CO04401C0, DP3FW08709C0, DP3FW09305C0, DP3FW09601C0, DP3FW09701C0, DP3FW09903C0, DP3FW09907C0, DP3FW11001C0, DP3FW26016C0, DP3TS01801C0, DP3FW05501C0, DP3FW09503C0 |  |  |  |  | 20.6d | 0.25d | TESTING & COMMISSIONING [170 h]; Cost |  |  | DP3TS01802C0 | DT | C | P3 | TS | SC | 018 | 02 | BILL 5 | B05 | S1 | 02 | R00 | ACF07 | 018 |  |  |  |  |  |  |  |  |  |  |  |  |  |  |  |  |  |  |
| DP3TS01809C0 |  | DT-P3 ; Consultant's final de-snag inspection | 7d | 2012-12-22 | 2012-12-30 | DP3TS01806C0, DP3TS01810C0 |  |  |  |  | 20.35d | 1.85d | Labor General [1 h]; Cost |  |  | DP3TS01803C0 | DT | C | P3 | TS | SC | 018 | 03 | BILL 5 | B05 | S1 | 03 | R00 | ACF07 | 018 |  |  |  |  |  |  |  |  |  |  |  |  |  |  |  |  |  |  |
|  | 03 | **Corridor / Public & other area** |  | 2010-11-10 | 2012-12-22 |  |  |  |  |  |  |  |  |  |  |  |  |  |  |  |  |  |  |  |  |  |  |  |  |  |  |  |  |  |  |  |  |  |  |  |  |  |  |  |  |  |  |  |
| DP3PA22019C0 |  | DT-P3 ; 1st Fix, Inst of Drainage pipe (ceiling) (Public Area) | 200d | 2010-11-10 A | 2011-11-24 | DP3PA23001C0, DP3PA26013C0 SS+10d, DP3S107807C0, DP3S207807C0, DP3S307807C0 | 90% | 20d | 2011-06-11 | 2012-02-09 | 34.25d | 0d | PLUMBING [1171.2 h]; Cost [61888.2 AED] | 61,888.15 | 55,699.34 | DP3PA22019C0 | DT | C | P3 | PA | ME | 220 | 19 | BILL 5 | B05 | S1 | 1F | R00 | ACF04 | 220 | 60 | 100 | 7349.17 | 90 | 80 | 1S | MEP | M1F |  |  |  |  |  |  |  |  |  |  |
| DP3PA23001C0 |  | DT-P3 ; 1st Fix, Inst. of Supports for MEP (Public Area) | 250d | 2011-03-02 A | 2011-10-29 | DFNS103323C0, DFNS203323C0, DFNS303323C0, DP3S107807C0 SS, DP3S207807C0 SS, DP3S307807C0 SS | 95% | 12.5d | 2011-06-01 | 2012-03-31 | 20.35d | 0d | MECHANICAL [1338 h]; Cost [75432.9 AED] | 75,432.94 | 71,661.29 | DP3PA23001C0 | DT | C | P3 | PA | ME | 230 | 01 | BILL 5 | B05 | S1 | 1F | R00 | ACF04 | 230 | 70 | 75 | 4375.1 | 95 | 90 | 1S | MEP | M1F |  |  |  |  |  |  |  |  |  |  |
| DP3PA09201C0 |  | DT-P3 ; Metal Studs (Public Area) | 75d | 2011-05-15 A | 2011-11-24 | DP3PA23001C0 SS+12d | 56% | 33d | 2011-07-10 | 2011-10-08 | 20.35d | 0d | PARTITIONS [1790 h]; PARTITIONS - Metal Studs [264 m]; Cost |  |  | DP3PA09201C0 | DT | C | P3 | PA | PT | 092 | 01 | BILL 5 | B05 | S1 | 1F | R00 | ACF06 | 092 | 10 |  | 24830.95 | 48 | 34 |  | GP | PMS | 0 | 0 | 0 | 0 | 313 | 944 |  |  |  |  |
| DP3PA21117C0 |  | DT-P3 ; 1st Fix, Inst of Sprinkler branch pipe (Public Area) | 248d | 2011-06-02 A | 2012-01-02 | DP3PA09201C0, DP3PA21111C0, DP3S107807C0, DP3S207807C0, DP3S307807C0 | 90% | 25d | 2011-10-02 | 2012-07-26 | 108.75d | 88.4d | MECHANICAL [1441.2 h]; Cost [78749.8 AED] | 78,749.79 | 70,874.81 | DP3PA21117C0 | DT | C | P3 | PA | ME | 211 | 17 | BILL 5 | B05 | S1 | 1F | R00 | ACF04 | 211 |  | 35 | 31951.95 | 92 | 75 | 1S | MEP | M1F | 0 | 0 | 0 | 0 |  |  | 90 |  |  |  |
| DP3PA26013C0 |  | DT-P3 ; 1st Fix, Inst of Cable Tray (Public Area) | 90d | 2011-06-07 A | 2011-12-26 | DP3PA23001C0, DP3PA27010C0 SS+7d, DP3S107807C0, DP3S207807C0, DP3S307807C0 | 50% | 45d | 2011-07-16 | 2011-10-31 | 34.25d | 0d | ELECTRICAL [430.8 h]; Cost [23263.3 AED] | 23,263.34 | 11,631.67 | DP3PA26013C0 | DT | C | P3 | PA | ME | 260 | 13 | BILL 5 | B05 | S1 | 1F | R00 | ACF04 | 260 |  | 35 | 9450.59 | 50 | 35 | 1S | MEP | M1F |  |  |  |  |  |  |  |  |  |  |
| DP3PA21111C0 |  | DT-P3 ; 1st Fix, Inst of Sprinkler main pipe (Public Area) | 250d | 2011-06-08 A | 2011-12-01 | DP3PA22005C0 SS+10d, DP3PA23001C0, DP3S107807C0, DP3S207807C0, DP3S307807C0 | 90% | 25d | 2011-08-08 | 2012-06-05 | 53.15d | 0d | MECHANICAL [981.6 h]; Cost [53543.7 AED] | 53,543.69 | 48,189.32 | DP3PA21111C0 | DT | C | P3 | PA | ME | 211 | 11 | BILL 5 | B05 | S1 | 1F | R00 | ACF04 | 211 |  | 35 | 21749.36 | 92 | 75 | 1S | MEP | M1F | 0 | 0 | 0 | 0 |  |  | 90 |  |  |  |
| DP3PA27001C0 |  | DT-P3 ; 1st Fix, Wiring/ Cabling work (Public Area) | 84d | 2011-06-08 A | 2012-03-07 | DP3PA26001C0, DP3PA26013C0, DP3PA27010C0, DP3S107807C0, DP3S207807C0, DP3S307807C0 | 35% | 54.6d | 2011-09-29 | 2012-01-12 | 53.75d | 33.4d | ELECTRICAL [436.8 h]; Cost [21894.9 AED] | 21,894.91 | 7,663.22 | DP3PA27001C0 | DT | C | P3 | PA | ME | 270 | 01 | BILL 5 | B05 | S1 | 1F | R00 | ACF04 | 270 |  | 35 | 9027.43 |  |  | 1S | MEP | M1F |  |  |  |  |  |  |  |  |  |  |
| DP3PA27010C0 |  | DT-P3 ; 1st Fix, Inst of Trunking for ELV system (Public Area) | 90d | 2011-06-08 A | 2011-12-26 | DP3PA23001C0, DP3PA26001C0 SS+10d, DP3S107807C0, DP3S207807C0, DP3S307807C0 | 50% | 45d | 2011-07-07 | 2011-10-23 | 34.25d | 0d | ELECTRICAL [1689.6 h]; Cost [88597.9 AED] | 88,597.89 | 44,298.95 | DP3PA27010C0 | DT | C | P3 | PA | ME | 270 | 10 | BILL 5 | B05 | S1 | 1F | R00 | ACF04 | 270 |  | 45 | 46252.88 | 50 | 45 | 1S | MEP | M1F |  |  |  |  |  |  |  |  |  |  |
| DP3PA09203C0 |  | DT-P3 ; Partitions early wall & 1st face (Public Area) | 75d | 2011-06-19 A | 2011-12-10 | DP3PA09201C0 SS+12d | 42% | 43.5d | 2011-06-19 | 2011-09-18 | 61.75d | 41.4d | PARTITIONS [264 m]; PARTITIONS [1402 h]; Cost |  |  | DP3PA09203C0 | DT | C | P3 | PA | PT | 092 | 03 | BILL 5 | B05 | S1 | 2F | R00 | ACF06 | 092 |  |  | 8690.83 | 30 | 11 |  | GP | P1F | 0 | 0 | 0 | 0 | 314 | 945 |  |  |  |  |
| DP3PA26001C0 |  | DT-P3 ; 1st Fix, Inst of Trunking/Conduiting (Public Area) | 84d | 2011-06-26 A | 2012-01-02 | DP3PA23001C0, DP3S107807C0, DP3S207807C0, DP3S307807C0 | 40% | 50.4d | 2011-06-26 | 2011-10-05 | 34.25d | 0d | ELECTRICAL [1244.4 h]; Cost [42423.2 AED] | 42,423.24 | 16,969.3 | DP3PA26001C0 | DT | C | P3 | PA | ME | 260 | 01 | BILL 5 | B05 | S1 | 1F | R00 | ACF04 | 260 |  | 40 | 30985.34 |  |  | 1S | MEP | M1F |  |  |  |  |  |  |  |  |  |  |
| DP3PA23015C0 |  | DT-P3 ; 2nd Fix, Insulation of CHW pipe & Duct (Public Area) | 60d | 2011-07-10 A | 2012-03-06 | DP3PA23009C0, DP3PA23017C0, DP3PA23023C0 | 40% | 36d | 2011-11-16 | 2012-01-29 | 54.55d | 34.2d | MECHANICAL [5311.2 h]; Cost [286617 AED] | 286,617.06 | 114,646.82 | DP3PA23015C0 | DT | C | P3 | PA | ME | 230 | 15 | BILL 5 | B05 | S1 | 2F | R00 | ACF07 | 230 |  |  |  | 30 | 20 | 2n | MEP |  | 0 | 0 | 0 | 0 |  |  |  |  |  |  |
| DP3PA23023C0 |  | DT-P3 ; 1st Fix, Inst of Main Ducting (Public Area) | 78d | 2011-07-10 A | 2011-12-28 | DP3PA23001C0, DP3PA23017C0 SS+7d, DP3S107807C0, DP3S207807C0, DP3S307807C0 | 40% | 46.8d | 2011-08-18 | 2011-11-23 | 53.15d | 0d | MECHANICAL [11402.4 h]; Cost [622619 AED] | 622,619.08 | 249,047.63 | DP3PA23023C0 | DT | C | P3 | PA | ME | 230 | 23 | BILL 5 | B05 | S1 | 1F | R00 | ACF04 | 230 |  | 35 |  |  |  | 1S | MEP | M1F | 0 | 0 | 0 | 0 |  |  |  |  |  |  |
| DP3PA22005C0 |  | DT-P3 ; 1st Fix, Inst of Water supply pipe (ceiling) (Public Area) | 78d | 2011-08-10 A | 2012-01-11 | DP3PA22019C0 SS+7d, DP3PA23001C0, DP3S107807C0, DP3S207807C0, DP3S307807C0 | 25% | 58.5d | 2011-08-21 | 2011-11-27 | 34.25d | 0d | PLUMBING [4896 h]; Cost [264473 AED] | 264,473.49 | 66,118.37 | DP3PA22005C0 | DT | C | P3 | PA | ME | 220 | 05 | BILL 5 | B05 | S1 | 1F | R00 | ACF04 | 220 |  | 35 |  | 25 | 0 | 1S | MEP | M1F | 0 | 0 | 0 | 0 |  |  |  |  |  |  |
| DP3PA22011C0 |  | DT-P3 ; 2nd Fix, Drainage/Water pipe (wall) (Public Area) | 78d | 2011-08-10 A | 2012-01-12 | DP3PA09201C0 | 50% | 39d | 2011-12-17 | 2012-03-18 | 27.25d | 6.9d | PLUMBING [1173.6 h]; Cost [61888.2 AED] | 61,888.15 | 30,944.08 | DP3PA22011C0 | DT | C | P3 | PA | ME | 220 | 11 | BILL 5 | B05 | S1 | 2F | R00 | ACF07 | 220 |  |  |  | 50 | 0 | 2n | MEP |  |  |  |  |  |  |  |  |  |  |  |
| DP3PA23008C0 |  | DT-P3 ; 1st Fix, Inst of VCD's/FD's (Public Area) | 84d | 2011-08-10 A | 2012-03-08 | DP3PA23023C0, DP3S107807C0, DP3S207807C0, DP3S307807C0 | 30% | 58.8d | 2011-11-17 | 2012-02-28 | 53.15d | 32.8d | MECHANICAL [4312.8 h]; Cost [232964 AED] | 232,964.23 | 69,889.27 | DP3PA23008C0 | DT | C | P3 | PA | ME | 230 | 08 | BILL 5 | B05 | S1 | 1F | R00 | ACF04 | 230 |  |  |  | 30 | 0 | 1S | MEP | M1F |  |  |  |  |  |  |  |  |  |  |
| DP3PA23009C0 |  | DT-P3 ; 2nd Fix, Inst of VAV'S CHW connection (Public Area) | 54d | 2011-08-10 A | 2012-01-23 | DP3PA23017C0 | 20% | 43.2d | 2011-10-26 | 2012-01-04 | 54.55d | 0d | MECHANICAL [1684.8 h]; Cost [91006.1 AED] | 91,006.06 | 18,201.21 | DP3PA23009C0 | DT | C | P3 | PA | ME | 230 | 09 | BILL 5 | B05 | S1 | 2F | R00 | ACF07 | 230 |  |  |  | 20 | 0 | 2n | MEP |  |  |  |  |  |  |  |  |  |  |  |
| DP3PA23011C0 |  | DT-P3 ; 2nd Fix, Inst of Equipment (FCU,FAN) (Public Area) | 148d | 2011-08-10 A | 2012-04-15 | DP3PA09205C0 | 80% | 30d | 2012-04-09 | 2012-10-01 | 20.35d | 0d | MECHANICAL [1588.8 h]; Cost [361645 AED] | 361,645.02 | 289,316.02 | DP3PA23011C0 | DT | C | P3 | PA | ME | 230 | 11 | BILL 5 | B05 | S1 | 2F | R00 | ACF04 | 230 |  |  |  | 80 | 0 | 2n | MEP |  |  |  |  |  |  |  |  | H |  |  |
| DP3PA23017C0 |  | DT-P3 ; 1st Fix, Inst of CHW pipe (Public Area) | 100d | 2011-08-10 A | 2011-12-01 | DP3PA21111C0 SS+12d, DP3PA23001C0, DP3S107807C0, DP3S207807C0, DP3S307807C0 | 75% | 25d | 2011-09-04 | 2012-01-05 | 53.15d | 0d | MECHANICAL [6325.2 h]; Cost [345418 AED] | 345,418.28 | 259,063.71 | DP3PA23017C0 | DT | C | P3 | PA | ME | 230 | 17 | BILL 5 | B05 | S1 | 1F | R00 | ACF04 | 230 |  | 35 |  | 70 | 0 | 1S | MEP | M1F | 0 | 0 | 0 | 0 |  |  | 75 |  |  |  |
| DP3PA26009C0 |  | DT-P3 ; 2nd Fix, Inst of Wall conduites (Public Area) | 54d | 2011-08-10 A | 2012-01-21 | DP3PA09201C0 | 15% | 45.9d | 2011-12-17 | 2012-02-19 | 20.35d | 0d | ELECTRICAL [824.4 h]; Cost [42423.2 AED] | 42,423.24 | 6,363.49 | DP3PA26009C0 | DT | C | P3 | PA | ME | 260 | 09 | BILL 5 | B05 | S1 | 2F | R00 | ACF07 | 260 |  |  |  | 15 | 0 | 2n | MEP |  |  |  |  |  |  |  |  |  |  |  |
| DP3PA08103C0 |  | DT-P3 ; Door Frames (Public Area) | 42d | 2011-10-15 | 2011-12-07 | DP3PA09201C0 SS+10d, GNHE08101C0 |  |  |  |  | 99.25d | 78.9d | ASSORTED DOORS [172 h]; Cost |  |  | DP3PA08103C0 | DT | C | P3 | PA | DO | 081 | 03 | BILL 5 | B05 | S1 | DR | R00 | ACF06 | 081 |  |  |  |  |  |  |  |  |  |  |  |  | 316 | 947 |  |  | 08 |  |
| DP3PA01005C0 |  | DT-P3 ; 2nd, Wall Inspection by Consultant (Public Area) | 6d | 2012-01-21 | 2012-01-28 | DP3PA22011C0, DP3PA26009C0 |  |  |  |  | 20.35d | 0d | Labor General [1.2 h]; Cost |  |  | DP3PA01005C0 | DT | C | P3 | PA | ME | 010 | 05 | BILL 5 | B05 | S1 | WI | R00 | ACF07 | 010 |  |  |  |  |  | 2n | MEP |  |  |  |  |  |  |  |  |  |  |  |
| DP3PA09205C0 |  | DT-P3 ; Partitions Closing (Public Area) | 36d | 2012-01-28 | 2012-03-11 | DAFOA09206C1 FF, DP3PA01005C0, DP3PA09203C0, DP3PA22005C0, DP3PA22019C0, DAFCI09203R02 FS+58d, DP3PA08103C0 FF |  |  |  |  | 20.35d | 0d | PARTITIONS [264 m]; PARTITIONS [1808 h]; Cost |  |  | DP3PA09205C0 | DT | C | P3 | PA | PT | 092 | 05 | BILL 5 | B05 | S1 | FF | R00 | ACF06 | 092 |  |  |  |  |  |  | GP | P2F |  |  |  |  | 315 | 946 |  |  |  |  |
| DP3PA09901C0 |  | DT-P3 ; Wall Prime & 1st coat (Public Area) | 13d | 2012-03-11 | 2012-03-26 | DP3CO04003C0, DP3PA09205C0, DP3CO04455C0 FF |  |  |  |  | 37.35d | 0d | WALL PAINT [436 h]; WALL PAINT [544 m2]; Cost |  |  | DP3PA09901C0 | DT | C | P3 | PA | PA | 099 | 01 | BILL 5 | B05 | S1 | 01 | R00 | ACF06 | 099 |  |  |  |  |  |  |  |  |  |  |  |  | 328 | 956 |  |  |  |  |
| DP3PA26005C0 |  | DT-P3 ; 2nd Fix, Wiring for Power/Lighting/Emergency (Public Area) | 36d | 2012-03-11 | 2012-04-22 | DP3PA09205C0 |  |  |  |  | 104.35d | 0d | ELECTRICAL [436.8 h]; Cost |  |  | DP3PA26005C0 | DT | C | P3 | PA | ME | 260 | 05 | BILL 5 | B05 | S1 | 2F | R00 | ACF07 | 260 |  |  |  |  |  | 2n | MEP |  |  |  |  |  |  |  |  |  |  |  |
| DP3PA26007C0 |  | DT-P3 ; 2nd Fix, Cable Pulling (Public Area) | 42d | 2012-03-11 | 2012-04-29 | DP3PA09201C0 SS+6d, DP3PA09205C0 |  |  |  |  | 152.35d | 132d | ELECTRICAL [6634.8 h]; Cost |  |  | DP3PA26007C0 | DT | C | P3 | PA | ME | 260 | 07 | BILL 5 | B05 | S1 | 2F | R00 | ACF07 | 260 |  |  |  |  |  | 2n | MEP |  |  |  |  |  |  |  |  |  |  |  |
| DP3PA26011C0 |  | DT-P3 ; 2nd Fix, Inst of Equipment (DB) (Public Area) | 48d | 2012-03-11 | 2012-05-06 | DP3PA09205C0 |  |  |  |  | 62.35d | 18d | ELECTRICAL [4054.8 h]; Cost |  |  | DP3PA26011C0 | DT | C | P3 | PA | ME | 260 | 11 | BILL 5 | B05 | S1 | 2F | R00 | ACF04 | 260 |  |  |  |  |  | 2n | MEP |  |  |  |  |  |  |  |  | E |  |  |
| DP3PA26053C0 |  | DT-P3 ; 2nd Fix, Wiring / Cabling (Public Area) | 36d | 2012-03-11 | 2012-04-22 | DP3PA26009C0, DP3PA09205C0 |  |  |  |  | 158.35d | 138d | ELECTRICAL [436.8 h]; Cost |  |  | DP3PA26053C0 | DT | C | P3 | PA | ME | 260 | 53 | BILL 5 | B05 | S1 | 2F | R00 | ACF07 | 260 |  |  |  |  |  | 2n | MEP |  |  |  |  |  | 389 | 977 |  |  |  |  |
| DP3PA27020C0 |  | DT-P3 ; 2nd Fix, Inst of ELV Equipment (Panels) (Public Area) | 42d | 2012-03-11 | 2012-04-29 | DP3PA09205C0 |  |  |  |  | 104.35d | 60d | ELECTRICAL [1723.2 h]; Cost |  |  | DP3PA27020C0 | DT | C | P3 | PA | ME | 270 | 20 | BILL 5 | B05 | S1 | 2F | R00 | ACF04 | 270 |  |  |  |  |  | 2n | MEP |  |  |  |  |  |  |  |  | E |  |  |
| DP3PA05501C0 |  | DT-P3 ; Handrails & balustrade (Public Area) | 36d | 2012-03-26 | 2012-05-07 | DP3PA09901C0, DAFT205509C0, DAFT805509C0, DAFT905509C0, DAFT1005509C0, DAFT505509C0 |  |  |  |  | 97.35d | 53d | SECONDARY STEEL [46 h]; Cost |  |  | DP3PA05501C0 | DT | C | P3 | PA | SW | 055 | 01 | BILL 5 | B05 | S1 | 01 | R00 | ACF03 | a |  |  |  |  |  |  |  |  |  |  |  |  |  |  |  |  |  |  |
| DP3PA09905C0 |  | DT-P3 ; Ceiling Prime & 1st coat (Public Area) | 30d | 2012-03-26 | 2012-04-30 | DP3PA09901C0 |  |  |  |  | 160.22d | 0d | ASSORTED CEILING FINISH [105 h]; Cost |  |  | DP3PA09905C0 | DT | C | P3 | PA | PA | 099 | 05 | BILL 5 | B05 | S1 | 01 | R00 | ACF06 | 099 |  |  |  |  |  |  |  |  |  |  |  |  | 330 | 958 |  |  |  |  |
| DP3PA26019C0 |  | DT-P3 ; Final Fix, Inst of Switch/Sockets (Public Area) | 18d | 2012-03-26 | 2012-04-16 | DP3PA09901C0 |  |  |  |  | 163.35d | 143d | ELECTRICAL [610.8 h]; Cost |  |  | DP3PA26019C0 | DT | C | P3 | PA | ME | 260 | 19 | BILL 5 | B05 | S1 | FF | R00 | ACF07 | 260 |  |  |  |  |  | FF | MEP |  |  |  |  |  |  |  |  |  |  |  |
| DP3PA09501C0 |  | DT-P3 ; Ceiling Grid and Service Tile (Public Area) | 36d | 2012-04-15 | 2012-05-27 | DP3PA09205C0 SS+15d, DP3PA21117C0, DP3PA23008C0, DP3PA23009C0, DP3PA23015C0, DP3PA27001C0, DAFCI22001R02 FS+58d, DP3PA23011C0, DP3PA09901C0 |  |  |  |  | 20.35d | 0d | CEILING GRID FOR GYPSUM [2883.04 h]; CEILING GRID FOR GYPSUM [246.7 m2]; Cost |  |  | DP3PA09501C0 | DT | C | P3 | PA | CE | 095 | 01 | BILL 5 | B05 | S1 | 01 | R00 | ACF06 | 095 |  |  |  |  |  |  |  |  |  |  |  |  | 323 | 952 |  |  |  | R3 |
| DP3PA26015C0 |  | DT-P3 ; Final Fix, Termination & Gladding of Cables (Public Area) | 48d | 2012-04-22 | 2012-06-18 | DP3PA26005C0 |  |  |  |  | 104.35d | 84d | ELECTRICAL [368.4 h]; Cost |  |  | DP3PA26015C0 | DT | C | P3 | PA | ME | 260 | 15 | BILL 5 | B05 | S1 | FF | R00 | ACF07 | 260 |  |  |  |  |  | FF | MEP |  |  |  |  |  |  |  |  |  |  |  |
| DP3PA09903C0 |  | DT-P3 ; Wall Final Paint (Public Area) | 30d | 2012-04-30 | 2012-06-04 | DP3PA09901C0, DP3PA09905C0, DP2GN05501R02 FF |  |  |  |  | 160.22d | 107d | WALL PAINT [236 h]; WALL PAINT [293 m2]; Cost |  |  | DP3PA09903C0 | DT | C | P3 | PA | PA | 099 | 03 | BILL 5 | B05 | S1 | 02 | R00 | ACF06 | 099 |  |  |  |  |  |  |  |  |  |  |  |  | 329 | 957 |  |  |  |  |
| DP3PA09601C0 |  | DT-P3 ; Flooring (Rubber & etc) (Public Area) | 36d | 2012-05-27 | 2012-07-09 | DP3PA09901C0, DP3PA09501C0 |  |  |  |  | 44.35d | 0d | RUBBER FLOOR [160 h]; RUBBER FLOOR [394 m2]; Cost |  |  | DP3PA09601C0 | DT | C | P3 | PA | FF | 096 | 01 | BILL 5 | B05 | S1 | 03 | R00 | ACF06 | RF |  |  |  |  |  |  |  |  |  |  |  |  | 326 | 955 |  |  |  | R3 |
| DP3PA09602C0 |  | DT-P3 ; Flooring (Stone) (Public Area) | 36d | 2012-05-27 | 2012-07-09 | DP3PA09901C0, DAFCI22001R02 FS+58d, DP3PA09501C0, DP3PA27020C0 FF, DP3PA26011C0, DP3PA05501C0 FF |  |  |  |  | 44.35d | 0d | STONE FLOOR [364 m2]; STONE FLOOR [328 h]; Cost |  |  | DP3PA09601C0 | DT | C | P3 | PA | FF | 096 | 01 | BILL 5 | B05 | S1 | 09 | R00 | ACF06 | ST |  |  |  |  |  |  |  |  |  |  |  |  | 326 | 955 |  |  |  | R3 |
| DP3PA21115C0 |  | DT-P3 ; 2nd Fix, Inst of Sprinkler droppers (Public Area) | 36d | 2012-05-27 | 2012-07-09 | DP3PA09501C0 |  |  |  |  | 38.35d | 0d | MECHANICAL [2067.6 h]; Cost |  |  | DP3PA21115C0 | DT | C | P3 | PA | ME | 211 | 15 | BILL 5 | B05 | S1 | 2F | R00 | ACF07 | 211 |  |  |  |  |  | 2n | MEP |  |  |  |  |  |  |  |  |  |  |  |
| DP3PA23021C0 |  | DT-P3 ; 2nd Fix, Inst of Flexible Duct & Plenum boxes (Public Area) | 36d | 2012-05-27 | 2012-07-09 | DP3PA09205C0, DP3PA09501C0 |  |  |  |  | 32.35d | 0d | MECHANICAL [274.8 h]; Cost |  |  | DP3PA23021C0 | DT | C | P3 | PA | ME | 230 | 21 | BILL 5 | B05 | S1 | 2F | R00 | ACF07 | 230 |  |  |  |  |  | 2n | MEP |  |  |  |  |  |  |  |  |  |  |  |
| DP3PA26017C0 |  | DT-P3 ; Final Fix, Inst of Ceiling rose (Public Area) | 48d | 2012-05-27 | 2012-07-23 | DP3PA09501C0 |  |  |  |  | 20.35d | 0d | ELECTRICAL [67.2 h]; Cost |  |  | DP3PA26017C0 | DT | C | P3 | PA | ME | 260 | 17 | BILL 5 | B05 | S1 | FF | R00 | ACF07 | 260 |  |  |  |  |  | FF | MEP |  |  |  |  |  |  |  |  |  |  |  |
| DP3PA27002C0 |  | DT-P3 ; 2nd Fix, Wiring Droppers (Public Area) | 36d | 2012-05-27 | 2012-07-09 | DP3PA09501C0 |  |  |  |  | 32.35d | 0d | ELECTRICAL [436.8 h]; Cost |  |  | DP3PA27002C0 | DT | C | P3 | PA | ME | 270 | 02 | BILL 5 | B05 | S1 | 2F | R00 | ACF07 | 270 |  |  |  |  |  | 2n | MEP |  |  |  |  |  |  |  |  |  |  |  |
| DP3PA08107C0 |  | DT-P3 ; Doors (Public Area) | 19d | 2012-07-09 | 2012-07-31 | DP3PA08103C0, DP3PA09901C0, DP3PA09601C0, DP3PA09602C0 |  |  |  |  | 64.22d | 0d | ASSORTED DOORS [280 h]; ASSORTED DOORS [28 no]; Cost |  |  | DP3PA08107C0 | DT | C | P3 | PA | DO | 081 | 07 | BILL 5 | B05 | S1 | DR | R00 | ACF06 | 081 |  |  |  |  |  |  |  |  |  |  |  |  | 317 | 948 |  |  | 08 |  |
| DP3PA09701C0 |  | DT-P3 ; Wall finishes (ST, WD, WC) (Public Area) | 48d | 2012-07-09 | 2012-09-05 | DP3PA26011C0 FF, DP3PA27020C0 FF, DAFCI22001R02 FS+158d, DP3PA09601C0, DP3PA09602C0 |  |  |  |  | 44.35d | 0d | ASSORTED WALL FINISH [404 h]; ASSORTED WALL FINISH [463 m2]; Cost |  |  | DP3PA09701C0 | DT | C | P3 | PA | WF | 097 | 01 | BILL 5 | B05 | S1 | 01 | R00 | ACF06 | 097 |  |  |  |  |  |  |  |  |  |  |  |  | 105 | 1002 |  |  |  |  |
| DP3PA21113C0 |  | DT-P3 ; Final Fix, Inst of Sprinklers head/ Extinguisher (Public Area) | 48d | 2012-07-09 | 2012-09-05 | DP3PA09501C0, DP3PA21115C0 |  |  |  |  | 38.35d | 18d | MECHANICAL [403.2 h]; Cost |  |  | DP3PA21113C0 | DT | C | P3 | PA | ME | 211 | 13 | BILL 5 | B05 | S1 | FF | R00 | ACF07 | 211 |  |  |  |  |  | FF | MEP |  |  |  |  |  |  |  |  |  |  |  |
| DP3PA23019C0 |  | DT-P3 ; Final Fix, Inst of Grilles & Diffusers (Public Area) | 54d | 2012-07-09 | 2012-09-12 | DP3PA09501C0, DP3PA23021C0 |  |  |  |  | 32.35d | 12d | MECHANICAL [2560.8 h]; Cost |  |  | DP3PA23019C0 | DT | C | P3 | PA | ME | 230 | 19 | BILL 5 | B05 | S1 | FF | R00 | ACF07 | 230 |  |  |  |  |  | FF | MEP |  |  |  |  |  |  |  |  |  |  |  |
| DP3PA27030C0 |  | DT-P3 ; Final Fix, Inst of ELV device (Detector/Speaker) (Public Area) | 54d | 2012-07-09 | 2012-09-12 | DP3PA09501C0, DP3PA27002C0 |  |  |  |  | 32.35d | 12d | ELECTRICAL [2152.8 h]; Cost |  |  | DP3PA27030C0 | DT | C | P3 | PA | ME | 270 | 30 | BILL 5 | B05 | S1 | FF | R00 | ACF07 | 270 |  |  |  |  |  | FF | MEP |  |  |  |  |  |  |  |  |  |  |  |
| DP3PA26003C0 |  | DT-P3 ; Final Fix, Inst of Light fittings (Public Area) | 54d | 2012-07-23 | 2012-09-26 | DP3PA09501C0, DP3PA26017C0 |  |  |  |  | 20.35d | 0d | ELECTRICAL [6626.4 h]; Cost |  |  | DP3PA26003C0 | DT | C | P3 | PA | ME | 260 | 03 | BILL 5 | B05 | S1 | FF | R00 | ACF07 | 260 |  |  |  |  |  | FF | MEP |  |  |  |  |  |  |  |  |  |  |  |
| DP3PA08301C0 |  | DT-P3 ; Overhead coiling doors (Public Area) | 24d | 2012-07-31 | 2012-08-30 | CP3M108105C0, DP3PA08107C0 |  |  |  |  | 64.22d | 0d | ASSORTED DOORS [1280 h]; ASSORTED DOORS [128 no]; Cost |  |  | CP3ME08301C0 | DT | C | P3 | PA | DO | 083 | 01 | BILL 5 | B05 | S1 | 05 | R00 | ACF06 | 083 |  |  |  |  |  |  |  |  |  |  |  |  |  |  |  |  |  |  |
| DP3PA08709C0 |  | DT-P3 ; Ironmongery (Public Area) | 24d | 2012-08-30 | 2012-09-27 | DP3PA08107C0, DP3PA08301C0 |  |  |  |  | 64.22d | 43.88d | IRONMONGERY [340 h]; IRONMONGERY [34 no]; Cost |  |  | DP3PA08709C0 | DT | C | P3 | PA | DO | 087 | 09 | BILL 5 | B05 | S1 | IM | R00 | ACF06 | 087 |  |  |  |  |  |  |  |  |  |  |  |  | 322 | 951 |  |  | 08 |  |
| DP3PA11001C0 |  | DT-P3 ; Wall Protection (WP, CG, WG, FCG) (Public Area) | 24d | 2012-09-05 | 2012-10-03 | DP3PA09701C0, DP3PA09903C0 SS |  |  |  |  | 59.23d | 38.88d | FF&E [832 h]; Cost |  |  | DP3PA11001C0 | DT | C | P3 | PA | WF | 110 | 01 | BILL 5 | B05 | S1 | 03 | R00 | ACF08 | b |  |  |  |  |  |  |  |  |  |  |  |  | 326 | 1001 |  |  |  |  |
| DP3PA11009C0 |  | DT-P3 ; Signage (Public Area) | 11.25d | 2012-09-05 | 2012-09-19 | DP3PA09701C0 |  |  |  |  | 71.97d | 51.62d | SIGNAGES [275 h]; SIGNAGES [274.8 no]; Cost |  |  | DP3PA11009C0 | DT | C | P3 | PA | SA | 110 | 09 | BILL 5 | B05 | S1 | 09 | R00 | ACF08 | c |  |  |  |  |  |  |  |  |  |  |  |  | 322 | 951 |  |  | 08 |  |
| DP3PA01006C0 |  | DT-P3 ; 2nd, Ceiling Inspection by Consultants (Public Area) | 6d | 2012-09-26 | 2012-10-03 | DP3PA21115C0, DP3PA23009C0, DP3PA23011C0, DP3PA23015C0, DP3PA27002C0, DP3PA09501C0, DP3PA09501C0 FF, DP3PA21113C0, DP3PA23019C0, DP3PA26003C0, DP3PA26017C0, DP3PA27030C0, DP3PA26015C0 |  |  |  |  | 20.35d | 0d | Labor General [1.2 h]; Cost |  |  | DP3PA01006C0 | DT | C | P3 | PA | ME | 010 | 06 | BILL 5 | B05 | S1 | CI | R00 | ACF07 | 010 |  |  |  |  |  | 2n | MEP |  |  |  |  |  |  |  |  |  |  |  |
| DP3PA09503C0 |  | DT-P3 ; Ceiling closure - ACT/Gypsum (Public Area) | 20.88d | 2012-10-03 | 2012-10-30 | DAFOA09505C1 FF, DP3PA01006C0, DP3PA21115C0, DP3PA26005C0, DP3PA27002C0, DP3PA09701C0, DP3PA26019C0, DP3PA23021C0, DP3PA26053C0, DP3PA26007C0 |  |  |  |  | 20.35d | 0d | ASSORTED CEILING FINISH [584.25 h]; CEILING GYPSUM [80.97 h]; ASSORTED CEILING FINISH [950 m2]; CEILING GYPSUM [247 m2]; Cost |  |  | DP3PA09503C0 | DT | C | P3 | PA | CE | 095 | 03 | BILL 5 | B05 | S1 | 02 | R00 | ACF06 | 095 |  |  |  |  |  |  |  |  |  |  |  |  | 324 | 953 |  |  |  | R3 |
| DP3PA09907C0 |  | DT-P3 ; Ceiling Final paint (Public Area) | 18d | 2012-10-30 | 2012-11-21 | DP3PA09601C0, DP3PA09905C0, DP3PA09602C0, DP3PA09503C0 |  |  |  |  | 20.35d | 0d | ASSORTED CEILING FINISH [57 h]; Cost |  |  | DP3PA09907C0 | DT | C | P3 | PA | PA | 099 | 07 | BILL 5 | B05 | S1 | 02 | R00 | ACF06 | 099 |  |  |  |  |  |  |  |  |  |  |  |  | 331 | 959 |  |  |  |  |

| ID | WBS | Activity | Duration | Start | Finish | Predecessors | Complete | Remaining | Planned start | Planned finish | Total float | Free float | Resources | Cost | Actual cost | change id | CCAD BUILDING(SET) | CCAD PHASE(SET) | CCAD FLOOR(SET) | CCAD ZONE(SET) | CCAD WORK(SET) | CCAD SECTION(SET) | CCAD SERIAL No.(SET) | CCAD CBS(SET) | CCAD BILL(SET) | CCAD HANDOVER(SET) | CCAD TAG(SET) | CCAD REV(SET) | CCADACF (SET) | CCAD SSCF | RENZ % COMPLETE | July2011 Target% Complete | Claimed This Month | P_811 | P_711 | CCAD SUB ZONE MEP(SET) | CCAD CSA | Act Selector % | user_number8 | user_integer1 | user_integer2 | user_number7 | Change Order # | NEW ACTIVITY ID | PERCENT COMPLETE | CCAD MEQ | CCAD DIVISION(SET) |
| --- | --- | --- | --- | --- | --- | --- | --- | --- | --- | --- | --- | --- | --- | --- | --- | --- | --- | --- | --- | --- | --- | --- | --- | --- | --- | --- | --- | --- | --- | --- | --- | --- | --- | --- | --- | --- | --- | --- | --- | --- | --- | --- | --- | --- | --- | --- | --- |
|  | 10 | **Precommissioning Tesing & snagging (Public Area)** |  | 2012-10-30 | 2012-12-22 |  |  |  |  |  |  |  |  |  |  |  |  |  |  |  |  |  |  |  |  |  |  |  |  |  |  |  |  |  |  |  |  |  |  |  |  |  |  |  |  |  |  |
| DP3TS01804C0 |  | DT-P3 ; MEP de-snag, FIREM sign-off | 12d | 2012-10-30 | 2012-11-13 | DP3PA09503C0 |  |  |  |  | 26.35d | 6d | TESTING & COMMISSIONING [1020 h]; Cost |  |  | DP3TS01801C0 | DT | C | P3 | TS | SC | 018 | 01 | BILL 5 | B05 | S1 | 01 | R00 | ACF07 | 018 |  |  |  |  |  |  |  |  |  |  |  |  |  |  |  |  |  |
| DP3TS01807C0 |  | DT-P3 ; Touch-up & Clean / JV inspection /CIR /De-snag | 17.88d | 2012-11-21 | 2012-12-13 | DP3CO04401C0, DP3PA08709C0, DP3PA09601C0, DP3PA09701C0, DP3PA09903C0, DP3PA09907C0, DP3PA11001C0, DP3PA11009C0, DP3TS01804C0, DP3PA05501C0, DP3PA09602C0, DP3PA09503C0 |  |  |  |  | 20.35d | 0d | TESTING & COMMISSIONING [170 h]; Cost |  |  | DP3TS01802C0 | DT | C | P3 | TS | SC | 018 | 02 | BILL 5 | B05 | S1 | 02 | R00 | ACF07 | 018 |  |  |  |  |  |  |  |  |  |  |  |  |  |  |  |  |  |
| DP3TS01810C0 |  | DT-P3 ; Consultant's final de-snag inspection | 7d | 2012-12-13 | 2012-12-22 | DP3TS01807C0 |  |  |  |  | 20.35d | 0d | Labor General [1 h]; Cost |  |  | DP3TS01803C0 | DT | C | P3 | TS | SC | 018 | 03 | BILL 5 | B05 | S1 | 03 | R00 | ACF07 | 018 |  |  |  |  |  |  |  |  |  |  |  |  |  |  |  |  |  |
|  | 04 | **Storage /Crawl space** |  | 2010-11-10 | 2013-01-10 |  |  |  |  |  |  |  |  |  |  |  |  |  |  |  |  |  |  |  |  |  |  |  |  |  |  |  |  |  |  |  |  |  |  |  |  |  |  |  |  |  |  |
| DP3SR22019C0 |  | DT-P3 ; 1st Fix, Inst of Drainage pipe (ceiling) (Storage) | 200d | 2010-11-10 A | 2011-10-23 | DP3S107807C0, DP3S307807C0, DP3SR23001C0, DP3SR27010C0 SS+7d | 90% | 20d | 2011-05-18 | 2012-01-16 | 71.3d | 0d | PLUMBING [1171.2 h]; Cost [61888.2 AED] | 61,888.15 | 55,699.34 | DP3SR22019C0 | DT | C | P3 | SR | ME | 220 | 19 | BILL 5 | B05 | S1 | 1F | R00 | ACF04 | 220 | 50 | 100 | 14700.4 | 90 | 80 | 1S | MEP | M1F |  |  |  |  |  |  |  |  |  |
| DP3SR23001C0 |  | DT-P3 ; 1st Fix, Inst. of Supports for MEP (Storage) | 27d | 2011-04-09 A | 2011-08-30 A | DFNS103323C0, DP3S107807C0 SS, DP3S307807C0 SS | 100% |  | 2011-03-22 | 2011-04-23 |  |  | MECHANICAL [1338 h]; Cost [75432.9 AED] | 75,432.94 | 75,432.94 | DP3SR23001C0 | DT | C | P3 | SR | ME | 230 | 01 | BILL 5 | B05 | S1 | 1F | R00 | ACF04 | 230 | 60 | 95 | 13125.17 | 100 | 95 | 1S | MEP | M1F |  |  |  |  |  |  |  |  |  |
| DP3SR09201C0 |  | DT-P3 ; Metal Studs (Storage) | 90d | 2011-05-15 A | 2011-12-05 | DP3FW09201C0 SS+6d, DP3SR23001C0 | 56% | 39.6d | 2011-07-31 | 2011-11-19 | 18.5d | 0d | PARTITIONS [7217 h]; PARTITIONS - Metal Studs [1064 m]; Cost |  |  | DP3SR09201C0 | DT | C | P3 | SR | PT | 092 | 01 | BILL 5 | B05 | S1 | 1F | R00 | ACF06 | 092 | 10 |  | 92423.65 | 48 | 34 |  | GP | PMS | 0 | 0 | 0 | 0 | 313 | 944 |  |  |  |
| DP3SR21117C0 |  | DT-P3 ; 1st Fix, Inst of Sprinkler branch pipe (Storage) | 251d | 2011-06-05 A | 2012-01-04 | DP3S107807C0, DP3S307807C0, DP3SR09201C0, DP3SR21111C0 | 90% | 25d | 2011-09-04 | 2012-07-02 | 123.4d | 104.9d | MECHANICAL [1441.2 h]; Cost [78749.8 AED] | 78,749.79 | 70,874.81 | DP3SR21117C0 | DT | C | P3 | SR | ME | 211 | 17 | BILL 5 | B05 | S1 | 1F | R00 | ACF04 | 211 |  | 40 | 36516.52 | 92 | 75 | 1S | MEP | M1F | 0 | 0 | 0 | 0 |  |  | 90 |  |  |
| DP3SR27001C0 |  | DT-P3 ; 1st Fix, Wiring/ Cabling work (Storage) | 84d | 2011-06-08 A | 2012-02-07 | DP3S107807C0, DP3S307807C0, DP3SR26001C0, DP3SR26013C0, DP3SR27010C0 | 40% | 50.4d | 2011-09-17 | 2011-12-29 | 95d | 76.5d | ELECTRICAL [436.8 h]; Cost [21894.9 AED] | 21,894.91 | 8,757.96 | DP3SR27001C0 | DT | C | P3 | SR | ME | 270 | 01 | BILL 5 | B05 | S1 | 1F | R00 | ACF04 | 270 |  | 40 | 10317.07 |  |  | 1S | MEP | M1F |  |  |  |  |  |  |  |  |  |
| DP3SR26009C0 |  | DT-P3 ; 2nd Fix, Inst of Wall conduites (Storage) | 54d | 2011-06-09 A | 2012-01-29 | DP3SR09201C0 | 15% | 45.9d | 2011-07-17 | 2011-09-20 | 18.5d | 0d | ELECTRICAL [824.4 h]; Cost [42423.2 AED] | 42,423.24 | 6,363.49 | DP3SR26009C0 | DT | C | P3 | SR | ME | 260 | 09 | BILL 5 | B05 | S1 | 2F | R00 | ACF07 | 260 |  | 10 | 4998.66 | 15 | 10 | 2n | MEP |  |  |  |  |  |  |  |  |  |  |
| DP3SR26001C0 |  | DT-P3 ; 1st Fix, Inst of Trunking/Conduiting (Storage) | 84d | 2011-06-13 A | 2011-12-08 | DP3S107807C0, DP3S307807C0, DP3SR23001C0 | 35% | 54.6d | 2011-06-13 | 2011-09-22 | 71.3d | 0d | ELECTRICAL [824.4 h]; Cost [42423.2 AED] | 42,423.24 | 14,848.13 | DP3SR26001C0 | DT | C | P3 | SR | ME | 260 | 01 | BILL 5 | B05 | S1 | 1F | R00 | ACF04 | 260 |  | 35 | 17495.32 |  |  | 1S | MEP | M1F |  |  |  |  |  |  |  |  |  |
| DP3SR21111C0 |  | DT-P3 ; 1st Fix, Inst of Sprinkler main pipe (Storage) | 250d | 2011-06-14 A | 2011-10-29 | DP3S107807C0, DP3S307807C0, DP3SR22005C0 SS+7d, DP3SR23001C0 | 90% | 25d | 2011-07-11 | 2012-05-08 | 90.8d | 0d | MECHANICAL [981.6 h]; Cost [53543.7 AED] | 53,543.69 | 48,189.32 | DP3SR21111C0 | DT | C | P3 | SR | ME | 211 | 11 | BILL 5 | B05 | S1 | 1F | R00 | ACF04 | 211 |  | 40 | 24856.41 | 92 | 75 | 1S | MEP | M1F | 0 | 0 | 0 | 0 |  |  | 90 |  |  |
| DP3SR26013C0 |  | DT-P3 ; 1st Fix, Inst of Cable Tray (Storage) | 90d | 2011-06-15 A | 2011-11-24 | DP3S107807C0, DP3S307807C0, DP3SR23001C0, DP3SR27010C0 SS+7d | 50% | 45d | 2011-07-03 | 2011-10-18 | 104.6d | 9.6d | ELECTRICAL [430.8 h]; Cost [23263.3 AED] | 23,263.34 | 11,631.67 | DP3SR26013C0 | DT | C | P3 | SR | ME | 260 | 13 | BILL 5 | B05 | S1 | 1F | R00 | ACF04 | 260 |  | 35 | 9450.59 | 50 | 35 | 1S | MEP | M1F |  |  |  |  |  |  |  |  |  |
| DP3SR09203C0 |  | DT-P3 ; Partitions 1st face (Storage) | 90d | 2011-06-18 A | 2011-12-20 | DP3SR09201C0 SS+12d, DP3SR21111C0 FF | 42% | 52.2d | 2011-07-17 | 2011-11-01 | 57.8d | 39.3d | PARTITIONS [1064 m]; PARTITIONS [5641 h]; Cost |  |  | DP3SR09203C0 | DT | C | P3 | SR | PT | 092 | 03 | BILL 5 | B05 | S1 | 2F | R00 | ACF06 | 092 |  |  | 32348.28 | 30 | 11 |  | GP | P1F | 0 | 0 | 0 | 0 | 314 | 945 |  |  |  |
| DP3SR27010C0 |  | DT-P3 ; 1st Fix, Inst of Trunking for ELV system (Storage) | 90d | 2011-06-25 A | 2011-11-24 | DP3S107807C0, DP3S307807C0, DP3SR23001C0, DP3SR26001C0 SS+10d | 50% | 45d | 2011-06-25 | 2011-10-11 | 71.3d | 0d | ELECTRICAL [1689.6 h]; Cost [88597.9 AED] | 88,597.89 | 44,298.95 | DP3SR27010C0 | DT | C | P3 | SR | ME | 270 | 10 | BILL 5 | B05 | S1 | 1F | R00 | ACF04 | 270 |  | 35 | 35974.46 | 50 | 35 | 1S | MEP | M1F |  |  |  |  |  |  |  |  |  |
| DP3SR23015C0 |  | DT-P3 ; 2nd Fix, Insulation of CHW pipe & Duct (Storage) | 60d | 2011-07-10 A | 2012-02-13 | DP3SR23009C0, DP3SR23017C0, DP3SR23023C0 | 40% | 36d | 2011-10-19 | 2012-01-04 | 90.8d | 72.3d | MECHANICAL [5311.2 h]; Cost [286617 AED] | 286,617.06 | 114,646.82 | DP3SR23015C0 | DT | C | P3 | SR | ME | 230 | 15 | BILL 5 | B05 | S1 | 2F | R00 | ACF07 | 230 |  | 35 |  | 30 | 20 | 2n | MEP |  | 0 | 0 | 0 | 0 |  |  |  |  |  |
| DP3SR23023C0 |  | DT-P3 ; 1st Fix, Inst of Main Ducting (Storage) | 78d | 2011-07-10 A | 2011-11-28 | DP3S107807C0, DP3S307807C0, DP3SR23001C0, DP3SR23017C0 SS+5d | 40% | 46.8d | 2011-07-25 | 2011-10-26 | 94.4d | 0d | MECHANICAL [11402.4 h]; Cost [622619 AED] | 622,619.08 | 249,047.63 | DP3SR23023C0 | DT | C | P3 | SR | ME | 230 | 23 | BILL 5 | B05 | S1 | 1F | R00 | ACF04 | 230 |  | 35 |  |  |  | 1S | MEP | M1F | 0 | 0 | 0 | 0 |  |  |  |  |  |
| DP3SR23011C0 |  | DT-P3 ; 2nd Fix, Inst of Equipment (FCU,FAN) (Storage) | 79d | 2011-08-02 A | 2012-05-13 | DP3SR09205C0 | 56% | 35.1d | 2012-04-09 | 2012-07-10 | 49.4d | 30.9d | MECHANICAL [1588.8 h]; Cost [361645 AED] | 361,645.02 | 198,904.76 | DP3SR23011C0 | DT | C | P3 | SR | ME | 230 | 11 | BILL 5 | B05 | S1 | 2F | R00 | ACF04 | 230 |  |  |  | 50 | 0 | 2n | MEP |  |  |  |  |  |  |  |  | H |  |
| DP3SR23017C0 |  | DT-P3 ; 1st Fix, Inst of CHW pipe (Storage) | 100d | 2011-08-02 A | 2011-11-03 | DP3S107807C0, DP3S307807C0, DP3SR21111C0 SS+7d, DP3SR23001C0 | 70% | 30d | 2011-08-15 | 2011-12-18 | 90.8d | 0d | MECHANICAL [6325.2 h]; Cost [345418 AED] | 345,418.28 | 241,792.8 | DP3SR23017C0 | DT | C | P3 | SR | ME | 230 | 17 | BILL 5 | B05 | S1 | 1F | R00 | ACF04 | 230 |  | 35 |  | 70 | 0 | 1S | MEP | M1F |  |  |  |  |  |  |  |  |  |
| DP3SR22005C0 |  | DT-P3 ; 1st Fix, Inst of Water supply pipe (ceiling) (Storage) | 78d | 2011-08-10 A | 2011-12-04 | DP3S107807C0, DP3S307807C0, DP3SR22019C0 SS+7d, DP3SR23001C0 | 35% | 50.7d | 2011-08-07 | 2011-11-12 | 71.3d | 0d | PLUMBING [4896 h]; Cost [264473 AED] | 264,473.49 | 92,565.72 | DP3SR22005C0 | DT | C | P3 | SR | ME | 220 | 05 | BILL 5 | B05 | S1 | 1F | R00 | ACF04 | 220 |  | 35 |  | 25 | 0 | 1S | MEP | M1F | 0 | 0 | 0 | 0 |  |  |  |  |  |
| DP3SR22011C0 |  | DT-P3 ; 2nd Fix, Drainage/Water pipe (wall) (Storage) | 78d | 2011-08-10 A | 2012-01-21 | DP3SR09201C0 | 50% | 39d | 2011-12-17 | 2012-03-18 | 25.4d | 6.9d | PLUMBING [1173.6 h]; Cost [61888.2 AED] | 61,888.15 | 30,944.08 | DP3SR22011C0 | DT | C | P3 | SR | ME | 220 | 11 | BILL 5 | B05 | S1 | 2F | R00 | ACF07 | 220 |  |  |  | 50 | 0 | 2n | MEP |  |  |  |  |  |  |  |  |  |  |
| DP3SR23008C0 |  | DT-P3 ; 1st Fix, Inst of VCD's/FD's (Storage) | 84d | 2011-08-10 A | 2012-02-08 | DP3S107807C0, DP3S307807C0, DP3SR23023C0 | 30% | 58.8d | 2011-10-25 | 2012-02-08 | 94.4d | 75.9d | MECHANICAL [4312.8 h]; Cost [232964 AED] | 232,964.23 | 69,889.27 | DP3SR23008C0 | DT | C | P3 | SR | ME | 230 | 08 | BILL 5 | B05 | S1 | 1F | R00 | ACF04 | 230 |  | 35 |  | 30 | 0 | 1S | MEP | M1F |  |  |  |  |  |  |  |  |  |
| DP3SR23009C0 |  | DT-P3 ; 2nd Fix, Inst of VAV'S CHW connection (Storage) | 54d | 2011-08-10 A | 2011-12-31 | DP3SR23017C0 | 20% | 43.2d | 2011-12-17 | 2012-02-19 | 90.8d | 0d | MECHANICAL [1684.8 h]; Cost [91006.1 AED] | 91,006.06 | 18,201.21 | DP3SR23009C0 | DT | C | P3 | SR | ME | 230 | 09 | BILL 5 | B05 | S1 | 2F | R00 | ACF07 | 230 |  |  |  | 20 | 0 | 2n | MEP |  |  |  |  |  |  |  |  |  |  |
| DP3SR08103C0 |  | DT-P3 ; Door Frames (Storage) | 42d | 2011-10-15 | 2011-12-07 | DP3SR09201C0 SS+10d, GNHE08101C0 |  |  |  |  | 116d | 97.5d | ASSORTED DOORS [687 h]; Cost |  |  | DP3SR08103C0 | DT | C | P3 | SR | DO | 081 | 03 | BILL 5 | B05 | S1 | DR | R00 | ACF06 | 081 |  |  |  |  |  |  |  |  |  |  |  |  | 316 | 947 |  |  | 08 |
| DP3SR40302C0 |  | DT-P3 ; 2nd Fix, Pneumatic tube (Storage) | 42d | 2011-12-05 | 2012-01-24 | DP3SR09201C0 |  |  |  |  | 22.4d | 3.9d | MECHANICAL [5653.2 h]; Cost |  |  | C03E140302C0 | DT | C | P3 | SR | ME | 403 | 02 | BILL 5 | B05 | S1 | 2F | R00 | ACF07 | 403 |  |  |  |  |  | 2n | MEP |  |  |  |  |  |  |  |  |  |  |
| DP3SR01005C0 |  | DT-P3 ; 2nd, Wall Inspection by Consultant (Storage) | 6d | 2012-01-29 | 2012-02-06 | DP3SR22011C0, DP3SR26009C0, DP3SR40302C0 |  |  |  |  | 18.5d | 0d | Labor General [1.2 h]; Cost |  |  | DP3SR01005C0 | DT | C | P3 | SR | ME | 010 | 05 | BILL 5 | B05 | S1 | WI | R00 | ACF07 | 010 |  |  |  |  |  | 2n | MEP |  |  |  |  |  |  |  |  |  |  |
| DP3SR09205C0 |  | DT-P3 ; Partitions Closing (Storage) | 48d | 2012-02-06 | 2012-04-02 | DAFOA09206C1 FF, DP3SR01005C0, DP3SR09203C0, DP3SR22005C0, DP3SR22019C0, DP3SR08103C0 FF |  |  |  |  | 18.5d | 0d | PARTITIONS [1064 m]; PARTITIONS [7234 h]; Cost |  |  | DP3SR09205C0 | DT | C | P3 | SR | PT | 092 | 05 | BILL 5 | B05 | S1 | FF | R00 | ACF06 | 092 |  |  |  |  |  |  | GP | P2F |  |  |  |  | 315 | 946 |  |  |  |
| DP3SR07103C0 |  | DT-P3 ; Waterproofing (Storage) | 12d | 2012-04-02 | 2012-04-16 | DP3SR08103C0, DP3SR09205C0 |  |  |  |  | 74.62d | 0d | THERMAL & MOISTURE [488 h]; THERMAL & MOISTURE [3239 m2]; Cost |  |  | DP3SR07103C0 | DT | C | P3 | SR | FF | 071 | 03 | BILL 5 | B05 | S1 | 01 | R00 | ACF03 | 071 |  |  |  |  |  |  |  |  |  |  |  |  | 105 | 999 |  |  |  |
| DP3SR09901C0 |  | DT-P3 ; Wall Prime & 1st coat (Storage) | 30d | 2012-04-02 | 2012-05-07 | DP3CO04003C0, DP3SR09205C0 |  |  |  |  | 18.5d | 0d | WALL PAINT [1156 h]; WALL PAINT [1441 m2]; Cost |  |  | DP3SR09901C0 | DT | C | P3 | SR | PA | 099 | 01 | BILL 5 | B05 | S1 | 01 | R00 | ACF06 | 099 |  |  |  |  |  |  |  |  |  |  |  |  | 328 | 956 |  |  |  |
| DP3SR26005C0 |  | DT-P3 ; 2nd Fix, Wiring for Power/Lighting/Emergency (Storage) | 36d | 2012-04-02 | 2012-05-14 | DP3SR09205C0 |  |  |  |  | 132.5d | 0d | ELECTRICAL [436.8 h]; Cost |  |  | DP3SR26005C0 | DT | C | P3 | SR | ME | 260 | 05 | BILL 5 | B05 | S1 | 2F | R00 | ACF07 | 260 |  |  |  |  |  | 2n | MEP |  |  |  |  |  |  |  |  |  |  |
| DP3SR26007C0 |  | DT-P3 ; 2nd Fix, Cable Pulling (Storage) | 42d | 2012-04-02 | 2012-05-21 | DP3SR09201C0 SS+6d, DP3SR09205C0 |  |  |  |  | 126.5d | 108d | ELECTRICAL [6634.8 h]; Cost |  |  | DP3SR26007C0 | DT | C | P3 | SR | ME | 260 | 07 | BILL 5 | B05 | S1 | 2F | R00 | ACF07 | 260 |  |  |  |  |  | 2n | MEP |  |  |  |  |  |  |  |  |  |  |
| DP3SR26011C0 |  | DT-P3 ; 2nd Fix, Inst of Equipment (DB) (Storage) | 48d | 2012-04-02 | 2012-05-28 | DP3SR09205C0 |  |  |  |  | 72.5d | 54d | ELECTRICAL [4054.8 h]; Cost |  |  | DP3SR26011C0 | DT | C | P3 | SR | ME | 260 | 11 | BILL 5 | B05 | S1 | 2F | R00 | ACF04 | 260 |  |  |  |  |  | 2n | MEP |  |  |  |  |  |  |  |  | E |  |
| DP3SR26053C0 |  | DT-P3 ; 2nd Fix, Wiring / Cabling (Storage) | 36d | 2012-04-02 | 2012-05-14 | DP3SR26009C0, DP3SR09205C0 |  |  |  |  | 132.5d | 114d | ELECTRICAL [436.8 h]; Cost |  |  | DP3SR26053C0 | DT | C | P3 | SR | ME | 260 | 53 | BILL 5 | B05 | S1 | 2F | R00 | ACF07 | 260 |  |  |  |  |  | 2n | MEP |  |  |  |  |  | 389 | 977 |  |  |  |
| DP3SR09305C0 |  | DT-P3 ; Ceramic floor tile (Storage) | 33.88d | 2012-04-16 | 2012-05-26 | DP3SR07103C0 |  |  |  |  | 74.62d | 0d | CERAMIC FLOOR TILES [472 h]; CERAMIC FLOOR TILES [261 m2]; Cost |  |  | DP3SR09305C0 | DT | C | P3 | SR | FF | 093 | 05 | BILL 5 | B05 | S1 | 02 | R00 | ACF06 | CT |  |  |  |  |  |  |  |  |  |  |  |  | 106 | 1000 |  |  |  |
| DP3SR05501C0 |  | DT-P3 ; Handrails & balustrade (Storage) | 36d | 2012-05-07 | 2012-06-19 | DP3SR09901C0 |  |  |  |  | 54.5d | 36d | SECONDARY STEEL [186 h]; Cost |  |  | DP3SR05501C0 | DT | C | P3 | SR | SW | 055 | 01 | BILL 5 | B05 | S1 | 01 | R00 | ACF03 | a |  |  |  |  |  |  |  |  |  |  |  |  |  |  |  |  |  |
| DP3SR09501C0 |  | DT-P3 ; Ceiling Grid and Service Tile (Storage) | 36d | 2012-05-07 | 2012-06-19 | DP3SR09205C0 SS+15d, DP3SR21117C0, DP3SR23008C0, DP3SR23009C0, DP3SR23015C0, DP3SR27001C0, DP3SR23011C0 FF, DP3SR09901C0 |  |  |  |  | 18.5d | 0d | CEILING GRID FOR GYPSUM [11532.2 h]; CEILING GRID FOR GYPSUM [986.81 m2]; Cost |  |  | DP3SR09501C0 | DT | C | P3 | SR | CE | 095 | 01 | BILL 5 | B05 | S1 | 01 | R00 | ACF06 | 095 |  |  |  |  |  |  |  |  |  |  |  |  | 323 | 952 |  |  |  |
| DP3SR40305C0 |  | DT-P3 ; Pneumatic Interchange (Storage) | 72d | 2012-05-07 | 2012-07-31 | DP3SR09901C0 |  |  |  |  | 60.5d | 0d | MECHANICAL [5653.2 h]; Cost |  |  | C03E140303C0 | DT | C | P3 | SR | ME | 403 | 05 | BILL 5 | B05 | S1 | RI | R00 | ACF04 | 403 |  |  |  |  |  |  | MEP |  |  |  |  |  |  |  |  |  |  |
| DP3SR26015C0 |  | DT-P3 ; Final Fix, Termination & Gladding of Cables (Storage) | 48d | 2012-05-14 | 2012-07-10 | DP3SR26005C0 |  |  |  |  | 132.5d | 114d | ELECTRICAL [368.4 h]; Cost |  |  | DP3SR26015C0 | DT | C | P3 | SR | ME | 260 | 15 | BILL 5 | B05 | S1 | FF | R00 | ACF07 | 260 |  |  |  |  |  | FF | MEP |  |  |  |  |  |  |  |  |  |  |
| DP3SR22025C0 |  | DT-P3 ; Final Fix, Inst of Sanitary Ware (Storage) | 48d | 2012-05-26 | 2012-07-22 | DP3SR09205C0, DP3SR09305C0, A10230 FS+148d |  |  |  |  | 74.62d | 0d | PLUMBING [1917.6 h]; Cost |  |  | DP3SR22025C0 | DT | C | P3 | SR | ME | 220 | 25 | BILL 5 | B05 | S1 | FF | R00 | ACF07 | 220 |  |  |  |  |  | FF | MEP |  |  |  |  |  |  |  |  |  |  |
| DP3SR06101C0 |  | DT-P3 ; Wood / caseworks (Storage) | 60d | 2012-06-19 | 2012-08-30 | DP3CO04415C0, DP3SR09501C0, DP3SR09901C0, DP3CO04407C0, DAFWA00119M0, CAFWA00113M0 |  |  |  |  | 42.5d | 24d | WOOD WORK/CASEWORK [1298.97 no]; WOOD WORK/CASEWORK [10890 h]; Cost |  |  | DP3SR06101C0 | DT | C | P3 | SR | WO | 061 | 01 | BILL 5 | B05 | S1 | WW | R00 | ACF06 | 061 |  |  |  |  |  |  |  |  |  |  |  |  | 332 | 960 |  |  |  |
| DP3SR09601C0 |  | DT-P3 ; Flooring (Rubber & etc) (Storage) | 36d | 2012-06-19 | 2012-07-31 | DP3SR09901C0, DP3SR09501C0, DP3SR05501C0 FF |  |  |  |  | 18.5d | 0d | RUBBER FLOOR [632 h]; RUBBER FLOOR [1577 m2]; Cost |  |  | DP3SR09601C0 | DT | C | P3 | SR | FF | 096 | 01 | BILL 5 | B05 | S1 | 03 | R00 | ACF06 | RF |  |  |  |  |  |  |  |  |  |  |  |  | 326 | 955 |  |  |  |
| DP3SR09905C0 |  | DT-P3 ; Ceiling Prime & 1st coat (Storage) | 30d | 2012-06-19 | 2012-07-24 | DP3SR09501C0 |  |  |  |  | 102.5d | 0d | ASSORTED CEILING FINISH [415 h]; Cost |  |  | DP3SR09905C0 | DT | C | P3 | SR | PA | 099 | 05 | BILL 5 | B05 | S1 | 01 | R00 | ACF06 | 099 |  |  |  |  |  |  |  |  |  |  |  |  | 330 | 958 |  |  |  |
| DP3SR21115C0 |  | DT-P3 ; 2nd Fix, Inst of Sprinkler droppers (Storage) | 36d | 2012-06-19 | 2012-07-31 | DP3SR09501C0 |  |  |  |  | 42.5d | 0d | MECHANICAL [2067.6 h]; Cost |  |  | DP3SR21115C0 | DT | C | P3 | SR | ME | 211 | 15 | BILL 5 | B05 | S1 | 2F | R00 | ACF07 | 211 |  |  |  |  |  | 2n | MEP |  |  |  |  |  |  |  |  |  |  |
| DP3SR23021C0 |  | DT-P3 ; 2nd Fix, Inst of Flexible Duct & Plenum boxes (Storage) | 36d | 2012-06-19 | 2012-07-31 | DP3SR09205C0, DP3SR09501C0 |  |  |  |  | 36.5d | 0d | MECHANICAL [274.8 h]; Cost |  |  | DP3SR23021C0 | DT | C | P3 | SR | ME | 230 | 21 | BILL 5 | B05 | S1 | 2F | R00 | ACF07 | 230 |  |  |  |  |  | 2n | MEP |  |  |  |  |  |  |  |  |  |  |
| DP3SR26017C0 |  | DT-P3 ; Final Fix, Inst of Ceiling rose (Storage) | 36d | 2012-06-19 | 2012-07-31 | DP3SR09501C0 |  |  |  |  | 48.5d | 0d | ELECTRICAL [67.2 h]; Cost |  |  | DP3SR26017C0 | DT | C | P3 | SR | ME | 260 | 17 | BILL 5 | B05 | S1 | FF | R00 | ACF07 | 260 |  |  |  |  |  | FF | MEP |  |  |  |  |  |  |  |  |  |  |
| DP3SR27002C0 |  | DT-P3 ; 2nd Fix, Wiring Droppers (Storage) | 36d | 2012-06-19 | 2012-07-31 | DP3SR09501C0 |  |  |  |  | 24.5d | 0d | ELECTRICAL [436.8 h]; Cost |  |  | DP3SR27002C0 | DT | C | P3 | SR | ME | 270 | 02 | BILL 5 | B05 | S1 | 2F | R00 | ACF07 | 270 |  |  |  |  |  | 2n | MEP |  |  |  |  |  |  |  |  |  |  |
| DP3SR27020C0 |  | DT-P3 ; 2nd Fix, Inst of ELV Equipment (Panels) (Storage) | 42d | 2012-06-19 | 2012-08-07 | DP3SR09205C0, DP3SR09501C0 |  |  |  |  | 60.5d | 42d | ELECTRICAL [1723.2 h]; Cost |  |  | DP3SR27020C0 | DT | C | P3 | SR | ME | 270 | 20 | BILL 5 | B05 | S1 | 2F | R00 | ACF04 | 270 |  |  |  |  |  | 2n | MEP |  |  |  |  |  |  |  |  | E |  |
| DP3SR21113C0 |  | DT-P3 ; Final Fix, Inst of Sprinklers head/ Extinguisher (Storage) | 48d | 2012-06-26 | 2012-08-23 | DP3SR09501C0, DP3SR21115C0 SS+6d |  |  |  |  | 42.5d | 18d | MECHANICAL [403.2 h]; Cost |  |  | DP3SR21113C0 | DT | C | P3 | SR | ME | 211 | 13 | BILL 5 | B05 | S1 | FF | R00 | ACF07 | 211 |  |  |  |  |  | FF | MEP |  |  |  |  |  |  |  |  |  |  |
| DP3SR23019C0 |  | DT-P3 ; Final Fix, Inst of Grilles & Diffusers (Storage) | 54d | 2012-06-26 | 2012-08-30 | DP3SR09501C0, DP3SR23021C0 SS+6d |  |  |  |  | 36.5d | 12d | MECHANICAL [2560.8 h]; Cost |  |  | DP3SR23019C0 | DT | C | P3 | SR | ME | 230 | 19 | BILL 5 | B05 | S1 | FF | R00 | ACF07 | 230 |  |  |  |  |  | FF | MEP |  |  |  |  |  |  |  |  |  |  |
| DP3SR26003C0 |  | DT-P3 ; Final Fix, Inst of Light fittings (Storage) | 42d | 2012-06-26 | 2012-08-14 | DP3SR09501C0, DP3SR26017C0 SS+6d |  |  |  |  | 48.5d | 24d | ELECTRICAL [6626.4 h]; Cost |  |  | DP3SR26003C0 | DT | C | P3 | SR | ME | 260 | 03 | BILL 5 | B05 | S1 | FF | R00 | ACF07 | 260 |  |  |  |  |  | FF | MEP |  |  |  |  |  |  |  |  |  |  |
| DP3SR22021C0 |  | DT-P3 ; Final Fix, Terminate Sanitary Ware & Appliances (Storage) | 48d | 2012-07-22 | 2012-09-18 | DP3SR22011C0, DP3SR22025C0 |  |  |  |  | 74.62d | 56.12d | PLUMBING [1917.6 h]; Cost |  |  | DP3SR22021C0 | DT | C | P3 | SR | ME | 220 | 21 | BILL 5 | B05 | S1 | FF | R00 | ACF07 | 220 |  |  |  |  |  | FF | MEP |  |  |  |  |  |  |  |  |  |  |
| DP3SR09903C0 |  | DT-P3 ; Wall Final Paint (Storage) | 30d | 2012-07-24 | 2012-08-30 | DP3SR09901C0, DP3SR09905C0 |  |  |  |  | 102.5d | 54d | WALL PAINT [622 h]; WALL PAINT [776 m2]; Cost |  |  | DP3SR09903C0 | DT | C | P3 | SR | PA | 099 | 03 | BILL 5 | B05 | S1 | 02 | R00 | ACF06 | 099 |  |  |  |  |  |  |  |  |  |  |  |  | 329 | 957 |  |  |  |
| DP3SR08107C0 |  | DT-P3 ; Doors (Storage) | 24d | 2012-07-31 | 2012-08-30 | DP3SR08103C0, DP3SR09901C0, DP3SR09601C0 |  |  |  |  | 66.5d | 0d | ASSORTED DOORS [1110 h]; ASSORTED DOORS [111 no]; Cost |  |  | DP3SR08107C0 | DT | C | P3 | SR | DO | 081 | 07 | BILL 5 | B05 | S1 | DR | R00 | ACF06 | 081 |  |  |  |  |  |  |  |  |  |  |  |  | 317 | 948 |  |  | 08 |
| DP3SR09701C0 |  | DT-P3 ; Wall finishes (ST, WD, WC) (Storage) | 48d | 2012-07-31 | 2012-09-27 | DP3SR26011C0, DP3SR27020C0 FF, DP3SR09601C0 |  |  |  |  | 18.5d | 0d | ASSORTED WALL FINISH [1418 h]; ASSORTED WALL FINISH [1630 m2]; Cost |  |  | DP3SR09701C0 | DT | C | P3 | SR | WF | 097 | 01 | BILL 5 | B05 | S1 | 01 | R00 | ACF06 | 097 |  |  |  |  |  |  |  |  |  |  |  |  | 105 | 1002 |  |  |  |
| DP3SR11071C0 |  | DT-P3 ; Food Service Equipment (Storage) | 57d | 2012-07-31 | 2012-10-08 | DP3SR09601C0 |  |  |  |  | 69.5d | 51d | FF&E [4769 h]; FF&E [1589.75 no]; Cost |  |  | DP3SR11071C0 | DT | C | P3 | SR | EQ | 110 | 71 | BILL 5 | B05 | S1 | 06 | R00 | ACF08 | KE |  |  |  |  |  |  | FK |  |  |  |  |  | 313 | 944 |  |  |  |
| DP3SR27030C0 |  | DT-P3 ; Final Fix, Inst of ELV device (Detector/Speaker) (Storage) | 36d | 2012-07-31 | 2012-09-13 | DP3SR09501C0, DP3SR27002C0 |  |  |  |  | 24.5d | 0d | ELECTRICAL [2152.8 h]; Cost |  |  | DP3SR27030C0 | DT | C | P3 | SR | ME | 270 | 30 | BILL 5 | B05 | S1 | FF | R00 | ACF07 | 270 |  |  |  |  |  | FF | MEP |  |  |  |  |  |  |  |  |  |  |
| DP3SR40303C0 |  | DT-P3 ; Final Fix, Pneumatic Station (Storage) | 54d | 2012-07-31 | 2012-10-04 | DP3SR40305C0 |  |  |  |  | 60.5d | 42d | MECHANICAL [5653.2 h]; Cost |  |  | C03E140303C0 | DT | C | P3 | SR | ME | 403 | 03 | BILL 5 | B05 | S1 | FF | R00 | ACF07 | 403 |  |  |  |  |  | FF | MEP |  |  |  |  |  |  |  |  |  |  |
| DP3SR08709C0 |  | DT-P3 ; Ironmongery (Storage) | 36d | 2012-08-30 | 2012-10-11 | DP3SR08107C0 |  |  |  |  | 66.5d | 48d | IRONMONGERY [1340 h]; IRONMONGERY [134 no]; Cost |  |  | DP3SR08709C0 | DT | C | P3 | SR | DO | 087 | 09 | BILL 5 | B05 | S1 | IM | R00 | ACF06 | 087 |  |  |  |  |  |  |  |  |  |  |  |  | 322 | 951 |  |  | 08 |
| DP3SR01006C0 |  | DT-P3 ; 2nd, Ceiling Inspection by Consultants (Storage) | 6d | 2012-09-13 | 2012-09-20 | DP3SR21115C0, DP3SR23009C0, DP3SR23015C0, DP3SR27002C0, DP3SR09501C0, DP3SR21113C0, DP3SR23019C0, DP3SR26003C0, DP3SR26017C0, DP3SR27030C0 |  |  |  |  | 24.5d | 6d | Labor General [1.2 h]; Cost |  |  | DP3SR01006C0 | DT | C | P3 | SR | ME | 010 | 06 | BILL 5 | B05 | S1 | CI | R00 | ACF07 | 010 |  |  |  |  |  | 2n | MEP |  |  |  |  |  |  |  |  |  |  |
| DP3SR09503C0 |  | DT-P3 ; Ceiling closure - ACT/Gypsum (Storage) | 30d | 2012-09-27 | 2012-11-04 | DAFOA09505C1 FF, DP3SR01006C0, DP3SR21115C0, DP3SR26005C0, DP3SR27001C0, DP3SR27002C0, DP3SR06101C0, DP3SR09701C0, DP3SR23021C0, DP3SR26053C0, DP3SR26007C0 |  |  |  |  | 18.5d | 0d | ASSORTED CEILING FINISH [2336.39 h]; CEILING GYPSUM [323.69 h]; ASSORTED CEILING FINISH [3799 m2]; CEILING GYPSUM [987 m2]; Cost |  |  | DP3SR09503C0 | DT | C | P3 | SR | CE | 095 | 03 | BILL 5 | B05 | S1 | 02 | R00 | ACF06 | 095 |  |  |  |  |  |  |  |  |  |  |  |  | 324 | 953 |  |  |  |
| DP3SR11001C0 |  | DT-P3 ; Wall Protection (WP, CG, WG, FCG) (Storage) | 24d | 2012-09-27 | 2012-10-25 | DP3SR09701C0, DP3SR09903C0 SS |  |  |  |  | 54.5d | 36d | FF&E [3327 h]; Cost |  |  | DP3SR11001C0 | DT | C | P3 | SR | WF | 110 | 01 | BILL 5 | B05 | S1 | 03 | R00 | ACF08 | b |  |  |  |  |  |  |  |  |  |  |  |  | 326 | 1001 |  |  |  |
| DP3SR09907C0 |  | DT-P3 ; Ceiling Final paint (Storage) | 18d | 2012-11-04 | 2012-11-26 | DP3SR09601C0, DP3SR09905C0, DP3SR09503C0 |  |  |  |  | 30.5d | 12d | ASSORTED CEILING FINISH [223 h]; Cost |  |  | DP3SR09907C0 | DT | C | P3 | SR | PA | 099 | 07 | BILL 5 | B05 | S1 | 02 | R00 | ACF06 | 099 |  |  |  |  |  |  |  |  |  |  |  |  | 331 | 959 |  |  |  |
| DP3SR22027C0 |  | DT-P3 ; Final Fix, Inst of All drain (Storage) | 18d | 2012-11-04 | 2012-11-26 | DP3SR09305C0, DP3SR09503C0 |  |  |  |  | 18.5d | 0d | PLUMBING [1173.6 h]; Cost |  |  | DP3SR22027C0 | DT | C | P3 | SR | ME | 220 | 27 | BILL 5 | B05 | S1 | FF | R00 | ACF07 | 220 |  |  |  |  |  | FF | MEP |  |  |  |  |  |  |  |  |  |  |
| DP3SR26019C0 |  | DT-P3 ; Final Fix, Inst of Switch/Sockets (Storage) | 18d | 2012-11-04 | 2012-11-26 | DP3SR09901C0, DP3SR09503C0 |  |  |  |  | 18.5d | 0d | ELECTRICAL [610.8 h]; Cost |  |  | DP3SR26019C0 | DT | C | P3 | SR | ME | 260 | 19 | BILL 5 | B05 | S1 | FF | R00 | ACF07 | 260 |  |  |  |  |  | FF | MEP |  |  |  |  |  |  |  |  |  |  |

| ID | WBS | Activity | Duration | Start | Finish | Predecessors | Complete | Remaining | Planned start | Planned finish | Total float | Free float | Resources | Cost | Actual cost | change id | CCAD BUILDING(SET) | CCAD PHASE(SET) | CCAD FLOOR(SET) | CCAD ZONE(SET) | CCAD WORK(SET) | CCAD SECTION(SET) | CCAD SERIAL No.(SET) | CCAD CBS(SET) | CCAD BILL(SET) | CCAD HANDOVER(SET) | CCAD TAG(SET) | CCAD REV(SET) | CCADACF (SET) | CCAD SSCF | Change Order # | NEW ACTIVITY ID | RENZ % COMPLETE | P_811 | P_711 | CCAD CSA | Act Selector % | July2011 Target% Complete | CCAD SUB ZONE MEP(SET) | CCAD MEQ | user_number8 | user_integer1 | user_integer2 | user_number7 | CCAD DIVISION(SET) | IDDD |
| --- | --- | --- | --- | --- | --- | --- | --- | --- | --- | --- | --- | --- | --- | --- | --- | --- | --- | --- | --- | --- | --- | --- | --- | --- | --- | --- | --- | --- | --- | --- | --- | --- | --- | --- | --- | --- | --- | --- | --- | --- | --- | --- | --- | --- | --- | --- |
|  | 10 | **Precommissioning Tesing & snagging (Storage / Crawl Space)** |  | 2012-11-26 | 2013-01-10 |  |  |  |  |  |  |  |  |  |  |  |  |  |  |  |  |  |  |  |  |  |  |  |  |  |  |  |  |  |  |  |  |  |  |  |  |  |  |  |  |  |
| DP3TS01805C0 |  | DT-P3 ; MEP de-snag, FIREM sign-off | 12d | 2012-11-26 | 2012-12-11 | DP3SR22021C0, DP3SR40303C0, DP3SR22027C0, DP3SR26015C0, DP3SR26019C0 |  |  |  |  | 18.5d | 0d | TESTING & COMMISSIONING [1020 h]; Cost |  |  | DP3TS01801C0 | DT | C | P3 | TS | SC | 018 | 01 | BILL 5 | B05 | S1 | 01 | R00 | ACF07 | 018 |  |  |  |  |  |  |  |  |  |  |  |  |  |  |  |  |
| DP3TS01808C0 |  | DT-P3 ; Touch-up & Clean / JV inspection /CIR /De-snag | 18d | 2012-12-11 | 2013-01-02 | DP3CO04401C0, DP3SR06101C0, DP3SR08709C0, DP3SR09305C0, DP3SR09601C0, DP3SR09701C0, DP3SR09903C0, DP3SR09907C0, DP3SR11001C0, DP3SR11071C0, DP3SR40305C0, DP3TS01805C0, DP3SR05501C0, DP3SR09503C0 |  |  |  |  | 18.5d | 0d | TESTING & COMMISSIONING [170 h]; Cost |  |  | DP3TS01802C0 | DT | C | P3 | TS | SC | 018 | 02 | BILL 5 | B05 | S1 | 02 | R00 | ACF07 | 018 |  |  |  |  |  |  |  |  |  |  |  |  |  |  |  |  |
| DP3TS01811C0 |  | DT-P3 ; Consultant's final de-snag inspection | 7d | 2013-01-02 | 2013-01-10 | DP3TS01808C0, DP3TS01809C0 |  |  |  |  | 18.5d | 4.4d | Labor General [1 h]; Cost |  |  | DP3TS01803C0 | DT | C | P3 | TS | SC | 018 | 03 | BILL 5 | B05 | S1 | 03 | R00 | ACF07 | 018 |  |  |  |  |  |  |  |  |  |  |  |  |  |  |  |  |
|  | 07 | **TR Room** |  | 2011-05-15 | 2012-09-12 |  |  |  |  |  |  |  |  |  |  |  |  |  |  |  |  |  |  |  |  |  |  |  |  |  |  |  |  |  |  |  |  |  |  |  |  |  |  |  |  |  |
| DP3TR09201C0 |  | DT-P3 ; Metal Studs (TR RM) | 6d | 2011-05-15 A | 2011-08-30 A | DP3PA09201C0 SS | 100% |  | 2011-07-24 | 2011-07-31 |  |  | PARTITIONS [606 h]; PARTITIONS - Metal Studs [89 m]; Cost |  |  | DP3TR09201C0 | DT | C | P3 | TR | PT | 092 | 01 | BILL 5 | B05 | S1 | 1F | R00 | ACF06 | 092 | 313 | 885 | 30 | 100 | 34 | GP | PMS |  |  |  |  |  |  |  |  |  |
| DP3TR26009C0 |  | DT-P3 ; 2nd Fix, Inst of Equipment (DB, TR, SG,BUS) (TR RM) | 60d | 2011-06-08 A | 2012-04-18 | DP3TR09201C0 SS+6d, DP3TR09205C0 | 35% | 39d | 2011-09-10 | 2011-11-22 | 72.1d | 45d | ELECTRICAL [14310 h]; Cost [3256347 AED] | 3,256,347.19 | 1,139,721.52 | DP3TR26009C0 | DT | C | P3 | TR | ME | 260 | 09 | BILL 5 | B05 | S1 | 2F | R00 | ACF04 | 260 |  |  |  |  |  | MEP |  | 35 | 2n | E |  |  |  |  |  |  |
| DP3TR09203C0 |  | DT-P3 ; Partitions 1st face (TR RM) | 24d | 2011-06-29 A | 2011-08-30 A | DP3TR09201C0 SS+12d | 100% |  | 2011-06-29 | 2011-07-27 |  |  | PARTITIONS [467 h]; PARTITIONS [89 m]; Cost |  |  | DP3TR09203C0 | DT | C | P3 | TR | PT | 092 | 03 | BILL 5 | B05 | S1 | 2F | R00 | ACF06 | 092 | 314 | 886 |  | 100 | 11 | GP | P1F |  |  |  |  |  |  |  |  |  |
| DP3TR23013C0 |  | DT-P3 ; 2nd Fix, Insulation of CHW pipe & Duct (TR RM) | 60d | 2011-08-02 A | 2012-04-15 | DP3TR23011C0 SS | 40% | 36d | 2012-01-29 | 2012-04-09 | 45.1d | 12d | MECHANICAL [5311.2 h]; Cost [286617 AED] | 286,617.06 | 114,646.82 | DP3TR23013C0 | DT | C | P3 | TR | ME | 230 | 13 | BILL 5 | B05 | S1 | 2F | R00 | ACF07 | 230 |  |  |  | 30 | 0 | MEP |  |  | 2n |  | 0 | 0 | 0 | 0 |  |  |
| DP3TR23009C0 |  | DT-P3 ; 2nd Fix, Inst of VAV'S CHW connection (TR RM) | 60d | 2011-08-10 A | 2012-04-29 | DP3TR09201C0 SS+6d, DP3TR09205C0 | 20% | 48d | 2012-01-08 | 2012-03-19 | 33.1d | 0d | MECHANICAL [1684.8 h]; Cost [91006.1 AED] | 91,006.06 | 18,201.21 | DP3TR23009C0 | DT | C | P3 | TR | ME | 230 | 09 | BILL 5 | B05 | S1 | 2F | R00 | ACF07 | 230 |  |  |  | 20 | 0 | MEP |  |  | 2n |  |  |  |  |  |  |  |
| DP3TR23011C0 |  | DT-P3 ; 2nd Fix, Inst of VCD's/FD's (TR RM) | 60d | 2011-08-10 A | 2012-04-22 | DP3TR09201C0 SS+6d, DP3TR09205C0 | 30% | 42d | 2012-01-08 | 2012-03-19 | 39.1d | 0d | MECHANICAL [4312.8 h]; Cost [232964 AED] | 232,964.23 | 69,889.27 | DP3TR23011C0 | DT | C | P3 | TR | ME | 230 | 11 | BILL 5 | B05 | S1 | 2F | R00 | ACF07 | 230 |  |  |  | 30 | 0 | MEP |  |  | 2n |  |  |  |  |  |  |  |
| DP3TR08101C0 |  | DT-P3 ; Door Frames (TR RM) | 0d | 2011-10-15 | 2011-10-15 | DP3TR09201C0, GNHE08101C0 |  |  |  |  | 136d | 114.9d | Cost |  |  | DP3TR08101C0 | DT | C | P3 | TR | DO | 081 | 01 | BILL 5 | B05 | S1 | DR | R00 | ACF06 | 081 | 316 | 20001090 |  |  |  |  |  |  |  |  |  |  |  |  | 08 |  |
| DP3TR26026C0 |  | DT-P3 ; 2nd Fix, Conduit (TR RM) | 30d | 2011-10-15 | 2011-11-21 | DP3TR09201C0 SS+6d |  |  |  |  | 64d | 0d | ELECTRICAL [824.4 h]; Cost |  |  | DP3TR26026C0 | DT | C | P3 | TR | ME | 260 | 26 | BILL 5 | B05 | S1 | 2F | R00 | ACF07 | 260 |  |  |  |  |  | MEP |  |  | 2n |  |  |  |  |  |  |  |
| DP3TR01005C0 |  | DT-P3 ; 2nd, Wall Inspection by Consultant (TR RM) | 12d | 2011-11-22 | 2011-12-07 | DP3TR26026C0 |  |  |  |  | 64d | 42.9d | Labor General [1.2 h]; Cost |  |  | DP3TR01005C0 | DT | C | P3 | TR | ME | 010 | 05 | BILL 5 | B05 | S1 | WI | R00 | ACF07 | 010 |  |  |  |  |  | MEP |  |  | 2n |  |  |  |  |  |  |  |
| DP3TR09205C0 |  | DT-P3 ; Partitions Closing (TR RM) | 30d | 2012-01-28 | 2012-03-04 | DAFOA09206C1 FF, DP3TR01005C0, DP3TR09201C0, DP3TR09203C0, DP3TR08101C0 FF, DP3PA09205C0 SS |  |  |  |  | 21.1d | 0d | PARTITIONS [597 h]; PARTITIONS [89 m]; Cost |  |  | DP3TR09205C0 | DT | C | P3 | TR | PT | 092 | 05 | BILL 5 | B05 | S1 | FF | R00 | ACF06 | 092 | 315 | 887 |  |  |  | GP | P2F |  |  |  |  |  |  |  |  |  |
| DP3TR09901C0 |  | DT-P3 ; Wall Prime & 1st coat (TR RM) | 18d | 2012-03-04 | 2012-03-25 | DP3CO04003C0, DP3TR09205C0 |  |  |  |  | 21.1d | 0d | Labor General [2 h]; Cost |  |  | DP3TR09901C0 | DT | C | P3 | TR | PA | 099 | 01 | BILL 5 | B05 | S1 | 01 | R00 | ACF06 | 099 | 360 | 20001110 |  |  |  |  |  |  |  |  |  |  |  |  |  |  |
| DP3TR26005C0 |  | DT-P3 ; 2nd Fix, Wiring for Power/Lighting/Emergency (TR RM) | 30d | 2012-03-04 | 2012-04-08 | DP3TR09201C0 SS+6d, DP3TR09205C0, DP3TR26026C0 |  |  |  |  | 63.1d | 42d | ELECTRICAL [436.8 h]; Cost |  |  | DP3TR26005C0 | DT | C | P3 | TR | ME | 260 | 05 | BILL 5 | B05 | S1 | 2F | R00 | ACF07 | 260 |  |  |  |  |  | MEP |  |  | 2n |  |  |  |  |  |  |  |
| DP3TR26007C0 |  | DT-P3 ; 2nd Fix, Cable Pulling (TR RM) | 30d | 2012-03-04 | 2012-04-08 | DP3TR09201C0 SS+6d, DP3TR09205C0 |  |  |  |  | 51.1d | 18d | ELECTRICAL [6634.8 h]; Cost |  |  | DP3TR26007C0 | DT | C | P3 | TR | ME | 260 | 07 | BILL 5 | B05 | S1 | 2F | R00 | ACF07 | 260 |  |  |  |  |  | MEP |  |  | 2n |  |  |  |  |  |  |  |
| DP3TR26027C0 |  | DT-P3 ; 2nd Fix, Wiring / Cabling (TR RM) | 30d | 2012-03-04 | 2012-04-08 | DP3TR09201C0 SS+6d, DP3TR09205C0 |  |  |  |  | 63.1d | 42d | ELECTRICAL [436.8 h]; Cost |  |  | DP3TR26027C0 | DT | C | P3 | TR | ME | 260 | 27 | BILL 5 | B05 | S1 | 2F | R00 | ACF07 | 260 | 417 | 1318 |  |  |  | MEP |  |  | 2n |  |  |  |  |  |  |  |
| DP3TR09501C0 |  | DT-P3 ; Ceiling Grid and Service Tile (TR RM) | 24d | 2012-03-25 | 2012-04-22 | DP3TR09205C0 SS+15d, DP3TR09901C0 |  |  |  |  | 21.1d | 0d | Labor General [4.87 h]; Cost |  |  | DP3TR09501C0 | DT | C | P3 | TR | CE | 095 | 01 | BILL 5 | B05 | S1 | 01 | R00 | ACF06 | 095 | 336 | 1327 |  |  |  |  |  |  |  |  |  |  |  |  |  | 1 |
| DP3TR09903C0 |  | DT-P3 ; Wall - Final Paint (TR RM) | 18d | 2012-03-25 | 2012-04-15 | DP3TR09901C0 |  |  |  |  | 111.1d | 90d | Labor General [2 h]; Cost |  |  | DP3TR09903C0 | DT | C | P3 | TR | PA | 099 | 03 | BILL 5 | B05 | S1 | 02 | R00 | ACF06 | 099 | 361 | 1312 |  |  |  |  |  |  |  |  |  |  |  |  |  |  |
| DP3TR08105C0 |  | DT-P3 ; Doors (TR RM) | 0d | 2012-04-22 | 2012-04-22 | DP3TR08101C0, DP3TR09901C0, DP3TR09601C0 |  |  |  |  | 99.1d | 0d | Cost |  |  | DP3TR08105C0 | DT | C | P3 | TR | DO | 081 | 05 | BILL 5 | B05 | S1 | DR | R00 | ACF06 | 081 | 317 | 1325 |  |  |  |  |  |  |  |  |  |  |  |  | 08 |  |
| DP3TR08709C0 |  | DT-P3 ; Ironmongery (TR RM) | 6d | 2012-04-22 | 2012-04-29 | DP3TR08105C0 |  |  |  |  | 99.1d | 78d | Labor General [1 h]; Cost |  |  | DP3TR08709C0 | DT | C | P3 | TR | DO | 087 | 09 | BILL 5 | B05 | S1 | IM | R00 | ACF06 | 087 | 322 | 20001100 |  |  |  |  |  |  |  |  |  |  |  |  | 08 |  |
| DP3TR09601C0 |  | DT-P3 ; Floor Finishes (TR RM) | 0d | 2012-04-22 | 2012-04-22 | DP3TR09205C0, DP3TR09501C0 |  |  |  |  | 99.1d | 0d | Cost |  |  | DP3TR09601C0 | DT | C | P3 | TR | FF | 096 | 01 | BILL 5 | B05 | S1 | 01 | R00 | ACF06 | FF | 359 | 20001120 |  |  |  |  |  |  |  |  |  |  |  |  |  |  |
| DP3TR21115C0 |  | DT-P3 ; 2nd Fix, Gaseous Fire Suppression (TR RM) | 30d | 2012-04-22 | 2012-05-27 | DP3TR09501C0 |  |  |  |  | 21.1d | 0d | MECHANICAL [12560.4 h]; Cost |  |  | DP3TR21115C0 | DT | C | P3 | TR | ME | 211 | 15 | BILL 5 | B05 | S1 | 2F | R00 | ACF07 | 211 | 411 | 20001130 |  |  |  | MEP |  |  | 2n |  |  |  |  |  |  |  |
| DP3TR23023C0 |  | DT-P3 ; 2nd Fix, Flexible ducts (TR RM) | 30d | 2012-04-22 | 2012-05-27 | DP3TR09501C0 |  |  |  |  | 21.1d | 0d | MECHANICAL [274.8 h]; Cost |  |  | DP3TR23023C0 | DT | C | P3 | TR | ME | 230 | 23 | BILL 5 | B05 | S1 | 2F | R00 | ACF07 | 230 | 412 | 20001140 |  |  |  | MEP |  |  | 2n |  |  |  |  |  |  |  |
| DP3TR27020C0 |  | DT-P3 ; 2nd Fix, Inst of ELV Equipment (Panels) (TR RM) | 30d | 2012-04-22 | 2012-05-27 | DP3TR09201C0 SS+6d, DP3TR09205C0, DP3TR09501C0 |  |  |  |  | 45.1d | 0d | ELECTRICAL [1723.2 h]; Cost |  |  | DP3TR27020C0 | DT | C | P3 | TR | ME | 270 | 20 | BILL 5 | B05 | S1 | 2F | R00 | ACF04 | 270 |  |  |  |  |  | MEP |  |  | 2n | E |  |  |  |  |  |  |
| DP3TR01006C0 |  | DT-P3 ; 2nd, Ceiling Inspection by Consultants (TR RM) | 12d | 2012-04-29 | 2012-05-13 | DP3TR23009C0, DP3TR23011C0, DP3TR23013C0, DP3TR26007C0, DP3TR09501C0 |  |  |  |  | 33.1d | 12d | Labor General [1.2 h]; Cost |  |  | DP3TR01006C0 | DT | C | P3 | TR | ME | 010 | 06 | BILL 5 | B05 | S1 | CI | R00 | ACF07 | 010 |  |  |  |  |  | MEP |  |  | 2n |  |  |  |  |  |  |  |
| DP3TR27002C0 |  | DT-P3 ; 2nd Fix, Dressing of ELV panels (TR RM) | 18d | 2012-04-29 | 2012-05-20 | DP3TR09201C0 SS+6d, DP3TR09205C0, DP3TR27020C0 SS+6d |  |  |  |  | 45.1d | 18d | ELECTRICAL [421.2 h]; Cost |  |  | DP3TR27002C0 | DT | C | P3 | TR | ME | 270 | 02 | BILL 5 | B05 | S1 | 2F | R00 | ACF07 | 270 |  |  |  |  |  | MEP |  |  | 2n |  |  |  |  |  |  |  |
| DP3TR09503C0 |  | DT-P3 ; Ceiling closure (TR RM) | 12d | 2012-05-27 | 2012-06-10 | DP3TR01006C0, DP3TR21115C0, DP3TR26005C0, DP3TR26007C0, DP3TR26026C0, DP3TR26027C0, DP3TR23023C0 |  |  |  |  | 21.1d | 0d | Labor General [0.2 h]; Cost |  |  | DP3TR09503C0 | DT | C | P3 | TR | CE | 095 | 03 | BILL 5 | B05 | S1 | 02 | R00 | ACF06 | 095 | 337 | 20001080 |  |  |  |  |  |  |  |  |  |  |  |  |  |  |
| DP3TR09905C0 |  | DT-P3 ; Ceiling Prime & 1st coat (TR RM) | 30d | 2012-06-10 | 2012-07-16 | DP3TR09503C0 |  |  |  |  | 21.1d | 0d | Labor General [2 h]; Cost |  |  | DP3TR09905C0 | DT | C | P3 | TR | PA | 099 | 05 | BILL 5 | B05 | S1 | 01 | R00 | ACF06 | 099 | 362 | 1313 |  |  |  |  |  |  |  |  |  |  |  |  |  |  |
| DP3TR23003C0 |  | DT-P3 ; Final Fix, Inst of Grilles & Diffusers (TR RM) | 18d | 2012-06-10 | 2012-07-02 | DP3TR09503C0 |  |  |  |  | 27.1d | 0d | MECHANICAL [2560.8 h]; Cost |  |  | DP3TR23003C0 | DT | C | P3 | TR | ME | 230 | 03 | BILL 5 | B05 | S1 | FF | R00 | ACF07 | 230 |  |  |  |  |  | MEP |  |  | FF |  |  |  |  |  |  |  |
| DP3TR23074C0 |  | DT-P3 ; Final Fix, Grilles, panels & diffusers (TR RM) | 18d | 2012-06-10 | 2012-07-02 | DP3TR09503C0 |  |  |  |  | 27.1d | 0d | MECHANICAL [2560.8 h]; Cost |  |  | DP3TR23074C0 | DT | C | P3 | TR | ME | 230 | 74 | BILL 5 | B05 | S1 | FF | R00 | ACF07 | 230 | 419 | 20001160 |  |  |  | MEP |  |  | FF |  |  |  |  |  |  |  |
| DP3TR26013C0 |  | DT-P3 ; Final Fix, Termination & Gladding of Cables (TR RM) | 18d | 2012-06-10 | 2012-07-02 | DP3TR09503C0, DP3TR26009C0 |  |  |  |  | 27.1d | 0d | ELECTRICAL [368.4 h]; Cost |  |  | DP3TR26013C0 | DT | C | P3 | TR | ME | 260 | 13 | BILL 5 | B05 | S1 | FF | R00 | ACF07 | 260 |  |  |  |  |  | MEP |  |  | FF |  |  |  |  |  |  |  |
| DP3TR26015C0 |  | DT-P3 ; Final Fix, Inst of Ceiling rose (TR RM) | 18d | 2012-06-10 | 2012-07-02 | DP3TR09503C0 |  |  |  |  | 27.1d | 0d | ELECTRICAL [67.2 h]; Cost |  |  | DP3TR26015C0 | DT | C | P3 | TR | ME | 260 | 15 | BILL 5 | B05 | S1 | FF | R00 | ACF07 | 260 |  |  |  |  |  | MEP |  |  | FF |  |  |  |  |  |  |  |
| DP3TR26017C0 |  | DT-P3 ; Final Fix, Inst of Switch/Sockets (TR RM) | 12d | 2012-06-10 | 2012-06-25 | DP3TR09901C0, DP3TR09503C0 |  |  |  |  | 33.1d | 6d | ELECTRICAL [610.8 h]; Cost |  |  | DP3TR26017C0 | DT | C | P3 | TR | ME | 260 | 17 | BILL 5 | B05 | S1 | FF | R00 | ACF07 | 260 |  |  |  |  |  | MEP |  |  | FF |  |  |  |  |  |  |  |
| DP3TR26019C0 |  | DT-P3 ; Final Fix, Inst of Light fittings (TR RM) | 18d | 2012-06-10 | 2012-07-02 | DP3TR09503C0 |  |  |  |  | 27.1d | 0d | ELECTRICAL [6626.4 h]; Cost |  |  | DP3TR26019C0 | DT | C | P3 | TR | ME | 260 | 19 | BILL 5 | B05 | S1 | FF | R00 | ACF07 | 260 |  |  |  |  |  | MEP |  |  | FF |  |  |  |  |  |  |  |
| DP3TR26076C0 |  | DT-P3 ; Final Fix, Lighting fittings (TR RM) | 18d | 2012-06-10 | 2012-07-02 | DP3TR09503C0 |  |  |  |  | 27.1d | 0d | ELECTRICAL [6626.4 h]; Cost |  |  | DP3TR26076C0 | DT | C | P3 | TR | ME | 260 | 76 | BILL 5 | B05 | S1 | FF | R00 | ACF07 | 260 | 420 | 20001170 |  |  |  | MEP |  |  | FF |  |  |  |  |  |  |  |
| DP3TR27030C0 |  | DT-P3 ; Final Fix, Inst of ELV device (Detector/Speaker) (TR RM) | 18d | 2012-06-10 | 2012-07-02 | DP3TR09503C0, DP3TR27002C0 |  |  |  |  | 27.1d | 0d | ELECTRICAL [2152.8 h]; Cost |  |  | DP3TR27030C0 | DT | C | P3 | TR | ME | 270 | 30 | BILL 5 | B05 | S1 | FF | R00 | ACF07 | 270 |  |  |  |  |  | MEP |  |  | FF |  |  |  |  |  |  |  |
| DP3TR01802C0 |  | DT-P3 ; MEP de-snag, FIREM sign-off | 18d | 2012-07-02 | 2012-07-23 | DP3TR26017C0, DP3TR23074C0, DP3TR23003C0, DP3TR26076C0, DP3TR26013C0, DP3TR26015C0, DP3TR26019C0, DP3TR27030C0 |  |  |  |  | 27.1d | 6d | TESTING & COMMISSIONING [510 h]; Cost |  |  | CP3TR01851C0 | DT | C | P3 | TR | SC | 018 | 53 | BILL 5 | B05 | S1 | 01 | R00 | ACF07 | 018 | 396 |  |  |  |  |  |  |  |  |  |  |  |  |  |  |  |
| DP3TR09907C0 |  | DT-P3 ; Ceiling - Final paint (TR RM) | 12d | 2012-07-16 | 2012-07-30 | DP3TR09905C0 |  |  |  |  | 21.1d | 0d | Labor General [2 h]; Cost |  |  | DP3TR09907C0 | DT | C | P3 | TR | PA | 099 | 07 | BILL 5 | B05 | S1 | 02 | R00 | ACF06 | 099 | 363 | 1314 |  |  |  |  |  |  |  |  |  |  |  |  |  |  |
| DP3TR01801C0 |  | DT-P3 ; Touch-up & Clean / JV inspection /CIR /De-snag | 24d | 2012-07-30 | 2012-08-29 | DP3TR01802C0, DP3TR08709C0, DP3TR09601C0, DP3TR09903C0, DP3TR09907C0 |  |  |  |  | 21.1d | 0d | TESTING & COMMISSIONING [85 h]; Cost |  |  | DP3TR01851C0 | DT | C | P3 | TR | SC | 018 | 51 | BILL 5 | B05 | S1 | 02 | R00 | ACF07 | 018 | 396 |  |  |  |  |  |  |  |  |  |  |  |  |  |  |  |
| DP3TR01803C0 |  | DT-P3 ; Consultant's final de-snag inspection | 12d | 2012-08-29 | 2012-09-12 | DP3TR01801C0 |  |  |  |  | 21.1d | 2.1d | Labor General [1 h]; Cost |  |  | CP3TS01803C0 | DT | C | P3 | TR | SC | 018 | 03 | BILL 5 | B05 | S1 | 03 | R00 | ACF07 | 018 |  |  |  |  |  |  |  |  |  |  |  |  |  |  |  |  |

| ID | WBS | Activity | Type | Duration | Start | Finish | Predecessors | Complete | Remaining | Planned start | Planned finish | Total float | Free float | Resources | Actual Cost | change id | RENZ % COMPLETE | Phase | CCAD BUILDING(SET) | CCAD PHASE(SET) | CCAD FLOOR(SET) | CCAD ZONE(SET) | CCAD WORK(SET) | CCAD SECTION(SET) | CCAD SERIAL No.(SET) | Area/ Department | Grids | Are | Weight & Nos | Process | Levels | CCAD CBS(SET) | CCAD BILL(SET) | CCAD HANDOVER(SET) | CCAD TAG(SET) | CCAD REV(SET) | CCADACF (SET) | CCAD CSA | CCAD SSCF | N_% | Claimed This Month | P_811 | P_711 | Change Order # | NEW ACTIVITY ID | CCAD DIVISION(SET) | user_number8 | user_integer1 | user_integer2 | user_number7 |
| --- | --- | --- | --- | --- | --- | --- | --- | --- | --- | --- | --- | --- | --- | --- | --- | --- | --- | --- | --- | --- | --- | --- | --- | --- | --- | --- | --- | --- | --- | --- | --- | --- | --- | --- | --- | --- | --- | --- | --- | --- | --- | --- | --- | --- | --- | --- | --- | --- | --- | --- |
|  | P2 | **Level Podium 2** |  |  | 2010-07-26 | 2013-01-13 |  |  |  |  |  |  |  |  |  |  |  |  |  |  |  |  |  |  |  |  |  |  |  |  |  |  |  |  |  |  |  |  |  |  |  |  |  |  |  |  |  |  |  |  |
|  | 01 | **Structure & Envelopment** |  |  | 2010-07-26 | 2012-10-31 |  |  |  |  |  |  |  |  |  |  |  |  |  |  |  |  |  |  |  |  |  |  |  |  |  |  |  |  |  |  |  |  |  |  |  |  |  |  |  |  |  |  |  |  |
| DP2S205101C0 |  | DT-P2 ; Erection of Structural Steel of POD 2 Floor (Zone S2) |  | 23.15d | 2010-07-26 A | 2010-10-23 A | DP3S205101C0 FF, DP3S205103C0 SS+8d | 100% |  | 2010-08-10 | 2010-09-06 |  |  | STRUCTURAL STEEL [8099 h]; STRUCTURAL STEEL [317 T(Fe)]; Cost | 4012589 | DP2S205101C0 | 100 | Z2 | DT | C | P2 | S2 | ST | 051 | 01 | DT | P03 | O | A3 | EREC | 1FLR | BILL 5 | B05 | S1 | 01 | R00 | ACF03 | ST | 051 |  |  |  |  |  |  |  |  |  |  |  |
| DP2S305101C0 |  | DT-P2 ; Erection of Structural Steel of POD 2 Floor (Zone S3) |  | 18.51d | 2010-07-26 A | 2010-09-12 A | DP3S305103C0 SS+6d | 100% |  | 2010-08-19 | 2010-09-09 |  |  | STRUCTURAL STEEL [2199 h]; STRUCTURAL STEEL [86 T(Fe)]; Cost | 4420846 | DP2S305101C0 | 100 | Z2 | DT | C | P2 | S3 | ST | 051 | 01 | DT | P03 | O | A3 | EREC | 1FLR | BILL 5 | B05 | S1 | 01 | R00 | ACF03 | ST | 051 |  |  |  |  |  |  |  |  |  |  |  |
| DP2S205103C0 |  | DT-P2 ; Alignment & welding of POD 2 Floor (Zone S2) |  | 22.04d | 2010-07-27 A | 2010-10-25 A | DP2S205101C0 SS+6d, DP2S205101C0 FF, DP3S205103C0 FF | 100% |  | 2010-08-17 | 2010-09-13 |  |  | STRUCTURAL STEEL [1072 h]; Cost | 445843 | DP2S205103C0 | 100 | Z2 | DT | C | P2 | S2 | ST | 051 | 03 | DT | P03 | O | A3 | EREC | 1FLR | BILL 5 | B05 | S1 | 02 | R00 | ACF03 | ST | 051 |  |  |  |  |  |  |  |  |  |  |  |
| DP2S305103C0 |  | DT-P2 ; Alignment & welding of POD 2 Floor (Zone S3) |  | 17.83d | 2010-07-27 A | 2010-10-30 A | DP2S305101C0 SS+6d, DP3S305103C0 FF | 100% |  | 2010-08-26 | 2010-09-16 |  |  | STRUCTURAL STEEL [1176 h]; Cost | 491205 | DP2S305103C0 | 100 | Z2 | DT | C | P2 | S3 | ST | 051 | 03 | DT | P03 | O | A3 | EREC | 1FLR | BILL 5 | B05 | S1 | 02 | R00 | ACF03 | ST | 051 |  |  |  |  |  |  |  |  |  |  |  |
| DP2SA03301C0 |  | DT-P2 ; Corewall concrete (Zone SA) |  | 11.88d | 2010-07-29 A | 2010-08-05 A | DP3SA03301C0 | 100% |  | 2010-07-17 | 2010-07-29 |  |  | CONCRETE [9184 h]; CONCRETE [231 m3]; Cost |  | DP2SA03301C0 | 100 |  | DT | C | P2 | SA | CT | 033 | 01 |  |  |  |  |  |  | BILL 5 | B05 | S1 | 04 | R00 | ACF03 |  | 033 |  |  |  |  |  |  |  |  |  |  |  |
| DP2S105101C0 |  | DT-P2 ; Erection of Structural Steel of POD 2 Floor (Zone S1) |  | 23.12d | 2010-08-03 A | 2010-10-22 A | DP3S105103C0 SS+7d | 100% |  | 2010-08-11 | 2010-09-07 |  |  | STRUCTURAL STEEL [3946 h]; STRUCTURAL STEEL [154 T(Fe)]; Cost | 3231067 | DP2S105101C0 | 100 | Z2 | DT | C | P2 | S1 | ST | 051 | 01 | DT | P03 | O | A3 | EREC | 1FLR | BILL 5 | B05 | S1 | 01 | R00 | ACF03 | ST | 051 |  |  |  |  |  |  |  |  |  |  |  |
| DP2S105103C0 |  | DT-P2 ; Alignment & welding of POD 2 Floor (Zone S1) |  | 22.05d | 2010-08-05 A | 2010-10-25 A | DP2S105101C0 SS+4d, DP2S105101C0 FF, DP3S105103C0 FF | 100% |  | 2010-08-16 | 2010-09-12 |  |  | STRUCTURAL STEEL [864 h]; Cost | 359007 | DP2S105103C0 | 100 | Z2 | DT | C | P2 | S1 | ST | 051 | 03 | DT | P03 | O | A3 | EREC | 1FLR | BILL 5 | B05 | S1 | 02 | R00 | ACF03 | ST | 051 |  |  |  |  |  |  |  |  |  |  |  |
| DP2SB03303C0 |  | DT-P2 ; Corewall concrete (Zone SB) |  | 8d | 2010-08-17 A | 2010-08-22 A | DP3SB03303C0 | 100% |  | 2010-08-01 | 2010-08-10 |  |  | CONCRETE [9184 h]; CONCRETE [231 m3]; Cost |  | DP2SB03303C0 | 100 |  | DT | C | P2 | SB | CT | 033 | 03 |  |  |  |  |  |  | BILL 5 | B05 | S1 | 04 | R00 | ACF03 |  | 033 |  |  |  |  |  |  |  |  |  |  |  |
| DP2S105305C0 |  | DT-P2 ; Metal Decking POD 2 FLR (Zone S1) |  | 15.02d | 2010-09-12 A | 2010-10-28 A | DP1S105101C0, DP2S105103C0, OGNMU00005S0 | 100% |  | 2010-09-14 | 2010-10-02 |  |  | METAL DECKING [2504 h]; METAL DECKING [3166 m2]; Cost | 373605 | DP2S105305C0 | 100 | Z2 | DT | C | P2 | S1 | ST | 053 | 05 | DT | P03 | O | A3 | MDEC | 1FLR | BILL 5 | B05 | S1 | 03 | R00 | ACF03 | ST | 053 |  |  |  |  |  |  |  |  |  |  |  |
| DP2S205305C0 |  | DT-P2 ; Metal Decking POD 2 FLR (Zone S2) |  | 20d | 2010-09-21 A | 2010-10-30 A | DP1S205101C0 SS+5d, DP2S205103C0 SS+16d | 100% |  | 2010-09-05 | 2010-09-28 |  |  | METAL DECKING [3104 h]; METAL DECKING [3932 m2]; Cost | 463971 | DP2S205305C0 | 100 | Z2 | DT | C | P2 | S2 | ST | 053 | 05 | DT | P03 | O | A3 | MDEC | 1FLR | BILL 5 | B05 | S1 | 03 | R00 | ACF03 | ST | 053 |  |  |  |  |  |  |  |  |  |  |  |
| DP2S203399C0 |  | DT-P2 ; Concrete on Metal Decking POD 2 FLR (Zone S2) |  | 10d | 2010-09-29 A | 2010-12-15 A | DP2S205305C0 | 100% |  | 2010-09-29 | 2010-10-10 |  |  | CONCRETE [19440 h]; CONCRETE [489 m3]; Cost |  | DP2S205335C0 | 100 | Z2 | DT | C | P2 | S2 | CT | 033 | 99 | DT | P03 | O | A3 | MDEC | 1FLR | BILL 5 | B05 | S1 | 08 | R00 | ACF03 |  | 033 |  |  |  |  |  |  |  |  |  |  |  |
| DP2S305305C0 |  | DT-P2 ; Metal Decking POD 2 FLR (Zone S3) |  | 20.01d | 2010-10-03 A | 2010-10-31 A | DP1S305101C0, DP2S305103C0 | 100% |  | 2010-09-18 | 2010-10-11 |  |  | METAL DECKING [3424 h]; METAL DECKING [4332 m2]; Cost | 511178 | DP2S305305C0 | 100 | Z2 | DT | C | P2 | S3 | ST | 053 | 05 | DT | P03 | O | A3 | MDEC | 1FLR | BILL 5 | B05 | S1 | 03 | R00 | ACF03 | ST | 053 |  |  |  |  |  |  |  |  |  |  |  |
| DP2S103399C0 |  | DT-P2 ; Concrete on Metal Decking POD 2 FLR (Zone S1) |  | 10d | 2010-10-21 A | 2010-12-15 A | DP2S105305C0 | 100% |  | 2010-11-01 | 2010-11-13 |  |  | CONCRETE [13048 h]; CONCRETE [328 m3]; Cost |  | DP2S105335C0 | 100 | Z2 | DT | C | P2 | S1 | CT | 033 | 99 | DT | P03 | O | A3 | MDEC | 1FLR | BILL 5 | B05 | S1 | 08 | R00 | ACF03 |  | 033 |  |  |  |  |  |  |  |  |  |  |  |
| DP2CO03327C0 |  | DT-P2 ; Loading Dock Concrete (Common Zone) |  | 24d | 2010-11-15 A | 2011-01-07 A | DP2S103399C0 | 100% |  | 2011-01-04 | 2011-02-01 |  |  | CONCRETE [1032 h]; CONCRETE [26 m3]; Cost |  |  | 100 |  | DT | C | P2 | CO | CT | 033 | 27 |  |  |  |  |  |  | BILL 5 | B05 | S1 | 10 | R00 | ACF03 |  | 033 |  |  |  |  |  |  |  |  |  |  |  |
| DP2S303399C0 |  | DT-P2 ; Concrete on Metal Decking POD 2 FLR (Zone S3) |  | 10d | 2010-11-23 A | 2011-01-05 A | DP2S305305C0 | 100% |  | 2010-11-09 | 2010-11-24 |  |  | CONCRETE [21352 h]; CONCRETE [537 m3]; Cost |  | DP2S305335C0 | 100 | Z2 | DT | C | P2 | S3 | CT | 033 | 99 | DT | P03 | O | A3 | MDEC | 1FLR | BILL 5 | B05 | S1 | 08 | R00 | ACF03 |  | 033 |  |  |  |  |  |  |  |  |  |  |  |
| DP2S107807C0 |  | DT-P2 ; Cementitious Fire Proofing works POD 2 FLR (Zone S1) |  | 9.88d | 2010-12-25 A | 2011-01-24 A | DP1S103399C0 | 100% |  | 2011-01-03 | 2011-01-13 |  |  | CEMENTITIOUS FIREPROOFING [1721 h]; CEMENTITIOUS FIREPROOFING [3441 m2]; Cost | 324059.75 | DP2S107807C0 | 100 | Z2 | DT | C | P2 | S1 | ST | 078 | 07 | DT | P03 | O | A3 | FIRE | 1FLR | BILL 5 | B05 | S1 | 04 | R00 | ACF03 | ST | 078 |  |  |  |  |  |  |  |  |  |  |  |
| DP2S207807C0 |  | DT-P2 ; Cementitious Fire Proofing works POD 2 FLR (Zone S2) |  | 12d | 2010-12-25 A | 2011-01-28 A | DP1S203399C0 | 100% |  | 2011-01-04 | 2011-01-17 |  |  | CEMENTITIOUS FIREPROOFING [2137 h]; CEMENTITIOUS FIREPROOFING [4273 m2]; Cost | 402442.44 | DP2S207807C0 | 100 | Z2 | DT | C | P2 | S2 | ST | 078 | 07 | DT | P03 | O | A3 | FIRE | 1FLR | BILL 5 | B05 | S1 | 04 | R00 | ACF03 | ST | 078 |  |  |  |  |  |  |  |  |  |  |  |
| DP2S307807C0 |  | DT-P2 ; Cementitious Fire Proofing works POD 2 FLR (Zone S3) |  | 14d | 2011-01-10 A | 2011-02-01 A | DP1S303399C0 | 100% |  | 2011-01-04 | 2011-01-19 |  |  | CEMENTITIOUS FIREPROOFING [2354 h]; CEMENTITIOUS FIREPROOFING [4708 m2]; Cost | 443388.62 | DP2S307807C0 | 100 | Z2 | DT | C | P2 | S3 | ST | 078 | 07 | DT | P03 | O | A3 | FIRE | 1FLR | BILL 5 | B05 | S1 | 04 | R00 | ACF03 | ST | 078 |  |  |  |  |  |  |  |  |  |  |  |
| DP2CO04413C0 |  | DT-P2 ; M1 Bracket (Common Zone) |  | 12d | 2011-01-17 A | 2011-03-31 A | DP2CO03327C0 FF, DP2S107807C0, DP2S207807C0, DP2S307807C0 | 100% |  | 2011-02-09 | 2011-02-22 |  |  | FACADE METAL PANEL 1 [125.4 h]; Cost |  | DP2CO04413C0 | 100 |  | DT | C | P2 | CO | FA | 044 | 13 |  |  |  |  |  |  | BILL 5 | B05 | S1 | FM1 | R00 | ACF05 | FA | 044 | 100 |  |  |  |  |  |  |  |  |  |  |
| DP2CO04415C0 |  | DT-P2 ; M1 External Partition (Common Zone) |  | 24d | 2011-01-17 A | 2011-08-30 A | DP2CO03327C0, DP2CO04413C0, DP2GN01002C0 FF | 100% |  | 2011-03-17 | 2011-04-13 |  |  | PARTITIONS [338.73 m]; PARTITIONS [1687.1 h]; Cost |  | DP2CO04415C0 | 30 |  | DT | C | P2 | CO | FA | 044 | 15 |  |  |  |  |  |  | BILL 5 | B05 | S1 | FM1 | R00 | ACF05 | FA | 044 | 95 | 220955.15 | 100 | 95 |  |  |  |  |  |  |  |
| DP2CO04001C0 |  | DT-P2 ; Blockworks (Common Zone) |  | 36d | 2011-01-20 A | 2011-06-04 A | DP2S107807C0, DP2S207807C0, DP2S307807C0, OGNMU00001S0 | 100% |  | 2011-01-20 | 2011-03-02 |  |  | BLOCKWORKS [3714 h]; BLOCKWORKS [1061 m2]; Cost |  | DP2CO04001C0 | 90 |  | DT | C | P2 | CO | BL | 040 | 01 |  |  |  |  |  |  | BILL 5 | B05 | S1 | BL | R00 | ACF06 |  | 040 |  | 21250.37 |  |  | 73 | 73 | 04 |  |  |  |  |
| DP2CO04403C0 |  | DT-P2 ; C4 Bracket (Common Zone) |  | 30d | 2011-01-22 A | 2011-03-31 A | DP2S107807C0, DP2S207807C0, DP2S307807C0 | 100% |  | 2011-02-09 | 2011-03-15 |  |  | FACADE CURTAIN WALL 4 [337.4 h]; Cost |  | DP2CO04403C0 | 100 |  | DT | C | P2 | CO | FA | 044 | 03 |  |  |  |  |  |  | BILL 5 | B05 | S1 | FC4 | R00 | ACF05 | FA | 044 | 100 |  |  |  |  |  |  |  |  |  |  |
| DP2GN01002C0 |  | DT-P2 ; Temporary Enclosure | level of effort | 205.05d | 2011-04-03 A | 2012-10-31 | DP2KS09203C0 SS, DP2LO09203C0 SS, DP2PA09203C0 SS, DP2TR09203C0 SS |  | 328.75d | 2011-04-03 | 2011-12-07 | 136.25d | 0d | Labor General [1077.8 h]; Cost |  |  |  |  | DT | C | P2 | GEN | FA | GEN |  |  |  |  |  |  |  |  | B05 |  | TE | R00 | ACF05 | FA | 010 |  |  | 3.53 | 0 |  |  |  |  |  |  |  |
| DP2CO04405C0 |  | DT-P2 ; C4 Transom & Mullion (Common Zone) |  | 42d | 2011-04-05 A | 2011-07-19 A | DP2CO04403C0 | 100% |  | 2011-03-28 | 2011-05-16 |  |  | FACADE CURTAIN WALL 4 [1349.3 h]; Cost |  | DP2CO04405C0 | 90 |  | DT | C | P2 | CO | FA | 044 | 05 |  |  |  |  |  |  | BILL 5 | B05 | S1 | FC4 | R00 | ACF05 | FA | 044 | 99 | 68372.28 |  |  |  |  |  |  |  |  |  |
| DP2CO04003C0 |  | DT-P2 ; Plaster to Blockwork (Common Zone) |  | 35d | 2011-06-04 A | 2011-07-19 A | DP2CO04001C0 SS+24d | 100% |  | 2011-05-31 | 2011-07-11 |  |  | BLOCKWORKS [131 h]; Cost |  | DP2CO04003C0 |  |  | DT | C | P2 | CO | BL | 040 | 03 |  |  |  |  |  |  | BILL 5 | B05 | S1 | BL | R00 | ACF06 |  | 040 |  |  |  |  |  |  |  |  |  |  |  |
| DP2CO04407C0 |  | DT-P2 ; C4 Glazing (Common Zone) |  | 72d | 2011-07-04 A | 2011-10-09 | DP2CO04405C0, DP2GN01002C0 FF | 90% | 7.2d | 2011-07-31 | 2011-10-24 | 229.6d | 0d | FACADE CURTAIN WALL 4 [655 h]; FACADE CURTAIN WALL 4 [239 m2]; FACADE TOTAL QUANTITY m2 [239 m2]; Cost |  | DP2CO04407C0 |  |  | DT | C | P2 | CO | FA | 044 | 07 |  |  |  |  |  |  | BILL 5 | B05 | S1 | FC4 | R00 | ACF05 | FA | 044 |  |  | 40 | 10 |  |  |  | 0 | 0 | 0 | 0 |
| DP2CO04417C0 |  | DT-P2 ; M1 Metal Panel (Common Zone) |  | 42d | 2011-08-10 A | 2011-10-30 | DP2CO04415C0 | 40% | 25.2d | 2011-08-01 | 2011-09-21 | 239d | 0d | FACADE METAL PANEL 1 [2735.8 h]; FACADE METAL PANEL 1 [1000 m2]; FACADE TOTAL QUANTITY m2 [1000 m2]; Cost |  | DP2CO04417C0 |  |  | DT | C | P2 | CO | FA | 044 | 17 |  |  |  |  |  |  | BILL 5 | B05 | S1 | FM1 | R00 | ACF05 | FA | 044 |  |  | 10 | 0 |  |  |  | 0 | 0 | 0 | 0 |
| DP2CO04425C0 |  | DT-P2 ; S2 External Partition (Common Zone - to be S11) |  | 64d | 2011-09-10 A | 2012-10-31 | DP2CO04423C0, DP2GN01002C0 FF | 2% | 62.7d | 2012-05-22 | 2012-08-06 | 136.25d | 0d | PARTITIONS [16.77 m]; PARTITIONS [83.5 h]; Cost |  | DP2CO04425C0 | 5 |  | DT | C | P2 | CO | FA | 044 | 25 |  |  |  |  |  |  | BILL 5 | B05 | S1 | FS2 | R00 | ACF05 | FA | 044 | 95 |  |  |  |  |  |  |  |  |  |  |
| DP2CO04403C10 |  | DT-P2 ; C5 Bracket (Common Zone) |  | 36d | 2012-01-08 | 2012-02-20 | DP2S107807C0, DP2S207807C0, DP2S307807C0, PGLS403392C0 |  |  |  |  | 150.7d | 0d | FACADE CURTAIN WALL 5 [616.1 h]; Cost |  | DP2CO04403C0 |  |  | DT | C | P2 | CO | FA | 044 | 03 |  |  |  |  |  |  | BILL 5 | B05 | S1 | FC5 | R00 | ACF05 | FA | 044 |  |  |  |  |  |  |  |  |  |  |  |
| DP2CO04455C0 |  | DT-P2 ; M1 Inner Side of External Partition (Common Zone) |  | 48d | 2012-01-25 | 2012-03-21 | DP2CO04415C0, DP2PA09205C0 SS, DP2LO09205C0 SS, DP2KS09205C0 SS |  |  |  |  | 58d | 42d | FACADE METAL PANEL 1 [2348.8 h]; Cost |  | DP3CO04415C0 |  |  | DT | C | P2 | CO | FA | 044 | 15 |  |  |  |  |  |  | BILL 5 | B05 | S1 | FM1 | R00 | ACF05 | FA | 044 |  |  |  |  |  |  |  |  |  |  |  |
| DP2CO04401C0 |  | DT-P2 ; VE Vestibule (Common Zone) |  | 30d | 2012-02-11 | 2012-03-17 | DP2CO04415C0 FF, PGLS403392C0 FS+28d |  |  |  |  | 242.57d | 153.05d | Labor General [0.6 h]; Cost |  | DP3CO04403C0 |  |  | DT | C | P2 | CO | FA | 044 | 03 |  |  |  |  |  |  | BILL 5 | B05 | S1 | VE | R00 | ACF05 | FA | 044 |  |  |  |  |  |  |  |  |  |  |  |
| DP2CO04405C10 |  | DT-P2 ; C5 Transom & Mullion (Common Zone) |  | 48d | 2012-02-20 | 2012-04-16 | DP2CO04403C10 |  |  |  |  | 150.7d | 0d | FACADE CURTAIN WALL 5 [2462.7 h]; Cost |  | DP2CO04405C0 |  |  | DT | C | P2 | CO | FA | 044 | 05 |  |  |  |  |  |  | BILL 5 | B05 | S1 | FC5 | R00 | ACF05 | FA | 044 |  |  |  |  |  |  |  |  |  |  |  |
| DP2CO04407C10 |  | DT-P2 ; C5 Glazing (Common Zone) |  | 36d | 2012-04-16 | 2012-05-28 | DP2CO04405C10, DP2GN01002C0 FF |  |  |  |  | 162.7d | 12d | FACADE CURTAIN WALL 5 [1026.5 h]; Cost |  | DP2CO04407C0 |  |  | DT | C | P2 | CO | FA | 044 | 07 |  |  |  |  |  |  | BILL 5 | B05 | S1 | FC5 | R00 | ACF05 | FA | 044 |  |  |  |  |  |  |  |  |  |  |  |
| DP2CO04423C0 |  | DT-P2 ; S2 Bracket (Common Zone - to be S11) |  | 30d | 2012-07-11 | 2012-08-15 | DP2S107807C0, DP2S207807C0, DP2S307807C0, DP3CO04423C0 |  |  |  |  | 136.25d | 0d | FACADE NATURAL STONE PANEL [25.4 h]; Cost |  | DP2CO04423C0 |  |  | DT | C | P2 | CO | FA | 044 | 23 |  |  |  |  |  |  | BILL 5 | B05 | S1 | FS2 | R00 | ACF05 | FA | 044 | 50 |  |  |  |  |  |  |  |  |  |  |
| DP2CO04427C0 |  | DT-P2 ; S2 Stone Panel (Common Zone - to be S11) |  | 36d | 2012-09-17 | 2012-10-31 | DP2CO04425C0 SS, DP3CO04427C0 SS, DP2CO04425C0 FF, D04CO04437C0 FF |  |  |  |  | 136.25d | 0d | FACADE NATURAL STONE PANEL [451.9 h]; FACADE NATURAL STONE PANEL [165 m2]; FACADE TOTAL QUANTITY m2 [165 m2]; Cost |  | DP2CO04427C0 |  |  | DT | C | P2 | CO | FA | 044 | 27 |  |  |  |  |  |  | BILL 5 | B05 | S1 | FS2 | R00 | ACF05 | FA | 044 |  |  |  |  |  |  |  |  |  |  |  |

| ID | WBS | Activity | Duration | Start | Finish | Predecessors | Complete | Remaining | Planned start | Planned finish | Total float | Free float | Resources | Cost | Actual cost | change id | RENZ % COMPLETE | CCAD BUILDING(SET) | CCAD PHASE(SET) | CCAD FLOOR(SET) | CCAD ZONE(SET) | CCAD WORK(SET) | CCAD SECTION(SET) | CCAD SERIAL No.(SET) | CCAD SUB ZONE MEP(SET) | CCAD CBS(SET) | CCAD BILL(SET) | CCAD HANDOVER(SET) | CCAD TAG(SET) | CCAD REV(SET) | CCADACF (SET) | CCAD CSA | CCAD SSCF | Act Selector % | July2011 Target% Complete | PERCENT COMPLETE | P_811 | P_711 | Claimed This Month | user_number8 | user_integer1 | user_integer2 | user_number7 | Change Order # | NEW ACTIVITY ID | CCAD MEQ | CCAD DIVISION(SET) | R3 Finish |
| --- | --- | --- | --- | --- | --- | --- | --- | --- | --- | --- | --- | --- | --- | --- | --- | --- | --- | --- | --- | --- | --- | --- | --- | --- | --- | --- | --- | --- | --- | --- | --- | --- | --- | --- | --- | --- | --- | --- | --- | --- | --- | --- | --- | --- | --- | --- | --- | --- |
|  | 02 | **Kitchen / Storage / Linen** |  | 2011-01-12 | 2012-12-30 |  |  |  |  |  |  |  |  |  |  |  |  |  |  |  |  |  |  |  |  |  |  |  |  |  |  |  |  |  |  |  |  |  |  |  |  |  |  |  |  |  |  |  |
| DP2KS23001C0 |  | DT-P2 ; 1st Fix, Inst. of Supports for MEP (Kitchen) | 26.88d | 2011-01-12 A | 2011-10-01 | DP2S107807C0 SS, DP2S207807C0 SS, DP2S307807C0 SS | 100% | 0d | 2011-01-04 | 2011-02-03 | 32.3d | 0d | MECHANICAL [2462.4 h]; Cost [75432.9 AED] | 75,432.94 | 67,889.64 | DP2KS23001C0 | 100 | DT | C | P2 | KS | ME | 230 | 01 | 1S | BILL 5 | B05 | S1 | 1F | R00 | ACF04 | MEP | 230 | M1F |  |  |  |  |  |  |  |  |  |  |  |  |  |  |
| DP2KS21111C0 |  | DT-P2 ; 1st Fix, Inst of Sprinkler main pipe (Kitchen) | 45d | 2011-01-14 A | 2011-10-03 | DP2KS22005C0 SS+14d, DP2KS23001C0, DP2S107807C0, DP2S207807C0, DP2S307807C0 | 95% | 2.25d | 2011-04-14 | 2011-06-05 | 32.3d | 0d | MECHANICAL [981.6 h]; Cost [53543.7 AED] | 53,543.69 | 50,866.51 | DP2KS21111C0 | 95 | DT | C | P2 | KS | ME | 211 | 11 | 1S | BILL 5 | B05 | S1 | 1F | R00 | ACF04 | MEP | 211 | M1F | 100 |  |  |  |  |  |  |  |  |  |  |  |  |  |
| DP2KS22019C0 |  | DT-P2 ; 1st Fix, Inst of Drainage pipe (ceiling) (Kitchen) | 63d | 2011-01-14 A | 2011-10-04 | DP2KS23001C0, DP2KS26013C0 SS+12d, DP2S107807C0, DP2S207807C0, DP2S307807C0 | 95% | 3.15d | 2011-03-17 | 2011-05-29 | 32.3d | 0d | PLUMBING [1173.6 h]; Cost [61888.2 AED] | 61,888.15 | 58,793.75 | DP2KS22019C0 | 95 | DT | C | P2 | KS | ME | 220 | 19 | 1S | BILL 5 | B05 | S1 | 1F | R00 | ACF04 | MEP | 220 | M1F | 100 |  |  |  |  |  |  |  |  |  |  |  |  |  |
| DP2KS22005C0 |  | DT-P2 ; 1st Fix, Inst of Water supply pipe (ceiling) (Kitchen) | 120d | 2011-01-21 A | 2011-11-14 | DP2KS22019C0 SS+10d, DP2KS23001C0, DP2S107807C0, DP2S207807C0, DP2S307807C0 | 70% | 36d | 2011-03-29 | 2011-08-16 | 32.3d | 0d | PLUMBING [4896 h]; Cost [264473 AED] | 264,473.49 | 185,131.44 | DP2KS22005C0 | 70 | DT | C | P2 | KS | ME | 220 | 05 | 1S | BILL 5 | B05 | S1 | 1F | R00 | ACF04 | MEP | 220 | M1F | 90 | 70 | 90 | 70 |  |  |  |  |  |  |  |  |  |  |
| DP2KS23017C0 |  | DT-P2 ; 1st Fix, Inst of CHW pipe (Kitchen) | 180d | 2011-01-23 A | 2011-11-14 | DP2KS21111C0 SS+12d, DP2KS23001C0, DP2S107807C0, DP2S207807C0, DP2S307807C0 | 80% | 36d | 2011-04-28 | 2011-12-01 | 32.3d | 0d | MECHANICAL [7449.6 h]; Cost [345418 AED] | 345,418.28 | 276,334.63 | DP2KS23017C0 | 60 | DT | C | P2 | KS | ME | 230 | 17 | 1S | BILL 5 | B05 | S1 | 1F | R00 | ACF04 | MEP | 230 | M1F | 90 | 80 | 98 | 95 | 71127.3 |  |  |  |  |  |  |  |  |  |
| DP2KS26001C0 |  | DT-P2 ; 1st Fix, Inst of Trunking/Conduiting (Kitchen) | 250d | 2011-01-24 A | 2011-12-01 | DP2KS23001C0, DP2S107807C0, DP2S207807C0, DP2S307807C0 | 80% | 50d | 2011-02-05 | 2011-11-30 | 32.3d | 0d | ELECTRICAL [824.4 h]; Cost [42423.2 AED] | 42,423.24 | 33,938.59 | DP2KS26001C0 | 85 | DT | C | P2 | KS | ME | 260 | 01 | 1S | BILL 5 | B05 | S1 | 1F | R00 | ACF04 | MEP | 260 | M1F | 95 | 80 | 98 | 95 | 4999.02 |  |  |  |  |  |  |  |  |  |
| DP2KS23023C0 |  | DT-P2 ; 1st Fix, Inst of Main Ducting (Kitchen) | 250d | 2011-01-28 A | 2011-10-29 | DP2KS23001C0, DP2KS23017C0 SS+10d, DP2S107807C0, DP2S207807C0, DP2S307807C0 | 90% | 25d | 2011-05-10 | 2012-03-07 | 32.3d | 0d | MECHANICAL [12525.6 h]; Cost [622619 AED] | 622,619.08 | 560,357.18 | DP2KS23023C0 | 50 | DT | C | P2 | KS | ME | 230 | 23 | 1S | BILL 5 | B05 | S1 | 1F | R00 | ACF04 | MEP | 230 | M1F | 90 | 90 |  |  | 79571.93 |  |  |  |  |  |  |  |  |  |
| DP2KS27010C0 |  | DT-P2 ; 1st Fix, Inst of Trunking for ELV system (Kitchen) | 45d | 2011-02-10 A | 2011-10-16 | DP2KS23001C0, DP2KS26001C0 SS+12d, DP2S107807C0, DP2S207807C0, DP2S307807C0 | 70% | 13.5d | 2011-02-27 | 2011-04-20 | 32.3d | 0d | ELECTRICAL [3193.2 h]; Cost [88597.9 AED] | 88,597.89 | 62,018.53 | DP2KS27010C0 | 65 | DT | C | P2 | KS | ME | 270 | 10 | 1S | BILL 5 | B05 | S1 | 1F | R00 | ACF04 | MEP | 270 | M1F | 95 |  | 100 | 90 |  |  |  |  |  |  |  |  |  |  |
| DP2KS26013C0 |  | DT-P2 ; 1st Fix, Inst of Cable Tray (Kitchen) | 62.88d | 2011-03-14 A | 2011-10-18 | DP2KS23001C0, DP2KS27010C0 SS+10d, DP2S107807C0, DP2S207807C0, DP2S307807C0 | 75% | 15.72d | 2011-03-01 | 2011-05-12 | 32.3d | 0d | ELECTRICAL [430.8 h]; Cost [23263.3 AED] | 23,263.34 | 17,447.5 | DP2KS26013C0 | 65 | DT | C | P2 | KS | ME | 260 | 13 | 1S | BILL 5 | B05 | S1 | 1F | R00 | ACF04 | MEP | 260 | M1F | 95 |  | 100 | 80 |  |  |  |  |  |  |  |  |  |  |
| DP2KS21117C0 |  | DT-P2 ; 1st Fix, Inst of Sprinkler branch pipe (Kitchen) | 61.88d | 2011-04-03 A | 2011-11-09 | DP2KS09201C0, DP2KS21111C0, DP2S107807C0, DP2S207807C0, DP2S307807C0 | 95% | 3.09d | 2011-05-17 | 2011-07-28 | 159.41d | 132.11d | MECHANICAL [1441.2 h]; Cost [78749.8 AED] | 78,749.79 | 74,812.3 | DP2KS21117C0 | 95 | DT | C | P2 | KS | ME | 211 | 17 | 1S | BILL 5 | B05 | S1 | 1F | R00 | ACF04 | MEP | 211 | M1F |  |  |  |  | 4564.56 |  |  |  |  |  |  |  |  |  |
| DP2KS09201C0 |  | DT-P2 ; Metal Studs (Kitchen) | 90d | 2011-04-04 A | 2011-11-02 | DP2KS23001C0 | 68% | 28.8d | 2011-03-14 | 2011-06-26 | 36.5d | 0d | PARTITIONS [9729 h]; PARTITIONS - Metal Studs [1529 m]; Cost |  |  | DP2KS09201C0 | 45 | DT | C | P2 | KS | PT | 092 | 01 |  | BILL 5 | B05 | S1 | 1F | R00 | ACF06 | GP | 092 | PMS |  |  | 60 | 55 | 124416.4 | 0 | 0 | 0 | 0 | 313 | 944 |  |  |  |
| DP2KS40302C0 |  | DT-P2 ; 2nd Fix, Pneumatic tube (Kitchen) | 250d | 2011-04-05 A | 2011-11-21 | DP2KS09201C0 | 95% | 12.5d | 2011-04-18 | 2012-02-14 | 60d | 32.7d | MECHANICAL [5653.2 h]; Cost [291897 AED] | 291,897.23 | 277,302.36 | C03E140302C0 | 80 | DT | C | P2 | KS | ME | 403 | 02 | 2n | BILL 5 | B05 | S1 | 2F | R00 | ACF07 | MEP | 403 |  | 90 |  |  |  | 33860.58 |  |  |  |  |  |  |  |  |  |
| DP2KS09203C0 |  | DT-P2 ; Partitions 1st face (Kitchen) | 90d | 2011-04-12 A | 2012-01-02 | DP2KS09201C0 SS+12d, DP2KS23023C0, DP2KS23008C0 FF | 58% | 37.8d | 2011-07-07 | 2011-10-22 | 32.3d | 0d | PARTITIONS [1529 m]; PARTITIONS [7591 h]; Cost |  |  | DP2KS09203C0 | 10 | DT | C | P2 | KS | PT | 092 | 03 |  | BILL 5 | B05 | S1 | 2F | R00 | ACF06 | GP | 092 | P1F |  |  | 45 | 25 | 87091.5 | 0 | 0 | 0 | 0 | 314 | 945 |  |  |  |
| DP2KS23015C0 |  | DT-P2 ; 2nd Fix, Insulation of CHW pipe & Duct (Kitchen) | 200d | 2011-04-12 A | 2012-03-08 | DP2KS23009C0, DP2KS23017C0, DP2KS23023C0 | 75% | 50d | 2011-05-30 | 2012-01-29 | 60.3d | 33d | MECHANICAL [5311.2 h]; Cost [286617 AED] | 286,617.06 | 214,962.8 | DP2KS23015C0 | 40 | DT | C | P2 | KS | ME | 230 | 15 | 2n | BILL 5 | B05 | S1 | 2F | R00 | ACF07 | MEP | 230 |  | 60 | 75 | 90 | 80 | 34106.86 |  |  |  |  |  |  |  |  |  |
| DP2KS22011C0 |  | DT-P2 ; 2nd Fix, Drainage/Water pipe (wall) (Kitchen) | 90d | 2011-04-19 A | 2011-12-31 | DP2KS09201C0, DAFCI09203R02 FS+58d | 60% | 36d | 2011-04-18 | 2011-08-01 | 27.3d | 0d | PLUMBING [1173.6 h]; Cost [61888.2 AED] | 61,888.15 | 37,132.89 | DP2KS22011C0 | 25 | DT | C | P2 | KS | ME | 220 | 11 | 2n | BILL 5 | B05 | S1 | 2F | R00 | ACF07 | MEP | 220 |  | 90 |  | 60 | 30 | 3675.14 |  |  |  |  |  |  |  |  |  |
| DP2KS23008C0 |  | DT-P2 ; 1st Fix, Inst of VCD's/FD's (Kitchen) | 250d | 2011-05-15 A | 2012-01-02 | DP2KS23023C0, DP2S107807C0, DP2S207807C0, DP2S307807C0 | 80% | 50d | 2011-07-13 | 2012-05-09 | 32.3d | 0d | MECHANICAL [5437.2 h]; Cost [232964 AED] | 232,964.23 | 186,371.39 | DP2KS23008C0 | 30 | DT | C | P2 | KS | ME | 230 | 08 | 1S | BILL 5 | B05 | S1 | 1F | R00 | ACF04 | MEP | 230 | M1F | 90 | 80 | 95 | 90 |  |  |  |  |  |  |  |  |  |  |
| DP2KS23009C0 |  | DT-P2 ; 2nd Fix, Inst of VAV'S CHW connection (Kitchen) | 150d | 2011-05-15 A | 2012-01-09 | DP2KS23017C0 | 70% | 45d | 2011-07-07 | 2012-01-08 | 60.3d | 0d | MECHANICAL [1684.8 h]; Cost [91006.1 AED] | 91,006.06 | 63,704.24 | DP2KS23009C0 | 10 | DT | C | P2 | KS | ME | 230 | 09 | 2n | BILL 5 | B05 | S1 | 2F | R00 | ACF07 | MEP | 230 |  | 60 | 70 | 80 | 30 | 21640.94 | 0 | 0 | 0 | 0 |  |  |  |  |  |
| DP2KS27001C0 |  | DT-P2 ; 1st Fix, Wiring/ Cabling work (Kitchen) | 100d | 2011-05-16 A | 2012-02-25 | DP2KS26001C0, DP2KS26013C0, DP2KS27010C0, DP2S107807C0, DP2S207807C0, DP2S307807C0 | 30% | 70d | 2011-05-14 | 2011-09-10 | 71.3d | 44d | ELECTRICAL [436.8 h]; Cost [21894.9 AED] | 21,894.91 | 6,568.47 | DP2KS27001C0 | 30 | DT | C | P2 | KS | ME | 270 | 01 | 1S | BILL 5 | B05 | S1 | 1F | R00 | ACF04 | MEP | 270 | M1F | 90 | 30 | 65 | 60 | 3868.95 |  |  |  |  |  |  |  |  |  |
| DP2KS26053C0 |  | DT-P2 ; 2nd Fix, Wiring / Cabling (Kitchen) | 42d | 2011-06-07 A | 2011-12-25 | DP2KS26009C0 | 5% | 39.9d | 2011-10-02 | 2011-11-23 | 158.6d | 131.3d | ELECTRICAL [436.8 h]; Cost [21894.9 AED] | 21,894.91 | 1,094.75 | DP2KS26053C0 |  | DT | C | P2 | KS | ME | 260 | 53 | 2n | BILL 5 | B05 | S1 | 2F | R00 | ACF07 | MEP | 260 |  | 60 | 5 | 50 | 30 | 15475.6 |  |  |  |  | 389 | 977 |  |  |  |
| DP2KS26005C0 |  | DT-P2 ; 2nd Fix, Wiring for Power/Lighting/Emergency (Kitchen) | 60d | 2011-06-08 A | 2012-05-10 | DP2KS09205C0 | 5% | 57d | 2011-10-02 | 2011-12-17 | 84.3d | 35.35d | ELECTRICAL [436.8 h]; Cost [21894.9 AED] | 21,894.91 | 1,094.75 | DP2KS26005C0 |  | DT | C | P2 | KS | ME | 260 | 05 | 2n | BILL 5 | B05 | S1 | 2F | R00 | ACF07 | MEP | 260 |  | 85 | 5 | 50 | 30 | 21923.77 |  |  |  |  |  |  |  |  |  |
| DP2KS21115C0 |  | DT-P2 ; 2nd Fix, Inst of Sprinkler droppers (Kitchen) | 54d | 2011-06-09 A | 2012-07-25 | DP2KS09501C0 | 10% | 48.6d | 2011-09-24 | 2011-11-30 | 68.7d | 0d | MECHANICAL [2067.6 h]; Cost [111492 AED] | 111,492.38 | 11,149.24 | DP2KS21115C0 |  | DT | C | P2 | KS | ME | 211 | 15 | 2n | BILL 5 | B05 | S1 | 2F | R00 | ACF07 | MEP | 211 |  | 85 |  |  |  | 12951.14 |  |  |  |  |  |  |  |  |  |
| DP2KS27002C0 |  | DT-P2 ; 2nd Fix, Wiring Droppers (Kitchen) | 60d | 2011-06-09 A | 2012-07-31 | DP2KS09501C0 | 10% | 54d | 2011-09-24 | 2011-12-08 | 63.3d | 20.35d | ELECTRICAL [436.8 h]; Cost [21894.9 AED] | 21,894.91 | 2,189.49 | DP2KS27002C0 |  | DT | C | P2 | KS | ME | 270 | 02 | 2n | BILL 5 | B05 | S1 | 2F | R00 | ACF07 | MEP | 270 |  | 55 | 10 |  |  | 14185.97 |  |  |  |  |  |  |  |  |  |
| DP2KS26007C0 |  | DT-P2 ; 2nd Fix, Cable Pulling (Kitchen) | 60d | 2011-06-09 A | 2011-12-04 | DP2KS09201C0 SS+6d | 15% | 51d | 2011-06-09 | 2011-08-20 | 50.3d | 23d | ELECTRICAL [6634.8 h]; Cost [332625 AED] | 332,625.29 | 49,893.79 | DP2KS26007C0 |  | DT | C | P2 | KS | ME | 260 | 07 | 2n | BILL 5 | B05 | S1 | 2F | R00 | ACF07 | MEP | 260 |  | 25 | 15 |  |  | 98890.9 |  |  |  |  |  |  |  |  |  |
| DP2KS26009C0 |  | DT-P2 ; 2nd Fix, Inst of Wall conduites (Kitchen) | 41d | 2011-06-09 A | 2011-11-02 | DP2KS09201C0 | 100% | 0d | 2011-06-09 | 2011-07-28 | 72.5d | 0d | ELECTRICAL [824.4 h]; Cost [42423.2 AED] | 42,423.24 | 10,605.81 | DP2KS26009C0 |  | DT | C | P2 | KS | ME | 260 | 09 | 2n | BILL 5 | B05 | S1 | 2F | R00 | ACF07 | MEP | 260 |  | 85 |  | 100 | 85 | 42488.63 |  |  |  |  |  |  |  |  |  |
| DP2KS23011C0 |  | DT-P2 ; 2nd Fix, Inst of Equipment (FCU,FAN) (Kitchen) | 78d | 2011-08-10 A | 2012-04-02 | DP2KS09205C0 | 70% | 23.4d | 2012-03-11 | 2012-06-10 | 165.9d | 122.95d | MECHANICAL [1588.8 h]; Cost [361645 AED] | 361,645.02 | 253,151.51 | DP2KS23011C0 |  | DT | C | P2 | KS | ME | 230 | 11 | 2n | BILL 5 | B05 | S1 | 2F | R00 | ACF04 | MEP | 230 |  |  |  | 50 | 0 |  | 0 | 0 | 0 | 0 |  |  | H |  |  |
| DP2KS08103C0 |  | DT-P2 ; Door Frames (Kitchen) | 42d | 2011-09-05 A | 2011-11-16 | DP2KS09201C0 SS, GNHE08101C0 | 10% | 37.8d | 2011-11-29 | 2012-01-18 | 117.5d | 90.2d | ASSORTED DOORS [641 h]; Cost |  |  | DP2KS08103C0 |  | DT | C | P2 | KS | DO | 081 | 03 |  | BILL 5 | B05 | S1 | DF | R00 | ACF06 |  | 081 |  |  |  |  |  |  |  |  |  |  | 316 | 947 |  | 08 |  |
| DP2KS01005C0 |  | DT-P2 ; 2nd, Wall Inspection by Consultant (Kitchen) | 6d | 2012-01-02 | 2012-01-08 | DP2KS22011C0, DP2KS26007C0, DP2KS26009C0, DP2KS40302C0 |  |  |  |  | 27.3d | 0d | Labor General [1.2 h]; Cost |  |  | DP2KS01005C0 |  | DT | C | P2 | KS | ME | 010 | 05 | 2n | BILL 5 | B05 | S1 | WI | R00 | ACF07 | MEP | 010 |  |  |  |  |  |  |  |  |  |  |  |  |  |  |  |
| DP2KS09205C0 |  | DT-P2 ; Partitions Closing (Kitchen) | 48d | 2012-01-09 | 2012-03-05 | DAFOA09206C1 FF, DP2KS01005C0, DP2KS09203C0, DP2KS22005C0, DP2KS22019C0, DAFCI09203R02 FS+58d, DP2KS08103C0 FF |  |  |  |  | 27.3d | 0d | PARTITIONS [1529 m]; PARTITIONS [9729 h]; Cost |  |  | DP2KS09205C0 |  | DT | C | P2 | KS | PT | 092 | 05 |  | BILL 5 | B05 | S1 | FF | R00 | ACF06 | GP | 092 | P2F |  |  |  |  |  |  |  |  |  | 315 | 946 |  |  |  |
| DP2KS07103C0 |  | DT-P2 ; Waterproofing (Kitchen) | 12d | 2012-03-06 | 2012-03-19 | DP2KS08103C0, DP2KS09205C0 |  |  |  |  | 113.42d | 0d | THERMAL & MOISTURE [824 h]; THERMAL & MOISTURE [5479 m2]; Cost |  |  | DP2KS07103C0 |  | DT | C | P2 | KS | FF | 071 | 03 |  | BILL 5 | B05 | S1 | 01 | R00 | ACF03 |  | 071 |  |  |  |  |  |  |  |  |  |  | 105 | 999 |  |  |  |
| DP2KS09901C0 |  | DT-P2 ; Wall Prime & 1st coat (Kitchen) | 36d | 2012-03-06 | 2012-04-16 | DP2CO04003C0 SS+24d, DP2KS09205C0, DP2LD26007C0 |  |  |  |  | 27.3d | 0d | WALL PAINT [2636 h]; WALL PAINT [3289 m2]; Cost |  |  | DP2KS09901C0 |  | DT | C | P2 | KS | PA | 099 | 01 |  | BILL 5 | B05 | S1 | 01 | R00 | ACF06 |  | 099 |  |  |  |  |  |  |  |  |  |  | 328 | 956 |  |  |  |
| DP2KS26011C0 |  | DT-P2 ; 2nd Fix, Inst of Equipment (DB) (Kitchen) | 48d | 2012-03-06 | 2012-04-30 | DP2KS09205C0 |  |  |  |  | 99.3d | 60d | ELECTRICAL [4054.8 h]; Cost |  |  | DP2KS26011C0 |  | DT | C | P2 | KS | ME | 260 | 11 | 2n | BILL 5 | B05 | S1 | 2F | R00 | ACF04 | MEP | 260 |  |  |  |  |  |  |  |  |  |  |  |  | E |  |  |
| DP2KS27020C0 |  | DT-P2 ; 2nd Fix, Inst of ELV Equipment (Panels) (Kitchen) | 42d | 2012-03-06 | 2012-04-23 | DP2KS09205C0 |  |  |  |  | 105.3d | 66d | ELECTRICAL [1723.2 h]; Cost |  |  | DP2KS27020C0 |  | DT | C | P2 | KS | ME | 270 | 20 | 2n | BILL 5 | B05 | S1 | 2F | R00 | ACF04 | MEP | 270 |  | 45 |  |  |  | 209748.01 |  |  |  |  |  |  | E |  |  |
| DP2KS01103C0 |  | DT-P2 ; Cold room / Kitchen Hood (Kitchen) | 7d | 2012-03-20 | 2012-03-27 | DP2KS07103C0 |  |  |  |  | 175.05d | 89d | Labor General [1 h]; Cost |  |  | DP2KS07103C0 |  | DT | C | P2 | KS | EQ | 110 | 03 |  | BILL 5 | B05 | S1 | 06 | R00 | ACF08 |  | KE |  |  |  |  |  |  |  |  |  |  | 105 | 999 |  |  |  |
| DP2KS09305C0 |  | DT-P2 ; Wall & Floor tile (Kitchen) | 21.88d | 2012-03-20 | 2012-04-14 | DP2KS07103C0 |  |  |  |  | 113.42d | 0d | ASSORTED WALL FINISH [96 h]; ASSORTED WALL FINISH [611 m2]; Cost |  |  | DP2KS09305C0 |  | DT | C | P2 | KS | FF | 093 | 05 |  | BILL 5 | B05 | S1 | 06 | R00 | ACF06 |  | CT |  |  |  |  |  |  |  |  |  |  | 106 | 1000 |  |  |  |
| DP2KS22025C0 |  | DT-P2 ; Final Fix, Inst of Sanitary Ware (Kitchen) | 48d | 2012-04-14 | 2012-06-09 | DP2KS09205C0, DP2KS09305C0, A10230 FS+148d |  |  |  |  | 113.42d | 0d | PLUMBING [1917.6 h]; Cost |  |  | DP2KS22025C0 |  | DT | C | P2 | KS | ME | 220 | 25 | FF | BILL 5 | B05 | S1 | FF | R00 | ACF07 | MEP | 220 |  |  |  |  |  |  |  |  |  |  |  |  |  |  |  |
| DP2KS05501C0 |  | DT-P2 ; Handrails & balustrade (Kitchen) | 36d | 2012-04-17 | 2012-05-28 | DP2KS09901C0 |  |  |  |  | 63.3d | 36d | SECONDARY STEEL [321 h]; Cost |  |  | DP2KS05501C0 |  | DT | C | P2 | KS | SW | 055 | 01 |  | BILL 5 | B05 | S1 | 01 | R00 | ACF03 |  | a |  |  |  |  |  |  |  |  |  |  |  |  |  |  |  |
| DP2KS09501C0 |  | DT-P2 ; Ceiling Grid and Service Tile (Kitchen) | 36d | 2012-04-17 | 2012-05-28 | DP2KS09205C0 SS+15d, DP2KS21117C0, DP2KS23008C0, DP2KS23009C0, DP2KS23015C0, DP2KS27001C0, DAFCI22001R02 FS+65d, DP2KS26053C0 FF, DP2KS09901C0 |  |  |  |  | 27.3d | 0d | CEILING GRID FOR GYPSUM [9033.85 h]; CEILING GRID FOR GYPSUM [773 m2]; Cost |  |  | DP2KS09501C0 |  | DT | C | P2 | KS | CE | 095 | 01 |  | BILL 5 | B05 | S1 | 01 | R00 | ACF06 |  | 095 |  |  |  |  |  |  |  |  |  |  | 323 | 952 |  |  | R3 |
| DP2KS09601C0 |  | DT-P2 ; Flooring (Rubber & etc) (Kitchen) | 36d | 2012-05-29 | 2012-07-10 | DP2KS09901C0, DAFCI22001R02 FS+65d, DP2KS09501C0, DP2KS05501C0 FF |  |  |  |  | 27.3d | 0d | RUBBER FLOOR [608 h]; RUBBER FLOOR [1517 m2]; Cost |  |  | DP2KS09601C0 |  | DT | C | P2 | KS | FF | 096 | 01 |  | BILL 5 | B05 | S1 | 03 | R00 | ACF06 |  | RF |  |  |  |  |  |  |  |  |  |  | 326 | 955 |  |  | R3 |
| DP2KS09905C0 |  | DT-P2 ; Ceiling Prime & 1st coat (Kitchen) | 36d | 2012-05-29 | 2012-07-10 | DP2KS09501C0 |  |  |  |  | 98.3d | 0d | ASSORTED CEILING FINISH [292 h]; Cost |  |  | DP2KS09905C0 |  | DT | C | P2 | KS | PA | 099 | 05 |  | BILL 5 | B05 | S1 | 01 | R00 | ACF06 |  | 099 |  |  |  |  |  |  |  |  |  |  | 330 | 958 |  |  |  |
| DP2KS21113C0 |  | DT-P2 ; Final Fix, Inst of Sprinklers head/ Extinguisher (Kitchen) | 48d | 2012-05-29 | 2012-07-24 | DP2KS09501C0, DP2KS21115C0 SS+6d |  |  |  |  | 69.3d | 26.35d | MECHANICAL [403.2 h]; Cost |  |  | DP2KS21113C0 |  | DT | C | P2 | KS | ME | 211 | 13 | FF | BILL 5 | B05 | S1 | FF | R00 | ACF07 | MEP | 211 |  |  |  |  |  |  |  |  |  |  |  |  |  |  |  |
| DP2KS23021C0 |  | DT-P2 ; 2nd Fix, Inst of Flexible Duct & Plenum boxes (Kitchen) | 36d | 2012-05-29 | 2012-07-10 | DP2KS09205C0, DP2KS09501C0 |  |  |  |  | 57.3d | 0d | MECHANICAL [274.8 h]; Cost |  |  | DP2KS23021C0 |  | DT | C | P2 | KS | ME | 230 | 21 | 2n | BILL 5 | B05 | S1 | 2F | R00 | ACF07 | MEP | 230 |  |  |  |  |  |  |  |  |  |  |  |  |  |  |  |
| DP2KS26017C0 |  | DT-P2 ; Final Fix, Inst of Ceiling rose (Kitchen) | 48d | 2012-05-29 | 2012-07-24 | DP2KS09501C0 |  |  |  |  | 57.3d | 0d | ELECTRICAL [67.2 h]; Cost |  |  | DP2KS26017C0 |  | DT | C | P2 | KS | ME | 260 | 17 | FF | BILL 5 | B05 | S1 | FF | R00 | ACF07 | MEP | 260 |  |  |  |  |  |  |  |  |  |  |  |  |  |  |  |
| DP2KS40303C0 |  | DT-P2 ; Final Fix, Pneumatic Station (Kitchen) | 54d | 2012-05-29 | 2012-07-31 | DP2KS09501C0 |  |  |  |  | 63.3d | 20.35d | MECHANICAL [5653.2 h]; Cost |  |  | C03E140303C0 |  | DT | C | P2 | KS | ME | 403 | 03 | FF | BILL 5 | B05 | S1 | FF | R00 | ACF07 | MEP | 403 |  |  |  |  |  |  |  |  |  |  |  |  |  |  |  |
| DP2KS23019C0 |  | DT-P2 ; Final Fix, Inst of Grilles & Diffusers (Kitchen) | 54d | 2012-06-05 | 2012-08-07 | DP2KS09501C0, DP2KS23021C0 SS+6d |  |  |  |  | 57.3d | 14.35d | MECHANICAL [2560.8 h]; Cost |  |  | DP2KS23019C0 |  | DT | C | P2 | KS | ME | 230 | 19 | FF | BILL 5 | B05 | S1 | FF | R00 | ACF07 | MEP | 230 |  |  |  |  |  |  |  |  |  |  |  |  |  |  |  |
| DP2KS26003C0 |  | DT-P2 ; Final Fix, Inst of Light fittings (Kitchen) | 54d | 2012-06-05 | 2012-08-07 | DP2KS09501C0, DP2KS26017C0 SS+6d |  |  |  |  | 57.3d | 14.35d | ELECTRICAL [6626.4 h]; Cost |  |  | DP2KS26003C0 |  | DT | C | P2 | KS | ME | 260 | 03 | FF | BILL 5 | B05 | S1 | FF | R00 | ACF07 | MEP | 260 |  |  |  |  |  |  |  |  |  |  |  |  |  |  |  |
| DP2KS22021C0 |  | DT-P2 ; Final Fix, Terminate Sanitary Ware & Appliances (Kitchen) | 48d | 2012-06-09 | 2012-08-05 | DP2KS22011C0, DP2KS22025C0 |  |  |  |  | 113.42d | 86.12d | PLUMBING [1917.6 h]; Cost |  |  | DP2KS22021C0 |  | DT | C | P2 | KS | ME | 220 | 21 | FF | BILL 5 | B05 | S1 | FF | R00 | ACF07 | MEP | 220 |  |  |  |  |  |  |  |  |  |  |  |  |  |  |  |
| DP2KS26015C0 |  | DT-P2 ; Final Fix, Termination & Gladding of Cables (Kitchen) | 48d | 2012-06-23 | 2012-08-18 | DP2KS26005C0, DP2LD27020C0 SS+6d |  |  |  |  | 48.95d | 6d | ELECTRICAL [368.4 h]; Cost |  |  | DP2KS26015C0 |  | DT | C | P2 | KS | ME | 260 | 15 | FF | BILL 5 | B05 | S1 | FF | R00 | ACF07 | MEP | 260 |  |  |  |  |  |  |  |  |  |  |  |  |  |  |  |
| DP2KS27030C0 |  | DT-P2 ; Final Fix, Inst of ELV device (Detector/Speaker) (Kitchen) | 54d | 2012-06-23 | 2012-08-27 | DP2LD27020C0 SS+6d, DP2KS27002C0 SS+6d |  |  |  |  | 42.95d | 0d | ELECTRICAL [2152.8 h]; Cost |  |  | DP2KS27030C0 |  | DT | C | P2 | KS | ME | 270 | 30 | FF | BILL 5 | B05 | S1 | FF | R00 | ACF07 | MEP | 270 |  |  |  |  |  |  |  |  |  |  |  |  |  |  |  |
| DP2KS06101C0 |  | DT-P2 ; Wood / caseworks (Kitchen) | 60d | 2012-07-11 | 2012-09-20 | DP2CO04415C0, DP2KS09501C0, DP2KS09901C0, DP2CO04407C0, DAFWA00119M0, CAFWA00113M0, DP2KS09601C0 |  |  |  |  | 27.3d | 0d | WOOD WORK/CASEWORK [2164.95 no]; WOOD WORK/CASEWORK [18150 h]; Cost |  |  | DP2KS06101C0 |  | DT | C | P2 | KS | WO | 061 | 01 |  | BILL 5 | B05 | S1 | WW | R00 | ACF06 |  | 061 |  |  |  |  |  |  |  |  |  |  | 332 | 960 |  |  |  |
| DP2KS08107C0 |  | DT-P2 ; Doors (Kitchen) | 42d | 2012-07-11 | 2012-08-30 | DP2KS08103C0, DP2KS09901C0, DP2KS09601C0 |  |  |  |  | 85.5d | 0d | ASSORTED DOORS [1430 h]; ASSORTED DOORS [143 no]; Cost |  |  | DP2KS08107C0 |  | DT | C | P2 | KS | DO | 081 | 07 |  | BILL 5 | B05 | S1 | DR | R00 | ACF06 |  | 081 |  |  |  |  |  |  |  |  |  |  | 317 | 948 |  | 08 |  |
| DP2KS09701C0 |  | DT-P2 ; Wall finishes (ST, WD, WC) (Kitchen) | 48d | 2012-07-11 | 2012-09-06 | DP2KS26011C0, DP2KS27020C0, DAFCI22001R02 FS+164d, DP2KS09601C0 |  |  |  |  | 39.3d | 0d | ASSORTED WALL FINISH [2334 h]; ASSORTED WALL FINISH [2684 m2]; Cost |  |  | DP2KS09701C0 |  | DT | C | P2 | KS | WF | 097 | 01 |  | BILL 5 | B05 | S1 | 01 | R00 | ACF06 |  | 097 |  |  |  |  |  |  |  |  |  |  | 105 | 1002 |  |  |  |
| DP2KS09903C0 |  | DT-P2 ; Wall Final Paint (Kitchen) | 36d | 2012-07-11 | 2012-08-23 | DP2KS09901C0, DP2KS09905C0 |  |  |  |  | 98.3d | 12d | WALL PAINT [1420 h]; WALL PAINT [1771 m2]; Cost |  |  | DP2KS09903C0 |  | DT | C | P2 | KS | PA | 099 | 03 |  | BILL 5 | B05 | S1 | 02 | R00 | ACF06 |  | 099 |  |  |  |  |  |  |  |  |  |  | 329 | 957 |  |  |  |
| DP2KS11071C0 |  | DT-P2 ; Food Service Equipment (Kitchen) | 59.45d | 2012-07-11 | 2012-09-20 | DP2KS01103C0, DP2KS09601C0 |  |  |  |  | 86.05d | 58.75d | FF&E [4964 h]; FF&E [1654.64 no]; Cost |  |  | DP2KS11071C0 |  | DT | C | P2 | KS | EQ | 110 | 71 |  | BILL 5 | B05 | S1 | 06 | R00 | ACF08 | FK | KE |  |  |  |  |  |  |  |  |  |  | 313 | 944 |  |  |  |
| DP2KS01006C0 |  | DT-P2 ; 2nd, Ceiling Inspection by Consultants (Kitchen) | 6d | 2012-08-27 | 2012-09-03 | DP2KS21115C0, DP2KS23009C0, DP2KS23011C0, DP2KS23015C0, DP2KS27002C0, DP2KS09501C0, DP2KS21113C0, DP2KS23019C0, DP2KS26003C0, DP2KS26017C0, DP2KS40303C0, DP2KS27030C0, DP2KS26015C0 |  |  |  |  | 42.95d | 15.65d | Labor General [1.2 h]; Cost |  |  | DP2KS01006C0 |  | DT | C | P2 | KS | ME | 010 | 06 | 2n | BILL 5 | B05 | S1 | CI | R00 | ACF07 | MEP | 010 |  |  |  |  |  |  |  |  |  |  |  |  |  |  |  |
| DP2KS08709C0 |  | DT-P2 ; Ironmongery (Kitchen) | 18d | 2012-09-01 | 2012-09-20 | DP2KS08107C0 |  |  |  |  | 85.5d | 58.2d | IRONMONGERY [1310 h]; IRONMONGERY [131 no]; Cost |  |  | DP2KS08709C0 |  | DT | C | P2 | KS | DO | 087 | 09 |  | BILL 5 | B05 | S1 | IM | R00 | ACF06 |  | 087 |  |  |  |  |  |  |  |  |  |  | 322 | 951 |  | 08 |  |
| DP2KS11001C0 |  | DT-P2 ; Wall Protection (WP, CG, WG, FCG) (Kitchen) | 11.2d | 2012-09-08 | 2012-09-20 | DP2KS09701C0, DP2KS09903C0 |  |  |  |  | 86.3d | 59d | FF&E [3164 h]; Cost |  |  | DP2KS11001C0 |  | DT | C | P2 | KS | WF | 110 | 01 |  | BILL 5 | B05 | S1 | 06 | R00 | ACF08 |  | b |  |  |  |  |  |  |  |  |  |  | 326 | 1001 |  |  |  |
| DP2KS09503C0 |  | DT-P2 ; Ceiling closure - ACT/Gypsum (Kitchen) | 30d | 2012-09-22 | 2012-10-25 | DAFOA09505C1 FF, DP2KS01006C0, DP2KS21115C0, DP2KS26005C0, DP2KS27001C0, DP2KS27002C0, DP2KS06101C0, DP2KS09701C0, DP2KS23021C0 |  |  |  |  | 27.3d | 0d | ASSORTED CEILING FINISH [1830.24 h]; CEILING GYPSUM [253.59 h]; ASSORTED CEILING FINISH [2976 m2]; CEILING GYPSUM [773 m2]; Cost |  |  | DP2KS09503C0 |  | DT | C | P2 | KS | CE | 095 | 03 |  | BILL 5 | B05 | S1 | 02 | R00 | ACF06 |  | 095 |  |  |  |  |  |  |  |  |  |  | 324 | 953 |  |  | R3 |
| DP2KS09670C1 |  | DT-P2, Carpet Tile Finish (Kitchen/Storage/Linen) | 0d | 2012-10-29 | 2012-10-29 | DP2KS09903C0 SS, DP2KS09907C0 SS |  |  |  |  | 55.5d | 28.2d | Cost |  |  |  |  | DT | C | P2 | KS | FF | 096 |  |  |  | B05 |  |  | R00 | ACF06 | CPT | CPT |  |  |  |  |  |  |  |  |  |  |  |  |  |  |  |
| DP2KS09907C0 |  | DT-P2 ; Ceiling Final paint (Kitchen) | 18d | 2012-10-29 | 2012-11-19 | DP2KS09601C0, DP2KS09905C0, DP2KS09503C0 |  |  |  |  | 37.5d | 0d | ASSORTED CEILING FINISH [157 h]; Cost |  |  | DP2KS09907C0 |  | DT | C | P2 | KS | PA | 099 | 07 |  | BILL 5 | B05 | S1 | 02 | R00 | ACF06 |  | 099 |  |  |  |  |  |  |  |  |  |  | 331 | 959 |  |  |  |
| DP2KS22027C0 |  | DT-P2 ; Final Fix, Inst of All drain (Kitchen) | 18d | 2012-10-29 | 2012-11-19 | DP2KS09305C0, DP2KS09503C0 |  |  |  |  | 27.3d | 0d | PLUMBING [1173.6 h]; Cost |  |  | DP2KS22027C0 |  | DT | C | P2 | KS | ME | 220 | 27 | FF | BILL 5 | B05 | S1 | FF | R00 | ACF07 | MEP | 220 |  |  |  |  |  |  |  |  |  |  |  |  |  |  |  |
| DP2KS26019C0 |  | DT-P2 ; Final Fix, Inst of Switch/Sockets (Kitchen) | 18d | 2012-10-29 | 2012-11-19 | DP2KS09901C0, DP2KS09503C0 |  |  |  |  | 27.3d | 0d | ELECTRICAL [610.8 h]; Cost |  |  | DP2KS26019C0 |  | DT | C | P2 | KS | ME | 260 | 19 | FF | BILL 5 | B05 | S1 | FF | R00 | ACF07 | MEP | 260 |  |  |  |  |  |  |  |  |  |  |  |  |  |  |  |

| ID | WBS | Activity | Duration | Start | Finish | Predecessors | Complete | Remaining | Planned start | Planned finish | Total float | Free float | Resources | Cost | Actual cost | change id | CCAD BUILDING(SET) | CCAD PHASE(SET) | CCAD FLOOR(SET) | CCAD ZONE(SET) | CCAD WORK(SET) | CCAD SECTION(SET) | CCAD SERIAL No.(SET) | CCAD CBS(SET) | CCAD BILL(SET) | CCAD HANDOVER(SET) | CCAD TAG(SET) | CCAD REV(SET) | CCADACF (SET) | CCAD SSCF | user_number8 | user_integer1 | user_integer2 | user_number7 | Change Order # | NEW ACTIVITY ID | RENZ % COMPLETE | Claimed This Month | P_811 | P_711 | CCAD CSA | Act Selector % | R3 Partitions | CCAD SUB ZONE MEP(SET) | PERCENT COMPLETE | July2011 Target% Complete | CCAD MEQ | CCAD DIVISION(SET) | R3 Finish |
| --- | --- | --- | --- | --- | --- | --- | --- | --- | --- | --- | --- | --- | --- | --- | --- | --- | --- | --- | --- | --- | --- | --- | --- | --- | --- | --- | --- | --- | --- | --- | --- | --- | --- | --- | --- | --- | --- | --- | --- | --- | --- | --- | --- | --- | --- | --- | --- | --- | --- |
|  | 10 | **Precommissioning Tesing & snagging (Kitchen / Storage / Linen)** |  | 2012-11-20 | 2012-12-30 |  |  |  |  |  |  |  |  |  |  |  |  |  |  |  |  |  |  |  |  |  |  |  |  |  |  |  |  |  |  |  |  |  |  |  |  |  |  |  |  |  |  |  |  |
| DP2TS01801C0 |  | DT-P2 ; MEP de-snag, FIREM sign-off | 10.2d | 2012-11-20 | 2012-12-02 | DP2KS26003C0, DP2KS27030C0, DP2KS40303C0, DP2KS26019C0, DP2KS22027C0, DP2KS22021C0 |  |  |  |  | 27.3d | 0d | TESTING & COMMISSIONING [2549 h]; Cost |  |  | DP2TS01801C0 | DT | C | P2 | TS | SC | 018 | 01 | BILL 5 | B05 | S1 | 01 | R00 | ACF07 | 018 |  |  |  |  |  |  |  |  |  |  |  |  |  |  |  |  |  |  |  |
| DP2TS01802C0 |  | DT-P2 ; Touch-up & Clean / JV inspection /CIR /De-snag | 16.5d | 2012-12-02 | 2012-12-22 | DP2CO04401C0, DP2KS01103C0, DP2KS06101C0, DP2KS08709C0, DP2KS09305C0, DP2KS09701C0, DP2KS09903C0, DP2KS09907C0, DP2KS11001C0, DP2KS11071C0, DP2TS01801C0, DP2KS05501C0, DP2KS09503C0, DP2KS09670C1, DP2PA09671C1 |  |  |  |  | 27.3d | 0d | TESTING & COMMISSIONING [425 h]; Cost |  |  | DP2TS01802C0 | DT | C | P2 | TS | SC | 018 | 02 | BILL 5 | B05 | S1 | 02 | R00 | ACF07 | 018 |  |  |  |  |  |  |  |  |  |  |  |  |  |  |  |  |  |  |  |
| DP2TS01807C0 |  | DT-P2 ; Consultant's final de-snag inspection | 7d | 2012-12-22 | 2012-12-30 | DP2TS01802C0 |  |  |  |  | 27.3d | 13.2d | Labor General [1 h]; Cost |  |  | DP2TS01803C0 | DT | C | P2 | TS | SC | 018 | 03 | BILL 5 | B05 | S1 | 03 | R00 | ACF07 | 018 |  |  |  |  |  |  |  |  |  |  |  |  |  |  |  |  |  |  |  |
|  | 03 | **Ster Proc / Toilet & Locker Rm** |  | 2011-01-06 | 2012-12-30 |  |  |  |  |  |  |  |  |  |  |  |  |  |  |  |  |  |  |  |  |  |  |  |  |  |  |  |  |  |  |  |  |  |  |  |  |  |  |  |  |  |  |  |  |
| DP2LO09201C0 |  | DT-P2 ; Metal Studs (Locker RM/Sterile Proc) | 90d | 2011-01-06 A | 2011-11-19 | DP2LO23001C0, OGNMU00009S0, DAFCI09201R02 FS+58d, DP2S307807C0 | 68% | 28.8d | 2011-03-12 | 2011-06-23 | 27.45d | 0d | PARTITIONS [5168 h]; PARTITIONS - Metal Studs [812 m]; Cost |  |  | DP2LO09201C0 | DT | C | P2 | LO | PT | 092 | 01 | BILL 5 | B05 | S1 | 1F | R00 | ACF06 | 092 | 0 | 0 | 0 | 0 | 313 | 944 | 45 | 66016.8 | 60 | 55 | GP | PMS | R3 |  |  |  |  |  |  |
| DP2LO21111C0 |  | DT-P2 ; 1st Fix, Inst of Sprinkler main pipe (Locker RM) | 45d | 2011-02-03 A | 2011-10-03 | DP2LO22005C0 SS+5d, DP2LO23001C0, DP2S207807C0 | 95% | 2.25d | 2011-04-27 | 2011-06-18 | 29.45d | 0d | MECHANICAL [981.6 h]; Cost [53543.7 AED] | 53,543.69 | 50,866.51 | DP2LO21111C0 | DT | C | P2 | LO | ME | 211 | 11 | BILL 5 | B05 | S1 | 1F | R00 | ACF04 | 211 |  |  |  |  |  |  | 99 | 621.41 |  |  | MEP | M1F |  | 1S |  |  |  |  |  |
| DP2LO23001C0 |  | DT-P2 ; 1st Fix, Inst. of Supports for MEP (Locker RM) | 26.88d | 2011-02-10 A | 2011-10-01 | DP2S207807C0 SS | 100% | 0d | 2011-03-01 | 2011-03-31 | 29.45d | 0d | MECHANICAL [2462.4 h]; Cost [75432.9 AED] | 75,432.94 | 71,661.29 | DP2LO23001C0 | DT | C | P2 | LO | ME | 230 | 01 | BILL 5 | B05 | S1 | 1F | R00 | ACF04 | 230 |  |  |  |  |  |  | 100 |  |  |  | MEP | M1F |  | 1S |  |  |  |  |  |
| DP2LO21117C0 |  | DT-P2 ; 1st Fix, Inst of Sprinkler branch pipe (Locker RM) | 61.88d | 2011-02-11 A | 2011-11-22 | DP2LO09201C0, DP2LO21111C0, DP2S207807C0 | 95% | 3.09d | 2011-06-19 | 2011-09-01 | 153.23d | 125.78d | MECHANICAL [1441.2 h]; Cost [78749.8 AED] | 78,749.79 | 74,812.3 | DP2LO21117C0 | DT | C | P2 | LO | ME | 211 | 17 | BILL 5 | B05 | S1 | 1F | R00 | ACF04 | 211 |  |  |  |  |  |  | 99 | 911.71 |  |  | MEP | M1F |  | 1S |  |  |  |  |  |
| DP2LO23017C0 |  | DT-P2 ; 1st Fix, Inst of CHW pipe (Locker RM) | 180d | 2011-02-12 A | 2011-11-24 | DP2LO21111C0 SS+7d, DP2LO23001C0, DP2S207807C0 | 75% | 45d | 2011-03-21 | 2011-10-20 | 29.45d | 0d | MECHANICAL [7449.6 h]; Cost [345418 AED] | 345,418.28 | 259,063.71 | DP2LO23017C0 | DT | C | P2 | LO | ME | 230 | 17 | BILL 5 | B05 | S1 | 1F | R00 | ACF04 | 230 |  |  |  |  |  |  | 70 | 47418.2 | 98 | 90 | MEP | M1F |  | 1S | 75 | 90 |  |  |  |
| DP2LO27010C0 |  | DT-P2 ; 1st Fix, Inst of Trunking for ELV system (Locker RM) | 120d | 2011-02-12 A | 2011-11-03 | DP2LO23001C0, DP2LO26001C0 SS+4d, DP2S207807C0 | 75% | 30d | 2011-04-06 | 2011-08-24 | 29.45d | 0d | ELECTRICAL [1689.6 h]; Cost [88597.9 AED] | 88,597.89 | 66,448.42 | DP2LO27010C0 | DT | C | P2 | LO | ME | 270 | 10 | BILL 5 | B05 | S1 | 1F | R00 | ACF04 | 270 |  |  |  |  |  |  | 90 | 5139.05 | 98 | 95 | MEP | M1F |  | 1S | 75 | 95 |  |  |  |
| DP2LO23023C0 |  | DT-P2 ; 1st Fix, Inst of Main Ducting (Locker RM) | 70.88d | 2011-02-16 A | 2011-06-01 A | DP2LO23001C0, DP2LO23017C0 SS+7d, DP2S207807C0 | 100% |  | 2011-05-14 | 2011-08-04 |  |  | MECHANICAL [12525.6 h]; Cost [622619 AED] | 622,619.08 | 622,619.08 | DP2LO23023C0 | DT | C | P2 | LO | ME | 230 | 23 | BILL 5 | B05 | S1 | 1F | R00 | ACF04 | 230 |  |  |  |  |  |  | 98 | 15909.75 |  |  | MEP | M1F |  | 1S |  |  |  |  |  |
| DP2LO22019C0 |  | DT-P2 ; 1st Fix, Inst of Drainage pipe (ceiling) (Locker RM) | 63d | 2011-03-03 A | 2011-10-04 | DP2LO23001C0, DP2LO26013C0 SS+4d, DP2S207807C0 | 95% | 3.15d | 2011-04-16 | 2011-06-27 | 29.45d | 0d | PLUMBING [1173.6 h]; Cost [61888.2 AED] | 61,888.15 | 58,793.75 | DP2LO22019C0 | DT | C | P2 | LO | ME | 220 | 19 | BILL 5 | B05 | S1 | 1F | R00 | ACF04 | 220 |  |  |  |  |  |  | 99 | 734.05 |  |  | MEP | M1F |  | 1S |  |  |  |  |  |
| DP2LO26001C0 |  | DT-P2 ; 1st Fix, Inst of Trunking/Conduiting (Locker RM) | 63d | 2011-03-03 A | 2011-10-15 | DP2LO23001C0, DP2S207807C0 | 80% | 12.6d | 2011-03-06 | 2011-05-18 | 29.45d | 0d | ELECTRICAL [824.4 h]; Cost [42423.2 AED] | 42,423.24 | 33,938.59 | DP2LO26001C0 | DT | C | P2 | LO | ME | 260 | 01 | BILL 5 | B05 | S1 | 1F | R00 | ACF04 | 260 |  |  |  |  |  |  | 70 | 14995.72 |  |  | MEP | M1F |  | 1S |  |  |  |  |  |
| DP2LO26005C0 |  | DT-P2 ; 2nd Fix, Wiring for Power/Lighting/Emergency (Locker RM) | 181d | 2011-03-08 A | 2012-04-11 | DP2LO09205C0 | 85% | 27d | 2011-11-27 | 2012-06-28 | 114.45d | 0d | ELECTRICAL [436.8 h]; Cost [21894.9 AED] | 21,894.91 | 18,610.67 | DP2LO26005C0 | DT | C | P2 | LO | ME | 260 | 05 | BILL 5 | B05 | S1 | 2F | R00 | ACF07 | 260 |  |  |  |  |  |  | 20 | 16765.24 |  |  | MEP |  |  | 2n |  | 85 |  |  |  |
| DP2LO22005C0 |  | DT-P2 ; 1st Fix, Inst of Water supply pipe (ceiling) (Locker RM) | 180d | 2011-03-16 A | 2011-12-07 | DP2LO22019C0 SS+5d, DP2LO23001C0, DP2S207807C0 | 70% | 54d | 2011-03-15 | 2011-10-15 | 29.45d | 0d | PLUMBING [4896 h]; Cost [264473 AED] | 264,473.49 | 185,131.44 | DP2LO22005C0 | DT | C | P2 | LO | ME | 220 | 05 | BILL 5 | B05 | S1 | 1F | R00 | ACF04 | 220 |  |  |  |  |  |  | 20 | 30677.68 | 95 | 85 | MEP | M1F |  | 1S | 70 | 70 |  |  |  |
| DP2LO26013C0 |  | DT-P2 ; 1st Fix, Inst of Cable Tray (Locker RM) | 120d | 2011-03-16 A | 2011-11-03 | DP2LO23001C0, DP2LO27010C0 SS+4d, DP2S207807C0 | 75% | 30d | 2011-03-10 | 2011-07-30 | 29.45d | 0d | ELECTRICAL [430.8 h]; Cost [23263.3 AED] | 23,263.34 | 17,447.5 | DP2LO26013C0 | DT | C | P2 | LO | ME | 260 | 13 | BILL 5 | B05 | S1 | 1F | R00 | ACF04 | 260 |  |  |  |  |  |  | 70 | 7560.56 | 98 | 80 | MEP | M1F |  | 1S | 75 | 98 |  |  |  |
| DP2LO22011C0 |  | DT-P2 ; 2nd Fix, Drainage/Water pipe (wall) (Locker RM) | 78d | 2011-04-04 A | 2012-01-07 | DP2LO09201C0 | 50% | 39d | 2011-04-18 | 2011-07-18 | 27.45d | 0d | PLUMBING [1173.6 h]; Cost [61888.2 AED] | 61,888.15 | 30,944.08 | DP2LO22011C0 | DT | C | P2 | LO | ME | 220 | 11 | BILL 5 | B05 | S1 | 2F | R00 | ACF07 | 220 |  |  |  |  |  |  | 95 |  | 98 | 95 | MEP |  |  | 2n | 50 | 95 |  |  |  |
| DP2LO40302C0 |  | DT-P2 ; 2nd Fix, Pneumatic tube (Locker RM) | 200d | 2011-04-10 A | 2011-12-14 | DP2LO09201C0 | 90% | 20d | 2011-06-11 | 2012-02-09 | 46.45d | 19d | MECHANICAL [5653.2 h]; Cost [291897 AED] | 291,897.23 | 262,707.5 | C03E140302C0 | DT | C | P2 | LO | ME | 403 | 02 | BILL 5 | B05 | S1 | 2F | R00 | ACF07 | 403 |  |  |  |  |  |  | 20 |  | 90 | 85 | MEP |  |  | 2n |  | 85 |  |  |  |
| DP2LO09203C0 |  | DT-P2 ; Partitions 1st face (Locker RM) | 90d | 2011-04-12 A | 2012-01-11 | DP2LO09201C0 SS+12d, DP2LO23008C0 FF, DP2LO23017C0 | 58% | 37.8d | 2011-08-03 | 2011-11-21 | 29.45d | 2d | PARTITIONS [812 m]; PARTITIONS [4029 h]; Cost |  |  | DP2LO09203C0 | DT | C | P2 | LO | PT | 092 | 03 | BILL 5 | B05 | S1 | 2F | R00 | ACF06 | 092 | 0 | 0 | 0 | 0 | 314 | 945 | 10 | 46211.8 | 45 | 25 | GP | P1F |  |  |  |  |  |  |  |
| DP2LO23015C0 |  | DT-P2 ; 2nd Fix, Insulation of CHW pipe & Duct (Locker RM) | 150d | 2011-04-12 A | 2012-02-13 | DP2LO23009C0, DP2LO23017C0, DP2LO23023C0 | 70% | 45d | 2011-06-16 | 2011-12-18 | 50.12d | 22.68d | MECHANICAL [5311.2 h]; Cost [286617 AED] | 286,617.06 | 200,631.94 | DP2LO23015C0 | DT | C | P2 | LO | ME | 230 | 15 | BILL 5 | B05 | S1 | 2F | R00 | ACF07 | 230 | 0 | 0 | 0 | 0 |  |  | 5 | 68213.98 | 80 | 25 | MEP |  |  | 2n | 70 | 50 |  |  |  |
| DP2LO23008C0 |  | DT-P2 ; 1st Fix, Inst of VCD's/FD's (Locker RM) | 180d | 2011-05-02 A | 2011-11-24 | DP2LO23023C0, DP2S207807C0 | 75% | 45d | 2011-06-01 | 2012-01-08 | 67.25d | 37.8d | MECHANICAL [5437.2 h]; Cost [232964 AED] | 232,964.23 | 174,723.17 | DP2LO23008C0 | DT | C | P2 | LO | ME | 230 | 08 | BILL 5 | B05 | S1 | 1F | R00 | ACF04 | 230 |  |  |  |  |  |  | 30 | 35020.3 | 95 | 90 | MEP | M1F |  | 1S | 75 | 90 |  |  |  |
| DP2LO27001C0 |  | DT-P2 ; 1st Fix, Wiring/ Cabling work (Locker RM) | 60d | 2011-05-15 A | 2011-12-25 | DP2LO26001C0, DP2LO26013C0, DP2LO27010C0, DP2S207807C0 | 35% | 39d | 2011-06-30 | 2011-09-11 | 127.12d | 99.67d | ELECTRICAL [436.8 h]; Cost [21894.9 AED] | 21,894.91 | 7,663.22 | DP2LO27001C0 | DT | C | P2 | LO | ME | 270 | 01 | BILL 5 | B05 | S1 | 1F | R00 | ACF04 | 270 |  |  |  |  |  |  | 10 |  | 90 | 60 | MEP | M1F |  | 1S | 35 | 90 |  |  |  |
| DP2LO21115C0 |  | DT-P2 ; 2nd Fix, Inst of Sprinkler droppers (Locker RM) | 54d | 2011-06-08 A | 2012-07-31 | DP2LO09501C0 | 10% | 48.6d | 2011-10-05 | 2011-12-13 | 68.85d | 0d | MECHANICAL [2067.6 h]; Cost [111492 AED] | 111,492.38 | 11,149.24 | DP2LO21115C0 | DT | C | P2 | LO | ME | 211 | 15 | BILL 5 | B05 | S1 | 2F | R00 | ACF07 | 211 |  |  |  |  |  |  |  | 12951.14 |  |  | MEP |  |  | 2n |  | 90 |  |  |  |
| DP2LO26007C0 |  | DT-P2 ; 2nd Fix, Cable Pulling (Locker RM) | 54d | 2011-06-09 A | 2011-12-18 | DP2LO09201C0 SS+6d | 5% | 51.3d | 2011-06-09 | 2011-08-13 | 43.95d | 16.5d | ELECTRICAL [6634.8 h]; Cost [332625 AED] | 332,625.29 | 16,631.26 | DP2LO26007C0 | DT | C | P2 | LO | ME | 260 | 07 | BILL 5 | B05 | S1 | 2F | R00 | ACF07 | 260 |  |  |  |  |  |  |  | 158225.44 | 20 | 10 | MEP |  |  | 2n | 5 | 45 |  |  |  |
| DP2LO26053C0 |  | DT-P2 ; 2nd Fix, Wiring / Cabling (Locker RM) | 48d | 2011-06-14 A | 2012-01-15 | DP2LO09201C0 | 5% | 45.6d | 2011-10-02 | 2011-12-01 | 146.72d | 119.28d | ELECTRICAL [436.8 h]; Cost [21894.9 AED] | 21,894.91 | 1,094.75 | DP2LO26053C0 | DT | C | P2 | LO | ME | 260 | 53 | BILL 5 | B05 | S1 | 2F | R00 | ACF07 | 260 |  |  |  |  | 389 | 977 |  | 9027.43 | 50 | 20 | MEP |  |  | 2n | 5 | 35 |  |  |  |
| DP2LO23009C0 |  | DT-P2 ; 2nd Fix, Inst of VAV'S CHW connection (Locker RM) | 200d | 2011-07-10 A | 2011-12-20 | DP2LO23017C0 | 90% | 20d | 2011-07-11 | 2012-03-10 | 50.12d | 0d | MECHANICAL [1684.8 h]; Cost [91006.1 AED] | 91,006.06 | 81,905.45 | DP2LO23009C0 | DT | C | P2 | LO | ME | 230 | 09 | BILL 5 | B05 | S1 | 2F | R00 | ACF07 | 230 |  |  |  |  |  |  |  |  | 90 | 35 | MEP |  |  | 2n |  | 10 |  |  |  |
| DP2LO23011C0 |  | DT-P2 ; 2nd Fix, Inst of Equipment (FCU,FAN) (Locker RM) | 78d | 2011-08-10 A | 2012-04-08 | DP2LO09205C0 | 70% | 23.4d | 2012-03-17 | 2012-06-14 | 166.05d | 109.6d | MECHANICAL [1588.8 h]; Cost [361645 AED] | 361,645.02 | 253,151.51 | DP2LO23011C0 | DT | C | P2 | LO | ME | 230 | 11 | BILL 5 | B05 | S1 | 2F | R00 | ACF04 | 230 | 0 | 0 | 0 | 0 |  |  |  |  | 50 | 0 | MEP |  |  | 2n |  |  | H |  |  |
| DP2LO26009C0 |  | DT-P2 ; 2nd Fix, Inst of Wall conduites (Locker RM) | 42d | 2011-08-10 A | 2011-12-28 | DP2LO09201C0 | 25% | 31.5d | 2011-11-21 | 2012-01-11 | 34.95d | 7.5d | ELECTRICAL [824.4 h]; Cost [42423.2 AED] | 42,423.24 | 10,605.81 | DP2LO26009C0 | DT | C | P2 | LO | ME | 260 | 09 | BILL 5 | B05 | S1 | 2F | R00 | ACF07 | 260 |  |  |  |  |  |  |  |  | 50 | 0 | MEP |  |  | 2n | 25 | 10 |  |  |  |
| DP2LO08103C0 |  | DT-P2 ; Door Frames (Locker RM) | 42d | 2011-09-05 A | 2011-11-30 | DP2LO09201C0 SS, GNHE08101C0 | 10% | 37.8d | 2011-10-27 | 2011-12-20 | 111.33d | 83.88d | ASSORTED DOORS [547 h]; Cost |  |  | DP2LO08103C0 | DT | C | P2 | LO | DO | 081 | 03 | BILL 5 | B05 | S1 | DF | R00 | ACF06 | 081 |  |  |  |  | 316 | 947 |  |  |  |  |  |  |  |  |  |  |  | 08 |  |
| DP2LO01005C0 |  | DT-P2 ; 2nd, Wall Inspection by Consultant (Locker RM) | 6d | 2012-01-07 | 2012-01-14 | DP2LO22011C0, DP2LO26007C0, DP2LO26009C0, DP2LO40302C0 |  |  |  |  | 27.45d | 0d | Labor General [1.2 h]; Cost |  |  | DP2LO01005C0 | DT | C | P2 | LO | ME | 010 | 05 | BILL 5 | B05 | S1 | WI | R00 | ACF07 | 010 |  |  |  |  |  |  |  |  |  |  | MEP |  |  | 2n |  |  |  |  |  |
| DP2LO09205C0 |  | DT-P2 ; Partitions Closing (Locker RM) | 47.88d | 2012-01-14 | 2012-03-11 | DAFOA09206C1 FF, DP2LO01005C0, DP2LO09203C0, DP2LO22005C0, DP2LO22019C0, DAFCI09203R02 FS+58d, DP2LO08103C0 FF, DP2LO23015C0 FF |  |  |  |  | 27.45d | 0d | PARTITIONS [812 m]; PARTITIONS [5172 h]; Cost |  |  | DP2LO09205C0 | DT | C | P2 | LO | PT | 092 | 05 | BILL 5 | B05 | S1 | FF | R00 | ACF06 | 092 |  |  |  |  | 315 | 946 |  |  |  |  | GP | P2F | R3 |  |  |  |  |  |  |
| DP2LO07103C0 |  | DT-P2 ; Waterproofing (Locker RM) | 11.88d | 2012-03-11 | 2012-03-25 | DP2LO08103C0, DP2LO09205C0 |  |  |  |  | 109.58d | 0d | THERMAL & MOISTURE [2467 m2]; THERMAL & MOISTURE [376 h]; Cost |  |  | DP2LO07103C0 | DT | C | P2 | LO | FF | 071 | 03 | BILL 5 | B05 | S1 | 01 | R00 | ACF03 | 071 |  |  |  |  | 105 | 999 |  |  |  |  |  |  |  |  |  |  |  |  |  |
| DP2LO09901C0 |  | DT-P2 ; Wall Prime & 1st coat (Locker RM) | 36d | 2012-03-11 | 2012-04-22 | DP2CO04003C0 SS+24d, DP2LO09205C0 |  |  |  |  | 27.45d | 0d | ASSORTED WALL FINISH [172 h]; Cost |  |  | DP2LO09901C0 | DT | C | P2 | LO | PA | 099 | 01 | BILL 5 | B05 | S1 | 01 | R00 | ACF06 | 099 |  |  |  |  | 328 | 956 |  |  |  |  |  |  |  |  |  |  |  |  |  |
| DP2LO26011C0 |  | DT-P2 ; 2nd Fix, Inst of Equipment (DB) (Locker RM) | 48d | 2012-03-11 | 2012-05-06 | DP2LO09205C0 |  |  |  |  | 99.45d | 60d | ELECTRICAL [4054.8 h]; Cost |  |  | DP2LO26011C0 | DT | C | P2 | LO | ME | 260 | 11 | BILL 5 | B05 | S1 | 2F | R00 | ACF04 | 260 |  |  |  |  |  |  |  |  |  |  | MEP |  |  | 2n |  |  | E |  |  |
| DP2LO27020C0 |  | DT-P2 ; 2nd Fix, Inst of ELV Equipment (Panels) (Locker RM) | 42d | 2012-03-11 | 2012-04-29 | DP2LO09205C0 |  |  |  |  | 93.45d | 66d | ELECTRICAL [1723.2 h]; Cost |  |  | DP2LO27020C0 | DT | C | P2 | LO | ME | 270 | 20 | BILL 5 | B05 | S1 | 2F | R00 | ACF04 | 270 |  |  |  |  |  |  |  |  |  |  | MEP |  |  | 2n |  |  | E |  |  |
| DP2LO09305C0 |  | DT-P2 ; Ceramic floor tile (Locker RM) | 11.88d | 2012-03-25 | 2012-04-08 | DP2LO07103C0 |  |  |  |  | 109.58d | 0d | ASSORTED FLOOR FINISH [136 h]; Cost |  |  | DP2LO09305C0 | DT | C | P2 | LO | FF | 093 | 05 | BILL 5 | B05 | S1 | 02 | R00 | ACF06 | CT |  |  |  |  | 106 | 1000 |  |  |  |  |  |  |  |  |  |  |  |  |  |
| DP2LO22025C0 |  | DT-P2 ; Final Fix, Inst of Sanitary Ware (Locker RM) | 54d | 2012-04-08 | 2012-06-10 | DP2LO09205C0, DP2LO09305C0, A10230 FS+148d |  |  |  |  | 109.58d | 0d | PLUMBING [2382 h]; Cost |  |  | DP2LO22025C0 | DT | C | P2 | LO | ME | 220 | 25 | BILL 5 | B05 | S1 | FF | R00 | ACF07 | 220 |  |  |  |  |  |  |  |  |  |  | MEP |  |  | FF |  |  |  |  |  |
| DP2LO26015C0 |  | DT-P2 ; Final Fix, Termination & Gladding of Cables (Locker RM) | 48d | 2012-04-11 | 2012-06-06 | DP2LO26005C0 |  |  |  |  | 114.45d | 58d | ELECTRICAL [368.4 h]; Cost |  |  | DP2LO26015C0 | DT | C | P2 | LO | ME | 260 | 15 | BILL 5 | B05 | S1 | FF | R00 | ACF07 | 260 |  |  |  |  |  |  |  |  |  |  | MEP |  |  | FF |  |  |  |  |  |
| DP2LO05501C0 |  | DT-P2 ; Handrails & balustrade (Locker RM) | 36d | 2012-04-22 | 2012-06-03 | DP2LO09901C0 |  |  |  |  | 175.32d | 147.88d | SECONDARY STEEL [170 h]; Cost |  |  | DP2LO05501C0 | DT | C | P2 | LO | SW | 055 | 01 | BILL 5 | B05 | S1 | 01 | R00 | ACF03 | a |  |  |  |  |  |  |  |  |  |  |  |  |  |  |  |  |  |  |  |
| DP2LO09501C0 |  | DT-P2 ; Ceiling Grid and Service Tile (Locker RM) | 36d | 2012-04-22 | 2012-06-03 | DP2LO09205C0 SS+15d, DP2LO21117C0, DP2LO23008C0, DP2LO23009C0, DP2LO23015C0, DP2LO27001C0, DAFCI22001R02 FS+65d, DP2LO26053C0 FF, DP2LO09901C0 |  |  |  |  | 27.45d | 0d | CEILING GRID FOR GYPSUM [4723.9 h]; Cost |  |  | DP2LO09501C0 | DT | C | P2 | LO | CE | 095 | 01 | BILL 5 | B05 | S1 | 01 | R00 | ACF06 | 095 |  |  |  |  | 323 | 952 |  |  |  |  |  |  |  |  |  |  |  |  |  |
| DP2LO09601C0 |  | DT-P2 ; Flooring (Rubber & etc) (Locker RM) | 36d | 2012-06-03 | 2012-07-16 | DP2LO09901C0, DAFCI22001R02 FS+65d, DP2LO09501C0, DP2LO27020C0 FF |  |  |  |  | 27.45d | 0d | RUBBER FLOOR [215 m2]; RUBBER FLOOR [88 h]; Cost |  |  | DP2LO09601C0 | DT | C | P2 | LO | FF | 096 | 01 | BILL 5 | B05 | S1 | 03 | R00 | ACF06 | RF |  |  |  |  | 326 | 955 |  |  |  |  |  |  |  |  |  |  |  |  | R3 |
| DP2LO09905C0 |  | DT-P2 ; Ceiling Prime & 1st coat (Locker RM) | 36d | 2012-06-03 | 2012-07-16 | DP2LO09501C0 |  |  |  |  | 103.33d | 0d | ASSORTED CEILING FINISH [249 h]; Cost |  |  | DP2LO09905C0 | DT | C | P2 | LO | PA | 099 | 05 | BILL 5 | B05 | S1 | 01 | R00 | ACF06 | 099 |  |  |  |  | 330 | 958 |  |  |  |  |  |  |  |  |  |  |  |  |  |
| DP2LO21113C0 |  | DT-P2 ; Final Fix, Inst of Sprinklers head/ Extinguisher (Locker RM) | 48d | 2012-06-03 | 2012-07-30 | DP2LO09501C0, DP2LO21115C0 SS+7d |  |  |  |  | 69.45d | 13d | MECHANICAL [403.2 h]; Cost |  |  | DP2LO21113C0 | DT | C | P2 | LO | ME | 211 | 13 | BILL 5 | B05 | S1 | FF | R00 | ACF07 | 211 |  |  |  |  |  |  |  |  |  |  | MEP |  |  | FF |  |  |  |  |  |
| DP2LO23021C0 |  | DT-P2 ; 2nd Fix, Inst of Flexible Duct & Plenum boxes (Locker RM) | 36d | 2012-06-03 | 2012-07-16 | DP2LO09205C0, DP2LO09501C0 |  |  |  |  | 57.45d | 0d | MECHANICAL [274.8 h]; Cost |  |  | DP2LO23021C0 | DT | C | P2 | LO | ME | 230 | 21 | BILL 5 | B05 | S1 | 2F | R00 | ACF07 | 230 |  |  |  |  |  |  |  |  |  |  | MEP |  |  | 2n |  |  |  |  |  |
| DP2LO26017C0 |  | DT-P2 ; Final Fix, Inst of Ceiling rose (Locker RM) | 48d | 2012-06-03 | 2012-07-30 | DP2LO09501C0 |  |  |  |  | 56.45d | 0d | ELECTRICAL [67.2 h]; Cost |  |  | DP2LO26017C0 | DT | C | P2 | LO | ME | 260 | 17 | BILL 5 | B05 | S1 | FF | R00 | ACF07 | 260 |  |  |  |  |  |  |  |  |  |  | MEP |  |  | FF |  |  |  |  |  |
| DP2LO27002C0 |  | DT-P2 ; 2nd Fix, Wiring Droppers (Locker RM) | 36d | 2012-06-03 | 2012-07-16 | DP2LO09501C0 |  |  |  |  | 56.45d | 0d | ELECTRICAL [436.8 h]; Cost |  |  | DP2LO27002C0 | DT | C | P2 | LO | ME | 270 | 02 | BILL 5 | B05 | S1 | 2F | R00 | ACF07 | 270 |  |  |  |  |  |  |  |  |  |  | MEP |  |  | 2n |  |  |  |  |  |
| DP2LO40303C0 |  | DT-P2 ; Final Fix, Pneumatic Station (Locker RM) | 54d | 2012-06-03 | 2012-08-06 | DP2LO09501C0 |  |  |  |  | 109.33d | 81.88d | MECHANICAL [5653.2 h]; Cost |  |  | C03E140303C0 | DT | C | P2 | LO | ME | 403 | 03 | BILL 5 | B05 | S1 | FF | R00 | ACF07 | 403 |  |  |  |  |  |  |  |  |  |  | MEP |  |  | FF |  |  |  |  |  |
| DP2LO22021C0 |  | DT-P2 ; Final Fix, Terminate Sanitary Ware & Appliances (Locker RM) | 48d | 2012-06-10 | 2012-08-06 | DP2LO22011C0, DP2LO22025C0 |  |  |  |  | 109.58d | 82.12d | PLUMBING [1917.6 h]; Cost |  |  | DP2LO22021C0 | DT | C | P2 | LO | ME | 220 | 21 | BILL 5 | B05 | S1 | FF | R00 | ACF07 | 220 |  |  |  |  |  |  |  |  |  |  | MEP |  |  | FF |  |  |  |  |  |
| DP2LO23019C0 |  | DT-P2 ; Final Fix, Inst of Grilles & Diffusers (Locker RM) | 54d | 2012-06-10 | 2012-08-13 | DP2LO09501C0, DP2LO23021C0 SS+6d |  |  |  |  | 57.45d | 1d | MECHANICAL [2560.8 h]; Cost |  |  | DP2LO23019C0 | DT | C | P2 | LO | ME | 230 | 19 | BILL 5 | B05 | S1 | FF | R00 | ACF07 | 230 |  |  |  |  |  |  |  |  |  |  | MEP |  |  | FF |  |  |  |  |  |
| DP2LO26003C0 |  | DT-P2 ; Final Fix, Inst of Light fittings (Locker RM) | 54d | 2012-06-11 | 2012-08-14 | DP2LO09501C0, DP2LO26017C0 SS+7d |  |  |  |  | 56.45d | 0d | ELECTRICAL [6626.4 h]; Cost |  |  | DP2LO26003C0 | DT | C | P2 | LO | ME | 260 | 03 | BILL 5 | B05 | S1 | FF | R00 | ACF07 | 260 |  |  |  |  |  |  |  |  |  |  | MEP |  |  | FF |  |  |  |  |  |
| DP2LO27030C0 |  | DT-P2 ; Final Fix, Inst of ELV device (Detector/Speaker) (Locker RM) | 54d | 2012-06-11 | 2012-08-14 | DP2LO09501C0, DP2LO27002C0 SS+7d |  |  |  |  | 56.45d | 0d | ELECTRICAL [2152.8 h]; Cost |  |  | DP2LO27030C0 | DT | C | P2 | LO | ME | 270 | 30 | BILL 5 | B05 | S1 | FF | R00 | ACF07 | 270 |  |  |  |  |  |  |  |  |  |  | MEP |  |  | FF |  |  |  |  |  |
| DP2LO06101C0 |  | DT-P2 ; Wood / caseworks (Locker RM) | 60d | 2012-07-16 | 2012-09-26 | DP2CO04415C0, DP2LO09501C0, DP2LO09901C0, DP2CO04407C0, DAFWA00119M0, CAFWA00113M0 FS+12d, DP2LO09601C0 |  |  |  |  | 27.45d | 0d | WOOD WORK/CASEWORK [5010 h]; Cost |  |  | DP2LO06101C0 | DT | C | P2 | LO | WO | 061 | 01 | BILL 5 | B05 | S1 | WW | R00 | ACF06 | 061 |  |  |  |  | 332 | 960 |  |  |  |  |  |  |  |  |  |  |  |  |  |
| DP2LO08107C0 |  | DT-P2 ; Doors (Locker RM) | 42d | 2012-07-16 | 2012-09-05 | DP2LO08103C0, DP2LO09901C0, DP2LO09601C0 |  |  |  |  | 61.33d | 0d | ASSORTED DOORS [1016 h]; Cost |  |  | DP2LO08107C0 | DT | C | P2 | LO | DO | 081 | 07 | BILL 5 | B05 | S1 | DR | R00 | ACF06 | 081 |  |  |  |  | 317 | 948 |  |  |  |  |  |  |  |  |  |  |  | 08 |  |
| DP2LO09701C0 |  | DT-P2 ; Wall finishes (ST, WD, WC) (Locker RM) | 48d | 2012-07-16 | 2012-09-12 | DP2LO26011C0, DP2LO27020C0, OGNMU00051S0, DAFCI22001R02 FS+164d, DP2LO09601C0 |  |  |  |  | 39.45d | 0d | ASSORTED WALL FINISH [2529 h]; Cost |  |  | DP2LO09701C0 | DT | C | P2 | LO | WF | 097 | 01 | BILL 5 | B05 | S1 | 01 | R00 | ACF06 | 097 |  |  |  |  | 105 | 1002 |  |  |  |  |  |  |  |  |  |  |  |  |  |
| DP2LO09903C0 |  | DT-P2 ; Wall Final Paint (Locker RM) | 36d | 2012-07-16 | 2012-08-29 | DP2LO09901C0, DP2LO09905C0 |  |  |  |  | 103.33d | 48d | ASSORTED WALL FINISH [93 h]; Cost |  |  | DP2LO09903C0 | DT | C | P2 | LO | PA | 099 | 03 | BILL 5 | B05 | S1 | 02 | R00 | ACF06 | 099 |  |  |  |  | 329 | 957 |  |  |  |  |  |  |  |  |  |  |  |  |  |
| DP2LO01006C0 |  | DT-P2 ; 2nd, Ceiling Inspection by Consultants (Locker RM) | 6d | 2012-08-14 | 2012-08-23 | DP2LO21115C0, DP2LO23009C0, DP2LO23011C0, DP2LO23015C0, DP2LO27002C0, DP2LO09501C0, DP2LO21113C0, DP2LO23019C0, DP2LO26003C0, DP2LO26017C0, DP2LO27030C0, DP2LO26015C0 |  |  |  |  | 56.45d | 29d | Labor General [1.2 h]; Cost |  |  | DP2LO01006C0 | DT | C | P2 | LO | ME | 010 | 06 | BILL 5 | B05 | S1 | CI | R00 | ACF07 | 010 |  |  |  |  |  |  |  |  |  |  | MEP |  |  | 2n |  |  |  |  |  |
| DP2LO08709C0 |  | DT-P2 ; Ironmongery (Locker RM) | 36d | 2012-09-05 | 2012-10-17 | DP2LO08107C0 |  |  |  |  | 61.33d | 33.88d | IRONMONGERY [1287 h]; Cost |  |  | DP2LO08709C0 | DT | C | P2 | LO | DO | 087 | 09 | BILL 5 | B05 | S1 | IM | R00 | ACF06 | 087 |  |  |  |  | 322 | 951 |  |  |  |  |  |  |  |  |  |  |  | 08 |  |
| DP2LO11001C0 |  | DT-P2 ; Wall Protection (WP, CG, WG, FCG) (Locker RM) | 24d | 2012-09-12 | 2012-10-10 | DP2LO09701C0, DP2LO09903C0 SS |  |  |  |  | 67.33d | 39.88d | FF&E [2699 h]; Cost |  |  | DP2LO11001C0 | DT | C | P2 | LO | WF | 110 | 01 | BILL 5 | B05 | S1 | 03 | R00 | ACF08 | b |  |  |  |  | 326 | 1001 |  |  |  |  |  |  |  |  |  |  |  |  |  |
| DP2LO09503C0 |  | DT-P2 ; Ceiling closure - ACT/Gypsum (Locker RM) | 21.88d | 2012-09-26 | 2012-10-22 | DAFOA09505C1 FF, DP2LO01006C0, DP2LO21115C0, DP2LO26005C0, DP2LO27001C0, DP2LO27002C0, DP2LO06101C0, DP2LO09701C0, DP2LO23021C0 |  |  |  |  | 27.45d | 0d | CEILING GYPSUM [298.48 h]; Cost |  |  | DP2LO09503C0 | DT | C | P2 | LO | CE | 095 | 03 | BILL 5 | B05 | S1 | 02 | R00 | ACF06 | 095 |  |  |  |  | 324 | 953 |  |  |  |  |  |  |  |  |  |  |  |  |  |
| DP2LO09907C0 |  | DT-P2 ; Ceiling Final paint (Locker RM) | 18d | 2012-10-22 | 2012-11-14 | DP2LO09601C0, DP2LO09905C0, DP2LO09503C0 |  |  |  |  | 39.45d | 12d | ASSORTED CEILING FINISH [135 h]; Cost |  |  | DP2LO09907C0 | DT | C | P2 | LO | PA | 099 | 07 | BILL 5 | B05 | S1 | 02 | R00 | ACF06 | 099 |  |  |  |  | 331 | 959 |  |  |  |  |  |  |  |  |  |  |  |  |  |
| DP2LO11003C0 |  | DT-P2 ; FF & E (Locker RM) | 24d | 2012-10-22 | 2012-11-22 | DP2LO09601C0, DP2LO06101C0, DP2LO09503C0 |  |  |  |  | 33.45d | 6d | FF&E [325 h]; Cost |  |  | DP2LO11003C0 | DT | C | P2 | LO | WO | 110 | 03 | BILL 5 | B05 | S1 | 04 | R00 | ACF08 | a |  |  |  |  | 333 | 961 |  |  |  |  |  |  |  |  |  |  |  |  |  |
| DP2LO22027C0 |  | DT-P2 ; Final Fix, Inst of All drain (Locker RM) | 18d | 2012-10-22 | 2012-11-14 | DP2LO09305C0, DP2LO09503C0 |  |  |  |  | 27.45d | 0d | PLUMBING [1173.6 h]; Cost |  |  | DP2LO22027C0 | DT | C | P2 | LO | ME | 220 | 27 | BILL 5 | B05 | S1 | FF | R00 | ACF07 | 220 |  |  |  |  |  |  |  |  |  |  | MEP |  |  | FF |  |  |  |  |  |
| DP2LO26019C0 |  | DT-P2 ; Final Fix, Inst of Switch/Sockets (Locker RM) | 18d | 2012-10-22 | 2012-11-14 | DP2LO09901C0, DP2LO09503C0 |  |  |  |  | 27.45d | 0d | ELECTRICAL [610.8 h]; Cost |  |  | DP2LO26019C0 | DT | C | P2 | LO | ME | 260 | 19 | BILL 5 | B05 | S1 | FF | R00 | ACF07 | 260 |  |  |  |  |  |  |  |  |  |  | MEP |  |  | FF |  |  |  |  |  |

| ID | WBS | Activity | Duration | Start | Finish | Predecessors | Complete | Remaining | Planned start | Planned finish | Total float | Free float | Resources | Cost | Actual cost | change id | CCAD BUILDING(SET) | CCAD PHASE(SET) | CCAD FLOOR(SET) | CCAD ZONE(SET) | CCAD WORK(SET) | CCAD SECTION(SET) | CCAD SERIAL No.(SET) | CCAD CBS(SET) | CCAD BILL(SET) | CCAD HANDOVER(SET) | CCAD TAG(SET) | CCAD REV(SET) | CCADACF (SET) | CCAD SSCF | RENZ % COMPLETE | CCAD SUB ZONE MEP(SET) | CCAD CSA | Act Selector % | Claimed This Month | PERCENT COMPLETE | July2011 Target% Complete | P_811 | P_711 | user_number8 | user_integer1 | user_integer2 | user_number7 | Change Order # | NEW ACTIVITY ID | CCAD MEQ | CCAD DIVISION(SET) | R3 Finish |
| --- | --- | --- | --- | --- | --- | --- | --- | --- | --- | --- | --- | --- | --- | --- | --- | --- | --- | --- | --- | --- | --- | --- | --- | --- | --- | --- | --- | --- | --- | --- | --- | --- | --- | --- | --- | --- | --- | --- | --- | --- | --- | --- | --- | --- | --- | --- | --- | --- |
|  | 10 | **Precommissioning Tesing & snagging (Ster Proc / Toilet & Locker Rm)** |  | 2012-11-14 | 2012-12-30 |  |  |  |  |  |  |  |  |  |  |  |  |  |  |  |  |  |  |  |  |  |  |  |  |  |  |  |  |  |  |  |  |  |  |  |  |  |  |  |  |  |  |  |
| DP2TS01804C0 |  | DT-P2 ; MEP de-snag, FIREM sign-off | 12d | 2012-11-14 | 2012-11-29 | DP2LO22025C0, DP2LO22027C0, DP2LO26015C0, DP2LO22021C0, DP2LO21113C0, DP2LO23019C0, DP2LO26017C0, DP2LO26003C0, DP2LO27030C0, DP2LO40303C0, DP2LO26019C0, DP2LO06101C0 |  |  |  |  | 27.45d | 0d | TESTING & COMMISSIONING [1275 h]; Cost |  |  | DP2TS01801C0 | DT | C | P2 | TS | SC | 018 | 01 | BILL 5 | B05 | S1 | 01 | R00 | ACF07 | 018 |  |  |  |  |  |  |  |  |  |  |  |  |  |  |  |  |  |  |
| DP2TS01802C10 |  | DT-P2 ; Touch-up & Clean / JV inspection /CIR /De-snag | 18d | 2012-11-29 | 2012-12-22 | DP2CO04401C0, DP2LO06101C0, DP2LO08709C0, DP2LO09305C0, DP2LO09601C0, DP2LO09701C0, DP2LO09903C0, DP2LO09907C0, DP2LO11001C0, DP2LO11003C0, DP2TS01804C0, DP2LO05501C0, DP2LO09503C0 |  |  |  |  | 27.45d | 0d | TESTING & COMMISSIONING [213 h]; Cost |  |  | DP2TS01802C0 | DT | C | P2 | TS | SC | 018 | 02 | BILL 5 | B05 | S1 | 02 | R00 | ACF07 | 018 |  |  |  |  |  |  |  |  |  |  |  |  |  |  |  |  |  |  |
| DP2TS01808C0 |  | DT-P2 ; Consultant's final de-snag inspection | 7d | 2012-12-22 | 2012-12-30 | DP2TS01802C10 |  |  |  |  | 27.45d | 13.35d | Labor General [1 h]; Cost |  |  | DP2TS01803C0 | DT | C | P2 | TS | SC | 018 | 03 | BILL 5 | B05 | S1 | 03 | R00 | ACF07 | 018 |  |  |  |  |  |  |  |  |  |  |  |  |  |  |  |  |  |  |
|  | 04 | **Corridor / Public & other area** |  | 2010-12-21 | 2013-01-13 |  |  |  |  |  |  |  |  |  |  |  |  |  |  |  |  |  |  |  |  |  |  |  |  |  |  |  |  |  |  |  |  |  |  |  |  |  |  |  |  |  |  |  |
| DP2PA23001C0 |  | DT-P2 ; 1st Fix, Inst. of Supports for MEP (Public Area) | 26.88d | 2010-12-21 A | 2011-10-01 | DP2S107807C0 SS, DP2S207807C0 SS, DP2S307807C0 SS | 100% | 0d | 2011-01-04 | 2011-02-03 | 25.2d | 0d | MECHANICAL [2462.4 h]; Cost [75432.9 AED] | 75,432.94 | 71,661.29 | DP2PA23001C0 | DT | C | P2 | PA | ME | 230 | 01 | BILL 5 | B05 | S1 | 1F | R00 | ACF04 | 230 | 100 | 1S | MEP | M1F |  |  |  |  |  |  |  |  |  |  |  |  |  |  |
| DP2PA21111C0 |  | DT-P2 ; 1st Fix, Inst of Sprinkler main pipe (Public Area) | 45d | 2011-01-15 A | 2011-10-03 | DP2PA22005C0 SS+12d, DP2PA23001C0, DP2S107807C0, DP2S207807C0, DP2S307807C0 | 95% | 2.25d | 2011-04-13 | 2011-06-04 | 62d | 0d | MECHANICAL [3278.4 h]; Cost [53543.7 AED] | 53,543.69 | 50,866.51 | DP2PA21111C0 | DT | C | P2 | PA | ME | 211 | 11 | BILL 5 | B05 | S1 | 1F | R00 | ACF04 | 211 | 98 | 1S | MEP | M1F | 4247.33 |  |  |  |  |  |  |  |  |  |  |  |  |  |
| DP2PA22005C0 |  | DT-P2 ; 1st Fix, Inst of Water supply pipe (ceiling) (Public Area) | 63d | 2011-01-15 A | 2011-10-04 | DP2PA22019C0 SS+7d, DP2PA23001C0, DP2S107807C0, DP2S207807C0, DP2S307807C0 | 95% | 3.15d | 2011-03-23 | 2011-06-05 | 62d | 0d | PLUMBING [4896 h]; Cost [264473 AED] | 264,473.49 | 251,249.81 | DP2PA22005C0 | DT | C | P2 | PA | ME | 220 | 05 | BILL 5 | B05 | S1 | 1F | R00 | ACF04 | 220 | 65 | 1S | MEP | M1F | 107372.05 |  |  |  |  |  |  |  |  |  |  |  |  |  |
| DP2PA22019C0 |  | DT-P2 ; 1st Fix, Inst of Drainage pipe (ceiling) (Public Area) | 63d | 2011-01-15 A | 2011-10-04 | DP2PA23001C0, DP2PA26013C0 SS+14d, DP2S107807C0, DP2S207807C0, DP2S307807C0 | 95% | 3.15d | 2011-03-15 | 2011-05-28 | 62d | 0d | PLUMBING [4424.4 h]; Cost [61888.2 AED] | 61,888.15 | 58,793.75 | DP2PA22019C0 | DT | C | P2 | PA | ME | 220 | 19 | BILL 5 | B05 | S1 | 1F | R00 | ACF04 | 220 | 98 | 1S | MEP | M1F | 5725.5 |  |  |  |  |  |  |  |  |  |  |  |  |  |
| DP2PA23017C0 |  | DT-P2 ; 1st Fix, Inst of CHW pipe (Public Area) | 120d | 2011-01-18 A | 2011-11-03 | DP2PA21111C0 SS+12d, DP2PA23001C0, DP2S107807C0, DP2S207807C0, DP2S307807C0 | 75% | 30d | 2011-04-17 | 2011-09-07 | 62d | 0d | MECHANICAL [7449.6 h]; Cost [345418 AED] | 345,418.28 | 259,063.71 | DP2PA23017C0 | DT | C | P2 | PA | ME | 230 | 17 | BILL 5 | B05 | S1 | 1F | R00 | ACF04 | 230 | 65 | 1S | MEP | M1F | 118545.5 | 75 | 90 | 98 | 95 |  |  |  |  |  |  |  |  |  |
| DP2PA26001C0 |  | DT-P2 ; 1st Fix, Inst of Trunking/Conduiting (Public Area) | 64d | 2011-01-25 A | 2011-10-15 | DP2PA23001C0, DP2S107807C0, DP2S207807C0, DP2S307807C0 | 80% | 12.6d | 2011-01-29 | 2011-04-13 | 62d | 0d | ELECTRICAL [19981.2 h]; Cost [42423.2 AED] | 42,423.24 | 33,938.59 | DP2PA26001C0 | DT | C | P2 | PA | ME | 260 | 01 | BILL 5 | B05 | S1 | 1F | R00 | ACF04 | 260 | 85 | 1S | MEP | M1F | 195438.85 |  |  |  |  |  |  |  |  |  |  |  |  |  |
| DP2PA09201C0 |  | DT-P2 ; Metal Studs (Public Area) | 90d | 2011-02-13 A | 2011-11-02 | DP2PA23001C0 SS+12d | 68% | 28.8d | 2011-03-20 | 2011-07-03 | 25.2d | 0d | PARTITIONS [4965 h]; PARTITIONS - Metal Studs [780 m]; Cost |  |  | DP2PA09201C0 | DT | C | P2 | PA | PT | 092 | 01 | BILL 5 | B05 | S1 | 1F | R00 | ACF06 | 092 | 45 |  | GP | PMS | 65202.8 |  |  | 60 | 55 | 0 | 0 | 0 | 0 | 313 | 944 |  |  |  |
| DP2PA27010C0 |  | DT-P2 ; 1st Fix, Inst of Trunking for ELV system (Public Area) | 45d | 2011-02-19 A | 2011-10-13 | DP2PA23001C0, DP2PA26001C0 SS+14d, DP2S107807C0, DP2S207807C0, DP2S307807C0 | 75% | 11.25d | 2011-03-05 | 2011-04-26 | 62d | 0d | ELECTRICAL [4165.2 h]; Cost [88597.9 AED] | 88,597.89 | 66,448.42 | DP2PA27010C0 | DT | C | P2 | PA | ME | 270 | 10 | BILL 5 | B05 | S1 | 1F | R00 | ACF04 | 270 | 90 | 1S | MEP | M1F | 26469.78 |  |  |  |  |  |  |  |  |  |  |  |  |  |
| DP2PA26013C0 |  | DT-P2 ; 1st Fix, Inst of Cable Tray (Public Area) | 63d | 2011-03-02 A | 2011-10-15 | DP2PA23001C0, DP2PA27010C0 SS+10d, DP2S107807C0, DP2S207807C0, DP2S307807C0 | 80% | 12.6d | 2011-03-02 | 2011-05-15 | 62d | 0d | ELECTRICAL [430.8 h]; Cost [23263.3 AED] | 23,263.34 | 18,610.67 | DP2PA26013C0 | DT | C | P2 | PA | ME | 260 | 13 | BILL 5 | B05 | S1 | 1F | R00 | ACF04 | 260 | 90 | 1S | MEP | M1F | 2700.17 |  |  |  |  |  |  |  |  |  |  |  |  |  |
| DP2PA21117C0 |  | DT-P2 ; 1st Fix, Inst of Sprinkler branch pipe (Public Area) | 62d | 2011-03-15 A | 2011-11-09 | DP2PA09201C0, DP2PA21111C0, DP2S107807C0, DP2S207807C0, DP2S307807C0 | 95% | 3.1d | 2011-04-30 | 2011-07-12 | 168.1d | 152.1d | MECHANICAL [1441.2 h]; Cost [78749.8 AED] | 78,749.79 | 74,812.3 | DP2PA21117C0 | DT | C | P2 | PA | ME | 211 | 17 | BILL 5 | B05 | S1 | 1F | R00 | ACF04 | 211 | 98 | 1S | MEP | M1F | 1826.12 |  |  |  |  |  |  |  |  |  |  |  |  |  |
| DP2PA23023C0 |  | DT-P2 ; 1st Fix, Inst of Main Ducting (Public Area) | 250d | 2011-03-19 A | 2011-12-01 | DP2PA23001C0, DP2PA23017C0 SS+7d, DP2S107807C0, DP2S207807C0, DP2S307807C0 | 80% | 50d | 2011-03-19 | 2012-01-15 | 64d | 0d | MECHANICAL [12525.6 h]; Cost [622619 AED] | 622,619.08 | 498,095.27 | DP2PA23023C0 | DT | C | P2 | PA | ME | 230 | 23 | BILL 5 | B05 | S1 | 1F | R00 | ACF04 | 230 | 95 | 1S | MEP | M1F |  | 80 | 95 |  |  |  |  |  |  |  |  |  |  |  |
| DP2PA22011C0 |  | DT-P2 ; 2nd Fix, Drainage/Water pipe (wall) (Public Area) | 250d | 2011-04-02 A | 2012-01-17 | DP2PA09201C0, DAFCI09203R02 FS+58d | 80% | 50d | 2011-03-27 | 2012-01-22 | 16d | 0d | PLUMBING [1173.6 h]; Cost [61888.2 AED] | 61,888.15 | 49,510.52 | DP2PA22011C0 | DT | C | P2 | PA | ME | 220 | 11 | BILL 5 | B05 | S1 | 2F | R00 | ACF07 | 220 | 95 | 2n | MEP |  |  | 80 | 95 |  |  |  |  |  |  |  |  |  |  |  |
| DP2PA09203C0 |  | DT-P2 ; Partitions 1st face (Public Area) | 90d | 2011-04-03 A | 2011-11-16 | DP2PA09201C0 SS+12d | 58% | 37.8d | 2011-08-03 | 2011-11-21 | 72.2d | 56.2d | PARTITIONS [780 m]; PARTITIONS [3868 h]; Cost |  |  | DP2PA09203C0 | DT | C | P2 | PA | PT | 092 | 03 | BILL 5 | B05 | S1 | 2F | R00 | ACF06 | 092 | 12 |  | GP | P1F | 36513.6 |  |  | 45 | 25 | 0 | 0 | 0 | 0 | 314 | 945 |  |  |  |
| DP2PA40302C0 |  | DT-P2 ; 2nd Fix, Pneumatic tube (Public Area) | 250d | 2011-04-03 A | 2011-11-12 | DP2PA09201C0 | 98% | 5d | 2011-03-27 | 2012-01-22 | 70.2d | 54.2d | MECHANICAL [6324 h]; Cost [291897 AED] | 291,897.23 | 286,059.28 | C03E140302C0 | DT | C | P2 | PA | ME | 403 | 02 | BILL 5 | B05 | S1 | 2F | R00 | ACF07 | 403 | 95 | 2n | MEP |  |  |  | 98 |  |  |  |  |  |  |  |  |  |  |  |
| DP2PA23015C0 |  | DT-P2 ; 2nd Fix, Insulation of CHW pipe & Duct (Public Area) | 180d | 2011-04-12 A | 2012-02-02 | DP2PA23009C0, DP2PA23017C0, DP2PA23023C0 | 85% | 27d | 2011-06-11 | 2012-01-17 | 62d | 46d | MECHANICAL [5311.2 h]; Cost [286617 AED] | 286,617.06 | 243,624.5 | DP2PA23015C0 | DT | C | P2 | PA | ME | 230 | 15 | BILL 5 | B05 | S1 | 2F | R00 | ACF07 | 230 | 40 | 2n | MEP |  | 102321 |  | 70 | 85 | 70 | 0 | 0 | 0 | 0 |  |  |  |  |  |
| DP2PA27001C0 |  | DT-P2 ; 1st Fix, Wiring/ Cabling work (Public Area) | 90d | 2011-05-09 A | 2011-12-28 | DP2PA26001C0, DP2PA26013C0, DP2PA27010C0, DP2S107807C0, DP2S207807C0, DP2S307807C0 | 35% | 58.5d | 2011-05-15 | 2011-08-29 | 128.9d | 112.9d | ELECTRICAL [436.8 h]; Cost [21894.9 AED] | 21,894.91 | 7,663.22 | DP2PA27001C0 | DT | C | P2 | PA | ME | 270 | 01 | BILL 5 | B05 | S1 | 1F | R00 | ACF04 | 270 | 20 | 1S | MEP | M1F | 18055.1 | 35 | 90 |  |  |  |  |  |  |  |  |  |  |  |
| DP2PA26009C0 |  | DT-P2 ; 2nd Fix, Inst of Wall conduites (Public Area) | 78d | 2011-05-31 A | 2011-12-24 | DP2PA09201C0 | 50% | 39d | 2011-05-31 | 2011-09-01 | 36.2d | 0d | ELECTRICAL [824.4 h]; Cost [42423.2 AED] | 42,423.24 | 21,211.62 | DP2PA26009C0 | DT | C | P2 | PA | ME | 260 | 09 | BILL 5 | B05 | S1 | 2F | R00 | ACF07 | 260 |  | 2n | MEP |  |  |  | 10 | 50 | 10 |  |  |  |  |  |  |  |  |  |
| DP2PA23008C0 |  | DT-P2 ; 1st Fix, Inst of VCD's/FD's (Public Area) | 250d | 2011-06-04 A | 2012-01-31 | DP2PA23023C0, DP2S107807C0, DP2S207807C0, DP2S307807C0 | 80% | 50d | 2011-06-04 | 2012-04-02 | 64d | 48d | MECHANICAL [5437.2 h]; Cost [232964 AED] | 232,964.23 | 186,371.39 | DP2PA23008C0 | DT | C | P2 | PA | ME | 230 | 08 | BILL 5 | B05 | S1 | 1F | R00 | ACF04 | 230 |  | 1S | MEP | M1F | 175101.51 | 80 | 90 | 95 | 90 |  |  |  |  |  |  |  |  |  |
| DP2PA26005C0 |  | DT-P2 ; 2nd Fix, Wiring for Power/Lighting/Emergency (Public Area) | 180d | 2011-06-07 A | 2012-05-09 | DP2PA09205C0 | 80% | 36d | 2011-10-25 | 2012-05-30 | 88d | 0d | ELECTRICAL [436.8 h]; Cost [21894.9 AED] | 21,894.91 | 17,515.93 | DP2PA26005C0 | DT | C | P2 | PA | ME | 260 | 05 | BILL 5 | B05 | S1 | 2F | R00 | ACF07 | 260 |  | 2n | MEP |  | 14185.97 | 80 | 55 | 85 | 55 |  |  |  |  |  |  |  |  |  |
| DP2PA26053C0 |  | DT-P2 ; 2nd Fix, Wiring / Cabling (Public Area) | 42d | 2011-06-07 A | 2012-02-11 | DP2PA26009C0 | 5% | 39.9d | 2011-10-25 | 2011-12-19 | 128.3d | 112.3d | ELECTRICAL [436.8 h]; Cost [21894.9 AED] | 21,894.91 | 1,094.75 | DP2PA26053C0 | DT | C | P2 | PA | ME | 260 | 53 | BILL 5 | B05 | S1 | 2F | R00 | ACF07 | 260 |  | 2n | MEP |  | 12896.34 | 5 | 50 |  |  |  |  |  |  | 389 | 977 |  |  |  |
| DP2PA21115C0 |  | DT-P2 ; 2nd Fix, Inst of Sprinkler droppers (Public Area) | 54d | 2011-06-08 A | 2012-08-18 | DP2PA09501C0 | 10% | 48.6d | 2011-10-01 | 2011-12-08 | 51.4d | 0d | MECHANICAL [2067.6 h]; Cost [111492 AED] | 111,492.38 | 11,149.24 | DP2PA21115C0 | DT | C | P2 | PA | ME | 211 | 15 | BILL 5 | B05 | S1 | 2F | R00 | ACF07 | 211 |  | 2n | MEP |  | 12951.14 |  | 60 |  |  |  |  |  |  |  |  |  |  |  |
| DP2PA27002C0 |  | DT-P2 ; 2nd Fix, Wiring Droppers (Public Area) | 60d | 2011-06-16 A | 2012-08-26 | DP2PA09501C0 | 10% | 54d | 2011-10-01 | 2011-12-15 | 46d | 0d | ELECTRICAL [436.8 h]; Cost [21894.9 AED] | 21,894.91 | 2,189.49 | DP2PA27002C0 | DT | C | P2 | PA | ME | 270 | 02 | BILL 5 | B05 | S1 | 2F | R00 | ACF07 | 270 |  | 2n | MEP |  | 12896.34 | 10 | 50 |  |  |  |  |  |  |  |  |  |  |  |
| DP2PA23009C0 |  | DT-P2 ; 2nd Fix, Inst of VAV'S CHW connection (Public Area) | 150d | 2011-06-18 A | 2012-01-02 | DP2PA23017C0 | 70% | 45d | 2011-06-18 | 2011-12-19 | 62d | 0d | MECHANICAL [1684.8 h]; Cost [91006.1 AED] | 91,006.06 | 63,704.24 | DP2PA23009C0 | DT | C | P2 | PA | ME | 230 | 09 | BILL 5 | B05 | S1 | 2F | R00 | ACF07 | 230 |  | 2n | MEP |  | 10820.47 | 70 | 40 | 80 | 35 | 0 | 0 | 0 | 0 |  |  |  |  |  |
| DP2PA23011C0 |  | DT-P2 ; 2nd Fix, Inst of Equipment (FCU,FAN) (Public Area) | 79d | 2011-08-10 A | 2012-04-25 | DP2PA09205C0 | 70% | 23.4d | 2012-04-03 | 2012-07-05 | 28.6d | 12.6d | MECHANICAL [1588.8 h]; Cost [361645 AED] | 361,645.02 | 253,151.51 | DP2PA23011C0 | DT | C | P2 | PA | ME | 230 | 11 | BILL 5 | B05 | S1 | 2F | R00 | ACF04 | 230 |  | 2n | MEP |  |  |  |  | 50 | 0 | 0 | 0 | 0 | 0 |  |  | H |  |  |
| DP2PA08103C0 |  | DT-P2 ; Door Frames (Public Area) | 42d | 2011-09-05 A | 2011-12-22 | DP2PA09201C0, GNHE08101C0 | 10% | 37.8d | 2011-10-13 | 2011-12-06 | 97.4d | 81.4d | ASSORTED DOORS [302 h]; Cost |  |  | DP2PA08103C0 | DT | C | P2 | PA | DO | 081 | 03 | BILL 5 | B05 | S1 | DF | R00 | ACF06 | 081 |  |  |  |  |  |  |  |  |  |  |  |  |  | 316 | 947 |  | 08 |  |
| DP2PA01005C0 |  | DT-P2 ; 2nd, Wall Inspection by Consultant (Public Area) | 6d | 2012-01-18 | 2012-01-24 | DP2PA22011C0, DP2PA26009C0, DP2PA40302C0 |  |  |  |  | 16d | 0d | Labor General [1.2 h]; Cost |  |  | DP2PA01005C0 | DT | C | P2 | PA | ME | 010 | 05 | BILL 5 | B05 | S1 | WI | R00 | ACF07 | 010 |  | 2n | MEP |  |  |  |  |  |  |  |  |  |  |  |  |  |  |  |
| DP2PA09205C0 |  | DT-P2 ; Partitions Closing (Public Area) | 54d | 2012-01-25 | 2012-03-28 | DAFOA09206C1 FF, DP2PA01005C0, DP2PA09203C0, DP2PA22005C0, DP2PA22019C0, DAFCI09203R02 FS+58d, DP2PA08103C0 FF, DP2PA23008C0 FF, DP2PA23023C0 FF, DP2PA23017C0 FF, DP2PA23015C0 FF |  |  |  |  | 16d | 0d | PARTITIONS [780 m]; PARTITIONS [4973 h]; Cost |  |  | DP2PA09205C0 | DT | C | P2 | PA | PT | 092 | 05 | BILL 5 | B05 | S1 | FF | R00 | ACF06 | 092 |  |  | GP | P2F |  |  |  |  |  |  |  |  |  | 315 | 946 |  |  |  |
| DP2PA09901C0 |  | DT-P2 ; Wall Prime & 1st coat (Public Area) | 36d | 2012-03-29 | 2012-05-09 | DP2CO04003C0 SS+24d, DP2PA09205C0, DP2CO04455C0 FF |  |  |  |  | 16d | 0d | WALL PAINT [1357 h]; WALL PAINT [1694 m2]; Cost |  |  | DP2PA09901C0 | DT | C | P2 | PA | PA | 099 | 01 | BILL 5 | B05 | S1 | 01 | R00 | ACF06 | 099 |  |  |  |  |  |  |  |  |  |  |  |  |  | 328 | 956 |  |  |  |
| DP2PA26007C0 |  | DT-P2 ; 2nd Fix, Cable Pulling (Public Area) | 42d | 2012-03-29 | 2012-05-16 | DP2PA09205C0 |  |  |  |  | 136d | 120d | ELECTRICAL [6634.8 h]; Cost |  |  | DP2PA26007C0 | DT | C | P2 | PA | ME | 260 | 07 | BILL 5 | B05 | S1 | 2F | R00 | ACF07 | 260 |  | 2n | MEP |  |  |  |  |  |  |  |  |  |  |  |  |  |  |  |
| DP2PA26011C0 |  | DT-P2 ; 2nd Fix, Inst of Equipment (DB) (Public Area) | 48d | 2012-03-29 | 2012-05-23 | DP2PA09205C0 |  |  |  |  | 46d | 24d | ELECTRICAL [4054.8 h]; Cost |  |  | DP2PA26011C0 | DT | C | P2 | PA | ME | 260 | 11 | BILL 5 | B05 | S1 | 2F | R00 | ACF04 | 260 |  | 2n | MEP |  |  |  |  |  |  |  |  |  |  |  |  | E |  |  |
| DP2PA05501C0 |  | DT-P2 ; Handrails & balustrade (Public Area) | 36d | 2012-05-10 | 2012-06-21 | DP2PA09901C0, DAFT205509C0, DAFT805509C0, DAFT905509C0, DAFT1005509C0, DAFT505509C0 |  |  |  |  | 160d | 144d | SECONDARY STEEL [164 h]; Cost |  |  | DP2PA05501C0 | DT | C | P2 | PA | SW | 055 | 01 | BILL 5 | B05 | S1 | 01 | R00 | ACF03 | a |  |  |  |  |  |  |  |  |  |  |  |  |  |  |  |  |  |  |
| DP2PA09501C0 |  | DT-P2 ; Ceiling Grid and Service Tile (Public Area) | 36d | 2012-05-10 | 2012-06-21 | DP2PA09205C0 SS+15d, DP2PA21117C0, DP2PA23008C0, DP2PA23009C0, DP2PA23015C0, DP2PA27001C0, DAFCI22001R02 FS+65d, DP2PA26053C0 FF, DP2PA23011C0, DP2PA09901C0 |  |  |  |  | 16d | 0d | CEILING GRID FOR GYPSUM [4421.96 h]; CEILING GRID FOR GYPSUM [378.28 m2]; Cost |  |  | DP2PA09501C0 | DT | C | P2 | PA | CE | 095 | 01 | BILL 5 | B05 | S1 | 01 | R00 | ACF06 | 095 |  |  |  |  |  |  |  |  |  |  |  |  |  | 323 | 952 |  |  | R3 |
| DP2PA26015C0 |  | DT-P2 ; Final Fix, Termination & Gladding of Cables (Public Area) | 48d | 2012-05-10 | 2012-07-05 | DP2PA26005C0 |  |  |  |  | 88d | 54d | ELECTRICAL [368.4 h]; Cost |  |  | DP2PA26015C0 | DT | C | P2 | PA | ME | 260 | 15 | BILL 5 | B05 | S1 | FF | R00 | ACF07 | 260 |  | FF | MEP |  |  |  |  |  |  |  |  |  |  |  |  |  |  |  |
| DP2PA09601C0 |  | DT-P2 ; Flooring (Rubber & etc) (Public Area) | 36d | 2012-06-23 | 2012-08-02 | DP2PA09901C0, DP2PA09501C0, DP2PA26011C0 |  |  |  |  | 22d | 0d | RUBBER FLOOR [304 h]; RUBBER FLOOR [743 m2]; Cost |  |  | DP2PA09601C0 | DT | C | P2 | PA | FF | 096 | 01 | BILL 5 | B05 | S1 | 03 | R00 | ACF06 | RF |  |  |  |  |  |  |  |  |  |  |  |  |  | 326 | 955 |  |  | R3 |
| DP2PA09602C0 |  | DT-P2 ; Flooring (Stone) (Public Area) | 36d | 2012-06-23 | 2012-08-02 | DP2PA09901C0, DAFCI22001R02 FS+65d, DP2PA09501C0 |  |  |  |  | 22d | 0d | STONE FLOOR [262 m2]; STONE FLOOR [240 h]; Cost |  |  | DP2PA09601C0 | DT | C | P2 | PA | FF | 096 | 01 | BILL 5 | B05 | S1 | 09 | R00 | ACF06 | ST |  |  |  |  |  |  |  |  |  |  |  |  |  | 326 | 955 |  |  | R3 |
| DP2PA09903C0 |  | DT-P2 ; Wall Final Paint (Public Area) | 36d | 2012-06-23 | 2012-08-02 | DP2PA09901C0 FF, DP2PA09905C0 FF |  |  |  |  | 136d | 90d | WALL PAINT [731 h]; WALL PAINT [912 m2]; Cost |  |  | DP2PA09903C0 | DT | C | P2 | PA | PA | 099 | 03 | BILL 5 | B05 | S1 | 02 | R00 | ACF06 | 099 |  |  |  |  |  |  |  |  |  |  |  |  |  | 329 | 957 |  |  |  |
| DP2PA09905C0 |  | DT-P2 ; Ceiling Prime & 1st coat (Public Area) | 36d | 2012-06-23 | 2012-08-02 | DP2PA09501C0 |  |  |  |  | 106d | 0d | ASSORTED CEILING FINISH [138 h]; Cost |  |  | DP2PA09905C0 | DT | C | P2 | PA | PA | 099 | 05 | BILL 5 | B05 | S1 | 01 | R00 | ACF06 | 099 |  |  |  |  |  |  |  |  |  |  |  |  |  | 330 | 958 |  |  |  |
| DP2PA21113C0 |  | DT-P2 ; Final Fix, Inst of Sprinklers head/ Extinguisher (Public Area) | 48d | 2012-06-23 | 2012-08-16 | DP2PA09501C0, DP2PA21115C0 SS+6d |  |  |  |  | 52d | 18d | MECHANICAL [403.2 h]; Cost |  |  | DP2PA21113C0 | DT | C | P2 | PA | ME | 211 | 13 | BILL 5 | B05 | S1 | FF | R00 | ACF07 | 211 |  | FF | MEP |  |  |  |  |  |  |  |  |  |  |  |  |  |  |  |
| DP2PA23021C0 |  | DT-P2 ; 2nd Fix, Inst of Flexible Duct & Plenum boxes (Public Area) | 36d | 2012-06-23 | 2012-08-02 | DP2PA09205C0, DP2PA09501C0 |  |  |  |  | 34d | 0d | MECHANICAL [274.8 h]; Cost |  |  | DP2PA23021C0 | DT | C | P2 | PA | ME | 230 | 21 | BILL 5 | B05 | S1 | 2F | R00 | ACF07 | 230 |  | 2n | MEP |  |  |  | 55 |  |  |  |  |  |  |  |  |  |  |  |
| DP2PA26017C0 |  | DT-P2 ; Final Fix, Inst of Ceiling rose (Public Area) | 48d | 2012-06-23 | 2012-08-16 | DP2PA09501C0 |  |  |  |  | 42d | 0d | ELECTRICAL [67.2 h]; Cost |  |  | DP2PA26017C0 | DT | C | P2 | PA | ME | 260 | 17 | BILL 5 | B05 | S1 | FF | R00 | ACF07 | 260 |  | FF | MEP |  |  |  |  |  |  |  |  |  |  |  |  |  |  |  |
| DP2PA27020C0 |  | DT-P2 ; 2nd Fix, Inst of ELV Equipment (Panels) (Public Area) | 42d | 2012-06-23 | 2012-08-09 | DP2PA09205C0, DP2PA09501C0 |  |  |  |  | 16d | 0d | ELECTRICAL [1723.2 h]; Cost |  |  | DP2PA27020C0 | DT | C | P2 | PA | ME | 270 | 20 | BILL 5 | B05 | S1 | 2F | R00 | ACF04 | 270 |  | 2n | MEP |  |  |  |  |  |  |  |  |  |  |  |  | E |  |  |
| DP2PA27030C0 |  | DT-P2 ; Final Fix, Inst of ELV device (Detector/Speaker) (Public Area) | 54d | 2012-06-23 | 2012-08-26 | DP2PA09501C0, DP2PA27002C0 SS+6d |  |  |  |  | 46d | 12d | ELECTRICAL [2152.8 h]; Cost |  |  | DP2PA27030C0 | DT | C | P2 | PA | ME | 270 | 30 | BILL 5 | B05 | S1 | FF | R00 | ACF07 | 270 |  | FF | MEP |  |  |  |  |  |  |  |  |  |  |  |  |  |  |  |
| DP2PA40303C0 |  | DT-P2 ; Final Fix, Pneumatic Station (Public Area) | 52d | 2012-06-23 | 2012-08-23 | DP2PA09501C0 |  |  |  |  | 48d | 14d | MECHANICAL [5653.2 h]; Cost |  |  | C03E140303C0 | DT | C | P2 | PA | ME | 403 | 03 | BILL 5 | B05 | S1 | FF | R00 | ACF07 | 403 |  | FF | MEP |  |  |  |  |  |  |  |  |  |  |  |  |  |  |  |
| DP2PA23019C0 |  | DT-P2 ; Final Fix, Inst of Grilles & Diffusers (Public Area) | 60d | 2012-06-30 | 2012-09-09 | DP2PA09501C0, DP2PA23021C0 SS+6d |  |  |  |  | 34d | 0d | MECHANICAL [2560.8 h]; Cost |  |  | DP2PA23019C0 | DT | C | P2 | PA | ME | 230 | 19 | BILL 5 | B05 | S1 | FF | R00 | ACF07 | 230 |  | FF | MEP |  |  |  |  |  |  |  |  |  |  |  |  |  |  |  |
| DP2PA26003C0 |  | DT-P2 ; Final Fix, Inst of Light fittings (Public Area) | 52d | 2012-06-30 | 2012-08-30 | DP2PA09501C0, DP2PA26017C0 SS+6d |  |  |  |  | 42d | 8d | ELECTRICAL [6626.4 h]; Cost |  |  | DP2PA26003C0 | DT | C | P2 | PA | ME | 260 | 03 | BILL 5 | B05 | S1 | FF | R00 | ACF07 | 260 |  | FF | MEP |  |  |  |  |  |  |  |  |  |  |  |  |  |  |  |
| DP2PA08107C0 |  | DT-P2 ; Doors (Public Area) | 42d | 2012-08-04 | 2012-09-23 | DP2PA08103C0, DP2PA09901C0, DP2PA09602C0, DP2PA09601C0 |  |  |  |  | 52.42d | 0d | ASSORTED DOORS [700 h]; ASSORTED DOORS [70 no]; Cost |  |  | DP2PA08107C0 | DT | C | P2 | PA | DO | 081 | 07 | BILL 5 | B05 | S1 | DR | R00 | ACF06 | 081 |  |  |  |  |  |  |  |  |  |  |  |  |  | 317 | 948 |  | 08 |  |
| DP2PA09701C0 |  | DT-P2 ; Wall finishes (ST, WD, WC) (Public Area) | 48d | 2012-08-11 | 2012-10-07 | DP2PA26011C0, DP2PA27020C0, DAFCI22001R02 FS+164d, DP2PA09601C0, DP2PA09602C0 |  |  |  |  | 16d | 0d | ASSORTED WALL FINISH [1159 h]; ASSORTED WALL FINISH [1332 m2]; Cost |  |  | DP2PA09701C0 | DT | C | P2 | PA | WF | 097 | 01 | BILL 5 | B05 | S1 | 01 | R00 | ACF06 | 097 |  |  |  |  |  |  |  |  |  |  |  |  |  | 105 | 1002 |  |  |  |
| DP2PA01006C0 |  | DT-P2 ; 2nd, Ceiling Inspection by Consultants (Public Area) | 6d | 2012-09-10 | 2012-09-16 | DP2PA21115C0, DP2PA23009C0, DP2PA23011C0, DP2PA23015C0, DP2PA27002C0, DP2PA09501C0, DP2PA21113C0, DP2PA23019C0, DP2PA26003C0, DP2PA26017C0, DP2PA27030C0, DP2PA40303C0, DP2PA26015C0 |  |  |  |  | 34d | 18d | Labor General [1.2 h]; Cost |  |  | DP2PA01006C0 | DT | C | P2 | PA | ME | 010 | 06 | BILL 5 | B05 | S1 | CI | R00 | ACF07 | 010 |  | 2n | MEP |  |  |  |  |  |  |  |  |  |  |  |  |  |  |  |
| DP2PA08709C0 |  | DT-P2 ; Ironmongery (Public Area) | 29.57d | 2012-09-24 | 2012-10-30 | DP2PA08107C0 |  |  |  |  | 52.42d | 36.42d | IRONMONGERY [640 h]; IRONMONGERY [64 no]; Cost |  |  | DP2PA08709C0 | DT | C | P2 | PA | DO | 087 | 09 | BILL 5 | B05 | S1 | IM | R00 | ACF06 | 087 |  |  |  |  |  |  |  |  |  |  |  |  |  | 322 | 951 |  | 08 |  |
| DP2PA09503C0 |  | DT-P2 ; Ceiling closure - ACT/Gypsum (Public Area) | 24d | 2012-10-08 | 2012-11-06 | DAFOA09505C1 FF, DP2PA01006C0, DP2PA21115C0, DP2PA26005C0, DP2PA27001C0, DP2PA27002C0, DP2PA09701C0, DP2PA23021C0, DP2PA26007C0 |  |  |  |  | 16d | 0d | ASSORTED CEILING FINISH [895.44 h]; CEILING GYPSUM [124.03 h]; ASSORTED CEILING FINISH [1456 m2]; CEILING GYPSUM [378 m2]; Cost |  |  | DP2PA09503C0 | DT | C | P2 | PA | CE | 095 | 03 | BILL 5 | B05 | S1 | 02 | R00 | ACF06 | 095 |  |  |  |  |  |  |  |  |  |  |  |  |  | 324 | 953 |  |  | R3 |
| DP2PA11001C0 |  | DT-P2 ; Wall Protection (WP, CG, WG, FCG) (Public Area) | 24d | 2012-10-08 | 2012-11-06 | DP2PA09701C0, DP2PA09903C0 SS |  |  |  |  | 46d | 30d | FF&E [1489 h]; Cost |  |  | DP2PA11001C0 | DT | C | P2 | PA | WF | 110 | 01 | BILL 5 | B05 | S1 | 03 | R00 | ACF08 | b |  |  |  |  |  |  |  |  |  |  |  |  |  | 326 | 1001 |  |  |  |
| DP2PA11009C0 |  | DT-P2 ; Signage (Public Area) | 12.5d | 2012-10-08 | 2012-10-22 | DP2PA09701C0, OGNMU00071S0 |  |  |  |  | 57.5d | 41.5d | SIGNAGES [357 h]; SIGNAGES [357.24 no]; Cost |  |  | DP2PA11009C0 | DT | C | P2 | PA | SA | 110 | 09 | BILL 5 | B05 | S1 | 09 | R00 | ACF08 | c |  |  |  |  |  |  |  |  |  |  |  |  |  | 322 | 951 |  | 08 |  |
| DP2PA09671C1 |  | DT-P2, Carpet Tile Finish (Other Areas) | 0d | 2012-11-07 | 2012-11-07 | DP2PA09903C0 SS, DP2PA09907C0 SS |  |  |  |  | 47.5d | 20.2d | Cost |  |  |  | DT | C | P2 | PA | FF | 096 |  |  | B05 |  |  | R00 | ACF06 | CPT |  |  | CPT |  |  |  |  |  |  |  |  |  |  |  |  |  |  |  |
| DP2PA09907C0 |  | DT-P2 ; Ceiling Final paint (Public Area) | 18d | 2012-11-07 | 2012-11-28 | DP2PA09601C0, DP2PA09905C0, DP2PA09602C0, DP2PA09503C0 |  |  |  |  | 28d | 0d | ASSORTED CEILING FINISH [74 h]; Cost |  |  | DP2PA09907C0 | DT | C | P2 | PA | PA | 099 | 07 | BILL 5 | B05 | S1 | 02 | R00 | ACF06 | 099 |  |  |  |  |  |  |  |  |  |  |  |  |  | 331 | 959 |  |  |  |
| DP2PA26019C0 |  | DT-P2 ; Final Fix, Inst of Switch/Sockets (Public Area) | 18d | 2012-11-07 | 2012-11-28 | DP2PA09901C0, DP2PA09503C0 |  |  |  |  | 16d | 0d | ELECTRICAL [610.8 h]; Cost |  |  | DP2PA26019C0 | DT | C | P2 | PA | ME | 260 | 19 | BILL 5 | B05 | S1 | FF | R00 | ACF07 | 260 |  | FF | MEP |  |  |  |  |  |  |  |  |  |  |  |  |  |  |  |

| ID | WBS | Activity | Duration | Start | Finish | Predecessors | Complete | Remaining | Planned start | Planned finish | Total float | Free float | Resources | Cost | Actual cost | change id | CCAD BUILDING(SET) | CCAD PHASE(SET) | CCAD FLOOR(SET) | CCAD ZONE(SET) | CCAD WORK(SET) | CCAD SECTION(SET) | CCAD SERIAL No.(SET) | CCAD CBS(SET) | CCAD BILL(SET) | CCAD HANDOVER(SET) | CCAD TAG(SET) | CCAD REV(SET) | CCADACF (SET) | CCAD SSCF | RENZ % COMPLETE | Claimed This Month | CCAD SUB ZONE MEP(SET) | CCAD CSA | Act Selector % | July2011 Target% Complete | PERCENT COMPLETE | P_811 | P_711 | Change Order # | NEW ACTIVITY ID | user_number8 | user_integer1 | user_integer2 | user_number7 | CCAD MEQ | CCAD DIVISION(SET) |
| --- | --- | --- | --- | --- | --- | --- | --- | --- | --- | --- | --- | --- | --- | --- | --- | --- | --- | --- | --- | --- | --- | --- | --- | --- | --- | --- | --- | --- | --- | --- | --- | --- | --- | --- | --- | --- | --- | --- | --- | --- | --- | --- | --- | --- | --- | --- | --- |
|  | 10 | **Precommissioning Tesing & snagging (Corridor / Public & other area)** |  | 2012-11-29 | 2013-01-13 |  |  |  |  |  |  |  |  |  |  |  |  |  |  |  |  |  |  |  |  |  |  |  |  |  |  |  |  |  |  |  |  |  |  |  |  |  |  |  |  |  |  |
| DP2TS01805C0 |  | DT-P2 ; MEP de-snag, FIREM sign-off | 12d | 2012-11-29 | 2012-12-13 | DP2PA26015C0, DP2PA21113C0, DP2PA23019C0, DP2PA26017C0, DP2PA26003C0, DP2PA27030C0, DP2PA40303C0, DP2PA26019C0 |  |  |  |  | 16d | 0d | TESTING & COMMISSIONING [1275 h]; Cost |  |  | DP2TS01801C0 | DT | C | P2 | TS | SC | 018 | 01 | BILL 5 | B05 | S1 | 01 | R00 | ACF07 | 018 |  |  |  |  |  |  |  |  |  |  |  |  |  |  |  |  |  |
| DP2TS01802C20 |  | DT-P2 ; Touch-up & Clean / JV inspection /CIR /De-snag | 18d | 2012-12-15 | 2013-01-05 | DP2CO04401C0, DP2PA08709C0, DP2PA09601C0, DP2PA09701C0, DP2PA09907C0, DP2PA11001C0, DP2PA11009C0, DP2TS01805C0, DP2PA05501C0, DP2PA09602C0, DP2PA09503C0 |  |  |  |  | 16d | 0d | TESTING & COMMISSIONING [213 h]; Cost |  |  | DP2TS01802C0 | DT | C | P2 | TS | SC | 018 | 02 | BILL 5 | B05 | S1 | 02 | R00 | ACF07 | 018 |  |  |  |  |  |  |  |  |  |  |  |  |  |  |  |  |  |
| DP2TS01809C0 |  | DT-P2 ; Consultant's final de-snag inspection | 7d | 2013-01-06 | 2013-01-13 | DP2TS01802C20 |  |  |  |  | 16d | 1.9d | Labor General [1 h]; Cost |  |  | DP2TS01803C0 | DT | C | P2 | TS | SC | 018 | 03 | BILL 5 | B05 | S1 | 03 | R00 | ACF07 | 018 |  |  |  |  |  |  |  |  |  |  |  |  |  |  |  |  |  |
|  | 05 | **Loading Dock & Tunnel** |  | 2011-02-28 | 2012-10-14 |  |  |  |  |  |  |  |  |  |  |  |  |  |  |  |  |  |  |  |  |  |  |  |  |  |  |  |  |  |  |  |  |  |  |  |  |  |  |  |  |  |  |
| DP2LD21111C0 |  | DT-P2 ; 1st Fix, Inst of Sprinkler main pipe (Loading Dock) | 43.88d | 2011-02-28 A | 2011-10-04 | DP2LD23001C0, DP2LD26013C0 SS+12d, DP2S307807C0 | 95% | 2.19d | 2011-05-10 | 2011-06-30 | 55.35d | 0d | MECHANICAL [981.6 h]; Cost [53543.7 AED] | 53,543.69 | 50,866.51 | DP2LD21111C0 | DT | C | P2 | LD | ME | 211 | 11 | BILL 5 | B05 | S1 | 1F | R00 | ACF04 | 211 | 98 | 1242.82 | 1S | MEP | M1F |  |  |  |  |  |  |  |  |  |  |  |  |
| DP2LD23023C0 |  | DT-P2 ; 1st Fix, Inst of Main Ducting (Loading Dock) | 250d | 2011-03-15 A | 2011-10-16 | DP2LD23001C0, DP2LD23017C0 SS+12d, DP2S307807C0 | 95% | 12.5d | 2011-06-09 | 2012-04-07 | 92.85d | 0d | MECHANICAL [12525.6 h]; Cost [622619 AED] | 622,619.08 | 591,488.13 | DP2LD23023C0 | DT | C | P2 | LD | ME | 230 | 23 | BILL 5 | B05 | S1 | 1F | R00 | ACF04 | 230 | 80 | 39786.11 | 1S | MEP | M1F | 95 |  |  |  |  |  |  |  |  |  |  |  |
| DP2LD23001C0 |  | DT-P2 ; 1st Fix, Inst. of Supports for MEP (Loading Dock) | 27d | 2011-03-22 A | 2011-10-02 | DP2S307807C0 SS | 95% | 1.35d | 2011-02-28 | 2011-03-30 | 34.55d | 0d | MECHANICAL [2462.4 h]; Cost [75432.9 AED] | 75,432.94 | 71,661.29 | DP2LD23001C0 | DT | C | P2 | LD | ME | 230 | 01 | BILL 5 | B05 | S1 | 1F | R00 | ACF04 | 230 | 95 | 8051.62 | 1S | MEP | M1F |  |  |  |  |  |  |  |  |  |  |  |  |
| DP2LD26013C0 |  | DT-P2 ; 1st Fix, Inst of Cable Tray (Loading Dock) | 61.88d | 2011-03-28 A | 2011-10-16 | DP2LD23001C0, DP2LD27010C0 SS+10d, DP2S307807C0 | 80% | 12.38d | 2011-04-26 | 2011-07-07 | 40.17d | 0d | ELECTRICAL [430.8 h]; Cost [23263.3 AED] | 23,263.34 | 18,610.67 | DP2LD26013C0 | DT | C | P2 | LD | ME | 260 | 13 | BILL 5 | B05 | S1 | 1F | R00 | ACF04 | 260 | 70 | 8100.51 | 1S | MEP | M1F |  |  |  |  |  |  |  |  |  |  |  |  |
| DP2LD21117C0 |  | DT-P2 ; 1st Fix, Inst of Sprinkler branch pipe (Loading Dock) | 62.88d | 2011-03-29 A | 2011-10-08 | DP2LD21111C0, DP2S307807C0 | 95% | 3.14d | 2011-07-03 | 2011-09-15 | 100.01d | 65.46d | MECHANICAL [1441.2 h]; Cost [78749.8 AED] | 78,749.79 | 74,812.3 | DP2LD21117C0 | DT | C | P2 | LD | ME | 211 | 17 | BILL 5 | B05 | S1 | 1F | R00 | ACF04 | 211 | 98 | 1826.43 | 1S | MEP | M1F |  |  |  |  |  |  |  |  |  |  |  |  |
| DP2LD23017C0 |  | DT-P2 ; 1st Fix, Inst of CHW pipe (Loading Dock) | 250d | 2011-04-06 A | 2011-12-05 | DP2LD21111C0 SS+14d, DP2LD23001C0, DP2S307807C0 | 80% | 50d | 2011-05-26 | 2012-03-24 | 55.35d | 0d | MECHANICAL [7449.6 h]; Cost [345418 AED] | 345,418.28 | 276,334.63 | DP2LD23017C0 | DT | C | P2 | LD | ME | 230 | 17 | BILL 5 | B05 | S1 | 1F | R00 | ACF04 | 230 | 20 | 47418.2 | 1S | MEP | M1F | 80 | 80 | 98 | 80 |  |  |  |  |  |  |  |  |
| DP2LD26001C0 |  | DT-P2 ; 1st Fix, Inst of Trunking/Conduiting (Loading Dock) | 63d | 2011-04-11 A | 2011-10-12 | DP2LD23001C0, DP2S307807C0 | 85% | 9.45d | 2011-03-31 | 2011-06-12 | 34.55d | 0d | ELECTRICAL [824.4 h]; Cost [42423.2 AED] | 42,423.24 | 36,059.75 | DP2LD26001C0 | DT | C | P2 | LD | ME | 260 | 01 | BILL 5 | B05 | S1 | 1F | R00 | ACF04 | 260 | 80 | 9997.32 | 1S | MEP | M1F |  |  |  |  |  |  |  |  |  |  |  |  |
| DP2LD27001C0 |  | DT-P2 ; 1st Fix, Wiring/ Cabling work (Loading Dock) | 66d | 2011-04-13 A | 2011-12-29 | DP2LD26001C0, DP2LD26013C0, DP2LD27010C0, DP2S307807C0 | 20% | 52.8d | 2011-07-10 | 2011-09-26 | 34.55d | 0d | ELECTRICAL [436.8 h]; Cost [21894.9 AED] | 21,894.91 | 4,378.98 | DP2LD27001C0 | DT | C | P2 | LD | ME | 270 | 01 | BILL 5 | B05 | S1 | 1F | R00 | ACF04 | 270 | 35 | 11606.97 | 1S | MEP | M1F | 80 | 20 |  |  |  |  |  |  |  |  |  |  |
| DP2LD27010C0 |  | DT-P2 ; 1st Fix, Inst of Trunking for ELV system (Loading Dock) | 45d | 2011-04-24 A | 2011-10-23 | DP2LD23001C0, DP2LD26001C0 SS+12d, DP2S307807C0 | 60% | 18d | 2011-04-14 | 2011-06-05 | 34.55d | 0d | ELECTRICAL [1689.6 h]; Cost [88597.9 AED] | 88,597.89 | 53,158.74 | DP2LD27010C0 | DT | C | P2 | LD | ME | 270 | 10 | BILL 5 | B05 | S1 | 1F | R00 | ACF04 | 270 | 70 | 30835.25 | 1S | MEP | M1F |  |  |  |  |  |  |  |  |  |  |  |  |
| DP2LD26053C0 |  | DT-P2 ; 2nd Fix, Wiring / Cabling (Loading Dock) | 42d | 2011-05-10 A | 2012-02-16 | DP2LD21111C0, DP2LD21117C0, DP2LD23001C0, DP2LD23017C0, DP2LD23023C0, DP2LD26001C0, DP2LD26013C0, DP2LD27001C0, DP2LD27010C0 | 5% | 39.9d | 2011-09-17 | 2011-11-03 | 109.25d | 17.1d | ELECTRICAL [436.8 h]; Cost [21894.9 AED] | 21,894.91 | 1,094.75 | DP2LD26053C0 | DT | C | P2 | LD | ME | 260 | 53 | BILL 5 | B05 | S1 | 2F | R00 | ACF07 | 260 | 20 | 6448.32 | 2n | MEP |  | 45 | 5 | 50 | 45 | 389 | 977 |  |  |  |  |  |  |
| DP2LD21115C0 |  | DT-P2 ; 2nd Fix, Inst of Sprinkler droppers (Loading Dock) | 60d | 2011-05-15 A | 2012-02-26 | DP2LD21111C0, DP2LD21117C0, DP2LD23001C0, DP2LD23017C0, DP2LD23023C0, DP2LD26001C0, DP2LD26013C0, DP2LD27001C0, DP2LD27010C0 | 20% | 48d | 2011-08-04 | 2011-10-16 | 65.15d | 22.2d | MECHANICAL [2067.6 h]; Cost [111492 AED] | 111,492.38 | 22,298.48 | DP2LD21115C0 | DT | C | P2 | LD | ME | 211 | 15 | BILL 5 | B05 | S1 | 2F | R00 | ACF07 | 211 | 10 | 12951.13 | 2n | MEP |  | 80 | 20 |  |  |  |  |  |  |  |  |  |  |
| DP2LD27002C0 |  | DT-P2 ; 2nd Fix, Wiring Droppers (Loading Dock) | 78d | 2011-05-15 A | 2012-03-22 | DP2LD21111C0, DP2LD21117C0, DP2LD23001C0, DP2LD23017C0, DP2LD23023C0, DP2LD26001C0, DP2LD26013C0, DP2LD27001C0, DP2LD27010C0 | 10% | 70.2d | 2011-08-04 | 2011-11-09 | 42.95d | 0d | ELECTRICAL [436.8 h]; Cost [21894.9 AED] | 21,894.91 | 2,189.49 | DP2LD27002C0 | DT | C | P2 | LD | ME | 270 | 02 | BILL 5 | B05 | S1 | 2F | R00 | ACF07 | 270 | 15 | 10317.07 | 2n | MEP |  | 55 | 10 |  |  |  |  |  |  |  |  |  |  |
| DP2LD23015C0 |  | DT-P2 ; 2nd Fix, Insulation of CHW pipe & Duct (Loading Dock) | 150d | 2011-06-06 A | 2012-03-04 | DP2LD23009C0, DP2LD23017C0, DP2LD23023C0 | 70% | 45d | 2011-11-03 | 2012-05-03 | 58.95d | 16d | MECHANICAL [5311.2 h]; Cost [286617 AED] | 286,617.06 | 200,631.94 | DP2LD23015C0 | DT | C | P2 | LD | ME | 230 | 15 | BILL 5 | B05 | S1 | 2F | R00 | ACF07 | 230 |  |  | 2n | MEP |  |  | 70 | 80 | 65 |  |  | 0 | 0 | 0 | 0 |  |  |
| DP2LD26007C0 |  | DT-P2 ; 2nd Fix, Cable Pulling (Loading Dock) | 54d | 2011-06-07 A | 2012-02-26 | DP2LD21111C0, DP2LD21117C0, DP2LD23001C0, DP2LD23017C0, DP2LD23023C0, DP2LD26001C0, DP2LD26013C0, DP2LD27001C0, DP2LD27010C0 | 10% | 48.6d | 2011-08-03 | 2011-10-08 | 34.55d | 7.25d | ELECTRICAL [6634.8 h]; Cost [332625 AED] | 332,625.29 | 33,262.53 | DP2LD26007C0 | DT | C | P2 | LD | ME | 260 | 07 | BILL 5 | B05 | S1 | 2F | R00 | ACF07 | 260 |  | 79112.72 | 2n | MEP |  | 20 | 10 |  |  |  |  |  |  |  |  |  |  |
| DP2LD23008C0 |  | DT-P2 ; 1st Fix, Inst of VCD's/FD's (Loading Dock) | 200d | 2011-06-18 A | 2011-12-07 | DP2LD23023C0, DP2S307807C0 | 80% | 40d | 2011-06-18 | 2012-02-18 | 167.45d | 0d | MECHANICAL [5437.2 h]; Cost [232964 AED] | 232,964.23 | 186,371.39 | DP2LD23008C0 | DT | C | P2 | LD | ME | 230 | 08 | BILL 5 | B05 | S1 | 1F | R00 | ACF04 | 230 |  | 35020.3 | 1S | MEP | M1F | 80 | 80 | 90 | 80 |  |  |  |  |  |  |  |  |
| DP2LD23009C0 |  | DT-P2 ; 2nd Fix, Inst of VAV'S CHW connection (Loading Dock) | 150d | 2011-08-10 A | 2012-01-10 | DP2LD23017C0 | 80% | 30d | 2011-11-23 | 2012-05-21 | 58.95d | 0d | MECHANICAL [1684.8 h]; Cost [91006.1 AED] | 91,006.06 | 72,804.85 | DP2LD23009C0 | DT | C | P2 | LD | ME | 230 | 09 | BILL 5 | B05 | S1 | 2F | R00 | ACF07 | 230 |  |  | 2n | MEP |  | 20 | 80 | 80 | 0 |  |  | 0 | 0 | 0 | 0 |  |  |
| DP2LD23011C0 |  | DT-P2 ; 2nd Fix, Inst of Equipment (FCU,FAN) (Loading Dock) | 78d | 2011-08-10 A | 2012-01-17 | DP2LD21111C0, DP2LD21117C0, DP2LD23001C0, DP2LD23017C0, DP2LD23023C0, DP2LD26001C0, DP2LD26013C0, DP2LD27001C0, DP2LD27010C0 | 80% | 15.6d | 2011-09-07 | 2011-12-13 | 97.55d | 54.6d | MECHANICAL [1588.8 h]; Cost [361645 AED] | 361,645.02 | 289,316.02 | DP2LD23011C0 | DT | C | P2 | LD | ME | 230 | 11 | BILL 5 | B05 | S1 | 2F | R00 | ACF04 | 230 |  |  | 2n | MEP |  |  | 80 | 50 | 0 |  |  | 0 | 0 | 0 | 0 | H |  |
| DP2LD26009C0 |  | DT-P2 ; 2nd Fix, Inst of Wall conduites (Loading Dock) | 78d | 2011-08-10 A | 2012-02-15 | DP2LD21111C0, DP2LD21117C0, DP2LD23001C0, DP2LD23017C0, DP2LD23023C0, DP2LD26001C0, DP2LD26013C0, DP2LD27001C0, DP2LD27010C0 | 50% | 39d | 2011-09-07 | 2011-12-13 | 74.15d | 31.2d | ELECTRICAL [824.4 h]; Cost [42423.2 AED] | 42,423.24 | 21,211.62 | DP2LD26009C0 | DT | C | P2 | LD | ME | 260 | 09 | BILL 5 | B05 | S1 | 2F | R00 | ACF07 | 260 |  |  | 2n | MEP |  |  |  | 50 | 0 |  |  |  |  |  |  |  |  |
| DP2LD26011C0 |  | DT-P2 ; 2nd Fix, Inst of Equipment (DB) (Loading Dock) | 60d | 2011-09-02 A | 2012-03-07 | DP2LD21111C0, DP2LD21117C0, DP2LD23001C0, DP2LD23017C0, DP2LD23023C0, DP2LD26001C0, DP2LD26013C0, DP2LD27001C0, DP2LD27010C0 | 5% | 57d | 2011-11-05 | 2012-01-19 | 190.72d | 0d | ELECTRICAL [4054.8 h]; Cost [922729 AED] | 922,729.44 | 46,136.47 | DP2LD26011C0 | DT | C | P2 | LD | ME | 260 | 11 | BILL 5 | B05 | S1 | 2F | R00 | ACF04 | 260 |  |  | 2n | MEP |  |  | 5 |  |  |  |  |  |  |  |  | E |  |
| DP2LD08103C0 |  | DT-P2 ; Door Frames (Loading Dock) | 42d | 2011-09-05 A | 2012-02-13 | DP2CO04001C0, DP2LD21111C0, DP2LD21117C0, DP2LD23001C0, DP2LD23017C0, DP2LD23023C0, DP2LD26001C0, DP2LD26013C0, DP2LD27001C0, DP2LD27010C0, GNHE08101C0 | 10% | 37.8d | 2011-10-06 | 2011-11-28 | 75.35d | 0d | ASSORTED DOORS [396 h]; Cost |  |  | DP2LD08103C0 | DT | C | P2 | LD | DO | 081 | 03 | BILL 5 | B05 | S1 | DF | R00 | ACF06 | 081 |  |  |  |  |  |  |  |  |  | 316 | 947 |  |  |  |  |  | 08 |
| DP2LD09905C0 |  | DT-P2 ; Ceiling Prime & 1st coat (Loading Dock) | 36d | 2011-12-07 | 2012-01-19 | DP2LD23008C0 |  |  |  |  | 182.03d | 56.1d | ASSORTED CEILING FINISH [182 h]; Cost |  |  | DP2LD09905C0 | DT | C | P2 | LD | PA | 099 | 05 | BILL 5 | B05 | S1 | 01 | R00 | ACF06 | 099 |  |  |  |  |  |  |  |  |  | 330 | 958 |  |  |  |  |  |  |
| DP2LD23021C0 |  | DT-P2 ; 2nd Fix, Inst of Flexible Duct & Plenum boxes (Loading Dock) | 36d | 2011-12-29 | 2012-02-12 | DP2LD21111C0, DP2LD21117C0, DP2LD23001C0, DP2LD23017C0, DP2LD23023C0, DP2LD26001C0, DP2LD26013C0, DP2LD27001C0, DP2LD27010C0 |  |  |  |  | 77.15d | 34.2d | MECHANICAL [274.8 h]; Cost |  |  | DP2LD23021C0 | DT | C | P2 | LD | ME | 230 | 21 | BILL 5 | B05 | S1 | 2F | R00 | ACF07 | 230 |  |  | 2n | MEP |  |  |  |  |  |  |  |  |  |  |  |  |  |
| DP2LD26005C0 |  | DT-P2 ; 2nd Fix, Wiring for Power/Lighting/Emergency (Loading Dock) | 42d | 2011-12-29 | 2012-02-19 | DP2LD21111C0, DP2LD21117C0, DP2LD23001C0, DP2LD23017C0, DP2LD23023C0, DP2LD26001C0, DP2LD26013C0, DP2LD27001C0, DP2LD27010C0 |  |  |  |  | 107.15d | 15d | ELECTRICAL [436.8 h]; Cost |  |  | DP2LD26005C0 | DT | C | P2 | LD | ME | 260 | 05 | BILL 5 | B05 | S1 | 2F | R00 | ACF07 | 260 | 45 | 3869.1 | 2n | MEP |  | 60 | 0 | 85 | 60 |  |  |  |  |  |  |  |  |
| DP2LD09901C0 |  | DT-P2 ; Wall Prime & 1st coat (Loading Dock) | 36d | 2012-02-13 | 2012-03-26 | DP2CO04003C0 SS+24d, OGNMU00057S0, DP2LD08103C0 |  |  |  |  | 75.35d | 0d | ASSORTED WALL FINISH [125 h]; Cost |  |  | DP2LD09901C0 | DT | C | P2 | LD | PA | 099 | 01 | BILL 5 | B05 | S1 | 01 | R00 | ACF06 | 099 |  |  |  |  |  |  |  |  |  | 328 | 956 |  |  |  |  |  |  |
| DP2LD26015C0 |  | DT-P2 ; Final Fix, Termination & Gladding of Cables (Loading Dock) | 48d | 2012-03-07 | 2012-05-02 | DP2LD26005C0, DP2LD26011C0, DP2LD26053C0 |  |  |  |  | 190.72d | 73.2d | ELECTRICAL [368.4 h]; Cost |  |  | DP2LD26015C0 | DT | C | P2 | LD | ME | 260 | 15 | BILL 5 | B05 | S1 | FF | R00 | ACF07 | 260 |  |  | FF | MEP |  |  |  |  |  |  |  |  |  |  |  |  |  |
| DP2LD07103C0 |  | DT-P2 ; Waterproofing (Loading Dock) | 12d | 2012-03-11 | 2012-03-25 | DP2CO04003C0, DP2LO09205C0 |  |  |  |  | 76.62d | 33.67d | THERMAL & MOISTURE [528 h]; THERMAL & MOISTURE [3503 m2]; Cost |  |  | DP2LD07103C0 | DT | C | P2 | LD | FF | 071 | 03 | BILL 5 | B05 | S1 | 01 | R00 | ACF03 | 071 |  |  |  |  |  |  |  |  |  | 105 | 999 |  |  |  |  |  |  |
| DP2LD01006C0 |  | DT-P2 ; 2nd, Ceiling Inspection by Consultants (Loading Dock) | 6d | 2012-03-22 | 2012-03-29 | DP2LD21115C0, DP2LD23009C0, DP2LD23011C0, DP2LD23015C0, DP2LD23021C0, DP2LD27002C0, DP2LD26009C0 |  |  |  |  | 42.95d | 0d | Labor General [1.2 h]; Cost |  |  | DP2LD01006C0 | DT | C | P2 | LD | ME | 010 | 06 | BILL 5 | B05 | S1 | CI | R00 | ACF07 | 010 |  |  | 2n | MEP |  |  |  |  |  |  |  |  |  |  |  |  |  |
| DP2LD09903C0 |  | DT-P2 ; Wall Final Paint (Loading Dock) | 36d | 2012-03-26 | 2012-05-07 | DP2LD09901C0, DP2LD09905C0 |  |  |  |  | 125.92d | 0d | ASSORTED WALL FINISH [68 h]; Cost |  |  | DP2LD09903C0 | DT | C | P2 | LD | PA | 099 | 03 | BILL 5 | B05 | S1 | 02 | R00 | ACF06 | 099 |  |  |  |  |  |  |  |  |  | 329 | 957 |  |  |  |  |  |  |
| DP2LD11011C0 |  | DT-P2 ; Dock Leveler & Equipment (Loading Dock) | 30d | 2012-03-29 | 2012-05-03 | DP2LD01006C0 |  |  |  |  | 42.95d | 0d | FF&E [140 h]; FF&E [46.73 no]; Cost |  |  | DP2LD11011C0 | DT | C | P2 | LD | EQ | 110 | 11 | BILL 5 | B05 | S1 | 11 | R00 | ACF08 | e |  |  |  |  |  |  |  |  |  | 335 | 962 |  |  |  |  |  |  |
| DP2LD21113C0 |  | DT-P2 ; Final Fix, Inst of Sprinklers head/ Extinguisher (Loading Dock) | 48d | 2012-03-29 | 2012-05-24 | DP2LD01006C0, DP2LD21115C0 |  |  |  |  | 171.53d | 54d | MECHANICAL [403.2 h]; Cost |  |  | DP2LD21113C0 | DT | C | P2 | LD | ME | 211 | 13 | BILL 5 | B05 | S1 | FF | R00 | ACF07 | 211 |  |  | FF | MEP |  |  |  |  |  |  |  |  |  |  |  |  |  |
| DP2LD23019C0 |  | DT-P2 ; Final Fix, Inst of Grilles & Diffusers (Loading Dock) | 60d | 2012-03-29 | 2012-06-07 | DP2LD01006C0, DP2LD23008C0 |  |  |  |  | 159.53d | 42d | MECHANICAL [2560.8 h]; Cost |  |  | DP2LD23019C0 | DT | C | P2 | LD | ME | 230 | 19 | BILL 5 | B05 | S1 | FF | R00 | ACF07 | 230 |  |  | FF | MEP |  |  |  |  |  |  |  |  |  |  |  |  |  |
| DP2LD26017C0 |  | DT-P2 ; Final Fix, Inst of Ceiling rose (Loading Dock) | 48d | 2012-03-29 | 2012-05-24 | DP2LD01006C0 |  |  |  |  | 152.53d | 0d | ELECTRICAL [67.2 h]; Cost |  |  | DP2LD26017C0 | DT | C | P2 | LD | ME | 260 | 17 | BILL 5 | B05 | S1 | FF | R00 | ACF07 | 260 |  |  | FF | MEP |  |  |  |  |  |  |  |  |  |  |  |  |  |
| DP2LD27030C0 |  | DT-P2 ; Final Fix, Inst of ELV device (Detector/Speaker) (Loading Dock) | 54d | 2012-03-29 | 2012-05-31 | DP2LD01006C0, DP2LD27002C0 |  |  |  |  | 165.53d | 48d | ELECTRICAL [2152.8 h]; Cost |  |  | DP2LD27030C0 | DT | C | P2 | LD | ME | 270 | 30 | BILL 5 | B05 | S1 | FF | R00 | ACF07 | 270 |  |  | FF | MEP |  |  |  |  |  |  |  |  |  |  |  |  |  |
| DP2LD26003C0 |  | DT-P2 ; Final Fix, Inst of Light fittings (Loading Dock) | 60d | 2012-04-07 | 2012-06-17 | DP2LD01006C0, DP2LD26017C0 SS+7d |  |  |  |  | 152.53d | 35d | ELECTRICAL [6626.4 h]; Cost |  |  | DP2LD26003C0 | DT | C | P2 | LD | ME | 260 | 03 | BILL 5 | B05 | S1 | FF | R00 | ACF07 | 260 |  |  | FF | MEP |  |  |  |  |  |  |  |  |  |  |  |  |  |
| DP2LD09601C0 |  | DT-P2 ; Flooring (Rubber & etc) (Loading Dock) | 36d | 2012-05-03 | 2012-06-14 | DP2CO03327C0, DP2LD09901C0, OGNMU00055S0, DP2LD07103C0, DP2LD23008C0, DP2LD26005C0, DP2LD27002C0, DP2LD26009C0, DP2LD26053C0, DP2LD23011C0, DP2LD21115C0, DP2LD11011C0 |  |  |  |  | 42.95d | 0d | RUBBER FLOOR [392 h]; RUBBER FLOOR [969 m2]; Cost |  |  | DP2LD09601C0 | DT | C | P2 | LD | FF | 096 | 01 | BILL 5 | B05 | S1 | 03 | R00 | ACF06 | RF |  |  |  |  |  |  |  |  |  | 326 | 955 |  |  |  |  |  |  |
| DP2LD11001C0 |  | DT-P2 ; Wall Protection (WP, CG, WG, FCG) (Loading Dock) | 24d | 2012-05-07 | 2012-06-04 | DP2LD09903C0, OGNMU00063S0 |  |  |  |  | 125.92d | 8.4d | FF&E [1955 h]; Cost |  |  | DP2LD11001C0 | DT | C | P2 | LD | WF | 110 | 01 | BILL 5 | B05 | S1 | 03 | R00 | ACF08 | b |  |  |  |  |  |  |  |  |  | 326 | 1001 |  |  |  |  |  |  |
| DP2LD26019C0 |  | DT-P2 ; Final Fix, Inst of Switch/Sockets (Loading Dock) | 18d | 2012-05-07 | 2012-05-28 | DP2LD09901C0, DP2LD09903C0, DP2TR26005C0, DGF8203301R02 FF, GGF8203301R02 FF |  |  |  |  | 167.93d | 50.4d | ELECTRICAL [610.8 h]; Cost |  |  | DP2LD26019C0 | DT | C | P2 | LD | ME | 260 | 19 | BILL 5 | B05 | S1 | FF | R00 | ACF07 | 260 |  |  | FF | MEP |  |  |  |  |  |  |  |  |  |  |  |  |  |
| DP2LD08107C0 |  | DT-P2 ; Doors (Loading Dock) | 42d | 2012-06-14 | 2012-08-04 | DP2LD08103C0, DP2LD09901C0, OGNMU00059S0, OGNMU00065S0, DP2LD09601C0 |  |  |  |  | 89.53d | 0d | ASSORTED DOORS [910 h]; ASSORTED DOORS [91 no]; Cost |  |  | DP2LD08107C0 | DT | C | P2 | LD | DO | 081 | 07 | BILL 5 | B05 | S1 | DR | R00 | ACF06 | 081 |  |  |  |  |  |  |  |  |  | 317 | 948 |  |  |  |  |  | 08 |
| DP2LD09907C0 |  | DT-P2 ; Ceiling Final paint (Loading Dock) | 18d | 2012-06-14 | 2012-07-07 | DP2LD09905C0, DP2LD09601C0, DP2LD11001C0 |  |  |  |  | 117.53d | 0d | ASSORTED CEILING FINISH [98 h]; Cost |  |  | DP2LD09907C0 | DT | C | P2 | LD | PA | 099 | 07 | BILL 5 | B05 | S1 | 02 | R00 | ACF06 | 099 |  |  |  |  |  |  |  |  |  | 331 | 959 |  |  |  |  |  |  |
| DP2LD27020C0 |  | DT-P2 ; 2nd Fix, Inst of ELV Equipment (Panels) (Loading Dock) | 54d | 2012-06-14 | 2012-08-18 | DP2LD21111C0, DP2LD21117C0, DP2LD23001C0, DP2LD23017C0, DP2LD23023C0, DP2LD26001C0, DP2LD26013C0, DP2LD27001C0, DP2LD27010C0, DP2LD09601C0 |  |  |  |  | 42.95d | 0d | ELECTRICAL [1723.2 h]; Cost |  |  | DP2LD27020C0 | DT | C | P2 | LD | ME | 270 | 20 | BILL 5 | B05 | S1 | 2F | R00 | ACF04 | 270 |  |  | 2n | MEP |  |  | 0 |  |  |  |  |  |  |  |  | E |  |
| DP2LD22027C0 |  | DT-P2 ; Final Fix, Inst of All drain (Loading Dock) | 18d | 2012-07-07 | 2012-07-28 | DP2LD01006C0, DP2LD09907C0 |  |  |  |  | 117.53d | 0d | PLUMBING [1173.6 h]; Cost |  |  | DP2LD22027C0 | DT | C | P2 | LD | ME | 220 | 27 | BILL 5 | B05 | S1 | FF | R00 | ACF07 | 220 |  |  | FF | MEP |  |  |  |  |  |  |  |  |  |  |  |  |  |
| DP2LD08709C0 |  | DT-P2 ; Ironmongery (Loading Dock) | 34d | 2012-08-04 | 2012-09-15 | DP2LD08107C0, OGNMU00059S0 |  |  |  |  | 89.53d | 0d | IRONMONGERY [830 h]; IRONMONGERY [83 no]; Cost |  |  | DP2LD08709C0 | DT | C | P2 | LD | DO | 087 | 09 | BILL 5 | B05 | S1 | IM | R00 | ACF06 | 087 |  |  |  |  |  |  |  |  |  | 322 | 951 |  |  |  |  |  | 08 |

| ID | WBS | Activity | Duration | Start | Finish | Predecessors | Complete | Remaining | Planned start | Planned finish | Total float | Free float | Resources | Cost | Actual cost | change id | CCAD BUILDING(SET) | CCAD PHASE(SET) | CCAD FLOOR(SET) | CCAD ZONE(SET) | CCAD WORK(SET) | CCAD SECTION(SET) | CCAD SERIAL No.(SET) | CCAD CBS(SET) | CCAD BILL(SET) | CCAD HANDOVER(SET) | CCAD TAG(SET) | CCAD REV(SET) | CCADACF (SET) | CCAD SSCF | Change Order # | NEW ACTIVITY ID | RENZ % COMPLETE | CCAD CSA | Act Selector % | P_811 | P_711 | July2011 Target% Complete | Claimed This Month | CCAD SUB ZONE MEP(SET) | user_number8 | user_integer1 | user_integer2 | user_number7 | PERCENT COMPLETE | CCAD MEQ | CCAD DIVISION(SET) | IDDD |
| --- | --- | --- | --- | --- | --- | --- | --- | --- | --- | --- | --- | --- | --- | --- | --- | --- | --- | --- | --- | --- | --- | --- | --- | --- | --- | --- | --- | --- | --- | --- | --- | --- | --- | --- | --- | --- | --- | --- | --- | --- | --- | --- | --- | --- | --- | --- | --- | --- |
|  | 10 | **Precommissioning Tesing & snagging (Loading Dock & Tunnel)** |  | 2012-07-28 | 2012-10-14 |  |  |  |  |  |  |  |  |  |  |  |  |  |  |  |  |  |  |  |  |  |  |  |  |  |  |  |  |  |  |  |  |  |  |  |  |  |  |  |  |  |  |  |
| DP2TS01806C0 |  | DT-P2 ; MEP de-snag, FIREM sign-off | 12d | 2012-07-28 | 2012-08-11 | DP2LD26015C0, DP2LD21113C0, DP2LD23019C0, DP2LD22027C0, DP2LD26017C0, DP2LD26003C0, DP2LD27030C0, DP2LD26019C0 |  |  |  |  | 117.53d | 28d | TESTING & COMMISSIONING [1275 h]; Cost |  |  | DP2TS01801C0 | DT | C | P2 | TS | SC | 018 | 01 | BILL 5 | B05 | S1 | 01 | R00 | ACF07 | 018 |  |  |  |  |  |  |  |  |  |  |  |  |  |  |  |  |  |  |
| DP2TS01802C30 |  | DT-P2 ; Touch-up & Clean / JV inspection /CIR /De-snag | 18d | 2012-09-15 | 2012-10-06 | DP2CO04401C0, DP2LD08709C0, DP2LD09601C0, DP2LD09901C0, DP2LD09903C0, DP2LD11001C0, DP2LD11011C0, DP2TS01806C0, DP2LD09907C0 |  |  |  |  | 89.53d | 0d | TESTING & COMMISSIONING [213 h]; Cost |  |  | DP2TS01802C0 | DT | C | P2 | TS | SC | 018 | 02 | BILL 5 | B05 | S1 | 02 | R00 | ACF07 | 018 |  |  |  |  |  |  |  |  |  |  |  |  |  |  |  |  |  |  |
| DP2TS01810C0 |  | DT-P2 ; Consultant's final de-snag inspection | 7.12d | 2012-10-06 | 2012-10-14 | DP2TS01802C30 |  |  |  |  | 89.53d | 75.42d | Labor General [1 h]; Cost |  |  | DP2TS01803C0 | DT | C | P2 | TS | SC | 018 | 03 | BILL 5 | B05 | S1 | 03 | R00 | ACF07 | 018 |  |  |  |  |  |  |  |  |  |  |  |  |  |  |  |  |  |  |
|  | 07 | **TR Room** |  | 2011-04-04 | 2012-09-04 |  |  |  |  |  |  |  |  |  |  |  |  |  |  |  |  |  |  |  |  |  |  |  |  |  |  |  |  |  |  |  |  |  |  |  |  |  |  |  |  |  |  |  |
| DP2TR09201C0 |  | DT-P2 ; Metal Studs (TR RM) | 6d | 2011-04-04 A | 2011-06-09 A | DP2S307807C0 | 100% |  | 2011-04-18 | 2011-04-24 |  |  | PARTITIONS [606 h]; PARTITIONS - Metal Studs [95 m]; Cost |  |  | DP2TR09201C0 | DT | C | P2 | TR | PT | 092 | 01 | BILL 5 | B05 | S1 | 1F | R00 | ACF06 | 092 | 313 | 885 | 80 | GP | PMS |  |  |  |  |  |  |  |  |  |  |  |  |  |
| DP2TR09203C0 |  | DT-P2 ; Partitions 1st face (TR RM) | 23.88d | 2011-04-07 A | 2011-08-30 A | DP2TR09201C0 SS+12d, OGNMU00015S0 | 100% |  | 2011-08-03 | 2011-09-01 |  |  | PARTITIONS [467 h]; PARTITIONS [95 m]; Cost |  |  | DP2TR09203C0 | DT | C | P2 | TR | PT | 092 | 03 | BILL 5 | B05 | S1 | 2F | R00 | ACF06 | 092 | 314 | 886 | 18 | GP | P1F | 100 | 65 |  |  |  |  |  |  |  |  |  |  |  |
| DP2TR23011C0 |  | DT-P2 ; 2nd Fix, Inst of VCD's/FD's (TR RM) | 60d | 2011-06-07 A | 2012-02-29 | DP2TR09201C0 SS+6d, DP2TR09205C0 | 90% | 6d | 2011-08-11 | 2011-10-23 | 75d | 15d | MECHANICAL [4312.8 h]; Cost [232964 AED] | 232,964.23 | 209,667.81 | DP2TR23011C0 | DT | C | P2 | TR | ME | 230 | 11 | BILL 5 | B05 | S1 | 2F | R00 | ACF07 | 230 |  |  |  | MEP |  | 90 | 75 | 20 | 110669.1 | 2n |  |  |  |  |  |  |  |  |
| DP2TR26026C0 |  | DT-P2 ; 2nd Fix, Conduit (TR RM) | 60d | 2011-06-09 A | 2011-10-03 | DP2TR09201C0 SS+6d | 95% | 3d | 2011-06-09 | 2011-08-20 | 108.4d | 0d | ELECTRICAL [824.4 h]; Cost [42423.2 AED] | 42,423.24 | 40,302.08 | DP2TR26026C0 | DT | C | P2 | TR | ME | 260 | 26 | BILL 5 | B05 | S1 | 2F | R00 | ACF07 | 260 |  |  |  | MEP |  | 95 | 80 | 80 | 39989.3 | 2n |  |  |  |  |  |  |  |  |
| DP2TR01005C0 |  | DT-P2 ; 2nd, Wall Inspection by Consultant (TR RM) | 12d | 2011-06-13 A | 2011-10-16 | DP2TR26026C0 | 10% | 10.8d | 2011-06-30 | 2011-07-14 | 108.4d | 80.2d | Labor General [1.2 h]; Cost |  |  | DP2TR01005C0 | DT | C | P2 | TR | ME | 010 | 05 | BILL 5 | B05 | S1 | WI | R00 | ACF07 | 010 |  |  |  | MEP |  |  |  |  |  | 2n |  |  |  |  |  |  |  |  |
| DP2TR23013C0 |  | DT-P2 ; 2nd Fix, Insulation of CHW pipe & Duct (TR RM) | 60d | 2011-06-14 A | 2012-03-28 | DP2TR23009C0, DP2TR23011C0 | 85% | 9d | 2011-09-04 | 2011-11-16 | 60d | 12d | MECHANICAL [5311.2 h]; Cost [286617 AED] | 286,617.06 | 243,624.5 | DP2TR23013C0 | DT | C | P2 | TR | ME | 230 | 13 | BILL 5 | B05 | S1 | 2F | R00 | ACF07 | 230 |  |  |  | MEP |  | 75 | 55 | 55 | 34107.03 | 2n | 0 | 0 | 0 | 0 |  |  |  |  |
| DP2TR23009C0 |  | DT-P2 ; 2nd Fix, Inst of VAV'S CHW connection (TR RM) | 60d | 2011-07-06 A | 2012-03-18 | DP2TR09201C0 SS+6d, DP2TR09205C0 | 65% | 21d | 2011-09-28 | 2011-12-13 | 60d | 0d | MECHANICAL [1684.8 h]; Cost [91006.1 AED] | 91,006.06 | 59,153.94 | DP2TR23009C0 | DT | C | P2 | TR | ME | 230 | 09 | BILL 5 | B05 | S1 | 2F | R00 | ACF07 | 230 |  |  |  | MEP |  | 80 | 35 | 20 |  | 2n | 0 | 0 | 0 | 0 | 65 |  |  |  |
| DP2TR27002C0 |  | DT-P2 ; 2nd Fix, Dressing of ELV panels (TR RM) | 42d | 2011-07-06 A | 2012-06-09 | DP2TR09201C0 SS+6d, DP2TR09205C0, DP2TR27020C0 | 10% | 37.8d | 2011-10-30 | 2011-12-22 | 28.2d | 0d | ELECTRICAL [333.6 h]; Cost [27392.6 AED] | 27,392.59 | 2,739.26 | DP2TR27002C0 | DT | C | P2 | TR | ME | 270 | 02 | BILL 5 | B05 | S1 | 2F | R00 | ACF07 | 270 |  |  |  | MEP |  |  |  |  |  | 2n |  |  |  |  |  |  |  |  |
| DP2TR26009C0 |  | DT-P2 ; 2nd Fix, Inst of Equipment (DB, TR, SG,BUS) (TR RM) | 90d | 2011-07-10 A | 2012-04-04 | DP2TR09201C0 SS+6d, DP2TR09205C0, DAFCO09500R02 FF, DAFCO09501R02 FF | 60% | 36d | 2011-08-25 | 2011-12-17 | 78d | 48d | ELECTRICAL [14310 h]; Cost [3256347 AED] | 3,256,347.19 | 1,953,808.31 | DP2TR26009C0 | DT | C | P2 | TR | ME | 260 | 09 | BILL 5 | B05 | S1 | 2F | R00 | ACF04 | 260 |  |  |  | MEP |  |  |  | 35 | 1419825.48 | 2n |  |  |  |  |  | E |  |  |
| DP2TR26005C0 |  | DT-P2 ; 2nd Fix, Wiring for Power/Lighting/Emergency (TR RM) | 60d | 2011-08-10 A | 2012-04-04 | DP2TR09201C0 SS+6d, DP2TR09205C0, DP2TR26026C0 | 40% | 36d | 2011-12-18 | 2012-02-28 | 66d | 27.95d | ELECTRICAL [436.8 h]; Cost [21894.9 AED] | 21,894.91 | 8,757.96 | DP2TR26005C0 | DT | C | P2 | TR | ME | 260 | 05 | BILL 5 | B05 | S1 | 2F | R00 | ACF07 | 260 |  |  |  | MEP |  | 40 | 0 | 25 |  | 2n |  |  |  |  |  |  |  |  |
| DP2TR26027C0 |  | DT-P2 ; 2nd Fix, Wiring / Cabling (TR RM) | 60d | 2011-08-10 A | 2011-11-03 | DP2TR09201C0 SS+6d | 50% | 30d | 2011-12-18 | 2012-02-28 | 190d | 160d | ELECTRICAL [436.8 h]; Cost [21894.9 AED] | 21,894.91 | 10,947.45 | DP2TR26027C0 | DT | C | P2 | TR | ME | 260 | 27 | BILL 5 | B05 | S1 | 2F | R00 | ACF07 | 260 | 417 | 1318 |  | MEP |  | 50 | 0 | 25 |  | 2n |  |  |  |  |  |  |  |  |
| DP2TR27020C0 |  | DT-P2 ; 2nd Fix, Inst of ELV Equipment (Panels) (TR RM) | 60d | 2011-08-10 A | 2012-04-25 | DP2TR09201C0 SS+6d, DP2TR09205C0 | 10% | 54d | 2011-12-18 | 2012-02-28 | 28.2d | 0d | ELECTRICAL [1723.2 h]; Cost [357421 AED] | 357,420.74 | 35,742.07 | DP2TR27020C0 | DT | C | P2 | TR | ME | 270 | 20 | BILL 5 | B05 | S1 | 2F | R00 | ACF04 | 270 |  |  |  | MEP |  | 10 | 0 |  |  | 2n |  |  |  |  |  | E |  |  |
| DP2TR08101C0 |  | DT-P2 ; Door Frames (TR RM) | 36d | 2011-09-05 A | 2011-11-10 | DP2TR09201C0, GNHE08101C0 | 10% | 32.4d | 2011-10-13 | 2011-11-28 | 113.8d | 85.6d | ASSORTED DOORS [92 h]; Cost |  |  | DP2TR08101C0 | DT | C | P2 | TR | DO | 081 | 01 | BILL 5 | B05 | S1 | DF | R00 | ACF06 | 081 | 316 | 20001090 |  |  |  |  |  |  |  |  |  |  |  |  |  |  | 08 |  |
| DP2TR09205C0 |  | DT-P2 ; Partitions Closing (TR RM) | 24d | 2012-01-25 | 2012-02-22 | DAFOA09206C1 FF, DP2TR01005C0, DP2TR09201C0, DP2TR09203C0, DP2TR26026C0, DP2TR08101C0 FF, DP2PA09205C0 SS |  |  |  |  | 28.2d | 0d | PARTITIONS [597 h]; PARTITIONS [95 m]; Cost |  |  | DP2TR09205C0 | DT | C | P2 | TR | PT | 092 | 05 | BILL 5 | B05 | S1 | FF | R00 | ACF06 | 092 | 315 | 887 |  | GP | P2F |  |  |  |  |  |  |  |  |  |  |  |  |  |
| DP2TR09901C0 |  | DT-P2 ; Wall Prime & 1st coat (TR RM) | 18d | 2012-02-23 | 2012-03-14 | DP2CO04003C0 SS+24d, DP2TR09205C0 |  |  |  |  | 30d | 0d | Labor General [2 h]; Cost |  |  | DP2TR09901C0 | DT | C | P2 | TR | PA | 099 | 01 | BILL 5 | B05 | S1 | 01 | R00 | ACF06 | 099 | 360 | 20001110 |  |  |  |  |  |  |  |  |  |  |  |  |  |  |  |  |
| DP2TR26007C0 |  | DT-P2 ; 2nd Fix, Cable Pulling (TR RM) | 30d | 2012-02-23 | 2012-03-28 | DP2TR09201C0 SS+6d, DP2TR09205C0 |  |  |  |  | 60d | 12d | ELECTRICAL [6634.8 h]; Cost |  |  | DP2TR26007C0 | DT | C | P2 | TR | ME | 260 | 07 | BILL 5 | B05 | S1 | 2F | R00 | ACF07 | 260 |  |  |  | MEP |  |  |  | 25 |  | 2n |  |  |  |  |  |  |  |  |
| DP2TR09501C0 |  | DT-P2 ; Ceiling Grid and Service Tile (TR RM) | 24d | 2012-03-15 | 2012-04-11 | DP2TR09205C0 SS+15d, OGNMU00023S0, OGNMU00037S0, DP2TR09901C0 |  |  |  |  | 30d | 0d | Labor General [4.87 h]; Cost |  |  | DP2TR09501C0 | DT | C | P2 | TR | CE | 095 | 01 | BILL 5 | B05 | S1 | 01 | R00 | ACF06 | 095 | 336 | 1327 |  |  |  |  |  |  |  |  |  |  |  |  |  |  |  | 1 |
| DP2TR01006C0 |  | DT-P2 ; 2nd, Ceiling Inspection by Consultants (TR RM) | 12d | 2012-04-12 | 2012-04-25 | DP2TR23009C0, DP2TR23011C0, DP2TR23013C0, DP2TR26007C0, DP2TR09501C0 |  |  |  |  | 48d | 18d | Labor General [1.2 h]; Cost |  |  | DP2TR01006C0 | DT | C | P2 | TR | ME | 010 | 06 | BILL 5 | B05 | S1 | CI | R00 | ACF07 | 010 |  |  |  | MEP |  |  |  |  |  | 2n |  |  |  |  |  |  |  |  |
| DP2TR08105C0 |  | DT-P2 ; Doors (TR RM) | 18d | 2012-04-12 | 2012-05-02 | DP2TR08101C0, DP2TR09901C0, DP2TR09601C0 |  |  |  |  | 84d | 0d | ASSORTED DOORS [170 h]; Cost |  |  | DP2TR08105C0 | DT | C | P2 | TR | DO | 081 | 05 | BILL 5 | B05 | S1 | DR | R00 | ACF06 | 081 | 317 | 1325 |  |  |  |  |  |  |  |  |  |  |  |  |  |  | 08 |  |
| DP2TR09601C0 |  | DT-P2 ; Floor Finishes (TR RM) | 0d | 2012-04-12 | 2012-04-12 | DP2TR09205C0, DP2TR09501C0 |  |  |  |  | 42d | 0d | Cost |  |  | DP2TR09601C0 | DT | C | P2 | TR | FF | 096 | 01 | BILL 5 | B05 | S1 | 01 | R00 | ACF06 | FF | 359 | 20001120 |  |  |  |  |  |  |  |  |  |  |  |  |  |  |  |  |
| DP2TR09903C0 |  | DT-P2 ; Wall - Final Paint (TR RM) | 12d | 2012-04-12 | 2012-04-25 | DP2TR09901C0, IP2CO09900R02 FF, DP2TR09601C0 |  |  |  |  | 102d | 73.8d | Labor General [2 h]; Cost |  |  | DP2TR09903C0 | DT | C | P2 | TR | PA | 099 | 03 | BILL 5 | B05 | S1 | 02 | R00 | ACF06 | 099 | 361 | 1312 |  |  |  |  |  |  |  |  |  |  |  |  |  |  |  |  |
| DP2TR21115C0 |  | DT-P2 ; 2nd Fix, Gaseous Fire Suppression (TR RM) | 18d | 2012-04-12 | 2012-05-02 | DP2TR09501C0, DP2TR09601C0 |  |  |  |  | 42d | 12d | MECHANICAL [12560.4 h]; Cost |  |  | DP2TR21115C0 | DT | C | P2 | TR | ME | 211 | 15 | BILL 5 | B05 | S1 | 2F | R00 | ACF07 | 211 | 411 | 20001130 |  | MEP |  |  |  |  |  | 2n |  |  |  |  |  |  |  |  |
| DP2TR23003C0 |  | DT-P2 ; Final Fix, Inst of Grilles & Diffusers (TR RM) | 30d | 2012-04-12 | 2012-05-16 | DP2TR09501C0 |  |  |  |  | 66d | 37.8d | MECHANICAL [2560.8 h]; Cost |  |  | DP2TR23003C0 | DT | C | P2 | TR | ME | 230 | 03 | BILL 5 | B05 | S1 | FF | R00 | ACF07 | 230 |  |  |  | MEP |  |  |  |  |  | FF |  |  |  |  |  |  |  |  |
| DP2TR23023C0 |  | DT-P2 ; 2nd Fix, Flexible ducts (TR RM) | 30d | 2012-04-12 | 2012-05-16 | DP2TR09501C0 |  |  |  |  | 30d | 0d | MECHANICAL [274.8 h]; Cost |  |  | DP2TR23023C0 | DT | C | P2 | TR | ME | 230 | 23 | BILL 5 | B05 | S1 | 2F | R00 | ACF07 | 230 | 412 | 20001140 |  | MEP |  |  |  | 10 |  | 2n |  |  |  |  |  |  |  |  |
| DP2TR23074C0 |  | DT-P2 ; Final Fix, Grilles, panels & diffusers (TR RM) | 30d | 2012-04-12 | 2012-05-16 | DP2TR09501C0 |  |  |  |  | 66d | 37.8d | MECHANICAL [2560.8 h]; Cost |  |  | DP2TR23074C0 | DT | C | P2 | TR | ME | 230 | 74 | BILL 5 | B05 | S1 | FF | R00 | ACF07 | 230 | 419 | 20001160 |  | MEP |  |  |  |  |  | FF |  |  |  |  |  |  |  |  |
| DP2TR26076C0 |  | DT-P2 ; Final Fix, Lighting fittings (TR RM) | 30d | 2012-04-12 | 2012-05-16 | DP2TR09501C0 |  |  |  |  | 66d | 37.8d | ELECTRICAL [6626.4 h]; Cost |  |  | DP2TR26076C0 | DT | C | P2 | TR | ME | 260 | 76 | BILL 5 | B05 | S1 | FF | R00 | ACF07 | 260 | 420 | 20001170 |  | MEP |  |  |  |  |  | FF |  |  |  |  |  |  |  |  |
| DP2TR08709C0 |  | DT-P2 ; Ironmongery (TR RM) | 12d | 2012-05-03 | 2012-05-16 | DP2TR08105C0 |  |  |  |  | 84d | 55.8d | Labor General [1 h]; Cost |  |  | DP2TR08709C0 | DT | C | P2 | TR | DO | 087 | 09 | BILL 5 | B05 | S1 | IM | R00 | ACF06 | 087 | 322 | 20001100 |  |  |  |  |  |  |  |  |  |  |  |  |  |  | 08 |  |
| DP2TR09503C0 |  | DT-P2 ; Ceiling closure (TR RM) | 12d | 2012-05-17 | 2012-05-30 | DP2TR01006C0, DP2TR21115C0, DP2TR26005C0, DP2TR26007C0, DP2TR26026C0, DP2TR26027C0, OGNMU00023S0, OGNMU00037S0, DP2TR23023C0 |  |  |  |  | 30d | 0d | Labor General [0.2 h]; Cost |  |  | DP2TR09503C0 | DT | C | P2 | TR | CE | 095 | 03 | BILL 5 | B05 | S1 | 02 | R00 | ACF06 | 095 | 337 | 20001080 |  |  |  |  |  |  |  |  |  |  |  |  |  |  |  |  |
| DP2TR09905C0 |  | DT-P2 ; Ceiling Prime & 1st coat (TR RM) | 18d | 2012-05-31 | 2012-06-21 | DP2TR09503C0 |  |  |  |  | 42d | 0d | Labor General [2 h]; Cost |  |  | DP2TR09905C0 | DT | C | P2 | TR | PA | 099 | 05 | BILL 5 | B05 | S1 | 01 | R00 | ACF06 | 099 | 362 | 1313 |  |  |  |  |  |  |  |  |  |  |  |  |  |  |  |  |
| DP2TR26013C0 |  | DT-P2 ; Final Fix, Termination & Gladding of Cables (TR RM) | 24d | 2012-05-31 | 2012-06-28 | DP2TR09503C0, DP2TR26009C0, DP2TR09501C0 |  |  |  |  | 30d | 1.8d | ELECTRICAL [368.4 h]; Cost |  |  | DP2TR26013C0 | DT | C | P2 | TR | ME | 260 | 13 | BILL 5 | B05 | S1 | FF | R00 | ACF07 | 260 |  |  |  | MEP |  |  |  |  |  | FF |  |  |  |  |  |  |  |  |
| DP2TR26015C0 |  | DT-P2 ; Final Fix, Inst of Ceiling rose (TR RM) | 18d | 2012-05-31 | 2012-06-21 | DP2TR09503C0 |  |  |  |  | 30d | 0d | ELECTRICAL [67.2 h]; Cost |  |  | DP2TR26015C0 | DT | C | P2 | TR | ME | 260 | 15 | BILL 5 | B05 | S1 | FF | R00 | ACF07 | 260 |  |  |  | MEP |  |  |  |  |  | FF |  |  |  |  |  |  |  |  |
| DP2TR26017C0 |  | DT-P2 ; Final Fix, Inst of Switch/Sockets (TR RM) | 12d | 2012-05-31 | 2012-06-13 | DP2TR09901C0, DP2TR09503C0 |  |  |  |  | 42d | 13.8d | ELECTRICAL [610.8 h]; Cost |  |  | DP2TR26017C0 | DT | C | P2 | TR | ME | 260 | 17 | BILL 5 | B05 | S1 | FF | R00 | ACF07 | 260 |  |  |  | MEP |  |  |  |  |  | FF |  |  |  |  |  |  |  |  |
| DP2TR26019C0 |  | DT-P2 ; Final Fix, Inst of Light fittings (TR RM) | 18d | 2012-06-07 | 2012-06-28 | DP2TR09503C0, DP2TR26015C0 SS+6d |  |  |  |  | 30d | 1.8d | ELECTRICAL [6626.4 h]; Cost |  |  | DP2TR26019C0 | DT | C | P2 | TR | ME | 260 | 19 | BILL 5 | B05 | S1 | FF | R00 | ACF07 | 260 |  |  |  | MEP |  |  |  |  |  | FF |  |  |  |  |  |  |  |  |
| DP2TR27030C0 |  | DT-P2 ; Final Fix, Inst of ELV device (Detector/Speaker) (TR RM) | 18d | 2012-06-09 | 2012-07-01 | DP2TR09503C0, DP2TR27002C0 |  |  |  |  | 28.2d | 0d | ELECTRICAL [2152.8 h]; Cost |  |  | DP2TR27030C0 | DT | C | P2 | TR | ME | 270 | 30 | BILL 5 | B05 | S1 | FF | R00 | ACF07 | 270 |  |  |  | MEP |  |  |  |  |  | FF |  |  |  |  |  |  |  |  |
| DP2TR09907C0 |  | DT-P2 ; Ceiling - Final paint (TR RM) | 12d | 2012-06-23 | 2012-07-05 | DP2TR09905C0, IP2CO09900R02 FF, DP2TR09503C0 |  |  |  |  | 42d | 13.8d | Labor General [2 h]; Cost |  |  | DP2TR09907C0 | DT | C | P2 | TR | PA | 099 | 07 | BILL 5 | B05 | S1 | 02 | R00 | ACF06 | 099 | 363 | 1314 |  |  |  |  |  |  |  |  |  |  |  |  |  |  |  |  |
| DP2TR01802C0 |  | DT-P2 ; MEP de-snag, FIREM sign-off | 18d | 2012-07-01 | 2012-07-22 | DP2TR26017C0, DP2TR23074C0, DP2TR23003C0, DP2TR26076C0, DP2TR26013C0, DP2TR26015C0, DP2TR26019C0, DP2TR27030C0 |  |  |  |  | 28.2d | 0d | TESTING & COMMISSIONING [510 h]; Cost |  |  | CP3TR01851C0 | DT | C | P2 | TR | SC | 018 | 53 | BILL 5 | B05 | S1 | 01 | R00 | ACF07 | 018 | 396 |  |  |  |  |  |  |  |  |  |  |  |  |  |  |  |  |  |
| DP2TR01801C0 |  | DT-P2 ; Touch-up & Clean / JV inspection /CIR /De-snag | 24d | 2012-07-22 | 2012-08-21 | DP2TR08709C0, DP2TR09601C0, DP2TR09903C0, DP2TR09907C0, DP2TR01802C0 |  |  |  |  | 28.2d | 0d | TESTING & COMMISSIONING [85 h]; Cost |  |  | DP2TR01851C0 | DT | C | P2 | TR | SC | 018 | 51 | BILL 5 | B05 | S1 | 02 | R00 | ACF07 | 018 | 396 |  |  |  |  |  |  |  |  |  |  |  |  |  |  |  |  |  |
| DP2TR01803C0 |  | DT-P2 ; Consultant's final de-snag inspection | 12d | 2012-08-21 | 2012-09-04 | DP2TR01801C0 |  |  |  |  | 28.2d | 9.2d | Labor General [1 h]; Cost |  |  | CP3TS01803C0 | DT | C | P2 | TR | SC | 018 | 03 | BILL 5 | B05 | S1 | 03 | R00 | ACF07 | 018 |  |  |  |  |  |  |  |  |  |  |  |  |  |  |  |  |  |  |

| ID | WBS | Activity | Type | Duration | Start | Finish | Predecessors | Complete | Remaining | Planned start | Planned finish | Total float | Free float | Resources | Actual Cost | change id | RENZ % COMPLETE | Phase | CCAD BUILDING(SET) | CCAD PHASE(SET) | CCAD FLOOR(SET) | CCAD ZONE(SET) | CCAD WORK(SET) | CCAD SECTION(SET) | CCAD SERIAL No.(SET) | Area/ Department | Grids | Are | Weight & Nos | Process | Levels | CCAD CBS(SET) | CCAD BILL(SET) | CCAD HANDOVER(SET) | CCAD TAG(SET) | CCAD REV(SET) | CCADACF (SET) | CCAD CSA | CCAD SSCF | N_% | Claimed This Month | P_811 | P_711 | Change Order # | NEW ACTIVITY ID | CCAD DIVISION(SET) | user_number8 | user_integer1 | user_integer2 | user_number7 |
| --- | --- | --- | --- | --- | --- | --- | --- | --- | --- | --- | --- | --- | --- | --- | --- | --- | --- | --- | --- | --- | --- | --- | --- | --- | --- | --- | --- | --- | --- | --- | --- | --- | --- | --- | --- | --- | --- | --- | --- | --- | --- | --- | --- | --- | --- | --- | --- | --- | --- | --- |
|  | P1 | **Level Podium 1** |  |  | 2010-07-27 | 2013-01-15 |  |  |  |  |  |  |  |  |  |  |  |  |  |  |  |  |  |  |  |  |  |  |  |  |  |  |  |  |  |  |  |  |  |  |  |  |  |  |  |  |  |  |  |  |
|  | 01 | **Structure & Envelopment** |  |  | 2010-07-27 | 2012-11-14 |  |  |  |  |  |  |  |  |  |  |  |  |  |  |  |  |  |  |  |  |  |  |  |  |  |  |  |  |  |  |  |  |  |  |  |  |  |  |  |  |  |  |  |  |
| DP1S305103C0 |  | DT-P1 ; Alignment & welding of POD 1 Floor (Zone S3) |  | 14.34d | 2010-07-27 A | 2010-12-10 A | DP1S305101C0 SS+3d | 100% |  | 2010-09-06 | 2010-09-23 |  |  | STRUCTURAL STEEL [1176 h]; Cost | 491205 | DP1S305103C0 | 100 | Z2 | DT | C | P1 | S3 | ST | 051 | 03 | DT | P03 | O | A3 | EREC | 1FLR | BILL 5 | B05 | S1 | 02 | R00 | ACF03 | ST | 051 |  |  |  |  |  |  |  |  |  |  |  |
| DP1SA03301C0 |  | DT-P1 ; Corewall concrete (Zone SA) - El 100 |  | 8d | 2010-08-10 A | 2010-08-15 A | DP2SA03301C0 | 100% |  | 2010-07-31 | 2010-08-08 |  |  | CONCRETE [9184 h]; CONCRETE [231 m3]; Cost |  | DP1SA03301C0 | 100 |  | DT | C | P1 | SA | CT | 033 | 01 |  |  |  |  |  |  | BILL 5 | B05 | S1 | 04 | R00 | ACF03 |  | 033 |  |  |  |  |  |  |  |  |  |  |  |
| DP1SB03303C0 |  | DT-P1 ; Corewall concrete (Zone SB) - El 100 |  | 6d | 2010-08-24 A | 2010-08-30 A | DP2SB03303C0 | 100% |  | 2010-08-10 | 2010-08-17 |  |  | CONCRETE [9184 h]; CONCRETE [231 m3]; Cost |  | DP1SB03303C0 | 100 |  | DT | C | P1 | SB | CT | 033 | 03 |  |  |  |  |  |  | BILL 5 | B05 | S1 | 04 | R00 | ACF03 |  | 033 |  |  |  |  |  |  |  |  |  |  |  |
| DP1S105101C0 |  | DT-P1 ; Erection of Structural Steel of POD 1 Floor (Zone S1) |  | 19.44d | 2010-08-30 A | 2010-10-26 A | DP2S105103C0 SS+3d | 100% |  | 2010-08-19 | 2010-09-12 |  |  | STRUCTURAL STEEL [14968 h]; STRUCTURAL STEEL [585 T(Fe)]; Cost | 3231067 | DP1S105101C0 | 100 | Z2 | DT | C | P1 | S1 | ST | 051 | 01 | DT | P03 | O | A3 | EREC | 1FLR | BILL 5 | B05 | S1 | 01 | R00 | ACF03 | ST | 051 |  |  |  |  |  |  |  |  |  |  |  |
| DP1S105103C0 |  | DT-P1 ; Alignment & welding of POD 1 Floor (Zone S1) |  | 18.67d | 2010-08-31 A | 2010-10-30 A | DP1S105101C0 SS+6d | 100% |  | 2010-08-26 | 2010-09-18 |  |  | STRUCTURAL STEEL [864 h]; Cost | 359007 | DP1S105103C0 | 100 | Z2 | DT | C | P1 | S1 | ST | 051 | 03 | DT | P03 | O | A3 | EREC | 1FLR | BILL 5 | B05 | S1 | 02 | R00 | ACF03 | ST | 051 |  |  |  |  |  |  |  |  |  |  |  |
| DP1S205101C0 |  | DT-P1 ; Erection of Structural Steel of POD 1 Floor (Zone S2) |  | 20.35d | 2010-08-31 A | 2010-10-26 A | DP2S205103C0 SS+3d | 100% |  | 2010-08-21 | 2010-09-14 |  |  | STRUCTURAL STEEL [11941 h]; STRUCTURAL STEEL [467 T(Fe)]; Cost | 4012589 | DP1S205101C0 | 100 | Z2 | DT | C | P1 | S2 | ST | 051 | 01 | DT | P03 | O | A3 | EREC | 1FLR | BILL 5 | B05 | S1 | 01 | R00 | ACF03 | ST | 051 |  |  |  |  |  |  |  |  |  |  |  |
| DP1S205103C0 |  | DT-P1 ; Alignment & welding of POD 1 Floor (Zone S2) |  | 17.03d | 2010-09-01 A | 2010-10-31 A | DP1S205101C0 SS+6d, DP1S205101C0 FF, DP2S205103C0 FF | 100% |  | 2010-08-28 | 2010-09-18 |  |  | STRUCTURAL STEEL [1072 h]; Cost | 445843 | DP1S205103C0 | 100 | Z2 | DT | C | P1 | S2 | ST | 051 | 03 | DT | P03 | O | A3 | EREC | 1FLR | BILL 5 | B05 | S1 | 02 | R00 | ACF03 | ST | 051 |  |  |  |  |  |  |  |  |  |  |  |
| DP1S305101C0 |  | DT-P1 ; Erection of Structural Steel of POD 1 Floor (Zone S3) |  | 10.19d | 2010-10-04 A | 2010-12-03 A | DP2S305101C0 FF, DP2S305103C0 SS+6d | 100% |  | 2010-09-02 | 2010-09-15 |  |  | STRUCTURAL STEEL [2902 h]; STRUCTURAL STEEL [113 T(Fe)]; Cost | 4420846 | DP1S305101C0 | 100 | Z2 | DT | C | P1 | S3 | ST | 051 | 01 | DT | P03 | O | A3 | EREC | 1FLR | BILL 5 | B05 | S1 | 01 | R00 | ACF03 | ST | 051 |  |  |  |  |  |  |  |  |  |  |  |
| DP1S305305C0 |  | DT-P1 ; Metal Decking POD 1 FLR (Zone S3) |  | 20.01d | 2010-10-16 A | 2010-11-22 A | DGLS305101C0, DP1S305103C0 | 100% |  | 2010-11-13 | 2010-12-11 |  |  | METAL DECKING [3688 h]; METAL DECKING [4665 m2]; Cost | 550499 | DP1S305305C0 | 100 | Z2 | DT | C | P1 | S3 | ST | 053 | 05 | DT | P03 | O | A3 | MDEC | 1FLR | BILL 5 | B05 | S1 | 03 | R00 | ACF03 | ST | 053 |  |  |  |  |  |  |  |  |  |  |  |
| DP1S105305C0 |  | DT-P1 ; Metal Decking POD 1 FLR (Zone S1) |  | 16.01d | 2010-10-23 A | 2010-11-11 A | DGLS105101C0, DP1S105103C0 | 100% |  | 2010-09-29 | 2010-10-18 |  |  | METAL DECKING [2696 h]; METAL DECKING [3410 m2]; Cost | 402344 | DP1S105305C0 | 100 | Z2 | DT | C | P1 | S1 | ST | 053 | 05 | DT | P03 | O | A3 | MDEC | 1FLR | BILL 5 | B05 | S1 | 03 | R00 | ACF03 | ST | 053 |  |  |  |  |  |  |  |  |  |  |  |
| DP1S205305C0 |  | DT-P1 ; Metal Decking POD 1 FLR (Zone S2) |  | 17.88d | 2010-10-23 A | 2010-11-10 A | DGLS205101C0, DP1S205103C0 | 100% |  | 2010-09-29 | 2010-10-19 |  |  | METAL DECKING [3344 h]; METAL DECKING [4234 m2]; Cost | 499662 | DP1S205305C0 | 100 | Z2 | DT | C | P1 | S2 | ST | 053 | 05 | DT | P03 | O | A3 | MDEC | 1FLR | BILL 5 | B05 | S1 | 03 | R00 | ACF03 | ST | 053 |  |  |  |  |  |  |  |  |  |  |  |
| DP1S203399C0 |  | DT-P1 ; Concrete on Metal Decking POD 1 FLR (Zone S2) |  | 10d | 2010-11-26 A | 2011-01-12 A | DP1S103399C0, DP1S205305C0 | 100% |  | 2010-12-02 | 2010-12-15 |  |  | CONCRETE [21384 h]; CONCRETE [538 m3]; Cost |  | DP1S205335C0 | 100 | Z2 | DT | C | P1 | S2 | CT | 033 | 99 | DT | P03 | O | A3 | MDEC | 1FLR | BILL 5 | B05 | S1 | 08 | R00 | ACF03 |  | 033 |  |  |  |  |  |  |  |  |  |  |  |
| DP1S103399C0 |  | DT-P1 ; Concrete on Metal Decking POD 1 FLR (Zone S1) |  | 10d | 2010-11-27 A | 2011-01-12 A | DP1S105305C0 | 100% |  | 2010-11-21 | 2010-12-02 |  |  | CONCRETE [15112 h]; CONCRETE [380 m3]; Cost |  | DP1S105335C0 | 100 | Z2 | DT | C | P1 | S1 | CT | 033 | 99 | DT | P03 | O | A3 | MDEC | 1FLR | BILL 5 | B05 | S1 | 08 | R00 | ACF03 |  | 033 |  |  |  |  |  |  |  |  |  |  |  |
| DP1S303399C0 |  | DT-P1 ; Concrete on Metal Decking POD 1 FLR (Zone S3) |  | 10d | 2010-12-05 A | 2011-01-12 A | DP1S203399C0 SS+6d, DP1S305305C0 | 100% |  | 2011-01-12 | 2011-01-23 |  |  | CONCRETE [23496 h]; CONCRETE [591 m3]; Cost |  | DP1S305335C0 | 100 | Z2 | DT | C | P1 | S3 | CT | 033 | 99 | DT | P03 | O | A3 | MDEC | 1FLR | BILL 5 | B05 | S1 | 08 | R00 | ACF03 |  | 033 |  |  |  |  |  |  |  |  |  |  |  |
| DP1S107807C0 |  | DT-P1 ; Cementitious Fire Proofing works POD 1 FLR (Zone S1) |  | 9.88d | 2011-01-22 A | 2011-03-02 A | DGLS103399C0 | 100% |  | 2011-01-03 | 2011-01-13 |  |  | CEMENTITIOUS FIREPROOFING [1721 h]; CEMENTITIOUS FIREPROOFING [3441 m2]; Cost |  | DP1S107807C0 | 100 | Z2 | DT | C | P1 | S1 | ST | 078 | 07 | DT | P03 | O | A3 | FIRE | 1FLR | BILL 5 | B05 | S1 | 04 | R00 | ACF03 | ST | 078 |  |  |  |  |  |  |  |  |  |  |  |
| DP1S207807C0 |  | DT-P1 ; Cementitious Fire Proofing works POD 1 FLR (Zone S2) |  | 12d | 2011-01-25 A | 2011-05-30 A | DGLS203399C0 | 100% |  | 2011-01-05 | 2011-01-18 |  |  | CEMENTITIOUS FIREPROOFING [2137 h]; CEMENTITIOUS FIREPROOFING [4273 m2]; Cost |  | DP1S207807C0 | 100 | Z2 | DT | C | P1 | S2 | ST | 078 | 07 | DT | P03 | O | A3 | FIRE | 1FLR | BILL 5 | B05 | S1 | 04 | R00 | ACF03 | ST | 078 |  |  |  |  |  |  |  |  |  |  |  |
| DP1S307807C0 |  | DT-P1 ; Cementitious Fire Proofing works POD 1 FLR (Zone S3) |  | 14d | 2011-02-01 A | 2011-02-15 A | DGLS303399C0 | 100% |  | 2011-02-01 | 2011-02-16 |  |  | CEMENTITIOUS FIREPROOFING [2354 h]; CEMENTITIOUS FIREPROOFING [4708 m2]; Cost |  | DP1S307807C0 | 100 | Z2 | DT | C | P1 | S3 | ST | 078 | 07 | DT | P03 | O | A3 | FIRE | 1FLR | BILL 5 | B05 | S1 | 04 | R00 | ACF03 | ST | 078 |  |  |  |  |  |  |  |  |  |  |  |
| DP1CO04403C0 |  | DT-P1 ; C4 Bracket (Common Zone) |  | 30d | 2011-03-05 A | 2011-03-31 A | DP1S107807C0, DP1S207807C0, DP1S307807C0 | 100% |  | 2011-03-01 | 2011-04-05 |  |  | FACADE CURTAIN WALL 4 [318.2 h]; Cost |  | DP1CO04403C0 | 100 |  | DT | C | P1 | CO | FA | 044 | 03 |  |  |  |  |  |  | BILL 5 | B05 | S1 | FC4 | R00 | ACF05 | FA | 044 | 100 |  |  |  |  |  |  |  |  |  |  |
| DP1CO04413C0 |  | DT-P1 ; M1 Bracket (Common Zone) |  | 30d | 2011-03-05 A | 2011-03-31 A | DP1S107807C0, DP1S207807C0, DP1S307807C0 | 100% |  | 2011-03-01 | 2011-04-05 |  |  | FACADE METAL PANEL 1 [125.4 h]; Cost |  | DP1CO04413C0 | 100 |  | DT | C | P1 | CO | FA | 044 | 13 |  |  |  |  |  |  | BILL 5 | B05 | S1 | FM1 | R00 | ACF05 | FA | 044 | 100 |  |  |  |  |  |  |  |  |  |  |
| DP1CO04415C0 |  | DT-P1 ; M1 External Partition (Common Zone) |  | 24d | 2011-03-05 A | 2011-08-30 A | DP1CO04413C0, DP2CO04415C0 SS+15d, DP1GN01103C0 FF | 100% |  | 2011-04-05 | 2011-05-03 |  |  | FACADE METAL PANEL 1 [3295.4 h]; FACADE METAL PANEL 1 [1205 m2]; FACADE TOTAL QUANTITY m2 [1205 m2]; Cost |  | DP1CO04415C0 | 70 |  | DT | C | P1 | CO | FA | 044 | 15 |  |  |  |  |  |  | BILL 5 | B05 | S1 | FM1 | R00 | ACF05 | FA | 044 | 95 | 84983.09 | 100 | 95 |  |  |  |  |  |  |  |
| DP1GN01103C0 |  | DT-P1 ; Temporary Enclosure | level of effort | 214.25d | 2011-03-24 A | 2012-10-13 | DP1SF09203C0 SS, DP1PH09203C0 SS, DP1TR09203C0 SS, DP1CL09203C0 SS, DP1ET09203C0 SS, DP1PA09203C0 SS |  | 314.05d | 2011-03-24 | 2011-12-08 | 150.95d | 0d | Labor General [1077.8 h]; Cost |  |  |  |  | DT | C | P1 | GEN | FA | GEN |  |  |  |  |  |  |  |  | B05 |  | TE | R00 | ACF05 | FA | 010 |  |  | 6.99 | 0 |  |  |  |  |  |  |  |
| DP1CO04405C0 |  | DT-P1 ; C4 Transom & Mullion (Common Zone) |  | 42.07d | 2011-04-04 A | 2011-06-09 A | DP1CO04403C0 | 100% |  | 2011-04-05 | 2011-05-24 |  |  | FACADE CURTAIN WALL 4 [655 h]; FACADE CURTAIN WALL 4 [239 m2]; FACADE TOTAL QUANTITY m2 [239 m2]; Cost |  | DP1CO04405C0 | 80 |  | DT | C | P1 | CO | FA | 044 | 05 |  |  |  |  |  |  | BILL 5 | B05 | S1 | FC4 | R00 | ACF05 | FA | 044 | 100 | 139543.67 |  |  |  |  |  |  |  |  |  |
| DP1CO04001C0 |  | DT-P1 ; Blockworks (Common Zone) |  | 39d | 2011-05-15 A | 2011-05-30 A | DP1S107807C0, DP1S207807C0, DP1S307807C0 | 100% |  | 2011-05-31 | 2011-07-17 |  |  | BLOCKWORKS [3714 h]; BLOCKWORKS [1061 m2]; Cost |  | DP1CO04001C0 | 100 |  | DT | C | P1 | CO | BL | 040 | 01 |  |  |  |  |  |  | BILL 5 | B05 | S1 | BL | R00 | ACF06 |  | 040 |  |  |  |  | 73 | 73 | 04 |  |  |  |  |
| DP1CO04003C0 |  | DT-P1 ; Plaster to Blockwork (Common Zone) |  | 24d | 2011-05-15 A | 2011-05-30 A | DP1CO04001C0 SS+24d | 100% |  | 2011-06-29 | 2011-07-27 |  |  | BLOCKWORKS [131 h]; Cost |  | DP1CO04003C0 | 100 |  | DT | C | P1 | CO | BL | 040 | 03 |  |  |  |  |  |  | BILL 5 | B05 | S1 | BL | R00 | ACF06 |  | 040 |  |  |  |  |  |  |  |  |  |  |  |
| DP1CO04407C0 |  | DT-P1 ; C4 Glazing (Common Zone) |  | 72d | 2011-07-07 A | 2011-10-09 | DP1CO04405C0, DP1GN01103C0 FF, DP2CO04407C0 SS | 90% | 7.2d | 2011-07-24 | 2011-10-18 | 229.6d | 0d | FACADE CURTAIN WALL 4 [655 h]; FACADE CURTAIN WALL 4 [239 m2]; FACADE TOTAL QUANTITY m2 [239 m2]; Cost |  | DP1CO04407C0 |  |  | DT | C | P1 | CO | FA | 044 | 07 |  |  |  |  |  |  | BILL 5 | B05 | S1 | FC4 | R00 | ACF05 | FA | 044 | 50 |  | 35 | 10 |  |  |  | 0 | 0 | 0 | 0 |
| DP1CO04417C0 |  | DT-P1 ; M1 Metal Panel (Common Zone) |  | 90d | 2011-09-05 A | 2011-11-24 | DP1CO04415C0, DP2CO04417C0 SS | 50% | 45d | 2011-09-01 | 2011-12-20 | 239d | 77d | FACADE METAL PANEL 1 [3295.4 h]; FACADE METAL PANEL 1 [1205 m2]; FACADE TOTAL QUANTITY m2 [1205 m2]; Cost |  | DP1CO04417C0 |  |  | DT | C | P1 | CO | FA | 044 | 17 |  |  |  |  |  |  | BILL 5 | B05 | S1 | FM1 | R00 | ACF05 | FA | 044 | 50 |  |  |  |  |  |  |  |  |  |  |
| DP1CO04455C0 |  | DT-P1 ; M1 Inner Side of External Partition (Common Zone) |  | 48d | 2012-01-31 | 2012-03-28 | DP1CO04415C0, DP1CL09205C0 SS, DP1SF09205C0 SS |  |  |  |  | 54.9d | 32.1d | FACADE METAL PANEL 1 [2348.8 h]; Cost |  | DP3CO04415C0 |  |  | DT | C | P1 | CO | FA | 044 | 15 |  |  |  |  |  |  | BILL 5 | B05 | S1 | FM1 | R00 | ACF05 | FA | 044 |  |  |  |  |  |  |  |  |  |  |  |
| DP1CO04401C0 |  | DT-P1 ; VE Vestibule (Common Zone) |  | 30d | 2012-02-11 | 2012-03-17 | DP1CO04415C0 FF, PGLS403392C0 FS+28d |  |  |  |  | 242.7d | 222.9d | Labor General [0.6 h]; Cost |  | DP3CO04403C0 |  |  | DT | C | P1 | CO | FA | 044 | 03 |  |  |  |  |  |  | BILL 5 | B05 | S1 | VE | R00 | ACF05 | FA | 044 |  |  |  |  |  |  |  |  |  |  |  |
| DP1CO04403C10 |  | DT-P1 ; C5 Bracket (Common Zone) |  | 36d | 2012-02-20 | 2012-04-02 | DP1S107807C0, DP1S207807C0, DP1S307807C0, DP2CO04403C10 |  |  |  |  | 162.7d | 12d | FACADE CURTAIN WALL 5 [616.1 h]; Cost |  | DP2CO04403C0 |  |  | DT | C | P1 | CO | FA | 044 | 03 |  |  |  |  |  |  | BILL 5 | B05 | S1 | FC5 | R00 | ACF05 | FA | 044 |  |  |  |  |  |  |  |  |  |  |  |
| DP1CO04405C10 |  | DT-P1 ; C5 Transom & Mullion (Common Zone) |  | 48d | 2012-04-16 | 2012-06-11 | DP1CO04403C10, DP2CO04405C10 |  |  |  |  | 150.7d | 0d | FACADE CURTAIN WALL 5 [2462.7 h]; Cost |  | DP2CO04405C0 |  |  | DT | C | P1 | CO | FA | 044 | 05 |  |  |  |  |  |  | BILL 5 | B05 | S1 | FC5 | R00 | ACF05 | FA | 044 |  |  |  |  |  |  |  |  |  |  |  |
| DP1CO04407C10 |  | DT-P1 ; C5 Glazing (Common Zone) |  | 36d | 2012-06-11 | 2012-07-24 | DP1CO04405C10, DP2CO04407C10 SS+10d, DP1GN01103C0 FF, DP2CO04407C10 |  |  |  |  | 150.7d | 130.9d | FACADE CURTAIN WALL 5 [1026.5 h]; Cost |  | DP2CO04407C0 |  |  | DT | C | P1 | CO | FA | 044 | 07 |  |  |  |  |  |  | BILL 5 | B05 | S1 | FC5 | R00 | ACF05 | FA | 044 |  |  |  |  |  |  |  |  |  |  |  |
| DP1CO04423C0 |  | DT-P1 ; S2 Bracket (Common Zone - to be S11) |  | 36d | 2012-07-18 | 2012-09-01 | DP1S107807C0, DP1S207807C0, DP1S307807C0, DP2CO04423C0 SS+6d |  |  |  |  | 150.95d | 0d | FACADE NATURAL STONE PANEL [114.6 h]; Cost |  | DP1CO04423C0 |  |  | DT | C | P1 | CO | FA | 044 | 23 |  |  |  |  |  |  | BILL 5 | B05 | S1 | FS2 | R00 | ACF05 | FA | 044 |  |  |  |  |  |  |  |  |  |  |  |
| DP1CO04425C0 |  | DT-P1 ; S2 External Partition (Common Zone - to be S11) |  | 36d | 2012-09-01 | 2012-10-13 | DP1CO04423C0, DP1GN01103C0 FF |  |  |  |  | 150.95d | 14.7d | FACADE NATURAL STONE PANEL [149.3 h]; FACADE NATURAL STONE PANEL [55 m2]; FACADE TOTAL QUANTITY m2 [55 m2]; Cost |  | DP1CO04425C0 |  |  | DT | C | P1 | CO | FA | 044 | 25 |  |  |  |  |  |  | BILL 5 | B05 | S1 | FS2 | R00 | ACF05 | FA | 044 |  |  |  |  |  |  |  |  |  |  |  |
| DP1CO04427C0 |  | DT-P1 ; S2 Stone Panel (Common Zone - to be S11) |  | 48d | 2012-09-17 | 2012-11-14 | DP1CO04425C0 SS, DP2CO04427C0 SS, DP1CO04425C0 FF |  |  |  |  | 136.25d | 0d | FACADE NATURAL STONE PANEL [149.3 h]; FACADE NATURAL STONE PANEL [55 m2]; FACADE TOTAL QUANTITY m2 [55 m2]; Cost |  | DP1CO04427C0 |  |  | DT | C | P1 | CO | FA | 044 | 27 |  |  |  |  |  |  | BILL 5 | B05 | S1 | FS2 | R00 | ACF05 | FA | 044 |  |  |  |  |  |  |  |  |  |  |  |

| ID | WBS | Activity | Duration | Start | Finish | Predecessors | Complete | Remaining | Planned start | Planned finish | Total float | Free float | Resources | Cost | Actual cost | change id | RENZ % COMPLETE | Claimed This Month | CCAD BUILDING(SET) | CCAD PHASE(SET) | CCAD FLOOR(SET) | CCAD ZONE(SET) | CCAD WORK(SET) | CCAD SECTION(SET) | CCAD SERIAL No.(SET) | CCAD SUB ZONE MEP(SET) | CCAD CBS(SET) | CCAD BILL(SET) | CCAD HANDOVER(SET) | CCAD TAG(SET) | CCAD REV(SET) | CCADACF (SET) | CCAD CSA | CCAD SSCF | Act Selector % | PERCENT COMPLETE | July2011 Target% Complete | P_811 | P_711 | user_number8 | user_integer1 | user_integer2 | user_number7 | Change Order # | NEW ACTIVITY ID | CCAD MEQ | U% | CCAD DIVISION(SET) |
| --- | --- | --- | --- | --- | --- | --- | --- | --- | --- | --- | --- | --- | --- | --- | --- | --- | --- | --- | --- | --- | --- | --- | --- | --- | --- | --- | --- | --- | --- | --- | --- | --- | --- | --- | --- | --- | --- | --- | --- | --- | --- | --- | --- | --- | --- | --- | --- | --- |
|  | 02 | **Staff Training Center** |  | 2011-02-08 | 2013-01-02 |  |  |  |  |  |  |  |  |  |  |  |  |  |  |  |  |  |  |  |  |  |  |  |  |  |  |  |  |  |  |  |  |  |  |  |  |  |  |  |  |  |  |  |
| DP1SF22019C0 |  | DT-P1 ; 1st Fix, Inst of Drainage pipe (ceiling) (Staff Training) | 62d | 2011-02-08 A | 2011-10-04 | DP1S207807C0, DP1SF23001C0, DP1SF26013C0 SS+10d | 95% | 3.1d | 2011-05-05 | 2011-07-18 | 52.4d | 0d | PLUMBING [1173.6 h]; Cost [61888.2 AED] | 61,888.15 | 58,793.75 | DP1SF22019C0 | 90 | 7350.18 | DT | C | P1 | SF | ME | 220 | 19 | 1S | BILL 5 | B05 | S1 | 1F | R00 | ACF04 | MEP | 220 | M1F |  |  |  |  |  |  |  |  |  |  |  |  |  |
| DP1SF22005C0 |  | DT-P1 ; 1st Fix, Inst of Water supply pipe (ceiling) (Staff Training) | 200d | 2011-02-16 A | 2011-12-01 | DP1S207807C0, DP1SF22019C0 SS+7d, DP1SF23001C0 | 75% | 50d | 2011-05-04 | 2012-01-02 | 52.4d | 0d | PLUMBING [4896 h]; Cost [264473 AED] | 264,473.49 | 198,355.12 | DP1SF22005C0 | 45 | 15338.85 | DT | C | P1 | SF | ME | 220 | 05 | 1S | BILL 5 | B05 | S1 | 1F | R00 | ACF04 | MEP | 220 | M1F | 75 | 65 | 90 | 70 |  |  |  |  |  |  |  |  |  |
| DP1SF21111C0 |  | DT-P1 ; 1st Fix, Inst of Sprinkler main pipe (Staff Training) | 44d | 2011-02-17 A | 2011-10-03 | DP1S207807C0, DP1SF22005C0 SS+12d, DP1SF23001C0 | 95% | 2.2d | 2011-05-18 | 2011-07-09 | 52.4d | 0d | MECHANICAL [981.6 h]; Cost [53543.7 AED] | 53,543.69 | 50,866.51 | DP1SF21111C0 | 95 | 3107.05 | DT | C | P1 | SF | ME | 211 | 11 | 1S | BILL 5 | B05 | S1 | 1F | R00 | ACF04 | MEP | 211 | M1F |  |  |  |  |  |  |  |  |  |  |  |  |  |
| DP1SF09201C0 |  | DT-P1 ; Metal Studs (Staff Training) | 90d | 2011-02-19 A | 2011-10-25 | DP1SF23001C0 | 76% | 21.6d | 2011-04-06 | 2011-07-20 | 25.4d | 0d | PARTITIONS [11894 h]; PARTITIONS - Metal Studs [2256 m]; Cost |  |  | DP1SF09201C0 | 40 | 190433.25 | DT | C | P1 | SF | PT | 092 | 01 |  | BILL 5 | B05 | S1 | 1F | R00 | ACF06 | GP | 092 | PMS |  |  | 65 | 63 | 0 | 0 | 0 | 0 | 313 | 944 |  |  |  |
| DP1SF23023C0 |  | DT-P1 ; 1st Fix, Inst of Main Ducting (Staff Training) | 250d | 2011-02-19 A | 2011-11-16 | DP1S207807C0, DP1SF23001C0, DP1SF23017C0 SS+10d | 85% | 37.5d | 2011-06-15 | 2012-04-12 | 52.4d | 0d | MECHANICAL [11402.4 h]; Cost [622619 AED] | 622,619.08 | 529,226.22 | DP1SF23023C0 | 70 | 108328.05 | DT | C | P1 | SF | ME | 230 | 23 | 1S | BILL 5 | B05 | S1 | 1F | R00 | ACF04 | MEP | 230 | M1F | 85 | 90 |  |  |  |  |  |  |  |  |  |  |  |
| DP1SF23001C0 |  | DT-P1 ; 1st Fix, Inst. of Supports for MEP (Staff Training) | 27d | 2011-03-01 A | 2011-10-01 | DP1S207807C0 SS | 100% | 0d | 2011-02-28 | 2011-03-30 | 25.4d | 0d | MECHANICAL [1338 h]; Cost [75432.9 AED] | 75,432.94 | 71,661.29 | DP1SF23001C0 | 100 |  | DT | C | P1 | SF | ME | 230 | 01 | 1S | BILL 5 | B05 | S1 | 1F | R00 | ACF04 | MEP | 230 | M1F |  |  |  |  |  |  |  |  |  |  |  |  |  |
| DP1SF09203C0 |  | DT-P1 ; Partitions 1st face (Staff Training) | 90d | 2011-03-24 A | 2012-01-09 | DP1SF09201C0 SS+12d, DP1SF23023C0, DP1SF26013C0, DP1SF22005C0 FF | 61% | 35.1d | 2011-05-15 | 2011-08-28 | 44.9d | 19.5d | PARTITIONS [2256 m]; PARTITIONS [9300 h]; Cost |  |  | DP1SF09203C0 | 15 | 53321.35 | DT | C | P1 | SF | PT | 092 | 03 |  | BILL 5 | B05 | S1 | 2F | R00 | ACF06 | GP | 092 | P1F |  |  | 45 | 25 | 0 | 0 | 0 | 0 | 314 | 945 |  |  |  |
| DP1SF22011C0 |  | DT-P1 ; 2nd Fix, Drainage/Water pipe (wall) (Staff Training) | 90d | 2011-04-05 A | 2012-01-24 | DP1SF09201C0 | 20% | 72d | 2011-05-10 | 2011-08-23 | 25.4d | 0d | PLUMBING [1173.6 h]; Cost [61888.2 AED] | 61,888.15 | 12,377.63 | DP1SF22011C0 | 45 | 3675.1 | DT | C | P1 | SF | ME | 220 | 11 | 2n | BILL 5 | B05 | S1 | 2F | R00 | ACF07 | MEP | 220 |  | 20 | 55 | 60 | 55 |  |  |  |  |  |  |  |  |  |
| DP1SF26001C0 |  | DT-P1 ; 1st Fix, Inst of Trunking/Conduiting (Staff Training) | 63d | 2011-04-09 A | 2011-10-22 | DP1S207807C0, DP1SF23001C0 | 70% | 18.9d | 2011-03-31 | 2011-06-12 | 44.9d | 0d | ELECTRICAL [824.4 h]; Cost [42423.2 AED] | 42,423.24 | 29,696.27 | DP1SF26001C0 | 60 | 17495.45 | DT | C | P1 | SF | ME | 260 | 01 | 1S | BILL 5 | B05 | S1 | 1F | R00 | ACF04 | MEP | 260 | M1F |  | 95 | 100 | 95 |  |  |  |  |  |  |  |  |  |
| DP1SF21117C0 |  | DT-P1 ; 1st Fix, Inst of Sprinkler branch pipe (Staff Training) | 63d | 2011-04-11 A | 2011-11-01 | DP1S207807C0, DP1SF09201C0, DP1SF21111C0 | 90% | 6.3d | 2011-07-11 | 2011-09-24 | 187.1d | 161.7d | MECHANICAL [1441.2 h]; Cost [78749.8 AED] | 78,749.79 | 70,874.81 | DP1SF21117C0 | 80 | 18258.49 | DT | C | P1 | SF | ME | 211 | 17 | 1S | BILL 5 | B05 | S1 | 1F | R00 | ACF04 | MEP | 211 | M1F |  |  |  |  |  |  |  |  |  |  |  |  |  |
| DP1SF23017C0 |  | DT-P1 ; 1st Fix, Inst of CHW pipe (Staff Training) | 44d | 2011-04-11 A | 2011-10-05 | DP1S207807C0, DP1SF21111C0 SS+14d, DP1SF23001C0 | 90% | 4.4d | 2011-06-04 | 2011-07-25 | 52.4d | 0d | MECHANICAL [6325.2 h]; Cost [345418 AED] | 345,418.28 | 310,876.46 | DP1SF23017C0 | 35 | 100163 | DT | C | P1 | SF | ME | 230 | 17 | 1S | BILL 5 | B05 | S1 | 1F | R00 | ACF04 | MEP | 230 | M1F |  | 90 | 100 | 95 |  |  |  |  |  |  |  |  |  |
| DP1SF27010C0 |  | DT-P1 ; 1st Fix, Inst of Trunking for ELV system (Staff Training) | 90d | 2011-04-18 A | 2011-12-18 | DP1S207807C0, DP1SF23001C0, DP1SF26001C0 SS+10d | 30% | 63d | 2011-04-12 | 2011-07-26 | 44.9d | 0d | ELECTRICAL [1689.6 h]; Cost [88597.9 AED] | 88,597.89 | 26,579.37 | DP1SF27010C0 | 40 | 56531.13 | DT | C | P1 | SF | ME | 270 | 10 | 1S | BILL 5 | B05 | S1 | 1F | R00 | ACF04 | MEP | 270 | M1F | 30 | 95 | 90 | 80 |  |  |  |  |  |  |  |  |  |
| DP1SF26013C0 |  | DT-P1 ; 1st Fix, Inst of Cable Tray (Staff Training) | 180d | 2011-04-27 A | 2011-11-24 | DP1S207807C0, DP1SF23001C0, DP1SF27010C0 SS+9d | 75% | 45d | 2011-04-23 | 2011-11-24 | 44.9d | 0d | ELECTRICAL [430.8 h]; Cost [23263.3 AED] | 23,263.34 | 17,447.5 | DP1SF26013C0 | 40 | 14851.22 | DT | C | P1 | SF | ME | 260 | 13 | 1S | BILL 5 | B05 | S1 | 1F | R00 | ACF04 | MEP | 260 | M1F | 75 | 95 | 98 | 80 |  |  |  |  |  |  |  |  |  |
| DP1SF26009C0 |  | DT-P1 ; 2nd Fix, Inst of Wall conduites (Staff Training) | 78d | 2011-06-07 A | 2012-01-17 | DP1SF09201C0 | 15% | 66.3d | 2011-06-07 | 2011-09-08 | 31.1d | 5.7d | ELECTRICAL [824.4 h]; Cost [42423.2 AED] | 42,423.24 | 6,363.49 | DP1SF26009C0 |  | 4998.66 | DT | C | P1 | SF | ME | 260 | 09 | 2n | BILL 5 | B05 | S1 | 2F | R00 | ACF07 | MEP | 260 |  | 15 | 10 | 50 | 10 |  |  |  |  |  |  |  |  |  |
| DP1SF23015C0 |  | DT-P1 ; 2nd Fix, Insulation of CHW pipe & Duct (Staff Trainning) | 120d | 2011-06-08 A | 2011-12-17 | DP1SF23009C0, DP1SF23017C0, DP1SF23023C0 | 80% | 24d | 2011-08-08 | 2012-01-04 | 117.5d | 92.1d | MECHANICAL [5311.2 h]; Cost [286617 AED] | 286,617.06 | 229,293.65 | DP1SF23015C0 |  | 34107.03 | DT | C | P1 | SF | ME | 230 | 15 | 2n | BILL 5 | B05 | S1 | 2F | R00 | ACF07 | MEP | 230 |  |  | 55 | 75 | 65 | 0 | 0 | 0 | 0 |  |  |  |  |  |
| DP1SF23008C0 |  | DT-P1 ; 1st Fix, Inst of VCD's/FD's (Staff Training) | 120d | 2011-06-14 A | 2012-01-15 | DP1S207807C0, DP1SF23023C0 | 60% | 48d | 2011-06-25 | 2011-11-19 | 93.5d | 68.1d | MECHANICAL [4312.8 h]; Cost [232964 AED] | 232,964.23 | 139,778.54 | DP1SF23008C0 |  | 110669.1 | DT | C | P1 | SF | ME | 230 | 08 | 1S | BILL 5 | B05 | S1 | 1F | R00 | ACF04 | MEP | 230 | M1F | 60 | 90 | 75 | 50 | 0 | 0 | 0 | 0 |  |  |  |  |  |
| DP1SF23009C0 |  | DT-P1 ; 2nd Fix, Inst of VAV'S CHW connection (Staff Training) | 90d | 2011-06-22 A | 2011-10-26 | DP1SF23017C0 | 80% | 18d | 2011-07-04 | 2011-10-19 | 132.6d | 15.1d | MECHANICAL [1684.8 h]; Cost [91006.1 AED] | 91,006.06 | 72,804.85 | DP1SF23009C0 |  | 10820.47 | DT | C | P1 | SF | ME | 230 | 09 | 2n | BILL 5 | B05 | S1 | 2F | R00 | ACF07 | MEP | 230 |  |  | 20 | 60 | 10 | 0 | 0 | 0 | 0 |  |  |  |  |  |
| DP1SF23011C0 |  | DT-P1 ; 2nd Fix, Inst of Equipment (FCU,FAN) (Staff Training) | 79d | 2011-08-02 A | 2012-05-20 | DP1SF09205C0 | 51% | 39d | 2012-03-25 | 2012-06-26 | 58.4d | 33d | MECHANICAL [1588.8 h]; Cost [361645 AED] | 361,645.02 | 180,822.51 | DP1SF23011C0 |  |  | DT | C | P1 | SF | ME | 230 | 11 | 2n | BILL 5 | B05 | S1 | 2F | R00 | ACF04 | MEP | 230 |  |  |  | 50 | 0 |  |  |  |  |  |  | H |  |  |
| DP1SF08103C0 |  | DT-P1 ; Door Frames (Staff Training) | 42d | 2011-09-05 A | 2011-12-10 | DP1SF09201C0, GNHE08101C0 | 20% | 33.6d | 2011-11-12 | 2012-01-03 | 123.8d | 98.4d | ASSORTED DOORS [1132 h]; Cost |  |  | DP1SF08103C0 |  |  | DT | C | P1 | SF | DO | 081 | 03 |  | BILL 5 | B05 | S1 | DF | R00 | ACF06 |  | 081 |  |  |  |  |  |  |  |  |  | 316 | 947 |  | 10 | 08 |
| DP1SF27001C0 |  | DT-P1 ; 1st Fix, Wiring/ Cabling work (Staff Training) | 42d | 2011-12-19 | 2012-02-07 | DP1S207807C0, DP1SF26001C0, DP1SF26013C0, DP1SF27010C0 |  |  |  |  | 110d | 84.6d | ELECTRICAL [436.8 h]; Cost |  |  | DP1SF27001C0 | 30 | 5158.7 | DT | C | P1 | SF | ME | 270 | 01 | 1S | BILL 5 | B05 | S1 | 1F | R00 | ACF04 | MEP | 270 | M1F | 0 | 50 | 55 | 50 |  |  |  |  |  |  |  |  |  |
| DP1SF01005C0 |  | DT-P1 ; 2nd, Wall Inspection by Consultant (Staff Training) | 6d | 2012-01-24 | 2012-01-31 | DP1SF22011C0, DP1SF26009C0 |  |  |  |  | 25.4d | 0d | Labor General [1.2 h]; Cost |  |  | DP1SF01005C0 |  |  | DT | C | P1 | SF | ME | 010 | 05 | 2n | BILL 5 | B05 | S1 | WI | R00 | ACF07 | MEP | 010 |  |  |  |  |  |  |  |  |  |  |  |  |  |  |
| DP1SF09205C0 |  | DT-P1 ; Partitions Closing (Staff Training) | 54d | 2012-01-31 | 2012-04-04 | DAFOA09206C1 FF, DP1SF01005C0, DP1SF09203C0, DP1SF22005C0, DP1SF22019C0, DP1SF08103C0 FF, DP1SF23008C0 FF, DP1SF23009C0 FF, DP1SF23015C0 FF |  |  |  |  | 25.4d | 0d | PARTITIONS [2256 m]; PARTITIONS [11917 h]; Cost |  |  | DP1SF09205C0 |  |  | DT | C | P1 | SF | PT | 092 | 05 |  | BILL 5 | B05 | S1 | FF | R00 | ACF06 | GP | 092 | P2F |  |  |  |  |  |  |  |  | 315 | 946 |  |  |  |
| DP1SF07103C0 |  | DT-P1 ; Waterproofing (Staff Training) | 12d | 2012-04-04 | 2012-04-18 | DP1SF08103C0, DP1SF09205C0 |  |  |  |  | 75.53d | 0d | THERMAL & MOISTURE [864 h]; THERMAL & MOISTURE [5704 m2]; Cost |  |  | DP1SF07103C0 |  |  | DT | C | P1 | SF | FF | 071 | 03 |  | BILL 5 | B05 | S1 | 01 | R00 | ACF03 |  | 071 |  |  |  |  |  |  |  |  |  | 105 | 999 |  |  |  |
| DP1SF09901C0 |  | DT-P1 ; Wall Prime & 1st coat (Staff Trainning) | 36d | 2012-04-04 | 2012-05-16 | DP1CO04003C0, DP1SF09205C0 |  |  |  |  | 25.4d | 0d | WALL PAINT [2287 h]; WALL PAINT [2854 m2]; Cost |  |  | DP1SF09901C0 |  |  | DT | C | P1 | SF | PA | 099 | 01 |  | BILL 5 | B05 | S1 | 01 | R00 | ACF06 |  | 099 |  |  |  |  |  |  |  |  |  | 328 | 956 |  |  |  |
| DP1SF26005C0 |  | DT-P1 ; 2nd Fix, Wiring for Power/Lighting/Emergency (Staff Training) | 42d | 2012-04-04 | 2012-05-23 | DP1SF09205C0 |  |  |  |  | 85.4d | 0d | ELECTRICAL [436.8 h]; Cost |  |  | DP1SF26005C0 | 30 | 10317.3 | DT | C | P1 | SF | ME | 260 | 05 | 2n | BILL 5 | B05 | S1 | 2F | R00 | ACF07 | MEP | 260 |  | 0 | 70 |  |  |  |  |  |  |  |  |  |  |  |
| DP1SF26007C0 |  | DT-P1 ; 2nd Fix, Cable Pulling (Staff Training) | 24d | 2012-04-04 | 2012-05-02 | DP1SF09201C0 SS+6d, DP1SF09205C0 |  |  |  |  | 84.4d | 0d | ELECTRICAL [6634.8 h]; Cost |  |  | DP1SF26007C0 |  |  | DT | C | P1 | SF | ME | 260 | 07 | 2n | BILL 5 | B05 | S1 | 2F | R00 | ACF07 | MEP | 260 |  |  | 25 |  |  |  |  |  |  |  |  |  |  |  |
| DP1SF26011C0 |  | DT-P1 ; 2nd Fix, Inst of Equipment (DB) (Staff Training) | 48d | 2012-04-04 | 2012-05-30 | DP1SF09205C0 |  |  |  |  | 91.4d | 54d | ELECTRICAL [4054.8 h]; Cost |  |  | DP1SF26011C0 |  |  | DT | C | P1 | SF | ME | 260 | 11 | 2n | BILL 5 | B05 | S1 | 2F | R00 | ACF04 | MEP | 260 |  |  |  |  |  |  |  |  |  |  |  | E |  |  |
| DP1SF26053C0 |  | DT-P1 ; 2nd Fix, Wiring / Cabling (Staff Training) | 42d | 2012-04-04 | 2012-05-23 | DP1SF26009C0, DP1SF09205C0 |  |  |  |  | 139.4d | 114d | ELECTRICAL [436.8 h]; Cost |  |  | DP1SF26053C0 | 45 | 2579.27 | DT | C | P1 | SF | ME | 260 | 53 | 2n | BILL 5 | B05 | S1 | 2F | R00 | ACF07 | MEP | 260 |  | 0 | 55 |  |  |  |  |  |  | 389 | 977 |  |  |  |
| DP1SF27020C0 |  | DT-P1 ; 2nd Fix, Inst of ELV Equipment (Panels) (Staff Training) | 42d | 2012-04-04 | 2012-05-23 | DP1SF09205C0 |  |  |  |  | 97.4d | 60d | ELECTRICAL [1723.2 h]; Cost |  |  | DP1SF27020C0 |  |  | DT | C | P1 | SF | ME | 270 | 20 | 2n | BILL 5 | B05 | S1 | 2F | R00 | ACF04 | MEP | 270 |  |  |  |  |  |  |  |  |  |  |  | E |  |  |
| DP1SF09305C0 |  | DT-P1 ; Ceramic floor tile (Staff Training) | 33.88d | 2012-04-18 | 2012-05-28 | DP1SF07103C0 |  |  |  |  | 75.53d | 0d | CERAMIC FLOOR TILES [352 h]; CERAMIC FLOOR TILES [194 m2]; Cost |  |  | DP1SF09305C0 |  |  | DT | C | P1 | SF | FF | 093 | 05 |  | BILL 5 | B05 | S1 | 02 | R00 | ACF06 |  | CT |  |  |  |  |  |  |  |  |  | 106 | 1000 |  |  |  |
| DP1SF05501C0 |  | DT-P1 ; Handrails & balustrade (Staff Trainning) | 36d | 2012-05-16 | 2012-06-28 | DP1SF09901C0 |  |  |  |  | 55.4d | 30d | SECONDARY STEEL [390 h]; Cost |  |  | DP1SF05501C0 |  |  | DT | C | P1 | SF | SW | 055 | 01 |  | BILL 5 | B05 | S1 | 01 | R00 | ACF03 |  | a |  |  |  |  |  |  |  |  |  |  |  |  |  |  |
| DP1SF09501C0 |  | DT-P1 ; Ceiling Grid and Service Tile (Staff Training) | 36d | 2012-05-16 | 2012-06-28 | DP1SF09205C0 SS+15d, DP1SF21117C0, DP1SF23008C0, DP1SF23009C0, DP1SF23015C0, DP1SF27001C0, DP1SF23011C0 FF, DP1SF09901C0 |  |  |  |  | 25.4d | 0d | CEILING GRID FOR GYPSUM [8873.14 h]; CEILING GRID FOR GYPSUM [759.08 m2]; Cost |  |  | DP1SF09501C0 |  |  | DT | C | P1 | SF | CE | 095 | 01 |  | BILL 5 | B05 | S1 | 01 | R00 | ACF06 |  | 095 |  |  |  |  |  |  |  |  |  | 323 | 952 |  |  |  |
| DP1SF26015C0 |  | DT-P1 ; Final Fix, Termination & Gladding of Cables (Staff Trainning) | 48d | 2012-05-23 | 2012-07-19 | DP1SF26005C0 |  |  |  |  | 85.4d | 48d | ELECTRICAL [368.4 h]; Cost |  |  | DP1SF26015C0 |  |  | DT | C | P1 | SF | ME | 260 | 15 | FF | BILL 5 | B05 | S1 | FF | R00 | ACF07 | MEP | 260 |  |  |  |  |  |  |  |  |  |  |  |  |  |  |
| DP1SF22025C0 |  | DT-P1 ; Final Fix, Inst of Sanitary Ware (Staff Training) | 48d | 2012-05-28 | 2012-07-24 | DP1SF09205C0, DP1SF09305C0, DP1SC22000R02 FF, A10230 FS+148d |  |  |  |  | 75.53d | 0d | PLUMBING [1917.6 h]; Cost |  |  | DP1SF22025C0 |  |  | DT | C | P1 | SF | ME | 220 | 25 | FF | BILL 5 | B05 | S1 | FF | R00 | ACF07 | MEP | 220 |  |  |  |  |  |  |  |  |  |  |  |  |  |  |
| DP1SF09601C0 |  | DT-P1 ; Flooring (Rubber & etc) (Staff Trainning) | 30d | 2012-06-28 | 2012-08-02 | DP1SF09901C0, DP1SF09501C0, DP1SF05501C0 FF |  |  |  |  | 25.4d | 0d | RUBBER FLOOR [792 h]; RUBBER FLOOR [1980 m2]; Cost |  |  | DP1SF09601C0 |  |  | DT | C | P1 | SF | FF | 096 | 01 |  | BILL 5 | B05 | S1 | 03 | R00 | ACF06 |  | RF |  |  |  |  |  |  |  |  |  | 326 | 955 |  |  |  |
| DP1SF09905C0 |  | DT-P1 ; Ceiling Prime & 1st coat (Staff Trainning) | 36d | 2012-06-28 | 2012-08-09 | DP1SF09501C0 |  |  |  |  | 82.4d | 0d | ASSORTED CEILING FINISH [319 h]; Cost |  |  | DP1SF09905C0 |  |  | DT | C | P1 | SF | PA | 099 | 05 |  | BILL 5 | B05 | S1 | 01 | R00 | ACF06 |  | 099 |  |  |  |  |  |  |  |  |  | 330 | 958 |  |  |  |
| DP1SF21115C0 |  | DT-P1 ; 2nd Fix, Inst of Sprinkler droppers (Staff Training) | 36d | 2012-06-28 | 2012-08-09 | DP1SF09501C0 |  |  |  |  | 49.4d | 0d | MECHANICAL [2067.6 h]; Cost |  |  | DP1SF21115C0 |  |  | DT | C | P1 | SF | ME | 211 | 15 | 2n | BILL 5 | B05 | S1 | 2F | R00 | ACF07 | MEP | 211 |  |  |  |  |  |  |  |  |  |  |  |  |  |  |
| DP1SF23021C0 |  | DT-P1 ; 2nd Fix, Inst of Flexible Duct & Plenum boxes (Staff Trainning) | 36d | 2012-06-28 | 2012-08-09 | DP1SF09205C0, DP1SF09501C0 |  |  |  |  | 37.4d | 0d | MECHANICAL [274.8 h]; Cost |  |  | DP1SF23021C0 |  |  | DT | C | P1 | SF | ME | 230 | 21 | 2n | BILL 5 | B05 | S1 | 2F | R00 | ACF07 | MEP | 230 |  |  |  |  |  |  |  |  |  |  |  |  |  |  |
| DP1SF26017C0 |  | DT-P1 ; Final Fix, Inst of Ceiling rose (Staff Training) | 48d | 2012-06-28 | 2012-08-26 | DP1SF09501C0 |  |  |  |  | 55.4d | 0d | ELECTRICAL [67.2 h]; Cost |  |  | DP1SF26017C0 |  |  | DT | C | P1 | SF | ME | 260 | 17 | FF | BILL 5 | B05 | S1 | FF | R00 | ACF07 | MEP | 260 |  |  |  |  |  |  |  |  |  |  |  |  |  |  |
| DP1SF27002C0 |  | DT-P1 ; 2nd Fix, Wiring Droppers (Staff Training) | 36d | 2012-06-28 | 2012-08-09 | DP1SF09501C0 |  |  |  |  | 43.4d | 0d | ELECTRICAL [436.8 h]; Cost |  |  | DP1SF27002C0 |  |  | DT | C | P1 | SF | ME | 270 | 02 | 2n | BILL 5 | B05 | S1 | 2F | R00 | ACF07 | MEP | 270 |  | 0 |  | 30 | 0 |  |  |  |  |  |  |  |  |  |
| DP1SF21113C0 |  | DT-P1 ; Final Fix, Inst of Sprinklers head/ Extinguisher (Staff Training) | 48d | 2012-07-05 | 2012-09-02 | DP1SF09501C0, DP1SF21115C0 SS+6d, DP1SC21100R02 FF |  |  |  |  | 49.4d | 12d | MECHANICAL [403.2 h]; Cost |  |  | DP1SF21113C0 |  |  | DT | C | P1 | SF | ME | 211 | 13 | FF | BILL 5 | B05 | S1 | FF | R00 | ACF07 | MEP | 211 |  |  |  |  |  |  |  |  |  |  |  |  |  |  |
| DP1SF23019C0 |  | DT-P1 ; Final Fix, Inst of Grilles & Diffusers (Staff Trainning) | 60d | 2012-07-05 | 2012-09-16 | DP1SF09501C0, DP1SF23021C0 SS+6d, DP1SC23000R02 FF |  |  |  |  | 37.4d | 0d | MECHANICAL [2560.8 h]; Cost |  |  | DP1SF23019C0 |  |  | DT | C | P1 | SF | ME | 230 | 19 | FF | BILL 5 | B05 | S1 | FF | R00 | ACF07 | MEP | 230 |  |  |  |  |  |  |  |  |  |  |  |  |  |  |
| DP1SF26003C0 |  | DT-P1 ; Final Fix, Inst of Light fittings (Staff Training) | 78d | 2012-07-05 | 2012-10-07 | DP1SF09501C0, DP1SF26017C0 SS+6d, DP1SC26000R02 FF |  |  |  |  | 61.4d | 36d | ELECTRICAL [6626.4 h]; Cost |  |  | DP1SF26003C0 |  |  | DT | C | P1 | SF | ME | 260 | 03 | FF | BILL 5 | B05 | S1 | FF | R00 | ACF07 | MEP | 260 |  |  |  |  |  |  |  |  |  |  |  |  |  |  |
| DP1SF27030C0 |  | DT-P1 ; Final Fix, Inst of ELV device (Detector/Speaker) (Staff Training) | 54d | 2012-07-05 | 2012-09-09 | DP1SF09501C0, DP1SF27002C0 SS+6d |  |  |  |  | 43.4d | 6d | ELECTRICAL [2152.8 h]; Cost |  |  | DP1SF27030C0 |  |  | DT | C | P1 | SF | ME | 270 | 30 | FF | BILL 5 | B05 | S1 | FF | R00 | ACF07 | MEP | 270 |  |  |  |  |  |  |  |  |  |  |  |  |  |  |
| DP1SF22021C0 |  | DT-P1 ; Final Fix, Terminate Sanitary Ware & Appliances (Staff Trainning) | 48d | 2012-07-24 | 2012-09-20 | DP1SF22011C0, DP1SF22025C0 |  |  |  |  | 75.53d | 50.12d | PLUMBING [1917.6 h]; Cost |  |  | DP1SF22021C0 |  |  | DT | C | P1 | SF | ME | 220 | 21 | FF | BILL 5 | B05 | S1 | FF | R00 | ACF07 | MEP | 220 |  |  |  |  |  |  |  |  |  |  |  |  |  |  |
| DP1SF06101C0 |  | DT-P1 ; Wood / caseworks (Staff Training) | 54d | 2012-08-02 | 2012-10-07 | DP1CO04415C0, DP1SF09501C0, DP1SF09901C0, DP1CO04407C0, DAFWA00119M0, CAFWA00113M0, DP1SF09601C0 |  |  |  |  | 25.4d | 0d | WOOD WORK/CASEWORK [937.29 no]; WOOD WORK/CASEWORK [7858 h]; Cost |  |  | DP1SF06101C0 |  |  | DT | C | P1 | SF | WO | 061 | 01 |  | BILL 5 | B05 | S1 | WW | R00 | ACF06 |  | 061 |  |  |  |  |  |  |  |  |  | 332 | 960 |  |  |  |
| DP1SF08107C0 |  | DT-P1 ; Doors (Staff Training) | 42d | 2012-08-02 | 2012-09-23 | DP1SF08103C0, DP1SF09901C0, DP1SF09601C0 |  |  |  |  | 49.65d | 0d | ASSORTED DOORS [1830 h]; ASSORTED DOORS [183 no]; Cost |  |  | DP1SF08107C0 |  |  | DT | C | P1 | SF | DO | 081 | 07 |  | BILL 5 | B05 | S1 | DR | R00 | ACF06 |  | 081 |  |  |  |  |  |  |  |  |  | 317 | 948 |  |  | 08 |
| DP1SF09701C0 |  | DT-P1 ; Wall finishes (ST, WD, WC) (Staff Training) | 42d | 2012-08-02 | 2012-09-23 | DP1SF26011C0, DP1SF27020C0, DP1SF09601C0 |  |  |  |  | 37.4d | 0d | ASSORTED WALL FINISH [2585 h]; ASSORTED WALL FINISH [2972 m2]; Cost |  |  | DP1SF09701C0 |  |  | DT | C | P1 | SF | WF | 097 | 01 |  | BILL 5 | B05 | S1 | 01 | R00 | ACF06 |  | 097 |  |  |  |  |  |  |  |  |  | 105 | 1002 |  |  |  |
| DP1SF09903C0 |  | DT-P1 ; Wall Final Paint (Staff Training) | 36d | 2012-08-09 | 2012-09-23 | DP1SF09901C0, DP1SF09905C0 |  |  |  |  | 82.4d | 36d | WALL PAINT [1232 h]; WALL PAINT [1537 m2]; Cost |  |  | DP1SF09903C0 |  |  | DT | C | P1 | SF | PA | 099 | 03 |  | BILL 5 | B05 | S1 | 02 | R00 | ACF06 |  | 099 |  |  |  |  |  |  |  |  |  | 329 | 957 |  |  |  |
| DP1SF01006C0 |  | DT-P1 ; 2nd, Ceiling Inspection by Consultants (Staff Training) | 6d | 2012-09-16 | 2012-09-23 | DP1SF21115C0, DP1SF23009C0, DP1SF23015C0, DP1SF27002C0, DP1SF09501C0, DP1SF21113C0, DP1SF23019C0, DP1SF26017C0, DP1SF27030C0, DP1SF26015C0 |  |  |  |  | 37.4d | 12d | Labor General [1.2 h]; Cost |  |  | DP1SF01006C0 |  |  | DT | C | P1 | SF | ME | 010 | 06 | 2n | BILL 5 | B05 | S1 | CI | R00 | ACF07 | MEP | 010 |  |  |  |  |  |  |  |  |  |  |  |  |  |  |
| DP1SF08709C0 |  | DT-P1 ; Ironmongery (Staff Training) | 32.75d | 2012-09-23 | 2012-11-03 | DP1SF08107C0, DP1SC08100R02 |  |  |  |  | 49.65d | 24.25d | IRONMONGERY [1030 h]; IRONMONGERY [103 no]; Cost |  |  | DP1SF08709C0 |  |  | DT | C | P1 | SF | DO | 087 | 09 |  | BILL 5 | B05 | S1 | IM | R00 | ACF06 |  | 087 |  |  |  |  |  |  |  |  |  | 322 | 951 |  |  | 08 |
| DP1SF11001C0 |  | DT-P1 ; Wall Protection (WP, CG, WG, FCG) (Staff Training) | 24d | 2012-09-23 | 2012-10-21 | DP1SF09701C0, DP1SF09903C0 SS |  |  |  |  | 58.4d | 33d | FF&E [3816 h]; Cost |  |  | DP1SF11001C0 |  |  | DT | C | P1 | SF | WF | 110 | 01 |  | BILL 5 | B05 | S1 | 03 | R00 | ACF08 |  | b |  |  |  |  |  |  |  |  |  | 326 | 1001 |  |  |  |
| DP1SF09503C0 |  | DT-P1 ; Ceiling closure - ACT/Gypsum (Staff Training) | 18d | 2012-10-07 | 2012-10-30 | DAFOA09505C1 FF, DP1SF01006C0, DP1SF21115C0, DP1SF26005C0, DP1SF27001C0, DP1SF27002C0, DP1SF06101C0, DP1SF09701C0, DP1SF23021C0, DP1SF26053C0, DP1SF26007C0 |  |  |  |  | 25.4d | 0d | ASSORTED CEILING FINISH [1797.03 h]; CEILING GYPSUM [249.07 h]; ASSORTED CEILING FINISH [2922 m2]; CEILING GYPSUM [759 m2]; Cost |  |  | DP1SF09503C0 |  |  | DT | C | P1 | SF | CE | 095 | 03 |  | BILL 5 | B05 | S1 | 02 | R00 | ACF06 |  | 095 |  |  |  |  |  |  |  |  |  | 324 | 953 |  |  |  |
| DP1SF09672C1 |  | DT-P1, Carpet Tile Finish (Staff Training Center) | 0d | 2012-10-30 | 2012-10-30 | DP1SF09903C0 SS, DP1SF09907C0 SS |  |  |  |  | 52.4d | 27d | Cost |  |  |  |  |  | DT | C | P1 | SF | FF | 096 |  |  |  | B05 |  |  | R00 | ACF06 | CPT | CPT |  |  |  |  |  |  |  |  |  |  |  |  |  |  |
| DP1SF09907C0 |  | DT-P1 ; Ceiling Final paint (Staff Training) | 18d | 2012-10-30 | 2012-11-21 | DP1SF09601C0, DP1SF09905C0, DP1SF09503C0 |  |  |  |  | 34.4d | 0d | ASSORTED CEILING FINISH [172 h]; Cost |  |  | DP1SF09907C0 |  |  | DT | C | P1 | SF | PA | 099 | 07 |  | BILL 5 | B05 | S1 | 02 | R00 | ACF06 |  | 099 |  |  |  |  |  |  |  |  |  | 331 | 959 |  |  |  |
| DP1SF11003C0 |  | DT-P1 ; FF & E (Staff Trainning) | 24d | 2012-10-30 | 2012-11-28 | DP1SF09601C0, DP1SF09503C0 |  |  |  |  | 28.4d | 0d | FF&E [104 h]; FF&E [55.07 no]; Cost |  |  | DP1SF11003C0 |  |  | DT | C | P1 | SF | WO | 110 | 03 |  | BILL 5 | B05 | S1 | 04 | R00 | ACF08 |  | a |  |  |  |  |  |  |  |  |  | 333 | 961 |  |  |  |
| DP1SF22027C0 |  | DT-P1 ; Final Fix, Inst of All drain (Staff Training) | 18d | 2012-10-30 | 2012-11-21 | DP1SF09305C0, DP1SF09503C0 |  |  |  |  | 25.4d | 0d | PLUMBING [1173.6 h]; Cost |  |  | DP1SF22027C0 |  |  | DT | C | P1 | SF | ME | 220 | 27 | FF | BILL 5 | B05 | S1 | FF | R00 | ACF07 | MEP | 220 |  |  |  |  |  |  |  |  |  |  |  |  |  |  |
| DP1SF26019C0 |  | DT-P1 ; Final Fix, Inst of Switch/Sockets (Staff Training) | 18d | 2012-10-30 | 2012-11-21 | DP1SF09901C0, DP1SF09503C0 |  |  |  |  | 25.4d | 0d | ELECTRICAL [610.8 h]; Cost |  |  | DP1SF26019C0 |  |  | DT | C | P1 | SF | ME | 260 | 19 | FF | BILL 5 | B05 | S1 | FF | R00 | ACF07 | MEP | 260 |  |  |  |  |  |  |  |  |  |  |  |  |  |  |

| ID | WBS | Activity | Duration | Start | Finish | Predecessors | Complete | Remaining | Planned start | Planned finish | Total float | Free float | Resources | Cost | Actual cost | change id | CCAD BUILDING(SET) | CCAD PHASE(SET) | CCAD FLOOR(SET) | CCAD ZONE(SET) | CCAD WORK(SET) | CCAD SECTION(SET) | CCAD SERIAL No.(SET) | CCAD CBS(SET) | CCAD BILL(SET) | CCAD HANDOVER(SET) | CCAD TAG(SET) | CCAD REV(SET) | CCADACF (SET) | CCAD SSCF | user_number8 | user_integer1 | user_integer2 | user_number7 | Change Order # | NEW ACTIVITY ID | RENZ % COMPLETE | Claimed This Month | P_811 | P_711 | CCAD CSA | Act Selector % | CCAD SUB ZONE MEP(SET) | PERCENT COMPLETE | July2011 Target% Complete | CCAD MEQ | CCAD DIVISION(SET) |
| --- | --- | --- | --- | --- | --- | --- | --- | --- | --- | --- | --- | --- | --- | --- | --- | --- | --- | --- | --- | --- | --- | --- | --- | --- | --- | --- | --- | --- | --- | --- | --- | --- | --- | --- | --- | --- | --- | --- | --- | --- | --- | --- | --- | --- | --- | --- | --- |
|  | 10 | **Precommissioning Tesing & snagging (Staff Training Center)** |  | 2012-11-21 | 2013-01-02 |  |  |  |  |  |  |  |  |  |  |  |  |  |  |  |  |  |  |  |  |  |  |  |  |  |  |  |  |  |  |  |  |  |  |  |  |  |  |  |  |  |  |
| DP1TS01804C0 |  | DT-P1 ; MEP de-snag, FIREM sign-off | 9d | 2012-11-21 | 2012-12-02 | DP1SF26015C0, DP1SF22025C0, DP1SF22027C0, DP1SF22021C0, DP1SF21113C0, DP1SF23019C0, DP1SF26017C0, DP1SF26003C0, DP1SF27030C0, DP1SF26019C0, DP1SC26500R02 |  |  |  |  | 25.4d | 0d | TESTING & COMMISSIONING [1275 h]; Cost |  |  | DP1TS01801C0 | DT | C | P1 | TS | SC | 018 | 01 | BILL 5 | B05 | S1 | 01 | R00 | ACF07 | 018 |  |  |  |  |  |  |  |  |  |  |  |  |  |  |  |  |  |
| DP1TS01809C0 |  | DT-P1 ; Touch-up & Clean / JV inspection /CIR /De-snag | 18d | 2012-12-02 | 2012-12-24 | DP1SF06101C0, DP1SF08709C0, DP1SF09305C0, DP1SF09601C0, DP1SF09903C0, DP1SF09907C0, DP1SF11001C0, DP1SF11003C0, DP1TS01804C0, DP1SF05501C0, DP1SF09503C0, DP1SF09672C1, DP1PH09673C1, DP1CL09674C1, DP1SC06100R02, DP1SC10200R02, DP1SC10201R02, DP1SC09700R02, DP1SC28000R02 |  |  |  |  | 25.4d | 0d | TESTING & COMMISSIONING [213 h]; Cost |  |  | DP1TS01802C0 | DT | C | P1 | TS | SC | 018 | 02 | BILL 5 | B05 | S1 | 02 | R00 | ACF07 | 018 |  |  |  |  |  |  |  |  |  |  |  |  |  |  |  |  |  |
| DP1TS01814C0 |  | DT-P1 ; Consultant's final de-snag inspection | 7d | 2012-12-24 | 2013-01-02 | DP1TS01809C0 |  |  |  |  | 25.4d | 11.3d | Labor General [1 h]; Cost |  |  | DP1TS01803C0 | DT | C | P1 | TS | SC | 018 | 03 | BILL 5 | B05 | S1 | 03 | R00 | ACF07 | 018 |  |  |  |  |  |  |  |  |  |  |  |  |  |  |  |  |  |
|  | 03 | **Pharmacy, W/S** |  | 2011-02-13 | 2013-01-15 |  |  |  |  |  |  |  |  |  |  |  |  |  |  |  |  |  |  |  |  |  |  |  |  |  |  |  |  |  |  |  |  |  |  |  |  |  |  |  |  |  |  |
| DP1PH09201C0 |  | DT-P1 ; Metal Studs (Pharmacy) | 90d | 2011-02-13 A | 2011-10-25 | DP1PH23001C0 | 76% | 21.6d | 2011-03-26 | 2011-07-09 | 34.4d | 0d | PARTITIONS [7448 h]; PARTITIONS - Metal Studs [1413 m]; Cost |  |  | DP1PH09201C0 | DT | C | P1 | PH | PT | 092 | 01 | BILL 5 | B05 | S1 | 1F | R00 | ACF06 | 092 | 0 | 0 | 0 | 0 | 313 | 944 | 40 | 119020.75 | 65 | 63 | GP | PMS |  |  |  |  |  |
| DP1PH21111C0 |  | DT-P1 ; 1st Fix, Inst of Sprinkler main pipe (Pharmacy) | 44d | 2011-02-14 A | 2011-10-03 | DP1PH22005C0 SS+12d, DP1PH23001C0, DP1S107807C0 | 95% | 2.2d | 2011-05-28 | 2011-07-18 | 14.1d | 0d | MECHANICAL [981.6 h]; Cost [53543.7 AED] | 53,543.69 | 50,866.51 | DP1PH21111C0 | DT | C | P1 | PH | ME | 211 | 11 | BILL 5 | B05 | S1 | 1F | R00 | ACF04 | 211 |  |  |  |  |  |  | 90 | 6214.1 |  |  | MEP | M1F | 1S |  |  |  |  |
| DP1PH23001C0 |  | DT-P1 ; 1st Fix, Inst. of Supports for MEP (Pharmacy) | 27d | 2011-03-01 A | 2011-10-01 | DP1S107807C0 SS | 100% | 0d | 2011-02-28 | 2011-03-30 | 14.1d | 0d | MECHANICAL [1338 h]; Cost [75432.9 AED] | 75,432.94 | 71,661.29 | DP1PH23001C0 | DT | C | P1 | PH | ME | 230 | 01 | BILL 5 | B05 | S1 | 1F | R00 | ACF04 | 230 |  |  |  |  |  |  | 100 |  |  |  | MEP | M1F | 1S |  |  |  |  |
| DP1PH22019C0 |  | DT-P1 ; 1st Fix, Inst of Drainage pipe (ceiling) (Pharmacy) | 62d | 2011-03-08 A | 2011-10-04 | DP1PH23001C0, DP1PH26013C0 SS+10d, DP1S107807C0 | 95% | 3.1d | 2011-05-05 | 2011-07-17 | 14.1d | 0d | PLUMBING [1173.6 h]; Cost [61888.2 AED] | 61,888.15 | 58,793.75 | DP1PH22019C0 | DT | C | P1 | PH | ME | 220 | 19 | BILL 5 | B05 | S1 | 1F | R00 | ACF04 | 220 |  |  |  |  |  |  | 90 | 7350.18 |  |  | MEP | M1F | 1S |  |  |  |  |
| DP1PH22005C0 |  | DT-P1 ; 1st Fix, Inst of Water supply pipe (ceiling) (Pharmacy) | 200d | 2011-03-12 A | 2011-12-14 | DP1PH22019C0 SS+7d, DP1PH23001C0, DP1S107807C0 | 70% | 60d | 2011-05-14 | 2012-01-11 | 14.1d | 0d | PLUMBING [4896 h]; Cost [264473 AED] | 264,473.49 | 185,131.44 | DP1PH22005C0 | DT | C | P1 | PH | ME | 220 | 05 | BILL 5 | B05 | S1 | 1F | R00 | ACF04 | 220 |  |  |  |  |  |  | 35 | 15338.85 | 90 | 70 | MEP | M1F | 1S | 70 | 60 |  |  |
| DP1PH23023C0 |  | DT-P1 ; 1st Fix, Inst of Main Ducting (Pharmacy) | 200d | 2011-03-12 A | 2011-11-19 | DP1PH23001C0, DP1PH23017C0 SS+10d, DP1S107807C0 | 80% | 40d | 2011-06-25 | 2012-02-23 | 42.1d | 0d | MECHANICAL [11402.4 h]; Cost [622619 AED] | 622,619.08 | 498,095.27 | DP1PH23023C0 | DT | C | P1 | PH | ME | 230 | 23 | BILL 5 | B05 | S1 | 1F | R00 | ACF04 | 230 |  |  |  |  |  |  | 70 | 144437.4 |  |  | MEP | M1F | 1S | 80 | 90 |  |  |
| DP1PH09203C0 |  | DT-P1 ; Partitions 1st face (Pharmacy) | 90d | 2011-03-24 A | 2011-12-24 | DP1PH09201C0 SS+12d, DP1PH23023C0 FF, DP1PH23009C0 FF | 61% | 35.1d | 2011-08-03 | 2011-11-21 | 14.1d | 0d | PARTITIONS [1413 m]; PARTITIONS [5819 h]; Cost |  |  | DP1PH09203C0 | DT | C | P1 | PH | PT | 092 | 03 | BILL 5 | B05 | S1 | 2F | R00 | ACF06 | 092 | 0 | 0 | 0 | 0 | 314 | 945 | 15 | 33325.85 | 45 | 25 | GP | P1F |  |  |  |  |  |
| DP1PH21117C0 |  | DT-P1 ; 1st Fix, Inst of Sprinkler branch pipe (Pharmacy) | 63d | 2011-04-05 A | 2011-10-29 | DP1PH09201C0, DP1PH21111C0, DP1S107807C0 | 95% | 3.15d | 2011-07-20 | 2011-10-03 | 169.25d | 155.15d | MECHANICAL [1441.2 h]; Cost [78749.8 AED] | 78,749.79 | 74,812.3 | DP1PH21117C0 | DT | C | P1 | PH | ME | 211 | 17 | BILL 5 | B05 | S1 | 1F | R00 | ACF04 | 211 |  |  |  |  |  |  | 90 | 9129.13 |  |  | MEP | M1F | 1S |  |  |  |  |
| DP1PH26001C0 |  | DT-P1 ; 1st Fix, Inst of Trunking/Conduiting (Pharmacy) | 180d | 2011-04-09 A | 2011-12-18 | DP1PH23001C0, DP1S107807C0 | 65% | 63d | 2011-03-31 | 2011-10-30 | 14.1d | 0d | ELECTRICAL [824.4 h]; Cost [42423.2 AED] | 42,423.24 | 27,575.11 | DP1PH26001C0 | DT | C | P1 | PH | ME | 260 | 01 | BILL 5 | B05 | S1 | 1F | R00 | ACF04 | 260 |  |  |  |  |  |  | 60 |  | 98 | 80 | MEP | M1F | 1S | 65 | 95 |  |  |
| DP1PH22011C0 |  | DT-P1 ; 2nd Fix, Drainage/Water pipe (wall) (Pharmacy) | 90d | 2011-04-12 A | 2012-01-05 | DAFWA00112M0, DP1PH09201C0 | 50% | 45d | 2011-08-03 | 2011-11-21 | 23.1d | 9d | PLUMBING [1173.6 h]; Cost [61888.2 AED] | 61,888.15 | 30,944.08 | DP1PH22011C0 | DT | C | P1 | PH | ME | 220 | 11 | BILL 5 | B05 | S1 | 2F | R00 | ACF07 | 220 |  |  |  |  |  |  | 45 |  | 60 | 55 | MEP |  | 2n | 50 | 55 |  |  |
| DP1PH23017C0 |  | DT-P1 ; 1st Fix, Inst of CHW pipe (Pharmacy) | 250d | 2011-04-17 A | 2011-12-01 | DP1PH21111C0 SS+14d, DP1PH23001C0, DP1S107807C0 | 80% | 50d | 2011-06-13 | 2012-04-10 | 14.1d | 0d | MECHANICAL [6325.2 h]; Cost [345418 AED] | 345,418.28 | 276,334.63 | DP1PH23017C0 | DT | C | P1 | PH | ME | 230 | 17 | BILL 5 | B05 | S1 | 1F | R00 | ACF04 | 230 |  |  |  |  |  |  | 30 | 20032.6 | 98 | 90 | MEP | M1F | 1S | 80 | 55 |  |  |
| DP1PH27010C0 |  | DT-P1 ; 1st Fix, Inst of Trunking for ELV system (Pharmacy) | 90d | 2011-04-17 A | 2011-12-13 | DP1PH23001C0, DP1PH26001C0 SS+10d, DP1S107807C0 | 35% | 58.5d | 2011-04-12 | 2011-07-26 | 14.1d | 0d | ELECTRICAL [1689.6 h]; Cost [88597.9 AED] | 88,597.89 | 31,009.26 | DP1PH27010C0 | DT | C | P1 | PH | ME | 270 | 10 | BILL 5 | B05 | S1 | 1F | R00 | ACF04 | 270 |  |  |  |  |  |  | 60 | 35974.3 | 90 | 80 | MEP | M1F | 1S | 35 | 95 |  |  |
| DP1PH26013C0 |  | DT-P1 ; 1st Fix, Inst of Cable Tray (Pharmacy) | 180d | 2011-04-27 A | 2011-12-07 | DP1PH23001C0, DP1PH27010C0 SS+10d, DP1S107807C0 | 70% | 54d | 2011-04-24 | 2011-11-27 | 14.1d | 0d | ELECTRICAL [430.8 h]; Cost [23263.3 AED] | 23,263.34 | 16,284.34 | DP1PH26013C0 | DT | C | P1 | PH | ME | 260 | 13 | BILL 5 | B05 | S1 | 1F | R00 | ACF04 | 260 |  |  |  |  |  |  | 60 | 9450.88 | 98 | 80 | MEP | M1F | 1S | 70 | 95 |  |  |
| DP1PH23008C0 |  | DT-P1 ; 1st Fix, Inst of VCD's/FD's (Pharmacy) | 180d | 2011-05-15 A | 2012-02-05 | DP1PH23023C0, DP1S107807C0 | 65% | 63d | 2011-07-17 | 2012-02-22 | 52d | 37.9d | MECHANICAL [4312.8 h]; Cost [232964 AED] | 232,964.23 | 151,426.75 | DP1PH23008C0 | DT | C | P1 | PH | ME | 230 | 08 | BILL 5 | B05 | S1 | 1F | R00 | ACF04 | 230 |  |  |  |  |  |  | 35 | 27667.27 | 85 | 75 | MEP | M1F | 1S | 65 | 90 |  |  |
| DP1PH23015C0 |  | DT-P1 ; 2nd Fix, Insulation of CHW pipe & Duct (Pharmacy) | 120d | 2011-06-08 A | 2012-01-29 | DP1PH23009C0, DP1PH23017C0, DP1PH23023C0 | 75% | 30d | 2011-08-10 | 2012-01-07 | 57d | 42.9d | MECHANICAL [5311.2 h]; Cost [286617 AED] | 286,617.06 | 214,962.8 | DP1PH23015C0 | DT | C | P1 | PH | ME | 230 | 15 | BILL 5 | B05 | S1 | 2F | R00 | ACF07 | 230 | 0 | 0 | 0 | 0 |  |  |  | 68214.07 | 75 | 65 | MEP |  | 2n | 75 | 55 |  |  |
| DP1PH23009C0 |  | DT-P1 ; 2nd Fix, Inst of VAV'S CHW connection (Pharmacy) | 90d | 2011-06-15 A | 2011-12-24 | DP1PH23017C0 | 80% | 18d | 2011-07-06 | 2011-10-22 | 14.1d | 0d | MECHANICAL [1684.8 h]; Cost [91006.1 AED] | 91,006.06 | 72,804.85 | DP1PH23009C0 | DT | C | P1 | PH | ME | 230 | 09 | BILL 5 | B05 | S1 | 2F | R00 | ACF07 | 230 | 0 | 0 | 0 | 0 |  |  |  | 10820.47 | 60 | 20 | MEP |  | 2n |  | 30 |  |  |
| DP1PH26007C0 |  | DT-P1 ; 2nd Fix, Cable Pulling (Pharmacy) | 60d | 2011-06-19 A | 2012-01-16 | DAFWA00112M0, DP1PH09201C0 SS+6d | 10% | 54d | 2011-06-19 | 2011-08-29 | 14.1d | 0d | ELECTRICAL [6634.8 h]; Cost [332625 AED] | 332,625.29 | 33,262.53 | DP1PH26007C0 | DT | C | P1 | PH | ME | 260 | 07 | BILL 5 | B05 | S1 | 2F | R00 | ACF07 | 260 |  |  |  |  |  |  |  | 138447.26 |  |  | MEP |  | 2n | 10 | 35 |  |  |
| DP1PH26009C0 |  | DT-P1 ; 2nd Fix, Inst of Wall conduites (Pharmacy) | 48d | 2011-06-19 A | 2012-01-04 | DAFWA00112M0, DP1PH09201C0 | 10% | 43.2d | 2011-06-19 | 2011-08-15 | 24.9d | 10.8d | ELECTRICAL [824.4 h]; Cost [42423.2 AED] | 42,423.24 | 4,242.32 | DP1PH26009C0 | DT | C | P1 | PH | ME | 260 | 09 | BILL 5 | B05 | S1 | 2F | R00 | ACF07 | 260 |  |  |  |  |  |  |  | 4998.66 | 50 | 10 | MEP |  | 2n | 10 | 10 |  |  |
| DP1PH23011C0 |  | DT-P1 ; 2nd Fix, Inst of Equipment (FCU,FAN) (Pharmacy) | 79d | 2011-08-02 A | 2012-05-05 | DP1PH09205C0 | 51% | 39d | 2012-03-18 | 2012-06-19 | 14.1d | 0d | MECHANICAL [1588.8 h]; Cost [361645 AED] | 361,645.02 | 180,822.51 | DP1PH23011C0 | DT | C | P1 | PH | ME | 230 | 11 | BILL 5 | B05 | S1 | 2F | R00 | ACF04 | 230 |  |  |  |  |  |  |  |  | 50 | 0 | MEP |  | 2n |  |  | H |  |
| DP1PH08103C0 |  | DT-P1 ; Door Frames (Pharmacy) | 42d | 2011-09-05 A | 2011-12-22 | DAFWA00112M0, DP1PH09201C0, GNHE08101C0 | 20% | 33.6d | 2011-11-12 | 2012-01-03 | 88.5d | 74.4d | ASSORTED DOORS [707 h]; Cost |  |  | DP1PH08103C0 | DT | C | P1 | PH | DO | 081 | 03 | BILL 5 | B05 | S1 | DF | R00 | ACF06 | 081 |  |  |  |  | 316 | 947 |  |  |  |  |  |  |  |  |  |  | 08 |
| DP1PH27001C0 |  | DT-P1 ; 1st Fix, Wiring/ Cabling work (Pharmacy) | 52d | 2011-12-19 | 2012-02-19 | DP1PH26001C0, DP1PH26013C0, DP1PH27010C0, DP1S107807C0 |  |  |  |  | 79d | 64.9d | ELECTRICAL [436.8 h]; Cost |  |  | DP1PH27001C0 | DT | C | P1 | PH | ME | 270 | 01 | BILL 5 | B05 | S1 | 1F | R00 | ACF04 | 270 |  |  |  |  |  |  |  | 12896.34 | 55 | 50 | MEP | M1F | 1S | 0 | 50 |  |  |
| DP1PH01005C0 |  | DT-P1 ; 2nd, Wall Inspection by Consultant (Pharmacy) | 6d | 2012-01-16 | 2012-01-23 | DP1PH22011C0, DP1PH26007C0, DP1PH26009C0 |  |  |  |  | 14.1d | 0d | Labor General [1.2 h]; Cost |  |  | DP1PH01005C0 | DT | C | P1 | PH | ME | 010 | 05 | BILL 5 | B05 | S1 | WI | R00 | ACF07 | 010 |  |  |  |  |  |  |  |  |  |  | MEP |  | 2n |  |  |  |  |
| DP1PH09205C0 |  | DT-P1 ; Partitions Closing (Pharmacy) | 48d | 2012-01-23 | 2012-03-20 | DAFOA09206C1 FF, DP1PH01005C0, DP1PH09203C0, DP1PH22005C0, DP1PH22019C0, DP1PH08103C0 FF, DP1PH23008C0 FF, DP1PH23015C0 FF, DAFCI09203R20 FS+58d |  |  |  |  | 14.1d | 0d | PARTITIONS [1413 m]; PARTITIONS [7451 h]; Cost |  |  | DP1PH09205C0 | DT | C | P1 | PH | PT | 092 | 05 | BILL 5 | B05 | S1 | FF | R00 | ACF06 | 092 |  |  |  |  | 315 | 946 |  |  |  |  | GP | P2F |  |  |  |  |  |
| DP1PH07103C0 |  | DT-P1 ; Waterproofing (Pharmacy) | 12d | 2012-03-20 | 2012-04-03 | DP1PH08103C0, DP1PH09205C0 |  |  |  |  | 89.1d | 0d | THERMAL & MOISTURE [544 h]; THERMAL & MOISTURE [3596 m2]; Cost |  |  | DP1PH07103C0 | DT | C | P1 | PH | FF | 071 | 03 | BILL 5 | B05 | S1 | 01 | R00 | ACF03 | 071 |  |  |  |  | 105 | 999 |  |  |  |  |  |  |  |  |  |  |  |
| DP1PH09901C0 |  | DT-P1 ; Wall Prime & 1st coat (Pharmacy) | 36d | 2012-03-20 | 2012-05-01 | DP1CO04003C0, DP1PH09205C0 |  |  |  |  | 17.1d | 0d | WALL PAINT [1526 h]; WALL PAINT [1903 m2]; Cost |  |  | DP1PH09901C0 | DT | C | P1 | PH | PA | 099 | 01 | BILL 5 | B05 | S1 | 01 | R00 | ACF06 | 099 |  |  |  |  | 328 | 956 |  |  |  |  |  |  |  |  |  |  |  |
| DP1PH26005C0 |  | DT-P1 ; 2nd Fix, Wiring for Power/Lighting/Emergency (Pharmacy) | 36d | 2012-03-20 | 2012-05-01 | DP1PH09205C0 |  |  |  |  | 41.1d | 0d | ELECTRICAL [436.8 h]; Cost |  |  | DP1PH26005C0 | DT | C | P1 | PH | ME | 260 | 05 | BILL 5 | B05 | S1 | 2F | R00 | ACF07 | 260 |  |  |  |  |  |  |  |  |  |  | MEP |  | 2n |  | 25 |  |  |
| DP1PH26053C0 |  | DT-P1 ; 2nd Fix, Wiring / Cabling (Pharmacy) | 78d | 2012-03-20 | 2012-06-20 | DP1PH26009C0, DP1PH09205C0 |  |  |  |  | 107.1d | 93d | ELECTRICAL [436.8 h]; Cost |  |  | DP1PH26053C0 | DT | C | P1 | PH | ME | 260 | 53 | BILL 5 | B05 | S1 | 2F | R00 | ACF07 | 260 |  |  |  |  | 389 | 977 |  |  | 50 | 0 | MEP |  | 2n | 0 | 25 |  |  |
| DP1PH09305C0 |  | DT-P1 ; Ceramic floor tile (Pharmacy) | 30d | 2012-04-03 | 2012-05-08 | DP1PH07103C0 |  |  |  |  | 89.1d | 0d | CERAMIC FLOOR TILES [224 h]; CERAMIC FLOOR TILES [122 m2]; Cost |  |  | DP1PH09305C0 | DT | C | P1 | PH | FF | 093 | 05 | BILL 5 | B05 | S1 | 02 | R00 | ACF06 | CT |  |  |  |  | 106 | 1000 |  |  |  |  |  |  |  |  |  |  |  |
| DP1PH05501C0 |  | DT-P1 ; Handrails & balustrade (Pharmacy) | 36d | 2012-05-01 | 2012-06-12 | DP1PH09901C0 |  |  |  |  | 59.1d | 45d | SECONDARY STEEL [248 h]; Cost |  |  | DP1PH05501C0 | DT | C | P1 | PH | SW | 055 | 01 | BILL 5 | B05 | S1 | 01 | R00 | ACF03 | a |  |  |  |  |  |  |  |  |  |  |  |  |  |  |  |  |  |
| DP1PH26011C0 |  | DT-P1 ; 2nd Fix, Inst of Equipment (DB) (Pharmacy) | 60d | 2012-05-01 | 2012-07-11 | DP1PH09205C0, DP1PH26005C0 |  |  |  |  | 41.1d | 21d | ELECTRICAL [4054.8 h]; Cost |  |  | DP1PH26011C0 | DT | C | P1 | PH | ME | 260 | 11 | BILL 5 | B05 | S1 | 2F | R00 | ACF04 | 260 |  |  |  |  |  |  |  |  |  |  | MEP |  | 2n |  |  | E |  |
| DP1PH26015C0 |  | DT-P1 ; Final Fix, Termination & Gladding of Cables (Pharmacy) | 48d | 2012-05-01 | 2012-06-27 | DP1PH26005C0 |  |  |  |  | 95.1d | 75d | ELECTRICAL [368.4 h]; Cost |  |  | DP1PH26015C0 | DT | C | P1 | PH | ME | 260 | 15 | BILL 5 | B05 | S1 | FF | R00 | ACF07 | 260 |  |  |  |  |  |  |  |  |  |  | MEP |  | FF |  |  |  |  |
| DP1PH09501C0 |  | DT-P1 ; Ceiling Grid and Service Tile (Pharmacy) | 36d | 2012-05-05 | 2012-06-17 | DP1PH09205C0 SS+15d, DP1PH21117C0, DP1PH23008C0, DP1PH23009C0, DP1PH23015C0, DP1PH27001C0, DAFCI22001R02 FS+72d, DP1PH23011C0, DP1PH09901C0 |  |  |  |  | 14.1d | 0d | CEILING GRID FOR GYPSUM [5546.93 h]; CEILING GRID FOR GYPSUM [474.43 m2]; Cost |  |  | DP1PH09501C0 | DT | C | P1 | PH | CE | 095 | 01 | BILL 5 | B05 | S1 | 01 | R00 | ACF06 | 095 |  |  |  |  | 323 | 952 |  |  |  |  |  |  |  |  |  |  |  |
| DP1PH22025C0 |  | DT-P1 ; Final Fix, Inst of Sanitary Ware (Pharmacy) | 48d | 2012-05-08 | 2012-07-04 | DP1PH09205C0, DP1PH09305C0, A10230 FS+148d |  |  |  |  | 89.1d | 0d | PLUMBING [1917.6 h]; Cost |  |  | DP1PH22025C0 | DT | C | P1 | PH | ME | 220 | 25 | BILL 5 | B05 | S1 | FF | R00 | ACF07 | 220 |  |  |  |  |  |  |  |  |  |  | MEP |  | FF |  |  |  |  |
| DP1PH09601C0 |  | DT-P1 ; Flooring (Rubber & etc) (Pharmacy) | 42d | 2012-06-17 | 2012-08-05 | DP1PH09901C0, DP1PH09501C0, DP1PH05501C0 FF |  |  |  |  | 14.1d | 0d | RUBBER FLOOR [496 h]; RUBBER FLOOR [1237 m2]; Cost |  |  | DP1PH09601C0 | DT | C | P1 | PH | FF | 096 | 01 | BILL 5 | B05 | S1 | 03 | R00 | ACF06 | RF |  |  |  |  | 326 | 955 |  |  |  |  |  |  |  |  |  |  |  |
| DP1PH09905C0 |  | DT-P1 ; Ceiling Prime & 1st coat (Pharmacy) | 36d | 2012-06-17 | 2012-07-29 | DP1PH09501C0 |  |  |  |  | 92.1d | 0d | ASSORTED CEILING FINISH [199 h]; Cost |  |  | DP1PH09905C0 | DT | C | P1 | PH | PA | 099 | 05 | BILL 5 | B05 | S1 | 01 | R00 | ACF06 | 099 |  |  |  |  | 330 | 958 |  |  |  |  |  |  |  |  |  |  |  |
| DP1PH21115C0 |  | DT-P1 ; 2nd Fix, Inst of Sprinkler droppers (Pharmacy) | 36d | 2012-06-17 | 2012-07-29 | DP1PH09501C0 |  |  |  |  | 20.1d | 0d | MECHANICAL [2067.6 h]; Cost |  |  | DP1PH21115C0 | DT | C | P1 | PH | ME | 211 | 15 | BILL 5 | B05 | S1 | 2F | R00 | ACF07 | 211 |  |  |  |  |  |  |  |  |  |  | MEP |  | 2n |  |  |  |  |
| DP1PH23021C0 |  | DT-P1 ; 2nd Fix, Inst of Flexible Duct & Plenum boxes (Pharmacy) | 36d | 2012-06-17 | 2012-07-29 | DP1PH09205C0, DP1PH09501C0 |  |  |  |  | 38.1d | 0d | MECHANICAL [274.8 h]; Cost |  |  | DP1PH23021C0 | DT | C | P1 | PH | ME | 230 | 21 | BILL 5 | B05 | S1 | 2F | R00 | ACF07 | 230 |  |  |  |  |  |  |  |  |  |  | MEP |  | 2n |  |  |  |  |
| DP1PH26017C0 |  | DT-P1 ; Final Fix, Inst of Ceiling rose (Pharmacy) | 48d | 2012-06-17 | 2012-08-12 | DP1PH09501C0 |  |  |  |  | 20.1d | 0d | ELECTRICAL [67.2 h]; Cost |  |  | DP1PH26017C0 | DT | C | P1 | PH | ME | 260 | 17 | BILL 5 | B05 | S1 | FF | R00 | ACF07 | 260 |  |  |  |  |  |  |  |  |  |  | MEP |  | FF |  |  |  |  |
| DP1PH27002C0 |  | DT-P1 ; 2nd Fix, Wiring Droppers (Pharmacy) | 60d | 2012-06-17 | 2012-08-28 | DP1PH09501C0 |  |  |  |  | 44.1d | 0d | ELECTRICAL [436.8 h]; Cost |  |  | DP1PH27002C0 | DT | C | P1 | PH | ME | 270 | 02 | BILL 5 | B05 | S1 | 2F | R00 | ACF07 | 270 |  |  |  |  |  |  |  |  | 30 | 0 | MEP |  | 2n | 0 |  |  |  |
| DP1PH27020C0 |  | DT-P1 ; 2nd Fix, Inst of ELV Equipment (Panels) (Pharmacy) | 42d | 2012-06-17 | 2012-08-05 | DP1PH09205C0, DP1PH09501C0 |  |  |  |  | 20.1d | 0d | ELECTRICAL [1723.2 h]; Cost |  |  | DP1PH27020C0 | DT | C | P1 | PH | ME | 270 | 20 | BILL 5 | B05 | S1 | 2F | R00 | ACF04 | 270 |  |  |  |  |  |  |  |  |  |  | MEP |  | 2n |  |  | E |  |
| DP1PH23019C0 |  | DT-P1 ; Final Fix, Inst of Grilles & Diffusers (Pharmacy) | 60d | 2012-06-24 | 2012-09-04 | DP1PH09501C0, DP1PH23021C0 SS+6d |  |  |  |  | 38.1d | 18d | MECHANICAL [2560.8 h]; Cost |  |  | DP1PH23019C0 | DT | C | P1 | PH | ME | 230 | 19 | BILL 5 | B05 | S1 | FF | R00 | ACF07 | 230 |  |  |  |  |  |  |  |  |  |  | MEP |  | FF |  |  |  |  |
| DP1PH26003C0 |  | DT-P1 ; Final Fix, Inst of Light fittings (Pharmacy) | 78d | 2012-06-24 | 2012-09-25 | DP1PH09501C0, DP1PH26017C0 SS+6d |  |  |  |  | 20.1d | 0d | ELECTRICAL [6626.4 h]; Cost |  |  | DP1PH26003C0 | DT | C | P1 | PH | ME | 260 | 03 | BILL 5 | B05 | S1 | FF | R00 | ACF07 | 260 |  |  |  |  |  |  |  |  |  |  | MEP |  | FF |  |  |  |  |
| DP1PH27030C0 |  | DT-P1 ; Final Fix, Inst of ELV device (Detector/Speaker) (Pharmacy) | 54d | 2012-06-24 | 2012-08-28 | DP1PH09501C0, DP1PH27002C0 SS+6d |  |  |  |  | 44.1d | 24d | ELECTRICAL [2152.8 h]; Cost |  |  | DP1PH27030C0 | DT | C | P1 | PH | ME | 270 | 30 | BILL 5 | B05 | S1 | FF | R00 | ACF07 | 270 |  |  |  |  |  |  |  |  |  |  | MEP |  | FF |  |  |  |  |
| DP1PH22021C0 |  | DT-P1 ; Final Fix, Terminate Sanitary Ware & Appliances (Pharmacy) | 48d | 2012-07-04 | 2012-09-01 | DP1PH22011C0, DP1PH22025C0 |  |  |  |  | 89.1d | 75d | PLUMBING [1917.6 h]; Cost |  |  | DP1PH22021C0 | DT | C | P1 | PH | ME | 220 | 21 | BILL 5 | B05 | S1 | FF | R00 | ACF07 | 220 |  |  |  |  |  |  |  |  |  |  | MEP |  | FF |  |  |  |  |
| DP1PH09903C0 |  | DT-P1 ; Wall Final Paint (Pharmacy) | 36d | 2012-07-29 | 2012-09-11 | DP1PH09901C0, DP1PH09905C0 |  |  |  |  | 92.1d | 54d | WALL PAINT [821 h]; WALL PAINT [1024 m2]; Cost |  |  | DP1PH09903C0 | DT | C | P1 | PH | PA | 099 | 03 | BILL 5 | B05 | S1 | 02 | R00 | ACF06 | 099 |  |  |  |  | 329 | 957 |  |  |  |  |  |  |  |  |  |  |  |
| DP1PH21113C0 |  | DT-P1 ; Final Fix, Inst of Sprinklers head/ Extinguisher (Pharmacy) | 48d | 2012-07-29 | 2012-09-25 | DP1PH09501C0, DP1PH21115C0 |  |  |  |  | 20.1d | 0d | MECHANICAL [403.2 h]; Cost |  |  | DP1PH21113C0 | DT | C | P1 | PH | ME | 211 | 13 | BILL 5 | B05 | S1 | FF | R00 | ACF07 | 211 |  |  |  |  |  |  |  |  |  |  | MEP |  | FF |  |  |  |  |
| DP1PH06101C0 |  | DT-P1 ; Wood / caseworks (Pharmacy) | 54d | 2012-08-05 | 2012-10-09 | DP1CO04415C0, DP1PH09501C0, DP1PH09901C0, DP1CO04407C0, DAFWA00119M0, CAFWA00113M0, DP1PH09601C0 |  |  |  |  | 14.1d | 0d | WOOD WORK/CASEWORK [590.9 no]; WOOD WORK/CASEWORK [4954 h]; Cost |  |  | DP1PH06101C0 | DT | C | P1 | PH | WO | 061 | 01 | BILL 5 | B05 | S1 | WW | R00 | ACF06 | 061 |  |  |  |  | 332 | 960 |  |  |  |  |  |  |  |  |  |  |  |
| DP1PH06102C0 |  | DT-P1 ; Head Wall (Pharmacy) | 33.25d | 2012-08-05 | 2012-09-16 | DP1CO04415C0, DP1PH09501C0, OGNMU00031S0, DP1PH06101C0 SS, DAFWA00119M0 |  |  |  |  | 88.85d | 74.75d | WOOD WORK/CASEWORK [472 h]; Cost |  |  | DP1PH06102C0 | DT | C | P1 | PH | WO | 061 | 02 | BILL 5 | B05 | S1 | WW | R00 | ACF06 | 061 |  |  |  |  | 332 | 960 |  |  |  |  |  |  |  |  |  |  |  |
| DP1PH08107C0 |  | DT-P1 ; Doors (Pharmacy) | 42d | 2012-08-05 | 2012-09-25 | DP1PH08103C0, DP1PH09901C0, DP1PH09601C0 |  |  |  |  | 47.98d | 0d | ASSORTED DOORS [1140 h]; ASSORTED DOORS [114 no]; Cost |  |  | DP1PH08107C0 | DT | C | P1 | PH | DO | 081 | 07 | BILL 5 | B05 | S1 | DR | R00 | ACF06 | 081 |  |  |  |  | 317 | 948 |  |  |  |  |  |  |  |  |  |  | 08 |
| DP1PH09701C0 |  | DT-P1 ; Wall finishes (ST, WD, WC) (Pharmacy) | 48d | 2012-08-05 | 2012-10-02 | DP1PH26011C0, DP1PH27020C0, DAFCI22001R02 FS+170d, DP1PH09601C0 |  |  |  |  | 20.1d | 0d | ASSORTED WALL FINISH [1656 h]; ASSORTED WALL FINISH [1903 m2]; Cost |  |  | DP1PH09701C0 | DT | C | P1 | PH | WF | 097 | 01 | BILL 5 | B05 | S1 | 01 | R00 | ACF06 | 097 |  |  |  |  | 105 | 1002 |  |  |  |  |  |  |  |  |  |  |  |
| DP1PH11005C0 |  | DT-P1 ; Utility belt (Pharmacy) | 36.5d | 2012-08-12 | 2012-09-26 | DP1PH06101C0 SS+6d, DP1PH09205C0 |  |  |  |  | 67.6d | 53.5d | FF&E [200 h]; FF&E [106.49 no]; Cost |  |  | DP1PH11005C0 | DT | C | P1 | PH | WO | 110 | 05 | BILL 5 | B05 | S1 | 05 | R00 | ACF08 | e |  |  |  |  |  |  |  |  |  |  |  |  |  |  |  |  |  |
| DP1PH01006C0 |  | DT-P1 ; 2nd, Ceiling Inspection by Consultants (Pharmacy) | 6d | 2012-09-25 | 2012-10-02 | DP1PH21115C0, DP1PH23009C0, DP1PH23011C0, DP1PH23015C0, DP1PH27002C0, DP1PH09501C0, DP1PH21113C0, DP1PH23019C0, DP1PH26003C0, DP1PH26017C0, DP1PH27030C0, DP1PH26015C0 |  |  |  |  | 20.1d | 6d | Labor General [1.2 h]; Cost |  |  | DP1PH01006C0 | DT | C | P1 | PH | ME | 010 | 06 | BILL 5 | B05 | S1 | CI | R00 | ACF07 | 010 |  |  |  |  |  |  |  |  |  |  | MEP |  | 2n |  |  |  |  |
| DP1PH08709C0 |  | DT-P1 ; Ironmongery (Pharmacy) | 32.12d | 2012-09-25 | 2012-11-05 | DP1PH08107C0 |  |  |  |  | 47.98d | 33.88d | IRONMONGERY [650 h]; IRONMONGERY [65 no]; Cost |  |  | DP1PH08709C0 | DT | C | P1 | PH | DO | 087 | 09 | BILL 5 | B05 | S1 | IM | R00 | ACF06 | 087 |  |  |  |  | 322 | 951 |  |  |  |  |  |  |  |  |  |  | 08 |
| DP1PH11001C0 |  | DT-P1 ; Wall Protection (WP, CG, WG, FCG) (Pharmacy) | 24d | 2012-10-02 | 2012-11-01 | DP1PH09701C0, DP1PH09903C0 SS |  |  |  |  | 50.1d | 36d | FF&E [2419 h]; Cost |  |  | DP1PH11001C0 | DT | C | P1 | PH | WF | 110 | 01 | BILL 5 | B05 | S1 | 03 | R00 | ACF08 | b |  |  |  |  | 326 | 1001 |  |  |  |  |  |  |  |  |  |  |  |
| DP1PH09503C0 |  | DT-P1 ; Ceiling closure - ACT/Gypsum (Pharmacy) | 24d | 2012-10-09 | 2012-11-08 | DAFOA09505C1 FF, DP1PH01006C0, DP1PH21115C0, DP1PH26005C0, DP1PH27001C0, DP1PH27002C0, DP1PH06101C0, DP1PH09701C0, DP1PH23021C0, DP1PH26053C0 |  |  |  |  | 14.1d | 0d | ASSORTED CEILING FINISH [1123.61 h]; CEILING GYPSUM [155.59 h]; ASSORTED CEILING FINISH [1827 m2]; CEILING GYPSUM [474 m2]; Cost |  |  | DP1PH09503C0 | DT | C | P1 | PH | CE | 095 | 03 | BILL 5 | B05 | S1 | 02 | R00 | ACF06 | 095 |  |  |  |  | 324 | 953 |  |  |  |  |  |  |  |  |  |  |  |
| DP1PH09673C1 |  | DT-P1, Carpet Tile Finish (Pharmacy W/S) | 0d | 2012-11-08 | 2012-11-08 | DP1PH09903C0 SS, DP1PH09907C0 SS |  |  |  |  | 44.1d | 18.7d | Cost |  |  |  | DT | C | P1 | PH | FF | 096 |  |  | B05 |  |  | R00 | ACF06 | CPT |  |  |  |  |  |  |  |  |  |  | CPT |  |  |  |  |  |  |
| DP1PH09907C0 |  | DT-P1 ; Ceiling Final paint (Pharmacy) | 18d | 2012-11-08 | 2012-12-01 | DP1PH09601C0, DP1PH09905C0, DP1PH09503C0 |  |  |  |  | 44.1d | 0d | ASSORTED CEILING FINISH [108 h]; Cost |  |  | DP1PH09907C0 | DT | C | P1 | PH | PA | 099 | 07 | BILL 5 | B05 | S1 | 02 | R00 | ACF06 | 099 |  |  |  |  | 331 | 959 |  |  |  |  |  |  |  |  |  |  |  |
| DP1PH11003C0 |  | DT-P1 ; FF & E (Pharmacy) | 18d | 2012-11-08 | 2012-12-01 | DP1PH09601C0, DP1PH06101C0, DP1PH09503C0 |  |  |  |  | 26.1d | 12d | FF&E [65 h]; FF&E [34.72 no]; Cost |  |  | DP1PH11003C0 | DT | C | P1 | PH | WO | 110 | 03 | BILL 5 | B05 | S1 | 04 | R00 | ACF08 | a |  |  |  |  | 333 | 961 |  |  |  |  |  |  |  |  |  |  |  |
| DP1PH22027C0 |  | DT-P1 ; Final Fix, Inst of All drain (Pharmacy) | 18d | 2012-11-08 | 2012-12-01 | DP1PH09305C0, DP1PH09503C0, DZ9GZ22059R2 FF, DV09GZ22060R2 FF, DV10GZ22060R2 FF |  |  |  |  | 14.1d | 0d | PLUMBING [1173.6 h]; Cost |  |  | DP1PH22027C0 | DT | C | P1 | PH | ME | 220 | 27 | BILL 5 | B05 | S1 | FF | R00 | ACF07 | 220 |  |  |  |  |  |  |  |  |  |  | MEP |  | FF |  |  |  |  |
| DP1PH26019C0 |  | DT-P1 ; Final Fix, Inst of Switch/Sockets (Pharmacy) | 18d | 2012-11-08 | 2012-12-01 | DP1PH09901C0, DP1PH09503C0, DZ9GZ27061R2 FF, DV09GZ27062R2 FF, DV10GZ27062R2 FF |  |  |  |  | 14.1d | 0d | ELECTRICAL [610.8 h]; Cost |  |  | DP1PH26019C0 | DT | C | P1 | PH | ME | 260 | 19 | BILL 5 | B05 | S1 | FF | R00 | ACF07 | 260 |  |  |  |  |  |  |  |  |  |  | MEP |  | FF |  |  |  |  |

| ID | WBS | Activity | Duration | Start | Finish | Predecessors | Complete | Remaining | Planned start | Planned finish | Total float | Free float | Resources | Cost | Actual cost | change id | CCAD BUILDING(SET) | CCAD PHASE(SET) | CCAD FLOOR(SET) | CCAD ZONE(SET) | CCAD WORK(SET) | CCAD SECTION(SET) | CCAD SERIAL No.(SET) | CCAD CBS(SET) | CCAD BILL(SET) | CCAD HANDOVER(SET) | CCAD TAG(SET) | CCAD REV(SET) | CCADACF (SET) | CCAD SSCF | Change Order # | NEW ACTIVITY ID | RENZ % COMPLETE | P_811 | P_711 | CCAD CSA | Act Selector % | July2011 Target% Complete | Claimed This Month | CCAD SUB ZONE MEP(SET) | user_number8 | user_integer1 | user_integer2 | user_number7 | PERCENT COMPLETE | CCAD MEQ | U% | CCAD DIVISION(SET) | IDDD |
| --- | --- | --- | --- | --- | --- | --- | --- | --- | --- | --- | --- | --- | --- | --- | --- | --- | --- | --- | --- | --- | --- | --- | --- | --- | --- | --- | --- | --- | --- | --- | --- | --- | --- | --- | --- | --- | --- | --- | --- | --- | --- | --- | --- | --- | --- | --- | --- | --- | --- |
|  | 10 | **Precommissioning Tesing & snagging (Pharmacy, W/S)** |  | 2012-12-01 | 2013-01-15 |  |  |  |  |  |  |  |  |  |  |  |  |  |  |  |  |  |  |  |  |  |  |  |  |  |  |  |  |  |  |  |  |  |  |  |  |  |  |  |  |  |  |  |  |
| DP1TS01805C0 |  | DT-P1 ; MEP de-snag, FIREM sign-off | 12d | 2012-12-01 | 2012-12-16 | DP1PH22025C0, DP1PH22027C0, DP1PH26015C0, DP1PH22021C0, DP1PH21113C0, DP1PH23019C0, DP1PH26017C0, DP1PH26003C0, DP1PH27030C0, DP1PH26019C0, DP1PH11005C0 |  |  |  |  | 14.1d | 0d | TESTING & COMMISSIONING [1275 h]; Cost |  |  | DP1TS01801C0 | DT | C | P1 | TS | SC | 018 | 01 | BILL 5 | B05 | S1 | 01 | R00 | ACF07 | 018 |  |  |  |  |  |  |  |  |  |  |  |  |  |  |  |  |  |  |  |
| DP1TS01810C0 |  | DT-P1 ; Touch-up & Clean / JV inspection /CIR /De-snag | 18d | 2012-12-16 | 2013-01-07 | DP1PH06101C0, DP1PH06102C0, DP1PH08709C0, DP1PH09601C0, DP1PH09701C0, DP1PH09903C0, DP1PH11001C0, DP1PH11003C0, DP1TS01805C0, DP1PH05501C0, DP1PH09503C0 |  |  |  |  | 14.1d | 0d | TESTING & COMMISSIONING [213 h]; Cost |  |  | DP1TS01802C0 | DT | C | P1 | TS | SC | 018 | 02 | BILL 5 | B05 | S1 | 02 | R00 | ACF07 | 018 |  |  |  |  |  |  |  |  |  |  |  |  |  |  |  |  |  |  |  |
| DP1TS01815C0 |  | DT-P1 ; Consultant's final de-snag inspection | 7d | 2013-01-07 | 2013-01-15 | DP1TS01810C0 |  |  |  |  | 14.1d | 0d | Labor General [1 h]; Cost |  |  | DP1TS01803C0 | DT | C | P1 | TS | SC | 018 | 03 | BILL 5 | B05 | S1 | 03 | R00 | ACF07 | 018 |  |  |  |  |  |  |  |  |  |  |  |  |  |  |  |  |  |  |  |
|  | 07 | **TR Room** |  | 2011-03-19 | 2012-09-05 |  |  |  |  |  |  |  |  |  |  |  |  |  |  |  |  |  |  |  |  |  |  |  |  |  |  |  |  |  |  |  |  |  |  |  |  |  |  |  |  |  |  |  |  |
| DP1TR09201C0 |  | DT-P1 ; Metal Studs (TR RM) | 30d | 2011-03-19 A | 2011-10-03 | DP1PA09201C0 SS | 90% | 3d | 2011-05-10 | 2011-06-13 | 76.5d | 0d | PARTITIONS [606 h]; PARTITIONS - Metal Studs [115 m]; Cost |  |  | DP1TR09201C0 | DT | C | P1 | TR | PT | 092 | 01 | BILL 5 | B05 | S1 | 1F | R00 | ACF06 | 092 | 313 | 885 | 80 | 90 | 80 | GP | PMS |  |  |  |  |  |  |  |  |  |  |  |  |
| DP1TR09203C0 |  | DT-P1 ; Partitions 1st face (TR RM) | 60d | 2011-04-04 A | 2011-10-06 | DP1TR09201C0 SS+12d | 90% | 6d | 2011-08-03 | 2011-10-13 | 117d | 0d | PARTITIONS [115 m]; PARTITIONS [467 h]; Cost |  |  | DP1TR09203C0 | DT | C | P1 | TR | PT | 092 | 03 | BILL 5 | B05 | S1 | 2F | R00 | ACF06 | 092 | 314 | 886 | 50 | 90 | 50 | GP | P1F |  |  |  |  |  |  |  |  |  |  |  |  |
| DP1TR26026C0 |  | DT-P1 ; 2nd Fix, Conduit (TR RM) | 30d | 2011-05-15 A | 2011-10-19 | DP1TR09201C0 SS+6d | 45% | 16.5d | 2011-06-12 | 2011-07-18 | 76.5d | 0d | ELECTRICAL [824.4 h]; Cost [42423.2 AED] | 42,423.24 | 19,090.46 | DP1TR26026C0 | DT | C | P1 | TR | ME | 260 | 26 | BILL 5 | B05 | S1 | 2F | R00 | ACF07 | 260 |  |  | 10 |  |  | MEP |  | 45 | 17495.32 | 2n |  |  |  |  |  |  |  |  |  |
| DP1TR26005C0 |  | DT-P1 ; 2nd Fix, Wiring for Power/Lighting/Emergency (TR RM) | 60d | 2011-06-07 A | 2012-03-20 | DP1TR09205C0 SS, DP1TR26026C0 | 25% | 45d | 2011-08-07 | 2011-10-18 | 87.3d | 60d | ELECTRICAL [436.8 h]; Cost [21894.9 AED] | 21,894.91 | 5,473.73 | DP1TR26005C0 | DT | C | P1 | TR | ME | 260 | 05 | BILL 5 | B05 | S1 | 2F | R00 | ACF07 | 260 |  |  |  |  |  | MEP |  | 30 | 6448.17 | 2n |  |  |  |  |  |  |  |  |  |
| DP1TR26007C0 |  | DT-P1 ; 2nd Fix, Cable Pulling (TR RM) | 60d | 2011-06-07 A | 2012-03-13 | DP1TR09205C0 SS | 35% | 39d | 2011-08-07 | 2011-10-18 | 81.3d | 12d | ELECTRICAL [6634.8 h]; Cost [332625 AED] | 332,625.29 | 116,418.85 | DP1TR26007C0 | DT | C | P1 | TR | ME | 260 | 07 | BILL 5 | B05 | S1 | 2F | R00 | ACF07 | 260 |  |  |  |  |  | MEP |  | 35 | 138447.26 | 2n |  |  |  |  |  |  |  |  |  |
| DP1TR26027C0 |  | DT-P1 ; 2nd Fix, Wiring / Cabling (TR RM) | 60d | 2011-06-07 A | 2012-03-20 | DP1TR09205C0 SS | 25% | 45d | 2011-08-07 | 2011-10-18 | 87.3d | 60d | ELECTRICAL [436.8 h]; Cost [21894.9 AED] | 21,894.91 | 5,473.73 | DP1TR26027C0 | DT | C | P1 | TR | ME | 260 | 27 | BILL 5 | B05 | S1 | 2F | R00 | ACF07 | 260 | 417 | 1318 |  |  |  | MEP |  | 25 | 6448.17 | 2n |  |  |  |  |  |  |  |  |  |
| DP1TR23013C0 |  | DT-P1 ; 2nd Fix, Insulation of CHW pipe & Duct (TR RM) | 60d | 2011-06-08 A | 2012-02-11 | DP1TR23009C0 SS, DP1TR23011C0 | 80% | 12d | 2011-08-28 | 2011-11-12 | 108.3d | 39d | MECHANICAL [5311.2 h]; Cost [286617 AED] | 286,617.06 | 229,293.65 | DP1TR23013C0 | DT | C | P1 | TR | ME | 230 | 13 | BILL 5 | B05 | S1 | 2F | R00 | ACF07 | 230 |  |  |  | 75 | 65 | MEP |  | 55 | 68214.07 | 2n | 0 | 0 | 0 | 0 |  |  |  |  |  |
| DP1TR23011C0 |  | DT-P1 ; 2nd Fix, Inst of VCD's/FD's (TR RM) | 60d | 2011-06-15 A | 2011-10-13 | DP1TR09203C0 SS | 80% | 12d | 2011-08-07 | 2011-10-18 | 192d | 83.7d | MECHANICAL [4312.8 h]; Cost [232964 AED] | 232,964.23 | 186,371.39 | DP1TR23011C0 | DT | C | P1 | TR | ME | 230 | 11 | BILL 5 | B05 | S1 | 2F | R00 | ACF07 | 230 |  |  |  | 75 | 50 | MEP |  | 25 | 27667.28 | 2n | 0 | 0 | 0 | 0 |  |  |  |  |  |
| DP1TR23009C0 |  | DT-P1 ; 2nd Fix, Inst of VAV'S CHW connection (TR RM) | 60d | 2011-07-07 A | 2012-02-18 | DP1TR09205C0 SS | 70% | 18d | 2011-10-01 | 2011-12-15 | 102.3d | 0d | MECHANICAL [1684.8 h]; Cost [91006.1 AED] | 91,006.06 | 63,704.24 | DP1TR23009C0 | DT | C | P1 | TR | ME | 230 | 09 | BILL 5 | B05 | S1 | 2F | R00 | ACF07 | 230 |  |  |  | 60 | 20 | MEP |  | 30 | 10820.47 | 2n | 0 | 0 | 0 | 0 | 70 |  |  |  |  |
| DP1TR26009C0 |  | DT-P1 ; 2nd Fix, Inst of Equipment (DB, TR, SG,BUS) (TR RM) | 72d | 2011-08-02 A | 2012-04-28 | DP1TR09205C0 | 25% | 54d | 2011-12-11 | 2012-03-06 | 40.3d | 0d | ELECTRICAL [14310 h]; Cost [3256347 AED] | 3,256,347.19 | 814,086.8 | DP1TR26009C0 | DT | C | P1 | TR | ME | 260 | 09 | BILL 5 | B05 | S1 | 2F | R00 | ACF04 | 260 |  |  |  | 20 | 0 | MEP |  | 35 | 1419825.48 | 2n | 0 | 0 | 0 | 0 |  | E |  |  |  |
| DP1TR08101C0 |  | DT-P1 ; Door Frames (TR RM) | 18d | 2011-09-05 A | 2011-10-20 | DP1TR09201C0, GNHE08101C0 | 20% | 14.4d | 2011-10-06 | 2011-10-26 | 129.6d | 102.3d | ASSORTED DOORS [57 h]; Cost |  |  | DP1TR08101C0 | DT | C | P1 | TR | DO | 081 | 01 | BILL 5 | B05 | S1 | DF | R00 | ACF06 | 081 | 316 | 20001090 |  |  |  |  |  |  |  |  |  |  |  |  |  |  | 10 | 08 |  |
| DP1TR09501C0 |  | DT-P1 ; Ceiling Grid and Service Tile (TR RM) | 12d | 2011-09-05 A | 2012-03-27 | DP1TR09205C0 SS+15d, DP1TR09901C0 | 25% | 9d | 2011-12-19 | 2012-01-03 | 27.3d | 0d | CEILING GRID FOR GYPSUM [443.17 h]; CEILING GRID FOR GYPSUM [37.95 m2]; Cost |  |  | DP1TR09501C0 | DT | C | P1 | TR | CE | 095 | 01 | BILL 5 | B05 | S1 | 01 | R00 | ACF06 | 095 | 336 | 1327 |  |  |  |  |  |  |  |  |  |  |  |  |  |  |  |  | 1 |
| DP1TR01005C0 |  | DT-P1 ; 2nd, Wall Inspection by Consultant (TR RM) | 30d | 2011-10-19 | 2011-11-28 | DP1TR26026C0 |  |  |  |  | 76.5d | 49.2d | Labor General [1.2 h]; Cost |  |  | DP1TR01005C0 | DT | C | P1 | TR | ME | 010 | 05 | BILL 5 | B05 | S1 | WI | R00 | ACF07 | 010 |  |  |  |  |  | MEP |  |  |  | 2n |  |  |  |  |  |  |  |  |  |
| DP1TR09205C0 |  | DT-P1 ; Partitions Closing (TR RM) | 24d | 2012-01-26 | 2012-02-25 | DAFOA09206C1 FF, DP1TR01005C0, DP1TR09201C0, DP1TR09203C0, DP1TR08101C0 FF, DP1PA09205C0 SS |  |  |  |  | 27.3d | 0d | PARTITIONS [115 m]; PARTITIONS [597 h]; Cost |  |  | DP1TR09205C0 | DT | C | P1 | TR | PT | 092 | 05 | BILL 5 | B05 | S1 | FF | R00 | ACF06 | 092 | 315 | 887 |  |  |  | GP | P2F |  |  |  |  |  |  |  |  |  |  |  |  |
| DP1TR09901C0 |  | DT-P1 ; Wall Prime & 1st coat (TR RM) | 18d | 2012-02-25 | 2012-03-17 | DP1CO04003C0, DP1TR09205C0 |  |  |  |  | 27.3d | 0d | WALL PAINT [164 h]; WALL PAINT [204 m2]; Cost |  |  | DP1TR09901C0 | DT | C | P1 | TR | PA | 099 | 01 | BILL 5 | B05 | S1 | 01 | R00 | ACF06 | 099 | 360 | 20001110 |  |  |  |  |  |  |  |  |  |  |  |  |  |  |  |  |  |
| DP1TR09903C0 |  | DT-P1 ; Wall - Final Paint (TR RM) | 12d | 2012-03-17 | 2012-03-31 | DP1TR09901C0 |  |  |  |  | 124.3d | 97d | WALL PAINT [89 h]; WALL PAINT [110 m2]; Cost |  |  | DP1TR09903C0 | DT | C | P1 | TR | PA | 099 | 03 | BILL 5 | B05 | S1 | 02 | R00 | ACF06 | 099 | 361 | 1312 |  |  |  |  |  |  |  |  |  |  |  |  |  |  |  |  |  |
| DP1TR01006C0 |  | DT-P1 ; 2nd, Ceiling Inspection by Consultants (TR RM) | 12d | 2012-03-27 | 2012-04-10 | DP1TR23009C0, DP1TR23011C0, DP1TR23013C0, DP1TR26007C0, DP1TR09501C0 |  |  |  |  | 69.3d | 42d | Labor General [1.2 h]; Cost |  |  | DP1TR01006C0 | DT | C | P1 | TR | ME | 010 | 06 | BILL 5 | B05 | S1 | CI | R00 | ACF07 | 010 |  |  |  |  |  | MEP |  |  |  | 2n |  |  |  |  |  |  |  |  |  |
| DP1TR09601C0 |  | DT-P1 ; Floor Finishes (TR RM) | 24d | 2012-03-27 | 2012-04-24 | DP1TR09501C0 |  |  |  |  | 27.3d | 0d | ASSORTED FLOOR FINISH [1744 h]; ASSORTED FLOOR FINISH [968 m2]; Cost |  |  | DP1TR09601C0 | DT | C | P1 | TR | FF | 096 | 01 | BILL 5 | B05 | S1 | 01 | R00 | ACF06 | FF | 359 | 20001120 |  |  |  |  |  |  |  |  |  |  |  |  |  |  |  |  |  |
| DP1TR23003C0 |  | DT-P1 ; Final Fix, Inst of Grilles & Diffusers (TR RM) | 18d | 2012-03-27 | 2012-04-17 | DP1TR09501C0 |  |  |  |  | 91.3d | 60d | MECHANICAL [2560.8 h]; Cost |  |  | DP1TR23003C0 | DT | C | P1 | TR | ME | 230 | 03 | BILL 5 | B05 | S1 | FF | R00 | ACF07 | 230 |  |  |  |  |  | MEP |  |  |  | FF |  |  |  |  |  |  |  |  |  |
| DP1TR23023C0 |  | DT-P1 ; 2nd Fix, Flexible ducts (TR RM) | 30d | 2012-03-27 | 2012-05-01 | DP1TR09501C0 |  |  |  |  | 51.3d | 24d | MECHANICAL [274.8 h]; Cost |  |  | DP1TR23023C0 | DT | C | P1 | TR | ME | 230 | 23 | BILL 5 | B05 | S1 | 2F | R00 | ACF07 | 230 | 412 | 20001140 |  |  |  | MEP |  | 35 |  | 2n |  |  |  |  |  |  |  |  |  |
| DP1TR23074C0 |  | DT-P1 ; Final Fix, Grilles, panels & diffusers (TR RM) | 18d | 2012-03-27 | 2012-04-17 | DP1TR09501C0 |  |  |  |  | 91.3d | 60d | MECHANICAL [2560.8 h]; Cost |  |  | DP1TR23074C0 | DT | C | P1 | TR | ME | 230 | 74 | BILL 5 | B05 | S1 | FF | R00 | ACF07 | 230 | 419 | 20001160 |  |  |  | MEP |  |  |  | FF |  |  |  |  |  |  |  |  |  |
| DP1TR26076C0 |  | DT-P1 ; Final Fix, Lighting fittings (TR RM) | 18d | 2012-03-27 | 2012-04-17 | DP1TR09501C0 |  |  |  |  | 61.3d | 21d | ELECTRICAL [6626.4 h]; Cost |  |  | DP1TR26076C0 | DT | C | P1 | TR | ME | 260 | 76 | BILL 5 | B05 | S1 | FF | R00 | ACF07 | 260 | 420 | 20001170 |  |  |  | MEP |  |  |  | FF |  |  |  |  |  |  |  |  |  |
| DP1TR27020C0 |  | DT-P1 ; 2nd Fix, Inst of ELV Equipment (Panels) (TR RM) | 30d | 2012-03-27 | 2012-05-01 | DP1TR09205C0, DP1TR09501C0 |  |  |  |  | 31.3d | 0d | ELECTRICAL [1723.2 h]; Cost |  |  | DP1TR27020C0 | DT | C | P1 | TR | ME | 270 | 20 | BILL 5 | B05 | S1 | 2F | R00 | ACF04 | 270 |  |  |  |  |  | MEP |  | 40 | 186442.68 | 2n |  |  |  |  |  | E |  |  |  |
| DP1TR26017C0 |  | DT-P1 ; Final Fix, Inst of Switch/Sockets (TR RM) | 12d | 2012-04-11 | 2012-04-25 | DP1TR09901C0, DP1SF26007C0 SS+6d |  |  |  |  | 84.4d | 53.1d | ELECTRICAL [610.8 h]; Cost |  |  | DP1TR26017C0 | DT | C | P1 | TR | ME | 260 | 17 | BILL 5 | B05 | S1 | FF | R00 | ACF07 | 260 |  |  |  |  |  | MEP |  |  |  | FF |  |  |  |  |  |  |  |  |  |
| DP1TR08105C0 |  | DT-P1 ; Doors (TR RM) | 18d | 2012-04-24 | 2012-05-15 | DP1TR08101C0, DP1TR09901C0, DP1TR09601C0 |  |  |  |  | 69.3d | 0d | ASSORTED DOORS [90 h]; ASSORTED DOORS [9 no]; Cost |  |  | DP1TR08105C0 | DT | C | P1 | TR | DO | 081 | 05 | BILL 5 | B05 | S1 | DR | R00 | ACF06 | 081 | 317 | 1325 |  |  |  |  |  |  |  |  |  |  |  |  |  |  |  | 08 |  |
| DP1TR21115C0 |  | DT-P1 ; 2nd Fix, Gaseous Fire Suppression (TR RM) | 30d | 2012-04-24 | 2012-05-29 | DP1TR09501C0, DP1TR09601C0 |  |  |  |  | 27.3d | 0d | MECHANICAL [12560.4 h]; Cost |  |  | DP1TR21115C0 | DT | C | P1 | TR | ME | 211 | 15 | BILL 5 | B05 | S1 | 2F | R00 | ACF07 | 211 | 411 | 20001130 |  |  |  | MEP |  | 35 |  | 2n |  |  |  |  |  |  |  |  |  |
| DP1TR26013C0 |  | DT-P1 ; Final Fix, Termination & Gladding of Cables (TR RM) | 18d | 2012-04-28 | 2012-05-19 | DP1TR26009C0, DP1TR26076C0 SS+6d, DP1TR09501C0 |  |  |  |  | 40.3d | 0d | ELECTRICAL [368.4 h]; Cost |  |  | DP1TR26013C0 | DT | C | P1 | TR | ME | 260 | 13 | BILL 5 | B05 | S1 | FF | R00 | ACF07 | 260 |  |  |  |  |  | MEP |  |  |  | FF |  |  |  |  |  |  |  |  |  |
| DP1TR27002C0 |  | DT-P1 ; 2nd Fix, Dressing of ELV panels (TR RM) | 30d | 2012-05-01 | 2012-06-05 | DP1TR09205C0, DP1TR27020C0 |  |  |  |  | 31.3d | 0d | ELECTRICAL [333.6 h]; Cost |  |  | DP1TR27002C0 | DT | C | P1 | TR | ME | 270 | 02 | BILL 5 | B05 | S1 | 2F | R00 | ACF07 | 270 |  |  |  |  |  | MEP |  | 40 |  | 2n |  |  |  |  |  |  |  |  |  |
| DP1TR08709C0 |  | DT-P1 ; Ironmongery (TR RM) | 16d | 2012-05-15 | 2012-06-03 | DP1TR08105C0 |  |  |  |  | 69.3d | 42d | IRONMONGERY [50 h]; IRONMONGERY [5 no]; Cost |  |  | DP1TR08709C0 | DT | C | P1 | TR | DO | 087 | 09 | BILL 5 | B05 | S1 | IM | R00 | ACF06 | 087 | 322 | 20001100 |  |  |  |  |  |  |  |  |  |  |  |  |  |  |  | 08 |  |
| DP1TR26015C0 |  | DT-P1 ; Final Fix, Inst of Ceiling rose (TR RM) | 18d | 2012-05-19 | 2012-06-09 | DP1TR26013C0, DP1TR09501C0 |  |  |  |  | 40.3d | 0d | ELECTRICAL [67.2 h]; Cost |  |  | DP1TR26015C0 | DT | C | P1 | TR | ME | 260 | 15 | BILL 5 | B05 | S1 | FF | R00 | ACF07 | 260 |  |  |  |  |  | MEP |  |  |  | FF |  |  |  |  |  |  |  |  |  |
| DP1TR26019C0 |  | DT-P1 ; Final Fix, Inst of Light fittings (TR RM) | 18d | 2012-05-26 | 2012-06-17 | DP1TR26015C0 SS+6d, DP1TR09501C0 |  |  |  |  | 40.3d | 9d | ELECTRICAL [6626.4 h]; Cost |  |  | DP1TR26019C0 | DT | C | P1 | TR | ME | 260 | 19 | BILL 5 | B05 | S1 | FF | R00 | ACF07 | 260 |  |  |  |  |  | MEP |  |  |  | FF |  |  |  |  |  |  |  |  |  |
| DP1TR09503C0 |  | DT-P1 ; Ceiling closure (TR RM) | 16d | 2012-05-29 | 2012-06-18 | DP1TR01006C0, DP1TR21115C0, DP1TR26005C0, DP1TR26007C0, DP1TR26026C0, DP1TR26027C0, DP1TR23023C0 |  |  |  |  | 27.3d | 0d | ASSORTED CEILING FINISH [89.79 h]; CEILING GYPSUM [12.51 h]; ASSORTED CEILING FINISH [146 m2]; CEILING GYPSUM [38 m2]; Cost |  |  | DP1TR09503C0 | DT | C | P1 | TR | CE | 095 | 03 | BILL 5 | B05 | S1 | 02 | R00 | ACF06 | 095 | 337 | 20001080 |  |  |  |  |  |  |  |  |  |  |  |  |  |  |  |  |  |
| DP1TR27030C0 |  | DT-P1 ; Final Fix, Inst of ELV device (Detector/Speaker) (TR RM) | 18d | 2012-06-05 | 2012-06-27 | DP1TR27002C0, DP1TR09501C0 |  |  |  |  | 31.3d | 0d | ELECTRICAL [2152.8 h]; Cost |  |  | DP1TR27030C0 | DT | C | P1 | TR | ME | 270 | 30 | BILL 5 | B05 | S1 | FF | R00 | ACF07 | 270 |  |  |  |  |  | MEP |  |  |  | FF |  |  |  |  |  |  |  |  |  |
| DP1TR09905C0 |  | DT-P1 ; Ceiling Prime & 1st coat (TR RM) | 18d | 2012-06-18 | 2012-07-09 | DP1TR09503C0 |  |  |  |  | 27.3d | 0d | ASSORTED CEILING FINISH [17 h]; Cost |  |  | DP1TR09905C0 | DT | C | P1 | TR | PA | 099 | 05 | BILL 5 | B05 | S1 | 01 | R00 | ACF06 | 099 | 362 | 1313 |  |  |  |  |  |  |  |  |  |  |  |  |  |  |  |  |  |
| DP1TR01802C0 |  | DT-P1 ; MEP de-snag, FIREM sign-off | 18d | 2012-06-27 | 2012-07-18 | DP1TR26017C0, DP1TR23074C0, DP1TR23003C0, DP1TR26076C0, DP1TR26013C0, DP1TR26015C0, DP1TR26019C0, DP1TR27030C0 |  |  |  |  | 31.3d | 4d | TESTING & COMMISSIONING [510 h]; Cost |  |  | CP3TR01851C0 | DT | C | P1 | TR | SC | 018 | 53 | BILL 5 | B05 | S1 | 01 | R00 | ACF07 | 018 | 396 |  |  |  |  |  |  |  |  |  |  |  |  |  |  |  |  |  |  |
| DP1TR09907C0 |  | DT-P1 ; Ceiling - Final paint (TR RM) | 12d | 2012-07-09 | 2012-07-23 | DP1TR09905C0 |  |  |  |  | 27.3d | 0d | ASSORTED CEILING FINISH [9 h]; Cost |  |  | DP1TR09907C0 | DT | C | P1 | TR | PA | 099 | 07 | BILL 5 | B05 | S1 | 02 | R00 | ACF06 | 099 | 363 | 1314 |  |  |  |  |  |  |  |  |  |  |  |  |  |  |  |  |  |
| DP1TR01801C0 |  | DT-P1 ; Touch-up & Clean / JV inspection /CIR /De-snag | 24d | 2012-07-23 | 2012-08-22 | DP1TR01802C0, DP1TR08709C0, DP1TR09601C0, DP1TR09903C0, DP1TR09907C0 |  |  |  |  | 27.3d | 0d | TESTING & COMMISSIONING [85 h]; Cost |  |  | DP1TR01851C0 | DT | C | P1 | TR | SC | 018 | 51 | BILL 5 | B05 | S1 | 02 | R00 | ACF07 | 018 | 396 |  |  |  |  |  |  |  |  |  |  |  |  |  |  |  |  |  |  |
| DP1TR01803C0 |  | DT-P1 ; Consultant's final de-snag inspection | 12d | 2012-08-22 | 2012-09-05 | DP1TR01801C0 |  |  |  |  | 27.3d | 8.3d | Labor General [1 h]; Cost |  |  | CP3TS01803C0 | DT | C | P1 | TR | SC | 018 | 03 | BILL 5 | B05 | S1 | 03 | R00 | ACF07 | 018 |  |  |  |  |  |  |  |  |  |  |  |  |  |  |  |  |  |  |  |

| ID | WBS | Activity | Duration | Start | Finish | Predecessors | Complete | Remaining | Planned start | Planned finish | Total float | Free float | Resources | Cost | Actual cost | change id | RENZ % COMPLETE | CCAD BUILDING(SET) | CCAD PHASE(SET) | CCAD FLOOR(SET) | CCAD ZONE(SET) | CCAD WORK(SET) | CCAD SECTION(SET) | CCAD SERIAL No.(SET) | CCAD SUB ZONE MEP(SET) | CCAD CBS(SET) | CCAD BILL(SET) | CCAD HANDOVER(SET) | CCAD TAG(SET) | CCAD REV(SET) | CCADACF (SET) | CCAD CSA | CCAD SSCF | Act Selector % | July2011 Target% Complete | Claimed This Month | P_811 | P_711 | user_number8 | user_integer1 | user_integer2 | user_number7 | Change Order # | NEW ACTIVITY ID | U% | PERCENT COMPLETE | Actual Cost | Phase | Area/ Department | Grids | Are | Weight & Nos | Process | Levels | CCAD MEQ | CCAD DIVISION(SET) |
| --- | --- | --- | --- | --- | --- | --- | --- | --- | --- | --- | --- | --- | --- | --- | --- | --- | --- | --- | --- | --- | --- | --- | --- | --- | --- | --- | --- | --- | --- | --- | --- | --- | --- | --- | --- | --- | --- | --- | --- | --- | --- | --- | --- | --- | --- | --- | --- | --- | --- | --- | --- | --- | --- | --- | --- | --- |
|  | 04 | **Clinical Lab , W/S** |  | 2011-02-14 | 2012-12-06 |  |  |  |  |  |  |  |  |  |  |  |  |  |  |  |  |  |  |  |  |  |  |  |  |  |  |  |  |  |  |  |  |  |  |  |  |  |  |  |  |  |  |  |  |  |  |  |  |  |  |  |
| DP1CL21111C0 |  | DT-P1 ; 1st Fix, Inst of Sprinkler main pipe (Clinical Lab) | 44d | 2011-02-14 A | 2011-10-01 | DP1CL22005C0 SS+10d, DP1CL23001C0, DP1S307807C0 | 100% | 0d | 2011-05-25 | 2011-07-17 | 56.12d | 0d | MECHANICAL [981.6 h]; Cost [53543.7 AED] | 53,543.69 | 50,866.51 | DP1CL21111C0 | 100 | DT | C | P1 | CL | ME | 211 | 11 | 1S | BILL 5 | B05 | S1 | 1F | R00 | ACF04 | MEP | 211 | M1F |  |  |  |  |  |  |  |  |  |  |  |  |  |  |  |  |  |  |  |  |  |  |
| DP1CL22005C0 |  | DT-P1 ; 1st Fix, Inst of Water supply pipe (ceiling) (Clinical Lab) | 62d | 2011-02-16 A | 2011-10-08 | DP1CL22019C0 SS+7d, DP1CL23001C0, DP1S307807C0 | 90% | 6.2d | 2011-05-14 | 2011-07-26 | 56.12d | 0d | PLUMBING [4896 h]; Cost [264473 AED] | 264,473.49 | 238,026.14 | DP1CL22005C0 | 35 | DT | C | P1 | CL | ME | 220 | 05 | 1S | BILL 5 | B05 | S1 | 1F | R00 | ACF04 | MEP | 220 | M1F | 85 | 15338.85 | 100 | 80 |  |  |  |  |  |  |  |  |  |  |  |  |  |  |  |  |  |  |
| DP1CL22019C0 |  | DT-P1 ; 1st Fix, Inst of Drainage pipe (ceiling) (Clinical Lab) | 62d | 2011-02-20 A | 2011-10-01 | DP1CL23001C0, DP1CL26013C0 SS+12d, DP1S307807C0 | 100% | 0d | 2011-05-05 | 2011-07-18 | 56.12d | 0d | PLUMBING [1173.6 h]; Cost [61888.2 AED] | 61,888.15 | 58,793.75 | DP1CL22019C0 | 85 | DT | C | P1 | CL | ME | 220 | 19 | 1S | BILL 5 | B05 | S1 | 1F | R00 | ACF04 | MEP | 220 | M1F |  | 11025.27 |  |  |  |  |  |  |  |  |  |  |  |  |  |  |  |  |  |  |  |  |
| DP1CL09201C0 |  | DT-P1 ; Metal Studs (Clinical Lab) | 90d | 2011-02-24 A | 2011-10-10 | DP1CL23001C0, DP1PA09201C0 SS | 90% | 9d | 2011-03-31 | 2011-07-14 | 45.02d | 0d | PARTITIONS [6553 h]; PARTITIONS - Metal Studs [1243 m]; Cost |  |  | DP1CL09201C0 | 40 | DT | C | P1 | CL | PT | 092 | 01 |  | BILL 5 | B05 | S1 | 1F | R00 | ACF06 | GP | 092 | PMS |  | 104738.25 | 70 | 63 | 0 | 0 | 0 | 0 | 313 | 944 | 90 |  |  |  |  |  |  |  |  |  |  |  |
| DP1CL23001C0 |  | DT-P1 ; 1st Fix, Inst. of Supports for MEP (Clinical Lab) | 27d | 2011-03-01 A | 2011-10-01 | DP1S307807C0 SS | 100% | 0d | 2011-02-28 | 2011-03-31 | 45.02d | 0d | MECHANICAL [1338 h]; Cost [75432.9 AED] | 75,432.94 | 71,661.29 | DP1CL23001C0 | 100 | DT | C | P1 | CL | ME | 230 | 01 | 1S | BILL 5 | B05 | S1 | 1F | R00 | ACF04 | MEP | 230 | M1F |  |  |  |  |  |  |  |  |  |  |  |  |  |  |  |  |  |  |  |  |  |  |
| DP1CL09203C0 |  | DT-P1 ; Partitions 1st face (Clinical Lab) | 90d | 2011-03-27 A | 2011-11-24 | DP1CL09201C0 SS+12d, DP1CL05101C10 FF, DP1CL23017C0 FF, DP1CL23023C0 FF | 67% | 29.7d | 2011-05-21 | 2011-09-05 | 71.12d | 24d | PARTITIONS [1243 m]; PARTITIONS [5109 h]; Cost |  |  | DP1CL09203C0 | 15 | DT | C | P1 | CL | PT | 092 | 03 |  | BILL 5 | B05 | S1 | 2F | R00 | ACF06 | GP | 092 | P1F |  | 29326.75 | 45 | 25 | 0 | 0 | 0 | 0 | 314 | 945 | 67 |  |  |  |  |  |  |  |  |  |  |  |
| DP1CL26001C0 |  | DT-P1 ; 1st Fix, Inst of Trunking/Conduiting (Clinical Lab) | 180d | 2011-04-10 A | 2011-12-18 | DP1CL23001C0, DP1S307807C0 | 65% | 63d | 2011-03-31 | 2011-10-31 | 56.12d | 0d | ELECTRICAL [824.4 h]; Cost [42423.2 AED] | 42,423.24 | 27,575.11 | DP1CL26001C0 | 40 | DT | C | P1 | CL | ME | 260 | 01 | 1S | BILL 5 | B05 | S1 | 1F | R00 | ACF04 | MEP | 260 | M1F | 95 | 27492.85 | 98 | 80 |  |  |  |  |  |  |  | 65 |  |  |  |  |  |  |  |  |  |  |
| DP1CL23023C0 |  | DT-P1 ; 1st Fix, Inst of Main Ducting (Clinical Lab) | 200d | 2011-04-23 A | 2011-11-03 | DP1CL23001C0, DP1CL23017C0 SS+7d, DP1S307807C0 | 85% | 30d | 2011-06-14 | 2012-02-14 | 86.12d | 0d | MECHANICAL [11402.4 h]; Cost [622619 AED] | 622,619.08 | 529,226.22 | DP1CL23023C0 | 80 | DT | C | P1 | CL | ME | 230 | 23 | 1S | BILL 5 | B05 | S1 | 1F | R00 | ACF04 | MEP | 230 | M1F | 90 | 72218.7 |  |  |  |  |  |  |  |  |  | 85 |  |  |  |  |  |  |  |  |  |  |
| DP1CL23017C0 |  | DT-P1 ; 1st Fix, Inst of CHW pipe (Clinical Lab) | 150d | 2011-04-24 A | 2011-11-24 | DP1CL21111C0 SS+10d, DP1CL23001C0, DP1S307807C0 | 70% | 45d | 2011-06-06 | 2011-12-07 | 56.12d | 0d | MECHANICAL [6325.2 h]; Cost [345418 AED] | 345,418.28 | 241,792.8 | DP1CL23017C0 | 80 | DT | C | P1 | CL | ME | 230 | 17 | 1S | BILL 5 | B05 | S1 | 1F | R00 | ACF04 | MEP | 230 | M1F | 95 | 60097.8 | 98 | 95 |  |  |  |  |  |  |  | 70 |  |  |  |  |  |  |  |  |  |  |
| DP1CL27010C0 |  | DT-P1 ; 1st Fix, Inst of Trunking for ELV system (Clinical Lab) | 90d | 2011-04-26 A | 2011-12-07 | DP1CL23001C0, DP1CL26001C0 SS+10d, DP1S307807C0 | 40% | 54d | 2011-04-12 | 2011-07-27 | 56.12d | 0d | ELECTRICAL [1689.6 h]; Cost [88597.9 AED] | 88,597.89 | 35,439.16 | DP1CL27010C0 | 40 | DT | C | P1 | CL | ME | 270 | 10 | 1S | BILL 5 | B05 | S1 | 1F | R00 | ACF04 | MEP | 270 | M1F | 95 | 56531.2 | 90 | 40 |  |  |  |  |  |  |  | 40 |  |  |  |  |  |  |  |  |  |  |
| DP1CL21117C0 |  | DT-P1 ; 1st Fix, Inst of Sprinkler branch pipe (Clinical Lab) | 63d | 2011-04-28 A | 2011-10-15 | DP1CL09201C0, DP1CL21111C0, DP1S307807C0 | 95% | 3.15d | 2011-07-18 | 2011-10-02 | 187.97d | 140.85d | MECHANICAL [1441.2 h]; Cost [78749.8 AED] | 78,749.79 | 74,812.3 | DP1CL21117C0 | 45 | DT | C | P1 | CL | ME | 211 | 17 | 1S | BILL 5 | B05 | S1 | 1F | R00 | ACF04 | MEP | 211 | M1F |  | 50210.34 |  |  |  |  |  |  |  |  |  |  |  |  |  |  |  |  |  |  |  |  |
| DP1CL26013C0 |  | DT-P1 ; 1st Fix, Inst of Cable Tray (Clinical Lab) | 120d | 2011-04-28 A | 2011-11-21 | DP1CL23001C0, DP1CL27010C0 SS+8d, DP1S307807C0 | 65% | 42d | 2011-04-21 | 2011-09-12 | 56.12d | 0d | ELECTRICAL [430.8 h]; Cost [23263.3 AED] | 23,263.34 | 15,121.17 | DP1CL26013C0 | 35 | DT | C | P1 | CL | ME | 260 | 13 | 1S | BILL 5 | B05 | S1 | 1F | R00 | ACF04 | MEP | 260 | M1F | 95 | 16201.2 | 98 | 80 |  |  |  |  |  |  |  | 65 |  |  |  |  |  |  |  |  |  |  |
| DP1CL23008C0 |  | DT-P1 ; 1st Fix, Inst of VCD's/FD's (Clinical Lab) | 150d | 2011-05-15 A | 2011-12-24 | DP1CL23023C0, DP1S307807C0 | 75% | 37.5d | 2011-07-30 | 2012-01-30 | 132.62d | 85.5d | MECHANICAL [4312.8 h]; Cost [232964 AED] | 232,964.23 | 174,723.17 | DP1CL23008C0 | 30 | DT | C | P1 | CL | ME | 230 | 08 | 1S | BILL 5 | B05 | S1 | 1F | R00 | ACF04 | MEP | 230 | M1F | 85 | 27667.27 | 80 | 65 |  |  |  |  |  |  |  | 75 |  |  |  |  |  |  |  |  |  |  |
| DP1CL22011C0 |  | DT-P1 ; 2nd Fix, Drainage/Water pipe (wall) (Clinical Lab) | 90d | 2011-06-07 A | 2011-12-18 | DP1CL09201C0 | 40% | 54d | 2011-06-07 | 2011-09-22 | 47.12d | 0d | PLUMBING [1173.6 h]; Cost [61888.2 AED] | 61,888.15 | 24,755.26 | DP1CL22011C0 |  | DT | C | P1 | CL | ME | 220 | 11 | 2n | BILL 5 | B05 | S1 | 2F | R00 | ACF07 | MEP | 220 |  | 60 | 7350.18 | 60 | 10 |  |  |  |  |  |  |  | 40 |  |  |  |  |  |  |  |  |  |  |
| DP1CL26007C0 |  | DT-P1 ; 2nd Fix, Cable Pulling (Clinical Lab) | 54d | 2011-06-07 A | 2011-11-23 | DP1CL09201C0 SS+6d | 20% | 43.2d | 2011-06-07 | 2011-08-09 | 66.92d | 19.8d | ELECTRICAL [6634.8 h]; Cost [332625 AED] | 332,625.29 | 66,525.06 | DP1CL26007C0 |  | DT | C | P1 | CL | ME | 260 | 07 | 2n | BILL 5 | B05 | S1 | 2F | R00 | ACF07 | MEP | 260 |  | 30 | 79112.72 |  |  |  |  |  |  |  |  |  |  |  |  |  |  |  |  |  |  |  |  |
| DP1CL26009C0 |  | DT-P1 ; 2nd Fix, Inst of Wall conduites (Clinical Lab) | 66d | 2011-06-07 A | 2011-10-11 | DP1CL09201C0 | 100% | 0d | 2011-06-07 | 2011-08-23 | 101.12d | 54d | ELECTRICAL; Cost [42423.2 AED] | 42,423.24 | 6,363.49 | DP1CL26009C0 |  | DT | C | P1 | CL | ME | 260 | 09 | 2n | BILL 5 | B05 | S1 | 2F | R00 | ACF07 | MEP | 260 |  | 55 | 24993.31 |  |  |  |  |  |  |  |  |  | 15 |  |  |  |  |  |  |  |  |  |  |
| DP1CL05101C10 |  | DT-P1 ; Secondary Steel for Medical Equipment (Clinical Lab) | 20d | 2011-07-05 A | 2011-11-19 | DP1S107807C0, DP1S207807C0, DP1S307807C0, DAFCI09203R02 FS+58d | 90% | 2d | 2011-07-31 | 2011-08-22 | 76.12d | 5d | STRUCTURAL STEEL [16 T(Fe)]; Cost |  |  | DP1S205101C0 |  | DT | C | P1 | CL | SW | 055 | 01 |  | BILL 5 | B05 | S1 | 03 | R00 | ACF03 |  | 055 |  |  |  | 90 | 30 |  |  |  |  |  |  |  |  | 4012589 | Z2 | DT | P03 | O | A3 | EREC | 1FLR |  |  |
| DP1CL23009C0 |  | DT-P1 ; 2nd Fix, Inst of VAV'S CHW connection (Clinical Lab) | 90d | 2011-07-07 A | 2011-12-28 | DP1CL23017C0 | 70% | 27d | 2011-08-02 | 2011-11-21 | 56.12d | 0d | MECHANICAL [1684.8 h]; Cost [91006.1 AED] | 91,006.06 | 63,704.24 | DP1CL23009C0 |  | DT | C | P1 | CL | ME | 230 | 09 | 2n | BILL 5 | B05 | S1 | 2F | R00 | ACF07 | MEP | 230 |  | 25 |  | 60 | 20 | 0 | 0 | 0 | 0 |  |  |  | 70 |  |  |  |  |  |  |  |  |  |  |
| DP1CL23015C0 |  | DT-P1 ; 2nd Fix, Insulation of CHW pipe & Duct (Clinical Lab) | 120d | 2011-07-10 A | 2012-02-11 | DP1CL23009C0, DP1CL23017C0, DP1CL23023C0 | 70% | 36d | 2011-08-07 | 2012-01-03 | 56.12d | 9d | MECHANICAL [5311.2 h]; Cost [286617 AED] | 286,617.06 | 200,631.94 | DP1CL23015C0 |  | DT | C | P1 | CL | ME | 230 | 15 | 2n | BILL 5 | B05 | S1 | 2F | R00 | ACF07 | MEP | 230 |  | 55 |  | 75 | 65 | 0 | 0 | 0 | 0 |  |  |  | 70 |  |  |  |  |  |  |  |  |  |  |
| DP1CL23011C0 |  | DT-P1 ; 2nd Fix, Inst of Equipment (FCU,FAN) (Clinical Lab) | 79d | 2011-08-02 A | 2012-04-07 | DP1CL09205C0 | 51% | 39d | 2012-03-31 | 2012-07-02 | 80.12d | 33d | MECHANICAL [1588.8 h]; Cost [361645 AED] | 361,645.02 | 180,822.51 | DP1CL23011C0 |  | DT | C | P1 | CL | ME | 230 | 11 | 2n | BILL 5 | B05 | S1 | 2F | R00 | ACF04 | MEP | 230 |  |  |  | 50 | 0 |  |  |  |  |  |  |  |  |  |  |  |  |  |  |  |  | H |  |
| DP1CL08103C0 |  | DT-P1 ; Door Frames (Clinical Lab) | 42d | 2011-09-05 A | 2011-11-22 | DP1CL09201C0, GNHE08101C0 | 20% | 33.6d | 2011-10-03 | 2011-11-23 | 121.53d | 74.4d | ASSORTED DOORS [622 h]; Cost |  |  | DP1CL08103C0 |  | DT | C | P1 | CL | DO | 081 | 03 |  | BILL 5 | B05 | S1 | DF | R00 | ACF06 |  | 081 |  |  |  |  |  |  |  |  |  | 316 | 947 | 15 |  |  |  |  |  |  |  |  |  |  | 08 |
| DP1CL05511C0 |  | DT-P1 ; Wall reinforcement for MEP/Medical (Clinical Lab) | 24d | 2011-11-17 | 2011-12-17 | DP1CL09201C0, DAFCI09203R02 FS+58d |  |  |  |  | 54.12d | 7d | SECONDARY STEEL [22 h]; Cost |  |  | DP1CL05511C0 |  | DT | C | P1 | CL | SW | 055 | 11 |  | BILL 5 | B05 | S1 | 03 | R00 | ACF03 |  | b |  |  |  |  |  |  |  |  |  |  |  |  |  |  |  |  |  |  |  |  |  |  |  |
| DP1CL01005C0 |  | DT-P1 ; 2nd, Wall Inspection by Consultant (Clinical Lab) | 6d | 2011-12-19 | 2011-12-25 | DP1CL22011C0, DP1CL26007C0, DP1CL26009C0 |  |  |  |  | 47.12d | 0d | Labor General [1.2 h]; Cost |  |  | DP1CL01005C0 |  | DT | C | P1 | CL | ME | 010 | 05 | 2n | BILL 5 | B05 | S1 | WI | R00 | ACF07 | MEP | 010 |  | 25 |  |  |  |  |  |  |  |  |  |  |  |  |  |  |  |  |  |  |  |  |  |
| DP1CL27001C0 |  | DT-P1 ; 1st Fix, Wiring/ Cabling work (Clinical Lab) | 48d | 2011-12-19 | 2012-02-14 | DP1CL26001C0, DP1CL26013C0, DP1CL27010C0, DP1S307807C0 |  |  |  |  | 89.12d | 0d | ELECTRICAL [436.8 h]; Cost |  |  | DP1CL27001C0 | 30 | DT | C | P1 | CL | ME | 270 | 01 | 1S | BILL 5 | B05 | S1 | 1F | R00 | ACF04 | MEP | 270 | M1F | 80 | 12896.6 | 55 | 50 |  |  |  |  |  |  |  | 0 |  |  |  |  |  |  |  |  |  |  |
| DP1CL09205C0 |  | DT-P1 ; Partitions Closing (Clinical Lab) | 48d | 2011-12-26 | 2012-02-21 | DAFOA09206C1 FF, DP1CL01005C0, DP1CL05511C0, DP1CL09203C0, DP1CL22005C0, DP1CL22019C0, DP1CL08103C0 FF, DP1CL23009C0 FF, DP1CL23015C0 FF, DAFCI09203R20 FS+58d |  |  |  |  | 47.12d | 0d | PARTITIONS [1243 m]; PARTITIONS [6565 h]; Cost |  |  | DP1CL09205C0 |  | DT | C | P1 | CL | PT | 092 | 05 |  | BILL 5 | B05 | S1 | FF | R00 | ACF06 | GP | 092 | P2F |  |  |  |  |  |  |  |  | 315 | 946 |  |  |  |  |  |  |  |  |  |  |  |  |
| DP1CL07103C0 |  | DT-P1 ; Waterproofing (Clinical Lab) | 12d | 2012-02-22 | 2012-03-06 | DP1CL08103C0, DP1CL09205C0 |  |  |  |  | 113.12d | 0d | THERMAL & MOISTURE [472 h]; THERMAL & MOISTURE [3100 m2]; Cost |  |  | DP1CL07103C0 |  | DT | C | P1 | CL | FF | 071 | 03 |  | BILL 5 | B05 | S1 | 01 | R00 | ACF03 |  | 071 |  |  |  |  |  |  |  |  |  | 105 | 999 |  |  |  |  |  |  |  |  |  |  |  |  |
| DP1CL09901C0 |  | DT-P1 ; Wall Prime & 1st coat (Clinical Lab) | 36d | 2012-02-22 | 2012-04-03 | DP1CL09205C0, DP1CO04003C0 |  |  |  |  | 47.12d | 0d | WALL PAINT [1090 h]; WALL PAINT [1359 m2]; Cost |  |  | DP1CL09901C0 |  | DT | C | P1 | CL | PA | 099 | 01 |  | BILL 5 | B05 | S1 | 01 | R00 | ACF06 |  | 099 |  |  |  |  |  |  |  |  |  | 328 | 956 |  |  |  |  |  |  |  |  |  |  |  |  |
| DP1CL26005C0 |  | DT-P1 ; 2nd Fix, Wiring for Power/Lighting/Emergency (Clinical Lab) | 60d | 2012-02-22 | 2012-05-01 | DP1CL09205C0 |  |  |  |  | 95.12d | 0d | ELECTRICAL [436.8 h]; Cost |  |  | DP1CL26005C0 |  | DT | C | P1 | CL | ME | 260 | 05 | 2n | BILL 5 | B05 | S1 | 2F | R00 | ACF07 | MEP | 260 |  | 50 | 9027.43 |  |  |  |  |  |  |  |  |  | 0 |  |  |  |  |  |  |  |  |  |  |
| DP1CL26011C0 |  | DT-P1 ; 2nd Fix, Inst of Equipment (DB) (Clinical Lab) | 48d | 2012-02-22 | 2012-04-17 | DP1CL09205C0 |  |  |  |  | 119.12d | 60d | ELECTRICAL [4054.8 h]; Cost |  |  | DP1CL26011C0 |  | DT | C | P1 | CL | ME | 260 | 11 | 2n | BILL 5 | B05 | S1 | 2F | R00 | ACF04 | MEP | 260 |  |  |  |  |  |  |  |  |  |  |  |  |  |  |  |  |  |  |  |  |  | E |  |
| DP1CL26053C0 |  | DT-P1 ; 2nd Fix, Wiring / Cabling (Clinical Lab) | 60d | 2012-02-22 | 2012-05-01 | DP1CL26009C0, DP1CL09205C0 |  |  |  |  | 149.12d | 102d | ELECTRICAL [436.8 h]; Cost |  |  | DP1CL26053C0 |  | DT | C | P1 | CL | ME | 260 | 53 | 2n | BILL 5 | B05 | S1 | 2F | R00 | ACF07 | MEP | 260 |  | 45 | 9027.43 | 50 | 35 |  |  |  |  | 389 | 977 |  | 0 |  |  |  |  |  |  |  |  |  |  |
| DP1CL27020C0 |  | DT-P1 ; 2nd Fix, Inst of ELV Equipment (Panels) (Clinical Lab) | 42d | 2012-02-22 | 2012-04-10 | DP1CL09205C0 |  |  |  |  | 125.12d | 66d | ELECTRICAL [1723.2 h]; Cost |  |  | DP1CL27020C0 |  | DT | C | P1 | CL | ME | 270 | 20 | 2n | BILL 5 | B05 | S1 | 2F | R00 | ACF04 | MEP | 270 |  |  |  |  |  |  |  |  |  |  |  |  |  |  |  |  |  |  |  |  |  | E |  |
| DP1CL09305C0 |  | DT-P1 ; Ceramic floor tile (Clinical Lab) | 30d | 2012-03-07 | 2012-04-10 | DP1CL07103C0 |  |  |  |  | 113.12d | 0d | CERAMIC FLOOR TILES [192 h]; CERAMIC FLOOR TILES [105 m2]; Cost |  |  | DP1CL09305C0 |  | DT | C | P1 | CL | FF | 093 | 05 |  | BILL 5 | B05 | S1 | 02 | R00 | ACF06 |  | CT |  |  |  |  |  |  |  |  |  | 106 | 1000 |  |  |  |  |  |  |  |  |  |  |  |  |
| DP1CL05501C0 |  | DT-P1 ; Handrails & balustrade (Clinical Lab) | 36d | 2012-04-04 | 2012-05-15 | DP1CL09901C0 |  |  |  |  | 83.12d | 36d | SECONDARY STEEL [209 h]; Cost |  |  | DP1CL05501C0 |  | DT | C | P1 | CL | SW | 055 | 01 |  | BILL 5 | B05 | S1 | 01 | R00 | ACF03 |  | a |  |  |  |  |  |  |  |  |  |  |  |  |  |  |  |  |  |  |  |  |  |  |  |
| DP1CL09501C0 |  | DT-P1 ; Ceiling Grid and Service Tile (Clinical Lab) | 36d | 2012-04-04 | 2012-05-15 | DP1CL05101C10, DP1CL09205C0 SS+15d, DP1CL21117C0, DP1CL23008C0, DP1CL23009C0, DP1CL23015C0, DP1CL27001C0, DP1CL23011C0 FF, DP1CL09901C0 |  |  |  |  | 47.12d | 0d | CEILING GRID FOR GYPSUM [4879.74 h]; CEILING GRID FOR GYPSUM [417.5 m2]; Cost |  |  | DP1CL09501C0 |  | DT | C | P1 | CL | CE | 095 | 01 |  | BILL 5 | B05 | S1 | 01 | R00 | ACF06 |  | 095 |  |  |  |  |  |  |  |  |  | 323 | 952 |  |  |  |  |  |  |  |  |  |  |  |  |
| DP1CL22025C0 |  | DT-P1 ; Final Fix, Inst of Sanitary Ware (Clinical Lab) | 48d | 2012-04-11 | 2012-06-05 | DP1CL09205C0, DP1CL09305C0, A10230 FS+148d |  |  |  |  | 113.12d | 0d | PLUMBING [1917.6 h]; Cost |  |  | DP1CL22025C0 |  | DT | C | P1 | CL | ME | 220 | 25 | FF | BILL 5 | B05 | S1 | FF | R00 | ACF07 | MEP | 220 |  |  |  |  |  |  |  |  |  |  |  |  |  |  |  |  |  |  |  |  |  |  |  |
| DP1CL26015C0 |  | DT-P1 ; Final Fix, Termination & Gladding of Cables (Clinical Lab) | 48d | 2012-05-02 | 2012-06-27 | DP1CL26005C0, DV08P110202R2 |  |  |  |  | 95.12d | 30d | ELECTRICAL [368.4 h]; Cost |  |  | DP1CL26015C0 |  | DT | C | P1 | CL | ME | 260 | 15 | FF | BILL 5 | B05 | S1 | FF | R00 | ACF07 | MEP | 260 |  |  |  |  |  |  |  |  |  |  |  |  |  |  |  |  |  |  |  |  |  |  |  |
| DP1CL09601C0 |  | DT-P1 ; Flooring (Rubber & etc) (Clinical Lab) | 36d | 2012-05-16 | 2012-06-27 | DP1CL09901C0, DP1CL09501C0, DP1CL05501C0 FF |  |  |  |  | 47.12d | 0d | RUBBER FLOOR [440 h]; RUBBER FLOOR [1088 m2]; Cost |  |  | DP1CL09601C0 |  | DT | C | P1 | CL | FF | 096 | 01 |  | BILL 5 | B05 | S1 | 03 | R00 | ACF06 |  | RF |  |  |  |  |  |  |  |  |  | 326 | 955 |  |  |  |  |  |  |  |  |  |  |  |  |
| DP1CL09905C0 |  | DT-P1 ; Ceiling Prime & 1st coat (Clinical Lab) | 36d | 2012-05-16 | 2012-06-27 | DP1CL09501C0 |  |  |  |  | 119.12d | 0d | ASSORTED CEILING FINISH [175 h]; Cost |  |  | DP1CL09905C0 |  | DT | C | P1 | CL | PA | 099 | 05 |  | BILL 5 | B05 | S1 | 01 | R00 | ACF06 |  | 099 |  |  |  |  |  |  |  |  |  | 330 | 958 |  |  |  |  |  |  |  |  |  |  |  |  |
| DP1CL21115C0 |  | DT-P1 ; 2nd Fix, Inst of Sprinkler droppers (Clinical Lab) | 36d | 2012-05-16 | 2012-06-27 | DP1CL09501C0 |  |  |  |  | 77.12d | 0d | MECHANICAL [2067.6 h]; Cost |  |  | DP1CL21115C0 |  | DT | C | P1 | CL | ME | 211 | 15 | 2n | BILL 5 | B05 | S1 | 2F | R00 | ACF07 | MEP | 211 |  |  |  |  |  |  |  |  |  |  |  |  |  |  |  |  |  |  |  |  |  |  |  |
| DP1CL23021C0 |  | DT-P1 ; 2nd Fix, Inst of Flexible Duct & Plenum boxes (Clinical Lab) | 36d | 2012-05-16 | 2012-06-27 | DP1CL09205C0, DP1CL09501C0 |  |  |  |  | 65.12d | 0d | MECHANICAL [274.8 h]; Cost |  |  | DP1CL23021C0 |  | DT | C | P1 | CL | ME | 230 | 21 | 2n | BILL 5 | B05 | S1 | 2F | R00 | ACF07 | MEP | 230 |  |  |  |  |  |  |  |  |  |  |  |  |  |  |  |  |  |  |  |  |  |  |  |
| DP1CL26017C0 |  | DT-P1 ; Final Fix, Inst of Ceiling rose (Clinical Lab) | 48d | 2012-05-16 | 2012-07-11 | DP1CL09501C0 |  |  |  |  | 77.12d | 0d | ELECTRICAL [67.2 h]; Cost |  |  | DP1CL26017C0 |  | DT | C | P1 | CL | ME | 260 | 17 | FF | BILL 5 | B05 | S1 | FF | R00 | ACF07 | MEP | 260 |  |  |  |  |  |  |  |  |  |  |  |  |  |  |  |  |  |  |  |  |  |  |  |
| DP1CL27002C0 |  | DT-P1 ; 2nd Fix, Wiring Droppers (Clinical Lab) | 60d | 2012-05-16 | 2012-07-25 | DP1CL09501C0 |  |  |  |  | 71.12d | 0d | ELECTRICAL [436.8 h]; Cost |  |  | DP1CL27002C0 |  | DT | C | P1 | CL | ME | 270 | 02 | 2n | BILL 5 | B05 | S1 | 2F | R00 | ACF07 | MEP | 270 |  |  |  | 30 | 0 |  |  |  |  |  |  |  | 0 |  |  |  |  |  |  |  |  |  |  |
| DP1CL21113C0 |  | DT-P1 ; Final Fix, Inst of Sprinklers head/ Extinguisher (Clinical Lab) | 48d | 2012-05-23 | 2012-07-18 | DP1CL09501C0, DP1CL21115C0 SS+6d |  |  |  |  | 77.12d | 12d | MECHANICAL [403.2 h]; Cost |  |  | DP1CL21113C0 |  | DT | C | P1 | CL | ME | 211 | 13 | FF | BILL 5 | B05 | S1 | FF | R00 | ACF07 | MEP | 211 |  |  |  |  |  |  |  |  |  |  |  |  |  |  |  |  |  |  |  |  |  |  |  |
| DP1CL23019C0 |  | DT-P1 ; Final Fix, Inst of Grilles & Diffusers (Clinical Lab) | 60d | 2012-05-23 | 2012-08-01 | DP1CL09501C0, DP1CL23021C0 SS+6d |  |  |  |  | 65.12d | 0d | MECHANICAL [2560.8 h]; Cost |  |  | DP1CL23019C0 |  | DT | C | P1 | CL | ME | 230 | 19 | FF | BILL 5 | B05 | S1 | FF | R00 | ACF07 | MEP | 230 |  |  |  |  |  |  |  |  |  |  |  |  |  |  |  |  |  |  |  |  |  |  |  |
| DP1CL26003C0 |  | DT-P1 ; Final Fix, Inst of Light fittings (Clinical Lab) | 48d | 2012-05-23 | 2012-07-18 | DP1CL09501C0, DP1CL26017C0 SS+6d |  |  |  |  | 77.12d | 12d | ELECTRICAL [6626.4 h]; Cost |  |  | DP1CL26003C0 |  | DT | C | P1 | CL | ME | 260 | 03 | FF | BILL 5 | B05 | S1 | FF | R00 | ACF07 | MEP | 260 |  |  |  |  |  |  |  |  |  |  |  |  |  |  |  |  |  |  |  |  |  |  |  |
| DP1CL27030C0 |  | DT-P1 ; Final Fix, Inst of ELV device (Detector/Speaker) (Clinical Lab) | 54d | 2012-05-23 | 2012-07-25 | DP1CL09501C0, DP1CL27002C0 SS+6d |  |  |  |  | 71.12d | 6d | ELECTRICAL [2152.8 h]; Cost |  |  | DP1CL27030C0 |  | DT | C | P1 | CL | ME | 270 | 30 | FF | BILL 5 | B05 | S1 | FF | R00 | ACF07 | MEP | 270 |  |  |  |  |  |  |  |  |  |  |  |  |  |  |  |  |  |  |  |  |  |  |  |
| DP1CL22021C0 |  | DT-P1 ; Final Fix, Terminate Sanitary Ware & Appliances (Clinical Lab) | 48d | 2012-06-06 | 2012-08-01 | DP1CL22011C0, DP1CL22025C0, DP1CL23001C0 |  |  |  |  | 113.12d | 66d | PLUMBING [1917.6 h]; Cost |  |  | DP1CL22021C0 |  | DT | C | P1 | CL | ME | 220 | 21 | FF | BILL 5 | B05 | S1 | FF | R00 | ACF07 | MEP | 220 |  |  |  |  |  |  |  |  |  |  |  |  |  |  |  |  |  |  |  |  |  |  |  |
| DP1CL06101C0 |  | DT-P1 ; Wood / caseworks (Clinical Lab) | 54d | 2012-06-28 | 2012-09-01 | DP1CL09501C0, DP1CL09901C0, DP1CO04415C0, DP1CO04407C0, DAFWA00119M0, CAFWA00113M0, DP1CL09601C0 |  |  |  |  | 47.12d | 0d | WOOD WORK/CASEWORK [509.4 no]; WOOD WORK/CASEWORK [4271 h]; Cost |  |  | DP1CL06101C0 |  | DT | C | P1 | CL | WO | 061 | 01 |  | BILL 5 | B05 | S1 | WW | R00 | ACF06 |  | 061 |  |  |  |  |  |  |  |  |  | 332 | 960 |  |  |  |  |  |  |  |  |  |  |  |  |
| DP1CL06102C0 |  | DT-P1 ; Head Wall (Clinical Lab) | 32d | 2012-06-28 | 2012-08-04 | DP1CL09501C0, DP1CO04415C0, DP1CL06101C0 SS, DAFWA00119M0 |  |  |  |  | 123.12d | 76d | WOOD WORK/CASEWORK [342 h]; Cost |  |  | DP1CL06102C0 |  | DT | C | P1 | CL | WO | 061 | 02 |  | BILL 5 | B05 | S1 | WW | R00 | ACF06 |  | 061 |  |  |  |  |  |  |  |  |  | 332 | 960 |  |  |  |  |  |  |  |  |  |  |  |  |
| DP1CL08107C0 |  | DT-P1 ; Doors (Clinical Lab) | 42d | 2012-06-28 | 2012-08-15 | DP1CL08103C0, DP1CL09901C0, DP1CL09601C0 |  |  |  |  | 83.12d | 0d | ASSORTED DOORS [1000 h]; ASSORTED DOORS [100 no]; Cost |  |  | DP1CL08107C0 |  | DT | C | P1 | CL | DO | 081 | 07 |  | BILL 5 | B05 | S1 | DR | R00 | ACF06 |  | 081 |  |  |  |  |  |  |  |  |  | 317 | 948 |  |  |  |  |  |  |  |  |  |  |  | 08 |
| DP1CL09701C0 |  | DT-P1 ; Wall finishes (ST, WD, WC) (Clinical Lab) | 42d | 2012-06-28 | 2012-08-15 | DP1CL26011C0, DP1CL27020C0, DP1CL09601C0 |  |  |  |  | 59.12d | 0d | ASSORTED WALL FINISH [1369 h]; ASSORTED WALL FINISH [1573 m2]; Cost |  |  | DP1CL09701C0 |  | DT | C | P1 | CL | WF | 097 | 01 |  | BILL 5 | B05 | S1 | 01 | R00 | ACF06 |  | 097 |  |  |  |  |  |  |  |  |  | 105 | 1002 |  |  |  |  |  |  |  |  |  |  |  |  |
| DP1CL09903C0 |  | DT-P1 ; Wall Final Paint (Clinical Lab) | 36d | 2012-06-28 | 2012-08-08 | DP1CL09901C0, DP1CL09905C0 |  |  |  |  | 119.12d | 42d | WALL PAINT [587 h]; WALL PAINT [732 m2]; Cost |  |  | DP1CL09903C0 |  | DT | C | P1 | CL | PA | 099 | 03 |  | BILL 5 | B05 | S1 | 02 | R00 | ACF06 |  | 099 |  |  |  |  |  |  |  |  |  | 329 | 957 |  |  |  |  |  |  |  |  |  |  |  |  |
| DP1CL11005C0 |  | DT-P1 ; Utility belt (Clinical Lab) | 36.5d | 2012-07-25 | 2012-09-08 | DP1CL06101C0 SS+6d, DP1CL09205C0, DP1CL06101C0 FF+6d |  |  |  |  | 83.12d | 36d | FF&E [170 h]; FF&E [90.71 no]; Cost |  |  | DP1CL11005C0 |  | DT | C | P1 | CL | WO | 110 | 05 |  | BILL 5 | B05 | S1 | 05 | R00 | ACF08 |  | e |  |  |  |  |  |  |  |  |  |  |  |  |  |  |  |  |  |  |  |  |  |  |  |
| DP1CL01006C0 |  | DT-P1 ; 2nd, Ceiling Inspection by Consultants (Clinical Lab) | 6d | 2012-08-02 | 2012-08-08 | DP1CL21115C0, DP1CL23009C0, DP1CL23015C0, DP1CL27002C0, DP1CL09501C0, DP1CL21113C0, DP1CL23019C0, DP1CL26003C0, DP1CL26017C0, DP1CL27030C0, DP1CL26015C0 |  |  |  |  | 65.12d | 18d | Labor General [1.2 h]; Cost |  |  | DP1CL01006C0 |  | DT | C | P1 | CL | ME | 010 | 06 | 2n | BILL 5 | B05 | S1 | CI | R00 | ACF07 | MEP | 010 |  |  |  |  |  |  |  |  |  |  |  |  |  |  |  |  |  |  |  |  |  |  |  |
| DP1CL08709C0 |  | DT-P1 ; Ironmongery (Clinical Lab) | 30d | 2012-08-16 | 2012-09-22 | DP1CL08107C0 |  |  |  |  | 83.12d | 36d | IRONMONGERY [570 h]; IRONMONGERY [57 no]; Cost |  |  | DP1CL08709C0 |  | DT | C | P1 | CL | DO | 087 | 09 |  | BILL 5 | B05 | S1 | IM | R00 | ACF06 |  | 087 |  |  |  |  |  |  |  |  |  | 322 | 951 |  |  |  |  |  |  |  |  |  |  |  | 08 |
| DP1CL11001C0 |  | DT-P1 ; Wall Protection (WP, CG, WG, FCG) (Clinical Lab) | 24d | 2012-08-16 | 2012-09-15 | DP1CL09701C0, DP1CL09903C0 SS |  |  |  |  | 89.12d | 42d | FF&E [2047 h]; Cost |  |  | DP1CL11001C0 |  | DT | C | P1 | CL | WF | 110 | 01 |  | BILL 5 | B05 | S1 | 03 | R00 | ACF08 |  | b |  |  |  |  |  |  |  |  |  | 326 | 1001 |  |  |  |  |  |  |  |  |  |  |  |  |
| DP1CL09503C0 |  | DT-P1 ; Ceiling closure - ACT/Gypsum (Clinical Lab) | 24d | 2012-09-02 | 2012-09-29 | DAFOA09505C1 FF, DP1CL01006C0, DP1CL21115C0, DP1CL26005C0, DP1CL27001C0, DP1CL27002C0, DP1CL06101C0, DP1CL09701C0, DP1CL23021C0, DP1CL26053C0, DP1TR26017C0 |  |  |  |  | 47.12d | 0d | ASSORTED CEILING FINISH [988.3 h]; CEILING GYPSUM [136.94 h]; ASSORTED CEILING FINISH [1607 m2]; CEILING GYPSUM [417 m2]; Cost |  |  | DP1CL09503C0 |  | DT | C | P1 | CL | CE | 095 | 03 |  | BILL 5 | B05 | S1 | 02 | R00 | ACF06 |  | 095 |  |  |  |  |  |  |  |  |  | 324 | 953 |  |  |  |  |  |  |  |  |  |  |  |  |
| DP1CL09674C1 |  | DT-P1, Carpet Tile Finish (Clinical Lab W/S) | 0d | 2012-09-30 | 2012-09-30 | DP1CL09903C0 SS, DP1CL09907C0 SS |  |  |  |  | 77d | 51.6d | Cost |  |  |  |  | DT | C | P1 | CL | FF | 096 |  |  |  | B05 |  |  | R00 | ACF06 | CPT | CPT |  |  |  |  |  |  |  |  |  |  |  |  |  |  |  |  |  |  |  |  |  |  |  |
| DP1CL09907C0 |  | DT-P1 ; Ceiling Final paint (Clinical Lab) | 18d | 2012-09-30 | 2012-10-20 | DP1CL09601C0, DP1CL09905C0, DP1CL09503C0 |  |  |  |  | 59.12d | 0d | ASSORTED CEILING FINISH [95 h]; Cost |  |  | DP1CL09907C0 |  | DT | C | P1 | CL | PA | 099 | 07 |  | BILL 5 | B05 | S1 | 02 | R00 | ACF06 |  | 099 |  |  |  |  |  |  |  |  |  | 331 | 959 |  |  |  |  |  |  |  |  |  |  |  |  |
| DP1CL11003C0 |  | DT-P1 ; FF & E (Clinical Lab) | 18d | 2012-09-30 | 2012-10-20 | DP1CL09601C0, DP1CL09503C0 |  |  |  |  | 59.12d | 0d | FF&E [57 h]; FF&E [29.93 no]; Cost |  |  | DP1CL11003C0 |  | DT | C | P1 | CL | WO | 110 | 03 |  | BILL 5 | B05 | S1 | 04 | R00 | ACF08 |  | a |  |  |  |  |  |  |  |  |  | 333 | 961 |  |  |  |  |  |  |  |  |  |  |  |  |
| DP1CL22027C0 |  | DT-P1 ; Final Fix, Inst of All drain (Clinical Lab) | 18d | 2012-09-30 | 2012-10-20 | DP1CL09305C0, DP1CL09503C0 |  |  |  |  | 47.12d | 0d | PLUMBING [1173.6 h]; Cost |  |  | DP1CL22027C0 |  | DT | C | P1 | CL | ME | 220 | 27 | FF | BILL 5 | B05 | S1 | FF | R00 | ACF07 | MEP | 220 |  |  |  |  |  |  |  |  |  |  |  |  |  |  |  |  |  |  |  |  |  |  |  |
| DP1CL26019C0 |  | DT-P1 ; Final Fix, Inst of Switch/Sockets (Clinical Lab) | 18d | 2012-09-30 | 2012-10-20 | DP1CL09901C0, DP1CL09501C0, DP1CL09503C0 |  |  |  |  | 47.12d | 0d | ELECTRICAL [610.8 h]; Cost |  |  | DP1CL26019C0 |  | DT | C | P1 | CL | ME | 260 | 19 | FF | BILL 5 | B05 | S1 | FF | R00 | ACF07 | MEP | 260 |  |  |  |  |  |  |  |  |  |  |  |  |  |  |  |  |  |  |  |  |  |  |  |

| ID | WBS | Activity | Duration | Start | Finish | Predecessors | Complete | Remaining | Planned start | Planned finish | Total float | Free float | Resources | Cost | Actual cost | change id | CCAD BUILDING(SET) | CCAD PHASE(SET) | CCAD FLOOR(SET) | CCAD ZONE(SET) | CCAD WORK(SET) | CCAD SECTION(SET) | CCAD SERIAL No.(SET) | CCAD CBS(SET) | CCAD BILL(SET) | CCAD HANDOVER(SET) | CCAD TAG(SET) | CCAD REV(SET) | CCADACF (SET) | CCAD SSCF | Change Order # | NEW ACTIVITY ID | RENZ % COMPLETE | P_811 | P_711 | CCAD CSA | Act Selector % | user_number8 | user_integer1 | user_integer2 | user_number7 | July2011 Target% Complete | Claimed This Month | CCAD SUB ZONE MEP(SET) | CCAD MEQ | U% | CCAD DIVISION(SET) | IDDD |
| --- | --- | --- | --- | --- | --- | --- | --- | --- | --- | --- | --- | --- | --- | --- | --- | --- | --- | --- | --- | --- | --- | --- | --- | --- | --- | --- | --- | --- | --- | --- | --- | --- | --- | --- | --- | --- | --- | --- | --- | --- | --- | --- | --- | --- | --- | --- | --- | --- |
|  | 10 | **Precommissioning Tesing & snagging (Clinical Lab , W/S))** |  | 2012-10-21 | 2012-12-06 |  |  |  |  |  |  |  |  |  |  |  |  |  |  |  |  |  |  |  |  |  |  |  |  |  |  |  |  |  |  |  |  |  |  |  |  |  |  |  |  |  |  |  |
| DP1TS01806C0 |  | DT-P1 ; MEP de-snag, FIREM sign-off | 12d | 2012-10-21 | 2012-11-05 | DP1CL22025C0, DP1CL22027C0, DP1CL26015C0, DP1CL22021C0, DP1CL21113C0, DP1CL23019C0, DP1CL26017C0, DP1CL26003C0, DP1CL27030C0, DP1CL26019C0, DP1CL11005C0 |  |  |  |  | 47.12d | 0d | TESTING & COMMISSIONING [1275 h]; Cost |  |  | DP1TS01801C0 | DT | C | P1 | TS | SC | 018 | 01 | BILL 5 | B05 | S1 | 01 | R00 | ACF07 | 018 |  |  |  |  |  |  |  |  |  |  |  |  |  |  |  |  |  |  |
| DP1TS01811C0 |  | DT-P1 ; Touch-up & Clean / JV inspection /CIR /De-snag | 18d | 2012-11-06 | 2012-11-27 | DP1CL06101C0, DP1CL06102C0, DP1CL08709C0, DP1CL09305C0, DP1CL09601C0, DP1CL09701C0, DP1CL09903C0, DP1CL09907C0, DP1CL11001C0, DP1CL11003C0, DP1TS01806C0, DP1CL05501C0, DP1CL09503C0 |  |  |  |  | 47.12d | 0d | TESTING & COMMISSIONING [213 h]; Cost |  |  | DP1TS01802C0 | DT | C | P1 | TS | SC | 018 | 02 | BILL 5 | B05 | S1 | 02 | R00 | ACF07 | 018 |  |  |  |  |  |  |  |  |  |  |  |  |  |  |  |  |  |  |
| DP1TS01816C0 |  | DT-P1 ; Consultant's final de-snag inspection | 6.88d | 2012-11-28 | 2012-12-06 | DP1TS01811C0 |  |  |  |  | 47.12d | 33.02d | Labor General [1 h]; Cost |  |  | DP1TS01803C0 | DT | C | P1 | TS | SC | 018 | 03 | BILL 5 | B05 | S1 | 03 | R00 | ACF07 | 018 |  |  |  |  |  |  |  |  |  |  |  |  |  |  |  |  |  |  |
|  | 08 | **Main TR Server & Etisalat Room** |  | 2011-03-20 | 2012-06-26 |  |  |  |  |  |  |  |  |  |  |  |  |  |  |  |  |  |  |  |  |  |  |  |  |  |  |  |  |  |  |  |  |  |  |  |  |  |  |  |  |  |  |  |
| DP1ET09201C0 |  | DT-P1 ; Metal Studs (Main TR Server & Etisalat RM) | 90d | 2011-03-20 A | 2011-10-31 | DP1PA09201C0 SS | 70% | 27d | 2011-05-10 | 2011-08-23 | 2.88d | 0d | PARTITIONS [606 h]; PARTITIONS - Metal Studs [115 m]; Cost |  |  | DP1TR09201C0 | DT | C | P1 | ET | PT | 092 | 01 | BILL 5 | B05 | S1 | 1F | R00 | ACF06 | 092 | 313 | 885 | 40 | 70 | 63 | GP | PMS |  |  |  |  |  |  |  |  |  |  |  |
| DP1ET09203C0 |  | DT-P1 ; Partitions 1st face (Main TR Server & Etisalat RM) | 60d | 2011-03-24 A | 2011-11-10 | DP1ET09201C0 SS+12d | 45% | 33d | 2011-06-12 | 2011-08-22 | 10.97d | 8.1d | PARTITIONS [467 h]; PARTITIONS [115 m]; Cost |  |  | DP1TR09203C0 | DT | C | P1 | ET | PT | 092 | 03 | BILL 5 | B05 | S1 | 2F | R00 | ACF06 | 092 | 314 | 886 | 15 | 45 | 25 | GP | P1F |  |  |  |  |  |  |  |  |  |  |  |
| DP1ET23013C0 |  | DT-P1 ; 2nd Fix, Insulation of CHW pipe & Duct (Main TR Server & Etisalat RM) | 78d | 2011-06-07 A | 2011-12-18 | DP1ET23009C0, DP1ET23011C0 | 80% | 15.6d | 2011-10-06 | 2012-01-11 | 83.88d | 69d | MECHANICAL [5311.2 h]; Cost [286617 AED] | 286,617.06 | 229,293.65 | DP1TR23013C0 | DT | C | P1 | ET | ME | 230 | 13 | BILL 5 | B05 | S1 | 2F | R00 | ACF07 | 230 |  |  |  | 75 | 60 | MEP |  | 0 | 0 | 0 | 0 | 60 | 34107.03 | 2n |  |  |  |  |
| DP1ET26026C0 |  | DT-P1 ; 2nd Fix, Conduit (Main TR Server & Etisalat RM) | 78d | 2011-06-07 A | 2011-11-14 | DP1ET09201C0 SS+6d | 55% | 35.1d | 2011-06-07 | 2011-09-08 | 2.88d | 0d | ELECTRICAL [824.4 h]; Cost [42423.2 AED] | 42,423.24 | 23,332.78 | DP1TR26026C0 | DT | C | P1 | ET | ME | 260 | 26 | BILL 5 | B05 | S1 | 2F | R00 | ACF07 | 260 |  |  |  |  |  | MEP |  |  |  |  |  | 55 | 24993.31 | 2n |  |  |  |  |
| DP1ET23009C0 |  | DT-P1 ; 2nd Fix, Inst of VAV'S CHW connection (Main TR Server & Etisalat RM) | 78d | 2011-07-04 A | 2011-11-28 | DP1ET09201C0 | 75% | 19.5d | 2011-10-12 | 2012-01-18 | 83.88d | 0d | MECHANICAL [1684.8 h]; Cost [91006.1 AED] | 91,006.06 | 68,254.54 | DP1TR23009C0 | DT | C | P1 | ET | ME | 230 | 09 | BILL 5 | B05 | S1 | 2F | R00 | ACF07 | 230 |  |  |  | 60 | 20 | MEP |  | 0 | 0 | 0 | 0 | 25 | 21640.94 | 2n |  |  |  |  |
| DP1ET26009C0 |  | DT-P1 ; 2nd Fix, Inst of Equipment (DB, TR, SG,BUS) (Main TR Server & Etisalat RM) | 42d | 2011-07-05 A | 2011-12-20 | DP1ET09201C0 | 10% | 37.8d | 2011-10-12 | 2011-12-06 | 39.17d | 36.3d | ELECTRICAL [14310 h]; Cost [3256347 AED] | 3,256,347.19 | 325,634.72 | DP1TR26009C0 | DT | C | P1 | ET | ME | 260 | 09 | BILL 5 | B05 | S1 | 2F | R00 | ACF04 | 260 |  |  |  |  |  | MEP |  |  |  |  |  | 40 | 1419825.48 | 2n | E |  |  |  |
| DP1ET23011C0 |  | DT-P1 ; 2nd Fix, Inst of VCD's/FD's (Main TR Server & Etisalat RM) | 78d | 2011-07-10 A | 2011-10-18 | MGNMI00101M0 | 80% | 15.6d | 2011-09-12 | 2011-12-18 | 114.78d | 30.9d | MECHANICAL [4312.8 h]; Cost [232964 AED] | 232,964.23 | 186,371.39 | DP1TR23011C0 | DT | C | P1 | ET | ME | 230 | 11 | BILL 5 | B05 | S1 | 2F | R00 | ACF07 | 230 |  |  |  | 70 | 45 | MEP |  | 0 | 0 | 0 | 0 | 25 | 55334.55 | 2n |  |  |  |  |
| DP1ET26005C0 |  | DT-P1 ; 2nd Fix, Wiring for Power/Lighting/Emergency (Main TR Server & Etisalat RM) | 60d | 2011-08-10 A | 2012-02-11 | DP1ET09205C0, DP1ET26026C0 | 30% | 42d | 2011-12-22 | 2012-03-04 | 50.88d | 48d | ELECTRICAL [436.8 h]; Cost [21894.9 AED] | 21,894.91 | 6,568.47 | DP1TR26005C0 | DT | C | P1 | ET | ME | 260 | 05 | BILL 5 | B05 | S1 | 2F | R00 | ACF07 | 260 |  |  |  | 30 | 0 | MEP |  |  |  |  |  | 30 |  | 2n |  |  |  |  |
| DP1ET26027C0 |  | DT-P1 ; 2nd Fix, Wiring / Cabling (Main TR Server & Etisalat RM) | 78d | 2011-08-10 A | 2012-02-07 | DP1ET09203C0, DP1ET09205C0 | 50% | 39d | 2011-12-22 | 2012-03-25 | 53.88d | 51d | ELECTRICAL [436.8 h]; Cost [21894.9 AED] | 21,894.91 | 10,947.45 | DP1TR26027C0 | DT | C | P1 | ET | ME | 260 | 27 | BILL 5 | B05 | S1 | 2F | R00 | ACF07 | 260 | 417 | 1318 |  | 50 | 0 | MEP |  |  |  |  |  | 30 |  | 2n |  |  |  |  |
| DP1ET08101C0 |  | DT-P1 ; Door Frames (Main TR Server & Etisalat RM) | 42d | 2011-09-05 A | 2011-11-12 | DP1ET09201C0 SS, GNHE08101C0 | 20% | 33.6d | 2011-10-03 | 2011-11-23 | 34.38d | 31.5d | ASSORTED DOORS [46 h]; Cost |  |  | DP1TR08101C0 | DT | C | P1 | ET | DO | 081 | 01 | BILL 5 | B05 | S1 | DF | R00 | ACF06 | 081 | 316 | 20001090 |  |  |  |  |  |  |  |  |  |  |  |  |  | 10 | 08 |  |
| DP1ET01005C0 |  | DT-P1 ; 2nd, Wall Inspection by Consultant (Main TR Server & Etisalat RM) | 6d | 2011-11-14 | 2011-11-21 | DP1ET26026C0 |  |  |  |  | 2.88d | 0d | Labor General [1.2 h]; Cost |  |  | DP1TR01005C0 | DT | C | P1 | ET | ME | 010 | 05 | BILL 5 | B05 | S1 | WI | R00 | ACF07 | 010 |  |  |  |  |  | MEP |  |  |  |  |  |  |  | 2n |  |  |  |  |
| DP1ET09205C0 |  | DT-P1 ; Partitions Closing (Main TR Server & Etisalat RM) | 24d | 2011-11-21 | 2011-12-21 | DAFOA09206C1 FF, DP1ET01005C0, DP1ET09201C0, DP1ET09203C0, DP1ET08101C0 FF |  |  |  |  | 2.88d | 0d | PARTITIONS [597 h]; PARTITIONS [115 m]; Cost |  |  | DP1TR09205C0 | DT | C | P1 | ET | PT | 092 | 05 | BILL 5 | B05 | S1 | FF | R00 | ACF06 | 092 | 315 | 887 |  |  |  | GP | P2F |  |  |  |  |  |  |  |  |  |  |  |
| DP1ET26007C0 |  | DT-P1 ; 2nd Fix, Cable Pulling (Main TR Server & Etisalat RM) | 42d | 2011-12-21 | 2012-02-11 | DP1ET09205C0 |  |  |  |  | 38.88d | 0d | ELECTRICAL [6634.8 h]; Cost |  |  | DP1TR26007C0 | DT | C | P1 | ET | ME | 260 | 07 | BILL 5 | B05 | S1 | 2F | R00 | ACF07 | 260 |  |  |  |  |  | MEP |  |  |  |  |  | 30 |  | 2n |  |  |  |  |
| DP1ET27002C0 |  | DT-P1 ; 2nd Fix, Dressing of ELV panels (Main TR Server & Etisalat RM) | 36d | 2011-12-21 | 2012-02-02 | DP1ET09205C0, DP1ET26009C0 FF |  |  |  |  | 2.88d | 0d | ELECTRICAL [333.6 h]; Cost |  |  | DP1TR27002C0 | DT | C | P1 | ET | ME | 270 | 02 | BILL 5 | B05 | S1 | 2F | R00 | ACF07 | 270 |  |  |  |  |  | MEP |  |  |  |  |  |  |  | 2n |  |  |  |  |
| DP1ET27020C0 |  | DT-P1 ; 2nd Fix, Inst of ELV Equipment (Panels) (Main TR Server & Etisalat RM) | 30d | 2011-12-28 | 2012-02-02 | DP1ET09205C0, DP1ET27002C0 FF |  |  |  |  | 2.88d | 0d | ELECTRICAL [1723.2 h]; Cost |  |  | DP1TR27020C0 | DT | C | P1 | ET | ME | 270 | 20 | BILL 5 | B05 | S1 | 2F | R00 | ACF04 | 270 |  |  |  |  |  | MEP |  |  |  |  |  |  |  | 2n | E |  |  |  |
| DP1ET09901C0 |  | DT-P1 ; Wall Prime & 1st coat (Main TR Server & Etisalat RM) | 18d | 2012-01-12 | 2012-02-02 | DP1ET09205C0, DP1ET27020C0 FF |  |  |  |  | 2.88d | 0d | Labor General [2 h]; Cost |  |  | DP1TR09901C0 | DT | C | P1 | ET | PA | 099 | 01 | BILL 5 | B05 | S1 | 01 | R00 | ACF06 | 099 | 360 | 20001110 |  |  |  |  |  |  |  |  |  |  |  |  |  |  |  |  |
| DP1ET09501C0 |  | DT-P1 ; Ceiling Grid and Service Tile (Main TR Server & Etisalat RM) | 30d | 2012-02-02 | 2012-03-10 | DP1ET09205C0 SS+15d, DP1ET09901C0 |  |  |  |  | 2.88d | 0d | Labor General [4.87 h]; Cost |  |  | DP1TR09501C0 | DT | C | P1 | ET | CE | 095 | 01 | BILL 5 | B05 | S1 | 01 | R00 | ACF06 | 095 | 336 | 1327 |  |  |  |  |  |  |  |  |  |  |  |  |  |  |  | 1 |
| DP1ET09903C0 |  | DT-P1 ; Wall - Final Paint (Main TR Server & Etisalat RM) | 18d | 2012-02-02 | 2012-02-25 | DP1ET09901C0 |  |  |  |  | 81.88d | 79d | Labor General [2 h]; Cost |  |  | DP1TR09903C0 | DT | C | P1 | ET | PA | 099 | 03 | BILL 5 | B05 | S1 | 02 | R00 | ACF06 | 099 | 361 | 1312 |  |  |  |  |  |  |  |  |  |  |  |  |  |  |  |  |
| DP1ET01006C0 |  | DT-P1 ; 2nd, Ceiling Inspection by Consultants (Main TR Server & Etisalat RM) | 12d | 2012-03-10 | 2012-03-24 | DP1ET23009C0, DP1ET23011C0, DP1ET23013C0, DP1ET26007C0, DP1ET09501C0 |  |  |  |  | 14.88d | 12d | Labor General [1.2 h]; Cost |  |  | DP1TR01006C0 | DT | C | P1 | ET | ME | 010 | 06 | BILL 5 | B05 | S1 | CI | R00 | ACF07 | 010 |  |  |  |  |  | MEP |  |  |  |  |  |  |  | 2n |  |  |  |  |
| DP1ET08105C0 |  | DT-P1 ; Doors (Main TR Server & Etisalat RM) | 42d | 2012-03-10 | 2012-04-28 | DP1ET08101C0, DP1ET09901C0, DP1ET09601C0 |  |  |  |  | 21.88d | 0d | ASSORTED DOORS [85 h]; Cost |  |  | DP1TR08105C0 | DT | C | P1 | ET | DO | 081 | 05 | BILL 5 | B05 | S1 | DR | R00 | ACF06 | 081 | 317 | 1325 |  |  |  |  |  |  |  |  |  |  |  |  |  |  | 08 |  |
| DP1ET09601C0 |  | DT-P1 ; Floor Finishes (Main TR Server & Etisalat RM) | 0d | 2012-03-10 | 2012-03-10 | DP1ET09501C0 |  |  |  |  | 21.88d | 0d | Cost |  |  | DP1TR09601C0 | DT | C | P1 | ET | FF | 096 | 01 | BILL 5 | B05 | S1 | 01 | R00 | ACF06 | FF | 359 | 20001120 |  |  |  |  |  |  |  |  |  |  |  |  |  |  |  |  |
| DP1ET09905C0 |  | DT-P1 ; Ceiling Prime & 1st coat (Main TR Server & Etisalat RM) | 18d | 2012-03-10 | 2012-03-31 | DP1ET09501C0 |  |  |  |  | 39.88d | 25d | Labor General [2 h]; Cost |  |  | DP1TR09905C0 | DT | C | P1 | ET | PA | 099 | 05 | BILL 5 | B05 | S1 | 01 | R00 | ACF06 | 099 | 362 | 1313 |  |  |  |  |  |  |  |  |  |  |  |  |  |  |  |  |
| DP1ET21115C0 |  | DT-P1 ; 2nd Fix, Gaseous Fire Suppression (Main TR Server & Etisalat RM) | 24d | 2012-03-10 | 2012-04-07 | DP1ET09501C0 |  |  |  |  | 2.88d | 0d | MECHANICAL [12560.4 h]; Cost |  |  | DP1TR21115C0 | DT | C | P1 | ET | ME | 211 | 15 | BILL 5 | B05 | S1 | 2F | R00 | ACF07 | 211 | 411 | 20001130 |  |  |  | MEP |  |  |  |  |  |  |  | 2n |  |  |  |  |
| DP1ET23003C0 |  | DT-P1 ; Final Fix, Inst of Grilles & Diffusers (Main TR Server & Etisalat RM) | 9d | 2012-03-10 | 2012-03-20 | DP1ET09501C0 |  |  |  |  | 48.88d | 46d | MECHANICAL [2560.8 h]; Cost |  |  | DP1TR23003C0 | DT | C | P1 | ET | ME | 230 | 03 | BILL 5 | B05 | S1 | FF | R00 | ACF07 | 230 |  |  |  |  |  | MEP |  |  |  |  |  |  |  | FF |  |  |  |  |
| DP1ET23023C0 |  | DT-P1 ; 2nd Fix, Flexible ducts (Main TR Server & Etisalat RM) | 24d | 2012-03-10 | 2012-04-07 | DP1ET09205C0, DP1ET09501C0 |  |  |  |  | 2.88d | 0d | MECHANICAL [274.8 h]; Cost |  |  | DP1TR23023C0 | DT | C | P1 | ET | ME | 230 | 23 | BILL 5 | B05 | S1 | 2F | R00 | ACF07 | 230 | 412 | 20001140 |  |  |  | MEP |  |  |  |  |  |  |  | 2n |  |  |  |  |
| DP1ET23074C0 |  | DT-P1 ; Final Fix, Grilles, panels & diffusers (Main TR Server & Etisalat RM) | 9d | 2012-03-10 | 2012-03-20 | DP1ET09501C0, DP1ET09501C0 FF |  |  |  |  | 48.88d | 46d | MECHANICAL [2560.8 h]; Cost |  |  | DP1TR23074C0 | DT | C | P1 | ET | ME | 230 | 74 | BILL 5 | B05 | S1 | FF | R00 | ACF07 | 230 | 419 | 20001160 |  |  |  | MEP |  |  |  |  |  |  |  | FF |  |  |  |  |
| DP1ET26015C0 |  | DT-P1 ; Final Fix, Inst of Ceiling rose (Main TR Server & Etisalat RM) | 9d | 2012-03-10 | 2012-03-20 | DP1ET09501C0 |  |  |  |  | 41.88d | 0d | ELECTRICAL [67.2 h]; Cost |  |  | DP1TR26015C0 | DT | C | P1 | ET | ME | 260 | 15 | BILL 5 | B05 | S1 | FF | R00 | ACF07 | 260 |  |  |  |  |  | MEP |  |  |  |  |  |  |  | FF |  |  |  |  |
| DP1ET26076C0 |  | DT-P1 ; Final Fix, Lighting fittings (Main TR Server & Etisalat RM) | 9d | 2012-03-10 | 2012-03-20 | DP1ET09501C0 |  |  |  |  | 41.88d | 0d | ELECTRICAL [6626.4 h]; Cost |  |  | DP1TR26076C0 | DT | C | P1 | ET | ME | 260 | 76 | BILL 5 | B05 | S1 | FF | R00 | ACF07 | 260 | 420 | 20001170 |  |  |  | MEP |  |  |  |  |  |  |  | FF |  |  |  |  |
| DP1ET27030C0 |  | DT-P1 ; Final Fix, Inst of ELV device (Detector/Speaker) (Main TR Server & Etisalat RM) | 9d | 2012-03-10 | 2012-03-20 | DP1ET09501C0 |  |  |  |  | 48.88d | 46d | ELECTRICAL [2152.8 h]; Cost |  |  | DP1TR27030C0 | DT | C | P1 | ET | ME | 270 | 30 | BILL 5 | B05 | S1 | FF | R00 | ACF07 | 270 |  |  |  |  |  | MEP |  |  |  |  |  |  |  | FF |  |  |  |  |
| DP1ET26013C0 |  | DT-P1 ; Final Fix, Termination & Gladding of Cables (Main TR Server & Etisalat RM) | 9d | 2012-03-18 | 2012-03-28 | DP1ET09501C0, DP1ET26076C0 SS+7d |  |  |  |  | 41.88d | 39d | ELECTRICAL [368.4 h]; Cost |  |  | DP1TR26013C0 | DT | C | P1 | ET | ME | 260 | 13 | BILL 5 | B05 | S1 | FF | R00 | ACF07 | 260 |  |  |  |  |  | MEP |  |  |  |  |  |  |  | FF |  |  |  |  |
| DP1ET26019C0 |  | DT-P1 ; Final Fix, Inst of Light fittings (Main TR Server & Etisalat RM) | 9d | 2012-03-18 | 2012-03-28 | DP1ET09501C0, DP1ET26015C0 SS+7d |  |  |  |  | 41.88d | 39d | ELECTRICAL [6626.4 h]; Cost |  |  | DP1TR26019C0 | DT | C | P1 | ET | ME | 260 | 19 | BILL 5 | B05 | S1 | FF | R00 | ACF07 | 260 |  |  |  |  |  | MEP |  |  |  |  |  |  |  | FF |  |  |  |  |
| DP1ET09503C0 |  | DT-P1 ; Ceiling closure (Main TR Server & Etisalat RM) | 19d | 2012-04-07 | 2012-04-29 | DAFOA09505C1 FF, DP1ET01006C0, DP1ET21115C0, DP1ET26005C0, DP1ET26007C0, DP1ET26026C0, DP1ET23023C0, DP1ET26027C0 |  |  |  |  | 2.88d | 0d | Labor General [0.2 h]; Cost |  |  | DP1TR09503C0 | DT | C | P1 | ET | CE | 095 | 03 | BILL 5 | B05 | S1 | 02 | R00 | ACF06 | 095 | 337 | 20001080 |  |  |  |  |  |  |  |  |  |  |  |  |  |  |  |  |
| DP1ET08709C0 |  | DT-P1 ; Ironmongery (Main TR Server & Etisalat RM) | 6d | 2012-04-28 | 2012-05-05 | DP1ET08105C0 |  |  |  |  | 21.88d | 19d | Labor General [1 h]; Cost |  |  | DP1TR08709C0 | DT | C | P1 | ET | DO | 087 | 09 | BILL 5 | B05 | S1 | IM | R00 | ACF06 | 087 | 322 | 20001100 |  |  |  |  |  |  |  |  |  |  |  |  |  |  | 08 |  |
| DP1ET09907C0 |  | DT-P1 ; Ceiling - Final paint (Main TR Server & Etisalat RM) | 12d | 2012-04-29 | 2012-05-13 | DP1ET09905C0, DP1ET09503C0 |  |  |  |  | 14.88d | 12d | Labor General [2 h]; Cost |  |  | DP1TR09907C0 | DT | C | P1 | ET | PA | 099 | 07 | BILL 5 | B05 | S1 | 02 | R00 | ACF06 | 099 | 363 | 1314 |  |  |  |  |  |  |  |  |  |  |  |  |  |  |  |  |
| DP1ET26017C0 |  | DT-P1 ; Final Fix, Inst of Switch/Sockets (Main TR Server & Etisalat RM) | 12d | 2012-04-29 | 2012-05-13 | DP1ET09901C0, DP1ET09503C0 |  |  |  |  | 2.88d | 0d | ELECTRICAL [610.8 h]; Cost |  |  | DP1TR26017C0 | DT | C | P1 | ET | ME | 260 | 17 | BILL 5 | B05 | S1 | FF | R00 | ACF07 | 260 |  |  |  |  |  | MEP |  |  |  |  |  |  |  | FF |  |  |  |  |

| ID | WBS | Activity | Duration | Start | Finish | Predecessors | Complete | Remaining | Planned start | Planned finish | Total float | Free float | Resources | Cost | Actual cost | change id | CCAD BUILDING(SET) | CCAD PHASE(SET) | CCAD FLOOR(SET) | CCAD ZONE(SET) | CCAD WORK(SET) | CCAD SECTION(SET) | CCAD SERIAL No.(SET) | CCAD CBS(SET) | CCAD BILL(SET) | CCAD HANDOVER(SET) | CCAD TAG(SET) | CCAD REV(SET) | CCADACF (SET) | CCAD SSCF | user_number8 | user_integer1 | user_integer2 | user_number7 | Change Order # | NEW ACTIVITY ID | RENZ % COMPLETE | Claimed This Month | P_811 | P_711 | CCAD CSA | Act Selector % | CCAD SUB ZONE MEP(SET) | July2011 Target% Complete | PERCENT COMPLETE | CCAD MEQ | U% | CCAD DIVISION(SET) | R3 Finish |
| --- | --- | --- | --- | --- | --- | --- | --- | --- | --- | --- | --- | --- | --- | --- | --- | --- | --- | --- | --- | --- | --- | --- | --- | --- | --- | --- | --- | --- | --- | --- | --- | --- | --- | --- | --- | --- | --- | --- | --- | --- | --- | --- | --- | --- | --- | --- | --- | --- | --- |
|  | 10 | **Precommissioning Tesing & snagging (Main TR Server & Etisalat Room)** |  | 2012-05-13 | 2012-06-26 |  |  |  |  |  |  |  |  |  |  |  |  |  |  |  |  |  |  |  |  |  |  |  |  |  |  |  |  |  |  |  |  |  |  |  |  |  |  |  |  |  |  |  |  |
| DP1TS01807C0 |  | DT-P1 ; MEP de-snag, FIREM sign-off | 12d | 2012-05-13 | 2012-05-27 | DP1ET26017C0, DP1ET23074C0, DP1ET23003C0, DP1ET26076C0, DP1ET26013C0, DP1ET26015C0, DP1ET26019C0, DP1ET27030C0 |  |  |  |  | 2.88d | 0d | TESTING & COMMISSIONING [1275 h]; Cost |  |  | DP1TS01801C0 | DT | C | P1 | TS | SC | 018 | 01 | BILL 5 | B05 | S1 | 01 | R00 | ACF07 | 018 |  |  |  |  |  |  |  |  |  |  |  |  |  |  |  |  |  |  |  |
| DP1TS01812C0 |  | DT-P1 ; Touch-up & Clean / JV inspection /CIR /De-snag | 18.02d | 2012-05-27 | 2012-06-18 | DP1ET08709C0, DP1ET09601C0, DP1ET09903C0, DP1ET09907C0, DP1TS01807C0, DP1ET09503C0 |  |  |  |  | 2.88d | 0d | TESTING & COMMISSIONING [213 h]; Cost |  |  | DP1TS01802C0 | DT | C | P1 | TS | SC | 018 | 02 | BILL 5 | B05 | S1 | 02 | R00 | ACF07 | 018 |  |  |  |  |  |  |  |  |  |  |  |  |  |  |  |  |  |  |  |
| DP1TS01817C0 |  | DT-P1 ; Consultant's final de-snag inspection | 7d | 2012-06-18 | 2012-06-26 | DP1TS01812C0 |  |  |  |  | 2.88d | 0d | Labor General [1 h]; Cost |  |  | DP1TS01803C0 | DT | C | P1 | TS | SC | 018 | 03 | BILL 5 | B05 | S1 | 03 | R00 | ACF07 | 018 |  |  |  |  |  |  |  |  |  |  |  |  |  |  |  |  |  |  |  |
|  | 06 | **Corridor, Public area (Lobby , Royal Entry)** |  | 2011-02-19 | 2013-01-09 |  |  |  |  |  |  |  |  |  |  |  |  |  |  |  |  |  |  |  |  |  |  |  |  |  |  |  |  |  |  |  |  |  |  |  |  |  |  |  |  |  |  |  |  |
| DP1PA09201C0 |  | DT-P1 ; Metal Studs (Public Area) | 90d | 2011-02-19 A | 2011-10-27 | DP1PA23001C0 SS+12d | 74% | 23.4d | 2011-05-25 | 2011-09-10 | 2.88d | 0d | PARTITIONS [3262 h]; PARTITIONS - Metal Studs [619 m]; Cost |  |  | DP1PA09201C0 | DT | C | P1 | PA | PT | 092 | 01 | BILL 5 | B05 | S1 | 1F | R00 | ACF06 | 092 | 0 | 0 | 0 | 0 | 313 | 944 | 60 | 10905.1 | 70 | 65 | GP | PMS |  |  |  |  |  |  |  |
| DP1PA21111C0 |  | DT-P1 ; 1st Fix, Inst of Sprinkler main pipe (Public Area) | 45d | 2011-02-19 A | 2011-10-05 | DP1PA22005C0 SS+12d, DP1PA23001C0, DP1S107807C0, DP1S207807C0, DP1S307807C0 | 90% | 4.5d | 2011-05-03 | 2011-06-25 | 110.5d | 0d | MECHANICAL [981.6 h]; Cost [53543.7 AED] | 53,543.69 | 48,189.32 | DP1PA21111C0 | DT | C | P1 | PA | ME | 211 | 11 | BILL 5 | B05 | S1 | 1F | R00 | ACF04 | 211 |  |  |  |  |  |  | 85 | 9321.15 |  |  | MEP | M1F | 1S |  |  |  |  |  |  |
| DP1PA22005C0 |  | DT-P1 ; 1st Fix, Inst of Water supply pipe (ceiling) (Public Area) | 200d | 2011-02-19 A | 2011-10-23 | DP1PA22019C0 SS+10d, DP1PA23001C0, DP1S107807C0, DP1S207807C0, DP1S307807C0 | 90% | 20d | 2011-04-19 | 2011-12-18 | 95.5d | 0d | PLUMBING [4896 h]; Cost [264473 AED] | 264,473.49 | 238,026.14 | DP1PA22005C0 | DT | C | P1 | PA | ME | 220 | 05 | BILL 5 | B05 | S1 | 1F | R00 | ACF04 | 220 |  |  |  |  |  |  | 45 | 15338.85 | 90 | 75 | MEP | M1F | 1S | 75 |  |  |  |  |  |
| DP1PA22019C0 |  | DT-P1 ; 1st Fix, Inst of Drainage pipe (ceiling) (Public Area) | 63d | 2011-02-19 A | 2011-10-01 | DP1PA23001C0, DP1PA27010C0 SS+14d, DP1S107807C0, DP1S207807C0, DP1S307807C0 | 100% | 0d | 2011-04-07 | 2011-06-20 | 95.5d | 0d | PLUMBING [1173.6 h]; Cost [61888.2 AED] | 61,888.15 | 55,699.34 | DP1PA22019C0 | DT | C | P1 | PA | ME | 220 | 19 | BILL 5 | B05 | S1 | 1F | R00 | ACF04 | 220 |  |  |  |  |  |  | 100 |  |  |  | MEP | M1F | 1S |  |  |  |  |  |  |
| DP1PA23001C0 |  | DT-P1 ; 1st Fix, Inst. of Supports for MEP (Public Area) | 28d | 2011-02-19 A | 2011-10-01 | DP1S107807C0 SS, DP1S207807C0 SS, DP1S307807C0 SS | 100% | 0d | 2011-02-01 | 2011-03-06 | 2.88d | 0d | MECHANICAL [1338 h]; Cost [75432.9 AED] | 75,432.94 | 67,889.64 | DP1PA23001C0 | DT | C | P1 | PA | ME | 230 | 01 | BILL 5 | B05 | S1 | 1F | R00 | ACF04 | 230 |  |  |  |  |  |  | 100 |  |  |  | MEP | M1F | 1S |  |  |  |  |  |  |
| DP1PA26001C0 |  | DT-P1 ; 1st Fix, Inst of Trunking/Conduiting (Public Area) | 63d | 2011-02-19 A | 2011-10-26 | DP1PA23001C0, DP1S107807C0, DP1S207807C0, DP1S307807C0 | 65% | 22.05d | 2011-03-06 | 2011-05-18 | 50.4d | 0d | ELECTRICAL [824.4 h]; Cost [42423.2 AED] | 42,423.24 | 27,575.11 | DP1PA26001C0 | DT | C | P1 | PA | ME | 260 | 01 | BILL 5 | B05 | S1 | 1F | R00 | ACF04 | 260 |  |  |  |  |  |  | 35 | 27492.98 | 100 | 80 | MEP | M1F | 1S | 95 |  |  |  |  |  |
| DP1PA26013C0 |  | DT-P1 ; 1st Fix, Inst of Cable Tray (Public Area) | 100d | 2011-02-19 A | 2011-11-03 | DP1PA23001C0, DP1PA27010C0 SS+12d, DP1S107807C0, DP1S207807C0, DP1S307807C0 | 70% | 30d | 2011-04-05 | 2011-08-01 | 50.4d | 0d | ELECTRICAL [430.8 h]; Cost [23263.3 AED] | 23,263.34 | 16,284.34 | DP1PA26013C0 | DT | C | P1 | PA | ME | 260 | 13 | BILL 5 | B05 | S1 | 1F | R00 | ACF04 | 260 |  |  |  |  |  |  | 50 | 10800.95 | 98 | 80 | MEP | M1F | 1S | 95 | 70 |  |  |  |  |
| DP1PA27010C0 |  | DT-P1 ; 1st Fix, Inst of Trunking for ELV system (Public Area) | 66d | 2011-02-19 A | 2011-11-19 | DP1PA23001C0, DP1PA26001C0 SS+14d, DP1S107807C0, DP1S207807C0, DP1S307807C0 | 40% | 39.6d | 2011-03-22 | 2011-06-07 | 50.4d | 0d | ELECTRICAL [1689.6 h]; Cost [88597.9 AED] | 88,597.89 | 35,439.16 | DP1PA27010C0 | DT | C | P1 | PA | ME | 270 | 10 | BILL 5 | B05 | S1 | 1F | R00 | ACF04 | 270 |  |  |  |  |  |  | 35 | 56531.14 | 98 | 80 | MEP | M1F | 1S | 95 | 40 |  |  |  |  |
| DP1PA23023C0 |  | DT-P1 ; 1st Fix, Inst of Main Ducting (Public Area) | 250d | 2011-02-20 A | 2011-10-15 | DP1PA23001C0, DP1PA23017C0 SS+7d, DP1S107807C0, DP1S207807C0, DP1S307807C0 | 95% | 12.5d | 2011-04-28 | 2012-02-26 | 127d | 0d | MECHANICAL [11402.4 h]; Cost [622619 AED] | 622,619.08 | 591,488.13 | DP1PA23023C0 | DT | C | P1 | PA | ME | 230 | 23 | BILL 5 | B05 | S1 | 1F | R00 | ACF04 | 230 |  |  |  |  |  |  | 80 | 72218.7 |  |  | MEP | M1F | 1S | 95 |  |  |  |  |  |
| DP1PA21117C0 |  | DT-P1 ; 1st Fix, Inst of Sprinkler branch pipe (Public Area) | 62d | 2011-03-25 A | 2011-11-03 | DP1PA09201C0, DP1PA21111C0, DP1S107807C0, DP1S207807C0, DP1S307807C0 | 90% | 6.2d | 2011-05-29 | 2011-08-10 | 172.9d | 153.1d | MECHANICAL [1441.2 h]; Cost [78749.8 AED] | 78,749.79 | 70,874.81 | DP1PA21117C0 | DT | C | P1 | PA | ME | 211 | 17 | BILL 5 | B05 | S1 | 1F | R00 | ACF04 | 211 |  |  |  |  |  |  | 90 | 9129.13 |  |  | MEP | M1F | 1S |  |  |  |  |  |  |
| DP1PA09203C0 |  | DT-P1 ; Partitions 1st face (Public Area) | 90d | 2011-04-07 A | 2011-12-21 | DP1PA09201C0 SS+12d, DP1PA23017C0 FF, DP1PA26013C0 | 61% | 35.1d | 2011-04-13 | 2011-07-27 | 50.4d | 30.6d | PARTITIONS [619 m]; PARTITIONS [2563 h]; Cost |  |  | DP1PA09203C0 | DT | C | P1 | PA | PT | 092 | 03 | BILL 5 | B05 | S1 | 2F | R00 | ACF06 | 092 | 0 | 0 | 0 | 0 | 314 | 945 | 15 | 15267.15 | 45 | 25 | GP | P1F |  |  |  |  |  |  |  |
| DP1PA23017C0 |  | DT-P1 ; 1st Fix, Inst of CHW pipe (Public Area) | 250d | 2011-04-09 A | 2011-10-05 | DP1PA21111C0 SS+12d, DP1PA23001C0, DP1S107807C0, DP1S207807C0, DP1S307807C0 | 98% | 5d | 2011-04-20 | 2012-02-18 | 110.5d | 0d | MECHANICAL [6325.2 h]; Cost [345418 AED] | 345,418.28 | 338,509.92 | DP1PA23017C0 | DT | C | P1 | PA | ME | 230 | 17 | BILL 5 | B05 | S1 | 1F | R00 | ACF04 | 230 |  |  |  |  |  |  | 35 | 100163 | 98 | 85 | MEP | M1F | 1S | 65 |  |  |  |  |  |
| DP1PA22011C0 |  | DT-P1 ; 2nd Fix, Drainage/Water pipe (wall) (Public Area) | 90d | 2011-04-12 A | 2012-01-08 | DP1PA09201C0, DAFCI09203R02 FS+65d | 60% | 36d | 2011-04-09 | 2011-07-23 | 29.5d | 9.7d | PLUMBING [1173.6 h]; Cost [61888.2 AED] | 61,888.15 | 37,132.89 | DP1PA22011C0 | DT | C | P1 | PA | ME | 220 | 11 | BILL 5 | B05 | S1 | 2F | R00 | ACF07 | 220 |  |  |  |  |  |  | 50 |  | 60 | 50 | MEP |  | 2n | 75 |  |  |  |  |  |
| DP1PA23015C0 |  | DT-P1 ; 2nd Fix, Insulation of CHW pipe & Duct (Public Area) | 120d | 2011-04-19 A | 2011-12-05 | DP1PA23009C0, DP1PA23017C0, DP1PA23023C0 | 80% | 24d | 2011-07-23 | 2011-12-18 | 112d | 92.2d | MECHANICAL [5311.2 h]; Cost [286617 AED] | 286,617.06 | 229,293.65 | DP1PA23015C0 | DT | C | P1 | PA | ME | 230 | 15 | BILL 5 | B05 | S1 | 2F | R00 | ACF07 | 230 | 0 | 0 | 0 | 0 |  |  | 45 |  | 75 | 60 | MEP |  | 2n | 80 |  |  |  |  |  |
| DP1PA40302C0 |  | DT-P1 ; 2nd Fix, Pneumatic tube (Public Area) | 250d | 2011-05-15 A | 2011-11-14 | DP1PA09201C0 | 95% | 12.5d | 2011-05-31 | 2012-03-28 | 73.6d | 53.8d | MECHANICAL [5653.2 h]; Cost [291897 AED] | 291,897.23 | 277,302.36 | C03E140302C0 | DT | C | P1 | PA | ME | 403 | 02 | BILL 5 | B05 | S1 | 2F | R00 | ACF07 | 403 |  |  |  |  |  |  | 50 | 118510.53 | 95 | 85 | MEP |  | 2n | 85 |  |  |  |  |  |
| DP1PA26009C0 |  | DT-P1 ; 2nd Fix, Inst of Wall conduites (Public Area) | 78d | 2011-05-31 A | 2012-01-19 | DP1PA09201C0 | 15% | 66.3d | 2011-05-31 | 2011-09-01 | 19.8d | 0d | ELECTRICAL [824.4 h]; Cost [42423.2 AED] | 42,423.24 | 6,363.49 | DP1PA26009C0 | DT | C | P1 | PA | ME | 260 | 09 | BILL 5 | B05 | S1 | 2F | R00 | ACF07 | 260 |  |  |  |  |  |  |  |  | 50 | 10 | MEP |  | 2n | 25 | 15 |  |  |  |  |
| DP1PA23009C0 |  | DT-P1 ; 2nd Fix, Inst of VAV'S CHW connection (Public Area) | 90d | 2011-06-07 A | 2011-11-01 | DP1PA23017C0 | 75% | 22.5d | 2011-07-04 | 2011-10-19 | 112d | 0d | MECHANICAL [1684.8 h]; Cost [91006.1 AED] | 91,006.06 | 68,254.54 | DP1PA23009C0 | DT | C | P1 | PA | ME | 230 | 09 | BILL 5 | B05 | S1 | 2F | R00 | ACF07 | 230 | 0 | 0 | 0 | 0 |  |  |  | 21640.94 | 60 | 25 | MEP |  | 2n | 25 |  |  |  |  |  |
| DP1PA23008C0 |  | DT-P1 ; 1st Fix, Inst of VCD's/FD's (Public Area) | 120d | 2011-06-16 A | 2011-11-15 | DP1PA23023C0, DP1S107807C0, DP1S207807C0, DP1S307807C0 | 80% | 24d | 2011-06-16 | 2011-11-10 | 166d | 146.2d | MECHANICAL [4312.8 h]; Cost [232964 AED] | 232,964.23 | 186,371.39 | DP1PA23008C0 | DT | C | P1 | PA | ME | 230 | 08 | BILL 5 | B05 | S1 | 1F | R00 | ACF04 | 230 | 0 | 0 | 0 | 0 |  |  |  | 83001.83 | 75 | 60 | MEP | M1F | 1S | 85 |  |  |  |  |  |
| DP1PA23011C0 |  | DT-P1 ; 2nd Fix, Inst of Equipment (FCU,FAN) (Public Area) | 76d | 2011-08-02 A | 2012-05-08 | DP1PA09205C0 | 49% | 39d | 2012-05-26 | 2012-08-26 | 19.8d | 0d | MECHANICAL [1588.8 h]; Cost [361645 AED] | 361,645.02 | 180,822.51 | DP1PA23011C0 | DT | C | P1 | PA | ME | 230 | 11 | BILL 5 | B05 | S1 | 2F | R00 | ACF04 | 230 |  |  |  |  |  |  |  |  | 50 | 0 | MEP |  | 2n |  |  | H |  |  |  |
| DP1PA08103C0 |  | DT-P1 ; Door Frames (Public Area) | 42d | 2011-09-05 A | 2011-12-11 | DP1PA09201C0, GNHE08101C0 | 20% | 33.6d | 2011-10-03 | 2011-11-23 | 106.5d | 86.7d | ASSORTED DOORS [311 h]; Cost |  |  | DP1PA08103C0 | DT | C | P1 | PA | DO | 081 | 03 | BILL 5 | B05 | S1 | DF | R00 | ACF06 | 081 |  |  |  |  | 316 | 947 |  |  |  |  |  |  |  |  |  |  | 10 | 08 |  |
| DP1PA27001C0 |  | DT-P1 ; 1st Fix, Wiring/ Cabling work (Public Area) | 36d | 2011-11-19 | 2012-01-03 | DP1PA26001C0, DP1PA26013C0, DP1PA27010C0, DP1S107807C0, DP1S207807C0, DP1S307807C0 |  |  |  |  | 87.9d | 68.1d | ELECTRICAL [436.8 h]; Cost |  |  | DP1PA27001C0 | DT | C | P1 | PA | ME | 270 | 01 | BILL 5 | B05 | S1 | 1F | R00 | ACF04 | 270 |  |  |  |  |  |  | 30 |  | 55 | 50 | MEP | M1F | 1S | 65 | 0 |  |  |  |  |
| DP1PA01005C0 |  | DT-P1 ; 2nd, Wall Inspection by Consultant (Public Area) | 6d | 2012-01-19 | 2012-01-26 | DP1PA22011C0, DP1PA26009C0, DP1PA40302C0 |  |  |  |  | 19.8d | 0d | Labor General [1.2 h]; Cost |  |  | DP1PA01005C0 | DT | C | P1 | PA | ME | 010 | 05 | BILL 5 | B05 | S1 | WI | R00 | ACF07 | 010 |  |  |  |  |  |  |  |  |  |  | MEP |  | 2n | 25 |  |  |  |  |  |
| DP1PA09205C0 |  | DT-P1 ; Partitions Closing (Public Area) | 48d | 2012-01-26 | 2012-03-24 | DAFOA09206C1 FF, DP1PA01005C0, DP1PA09203C0, DP1PA22005C0, DP1PA22019C0, DAFCI09203R02 FS+65d, DP1PA08103C0 FF, DP1PA23015C0 FF, DP1PA27001C0 FF, DP1PA23009C0 FF, DP1PA23023C0 FF |  |  |  |  | 19.8d | 0d | PARTITIONS [619 m]; PARTITIONS [3273 h]; Cost |  |  | DP1PA09205C0 | DT | C | P1 | PA | PT | 092 | 05 | BILL 5 | B05 | S1 | FF | R00 | ACF06 | 092 |  |  |  |  | 315 | 946 |  |  |  |  | GP | P2F |  |  |  |  |  |  |  |
| DP1PA09901C0 |  | DT-P1 ; Wall Prime & 1st coat (Public Area) | 36d | 2012-03-24 | 2012-05-05 | DP1CO04003C0, DP1PA09205C0, DP1CO04455C0 FF |  |  |  |  | 22.8d | 0d | WALL PAINT [382 h]; WALL PAINT [476 m2]; Cost |  |  | DP1PA09901C0 | DT | C | P1 | PA | PA | 099 | 01 | BILL 5 | B05 | S1 | 01 | R00 | ACF06 | 099 |  |  |  |  | 328 | 956 |  |  |  |  |  |  |  |  |  |  |  |  |  |
| DP1PA26005C0 |  | DT-P1 ; 2nd Fix, Wiring for Power/Lighting/Emergency (Public Area) | 36d | 2012-03-24 | 2012-05-05 | DP1PA09205C0 |  |  |  |  | 70.8d | 0d | ELECTRICAL [436.8 h]; Cost |  |  | DP1PA26005C0 | DT | C | P1 | PA | ME | 260 | 05 | BILL 5 | B05 | S1 | 2F | R00 | ACF07 | 260 |  |  |  |  |  |  |  |  |  |  | MEP |  | 2n |  |  |  |  |  |  |
| DP1PA26007C0 |  | DT-P1 ; 2nd Fix, Cable Pulling (Public Area) | 42d | 2012-03-24 | 2012-05-12 | DP1PA09201C0 SS+6d, DP1PA09203C0, DP1PA09205C0 |  |  |  |  | 148.8d | 0d | ELECTRICAL [6634.8 h]; Cost |  |  | DP1PA26007C0 | DT | C | P1 | PA | ME | 260 | 07 | BILL 5 | B05 | S1 | 2F | R00 | ACF07 | 260 |  |  |  |  |  |  |  |  |  |  | MEP |  | 2n | 25 |  |  |  |  |  |
| DP1PA26053C0 |  | DT-P1 ; 2nd Fix, Wiring / Cabling (Public Area) | 66d | 2012-03-24 | 2012-06-09 | DP1PA26009C0, DP1PA09205C0 |  |  |  |  | 124.8d | 105d | ELECTRICAL [436.8 h]; Cost |  |  | DP1PA26053C0 | DT | C | P1 | PA | ME | 260 | 53 | BILL 5 | B05 | S1 | 2F | R00 | ACF07 | 260 |  |  |  |  | 389 | 977 |  |  | 40 | 0 | MEP |  | 2n |  | 0 |  |  |  |  |
| DP1PA05501C0 |  | DT-P1 ; Handrails & balustrade (Public Area) | 35.5d | 2012-05-05 | 2012-06-17 | DP1PA09901C0, DAFT205509C0, DAFT805509C0, DAFT905509C0, DAFT1005509C0, DAFT505509C0 |  |  |  |  | 83.3d | 51.5d | SECONDARY STEEL [105 h]; Cost |  |  | DP1PA05501C0 | DT | C | P1 | PA | SW | 055 | 01 | BILL 5 | B05 | S1 | 01 | R00 | ACF03 | a |  |  |  |  |  |  |  |  |  |  |  |  |  |  |  |  |  |  |  |
| DP1PA26011C0 |  | DT-P1 ; 2nd Fix, Inst of Equipment (DB) (Public Area) | 48d | 2012-05-05 | 2012-07-01 | DP1PA09205C0, DP1PA26005C0 |  |  |  |  | 70.8d | 39d | ELECTRICAL [4054.8 h]; Cost |  |  | DP1PA26011C0 | DT | C | P1 | PA | ME | 260 | 11 | BILL 5 | B05 | S1 | 2F | R00 | ACF04 | 260 |  |  |  |  |  |  |  |  |  |  | MEP |  | 2n |  |  | E |  |  |  |
| DP1PA26015C0 |  | DT-P1 ; Final Fix, Termination & Gladding of Cables (Public Area) | 48d | 2012-05-05 | 2012-07-01 | DP1PA26005C0 |  |  |  |  | 100.8d | 81d | ELECTRICAL [368.4 h]; Cost |  |  | DP1PA26015C0 | DT | C | P1 | PA | ME | 260 | 15 | BILL 5 | B05 | S1 | FF | R00 | ACF07 | 260 |  |  |  |  |  |  |  |  |  |  | MEP |  | FF |  |  |  |  |  |  |
| DP1PA09501C0 |  | DT-P1 ; Ceiling Grid and Service Tile (Public Area) | 36d | 2012-05-08 | 2012-06-20 | DP1PA09205C0 SS+15d, DP1PA21117C0, DP1PA23008C0, DP1PA23009C0, DP1PA23015C0, DP1PA27001C0, DP1PA23011C0, DP1PA09901C0 |  |  |  |  | 19.8d | 0d | CEILING GRID FOR GYPSUM [2439.87 h]; CEILING GRID FOR GYPSUM [208.75 m2]; Cost |  |  | DP1PA09501C0 | DT | C | P1 | PA | CE | 095 | 01 | BILL 5 | B05 | S1 | 01 | R00 | ACF06 | 095 |  |  |  |  | 323 | 952 |  |  |  |  |  |  |  |  |  |  |  |  |  |
| DP1PA09601C0 |  | DT-P1 ; Flooring (Rubber & etc) (Public Area) | 48d | 2012-06-20 | 2012-08-15 | DP1PA09901C0, DAFCI22001R02 FS+72d, DP1PA09501C0, DP1PA05501C0 FF |  |  |  |  | 31.8d | 0d | RUBBER FLOOR [224 h]; RUBBER FLOOR [545 m2]; Cost |  |  | DP1PA09601C0 | DT | C | P1 | PA | FF | 096 | 01 | BILL 5 | B05 | S1 | 03 | R00 | ACF06 | RF |  |  |  |  | 326 | 955 |  |  |  |  |  |  |  |  |  |  |  |  | R3 |
| DP1PA09602C0 |  | DT-P1 ; Flooring (Stone) (Public Area) | 42d | 2012-06-20 | 2012-08-08 | DP1PA09901C0, DAFCI22001R02 FS+72d, DP1PA09501C0 |  |  |  |  | 37.8d | 6d | STONE FLOOR [603 m2]; STONE FLOOR [544 h]; Cost |  |  | DP1PA09601C0 | DT | C | P1 | PA | FF | 096 | 01 | BILL 5 | B05 | S1 | 09 | R00 | ACF06 | ST |  |  |  |  | 326 | 955 |  |  |  |  |  |  |  |  |  |  |  |  | R3 |
| DP1PA09905C0 |  | DT-P1 ; Ceiling Prime & 1st coat (Public Area) | 36d | 2012-06-20 | 2012-08-01 | DP1PA09501C0 |  |  |  |  | 89.3d | 0d | ASSORTED CEILING FINISH [89 h]; Cost |  |  | DP1PA09905C0 | DT | C | P1 | PA | PA | 099 | 05 | BILL 5 | B05 | S1 | 01 | R00 | ACF06 | 099 |  |  |  |  | 330 | 958 |  |  |  |  |  |  |  |  |  |  |  |  |  |
| DP1PA21115C0 |  | DT-P1 ; 2nd Fix, Inst of Sprinkler droppers (Public Area) | 36d | 2012-06-20 | 2012-08-01 | DP1PA09501C0 |  |  |  |  | 25.8d | 0d | MECHANICAL [2067.6 h]; Cost |  |  | DP1PA21115C0 | DT | C | P1 | PA | ME | 211 | 15 | BILL 5 | B05 | S1 | 2F | R00 | ACF07 | 211 |  |  |  |  |  |  |  |  |  |  | MEP |  | 2n |  |  |  |  |  |  |
| DP1PA23021C0 |  | DT-P1 ; 2nd Fix, Inst of Flexible Duct & Plenum boxes (Public Area) | 36d | 2012-06-20 | 2012-08-01 | DP1PA09205C0, DP1PA09501C0 |  |  |  |  | 43.8d | 0d | MECHANICAL [274.8 h]; Cost |  |  | DP1PA23021C0 | DT | C | P1 | PA | ME | 230 | 21 | BILL 5 | B05 | S1 | 2F | R00 | ACF07 | 230 |  |  |  |  |  |  |  |  |  |  | MEP |  | 2n |  |  |  |  |  |  |
| DP1PA26017C0 |  | DT-P1 ; Final Fix, Inst of Ceiling rose (Public Area) | 48d | 2012-06-20 | 2012-08-15 | DP1PA09501C0 |  |  |  |  | 25.8d | 0d | ELECTRICAL [67.2 h]; Cost |  |  | DP1PA26017C0 | DT | C | P1 | PA | ME | 260 | 17 | BILL 5 | B05 | S1 | FF | R00 | ACF07 | 260 |  |  |  |  |  |  |  |  |  |  | MEP |  | FF |  |  |  |  |  |  |
| DP1PA27002C0 |  | DT-P1 ; 2nd Fix, Wiring Droppers (Public Area) | 36d | 2012-06-20 | 2012-08-01 | DP1PA09501C0 |  |  |  |  | 19.8d | 0d | ELECTRICAL [436.8 h]; Cost |  |  | DP1PA27002C0 | DT | C | P1 | PA | ME | 270 | 02 | BILL 5 | B05 | S1 | 2F | R00 | ACF07 | 270 |  |  |  |  |  |  |  |  |  |  | MEP |  | 2n |  |  |  |  |  |  |
| DP1PA27020C0 |  | DT-P1 ; 2nd Fix, Inst of ELV Equipment (Panels) (Public Area) | 42d | 2012-06-20 | 2012-08-08 | DP1PA09205C0, DP1PA09501C0 |  |  |  |  | 37.8d | 6d | ELECTRICAL [1723.2 h]; Cost |  |  | DP1PA27020C0 | DT | C | P1 | PA | ME | 270 | 20 | BILL 5 | B05 | S1 | 2F | R00 | ACF04 | 270 |  |  |  |  |  |  |  |  |  |  | MEP |  | 2n |  |  | E |  |  |  |
| DP1PA40303C0 |  | DT-P1 ; Final Fix, Pneumatic Station (Public Area) | 72d | 2012-06-20 | 2012-09-15 | DP1PA09501C0 |  |  |  |  | 37.8d | 18d | MECHANICAL [5653.2 h]; Cost |  |  | C03E140303C0 | DT | C | P1 | PA | ME | 403 | 03 | BILL 5 | B05 | S1 | FF | R00 | ACF07 | 403 |  |  |  |  |  |  |  |  |  |  | MEP |  | FF |  |  |  |  |  |  |
| DP1PA23019C0 |  | DT-P1 ; Final Fix, Inst of Grilles & Diffusers (Public Area) | 60d | 2012-06-27 | 2012-09-08 | DP1PA09501C0, DP1PA23021C0 SS+6d |  |  |  |  | 43.8d | 24d | MECHANICAL [2560.8 h]; Cost |  |  | DP1PA23019C0 | DT | C | P1 | PA | ME | 230 | 19 | BILL 5 | B05 | S1 | FF | R00 | ACF07 | 230 |  |  |  |  |  |  |  |  |  |  | MEP |  | FF |  |  |  |  |  |  |
| DP1PA26003C0 |  | DT-P1 ; Final Fix, Inst of Light fittings (Public Area) | 78d | 2012-06-27 | 2012-09-29 | DP1PA09501C0, DP1PA26017C0 SS+6d |  |  |  |  | 25.8d | 6d | ELECTRICAL [6626.4 h]; Cost |  |  | DP1PA26003C0 | DT | C | P1 | PA | ME | 260 | 03 | BILL 5 | B05 | S1 | FF | R00 | ACF07 | 260 |  |  |  |  |  |  |  |  |  |  | MEP |  | FF |  |  |  |  |  |  |
| DP1PA09903C0 |  | DT-P1 ; Wall Final Paint (Public Area) | 36d | 2012-08-01 | 2012-09-15 | DP1PA09901C0, DP1PA09905C0 |  |  |  |  | 89.3d | 48d | WALL PAINT [206 h]; WALL PAINT [256 m2]; Cost |  |  | DP1PA09903C0 | DT | C | P1 | PA | PA | 099 | 03 | BILL 5 | B05 | S1 | 02 | R00 | ACF06 | 099 |  |  |  |  | 329 | 957 |  |  |  |  |  |  |  |  |  |  |  |  |  |
| DP1PA21113C0 |  | DT-P1 ; Final Fix, Inst of Sprinklers head/ Extinguisher (Public Area) | 48d | 2012-08-01 | 2012-09-29 | DP1PA09501C0, DP1PA21115C0, DP1PA21115C0 FF |  |  |  |  | 25.8d | 6d | MECHANICAL [403.2 h]; Cost |  |  | DP1PA21113C0 | DT | C | P1 | PA | ME | 211 | 13 | BILL 5 | B05 | S1 | FF | R00 | ACF07 | 211 |  |  |  |  |  |  |  |  |  |  | MEP |  | FF |  |  |  |  |  |  |
| DP1PA27030C0 |  | DT-P1 ; Final Fix, Inst of ELV device (Detector/Speaker) (Public Area) | 54d | 2012-08-01 | 2012-10-06 | DP1PA09501C0, DP1PA27002C0, DZ9GZ28063R2 FF, DV09GZ28064R2 FF |  |  |  |  | 19.8d | 0d | ELECTRICAL [2152.8 h]; Cost |  |  | DP1PA27030C0 | DT | C | P1 | PA | ME | 270 | 30 | BILL 5 | B05 | S1 | FF | R00 | ACF07 | 270 |  |  |  |  |  |  |  |  |  |  | MEP |  | FF |  |  |  |  |  |  |
| DP1PA08107C0 |  | DT-P1 ; Doors (Public Area) | 42d | 2012-08-15 | 2012-10-06 | DP1PA08103C0, DP1PA09901C0, DP1PA09601C0, DP1PA09602C0 |  |  |  |  | 52.3d | 0d | ASSORTED DOORS [500 h]; ASSORTED DOORS [50 no]; Cost |  |  | DP1PA08107C0 | DT | C | P1 | PA | DO | 081 | 07 | BILL 5 | B05 | S1 | DR | R00 | ACF06 | 081 |  |  |  |  | 317 | 948 |  |  |  |  |  |  |  |  |  |  |  | 08 |  |
| DP1PA09701C0 |  | DT-P1 ; Wall finishes (ST, WD, WC) (Public Area) | 36d | 2012-08-15 | 2012-09-29 | DP1PA26011C0, DP1PA27020C0, TVT0114211C0, TVT0214211C0, TVT1214211C0, TVT3114211C0, TVT3214255C0, TVT3314245C0, DP1PA09602C0, DP1PA09601C0 |  |  |  |  | 31.8d | 0d | ASSORTED WALL FINISH [653 h]; ASSORTED WALL FINISH [749 m2]; Cost |  |  | DP1PA09701C0 | DT | C | P1 | PA | WF | 097 | 01 | BILL 5 | B05 | S1 | 01 | R00 | ACF06 | 097 |  |  |  |  | 105 | 1002 |  |  |  |  |  |  |  |  |  |  |  |  |  |
| DP1PA11001C0 |  | DT-P1 ; Wall Protection (WP, CG, WG, FCG) (Public Area) | 24d | 2012-09-29 | 2012-10-29 | DP1PA09701C0, DP1PA09903C0 SS |  |  |  |  | 53.3d | 33.5d | FF&E [1025 h]; Cost |  |  | DP1PA11001C0 | DT | C | P1 | PA | WF | 110 | 01 | BILL 5 | B05 | S1 | 03 | R00 | ACF08 | b |  |  |  |  | 326 | 1001 |  |  |  |  |  |  |  |  |  |  |  |  |  |
| DP1PA11009C0 |  | DT-P1 ; Signage (Public Area) | 16d | 2012-09-29 | 2012-10-17 | DP1PA09701C0 |  |  |  |  | 61.3d | 41.5d | SIGNAGES [357 h]; SIGNAGES [357.24 no]; Cost |  |  | DP1PA11009C0 | DT | C | P1 | PA | SA | 110 | 09 | BILL 5 | B05 | S1 | 09 | R00 | ACF08 | c |  |  |  |  | 322 | 951 |  |  |  |  |  |  |  |  |  |  |  | 08 |  |
| DP1PA01006C0 |  | DT-P1 ; 2nd, Ceiling Inspection by Consultants (Public Area) | 6d | 2012-10-06 | 2012-10-13 | DP1PA21115C0, DP1PA23009C0, DP1PA23011C0, DP1PA23015C0, DP1PA27002C0, DP1PA09501C0, DP1PA21113C0, DP1PA23019C0, DP1PA26003C0, DP1PA26017C0, DP1PA27030C0, DP1PA40303C0, DP1PA26015C0 |  |  |  |  | 19.8d | 0d | Labor General [1.2 h]; Cost |  |  | DP1PA01006C0 | DT | C | P1 | PA | ME | 010 | 06 | BILL 5 | B05 | S1 | CI | R00 | ACF07 | 010 |  |  |  |  |  |  |  |  |  |  | MEP |  | 2n |  |  |  |  |  |  |
| DP1PA08709C0 |  | DT-P1 ; Ironmongery (Public Area) | 19d | 2012-10-06 | 2012-10-30 | DP1PA08107C0 |  |  |  |  | 52.3d | 32.5d | IRONMONGERY [280 h]; IRONMONGERY [28 no]; Cost |  |  | DP1PA08709C0 | DT | C | P1 | PA | DO | 087 | 09 | BILL 5 | B05 | S1 | IM | R00 | ACF06 | 087 |  |  |  |  | 322 | 951 |  |  |  |  |  |  |  |  |  |  |  | 08 |  |
| DP1PA09503C0 |  | DT-P1 ; Ceiling closure - ACT/Gypsum (Public Area) | 15.5d | 2012-10-13 | 2012-11-03 | DAFOA09505C1 FF, DP1PA01006C0, DP1PA21115C0, DP1PA26005C0, DP1PA27001C0, DP1PA27002C0, DP1PA09701C0, DP1PA23021C0, DP1PA26053C0, DP1PA26007C0 |  |  |  |  | 19.8d | 0d | ASSORTED CEILING FINISH [494.46 h]; CEILING GYPSUM [68.47 h]; ASSORTED CEILING FINISH [804 m2]; CEILING GYPSUM [209 m2]; Cost |  |  | DP1PA09503C0 | DT | C | P1 | PA | CE | 095 | 03 | BILL 5 | B05 | S1 | 02 | R00 | ACF06 | 095 |  |  |  |  | 324 | 953 |  |  |  |  |  |  |  |  |  |  |  |  |  |
| DP1PA09907C0 |  | DT-P1 ; Ceiling Final paint (Public Area) | 18d | 2012-11-03 | 2012-11-25 | DP1PA09601C0, DP1PA09905C0, DP1PA09602C0, DP1PA09503C0 |  |  |  |  | 31.8d | 12d | ASSORTED CEILING FINISH [47 h]; Cost |  |  | DP1PA09907C0 | DT | C | P1 | PA | PA | 099 | 07 | BILL 5 | B05 | S1 | 02 | R00 | ACF06 | 099 |  |  |  |  | 331 | 959 |  |  |  |  |  |  |  |  |  |  |  |  |  |
| DP1PA26019C0 |  | DT-P1 ; Final Fix, Inst of Switch/Sockets (Public Area) | 18d | 2012-11-03 | 2012-11-25 | DP1PA09901C0, DP1PA09503C0 |  |  |  |  | 19.8d | 0d | ELECTRICAL [610.8 h]; Cost |  |  | DP1PA26019C0 | DT | C | P1 | PA | ME | 260 | 19 | BILL 5 | B05 | S1 | FF | R00 | ACF07 | 260 |  |  |  |  |  |  |  |  |  |  | MEP |  | FF |  |  |  |  |  |  |

| ID | WBS | Activity | Type | Duration | Start | Finish | Predecessors | Complete | Remaining | Planned start | Planned finish | Total float | Free float | Resources | change id | CCAD BUILDING(SET) | CCAD PHASE(SET) | CCAD FLOOR(SET) | CCAD ZONE(SET) | CCAD WORK(SET) | CCAD SECTION(SET) | CCAD SERIAL No.(SET) | CCAD CBS(SET) | CCAD BILL(SET) | CCAD HANDOVER(SET) | CCAD TAG(SET) | CCAD REV(SET) | CCADACF (SET) | CCAD SSCF | RENZ % COMPLETE | Actual Cost | Phase | Area/ Department | Grids | Are | Weight & Nos | Process | Levels | CCAD CSA | user_integer1 | P_811 | P_711 | N_% | user_number8 | user_integer2 | user_number7 |
| --- | --- | --- | --- | --- | --- | --- | --- | --- | --- | --- | --- | --- | --- | --- | --- | --- | --- | --- | --- | --- | --- | --- | --- | --- | --- | --- | --- | --- | --- | --- | --- | --- | --- | --- | --- | --- | --- | --- | --- | --- | --- | --- | --- | --- | --- | --- |
|  | 10 | **Precommissioning Tesing & snagging (Lobby , Royal Entry)** |  |  | 2012-11-25 | 2013-01-09 |  |  |  |  |  |  |  |  |  |  |  |  |  |  |  |  |  |  |  |  |  |  |  |  |  |  |  |  |  |  |  |  |  |  |  |  |  |  |  |  |
| DP1TS01808C0 |  | DT-P1 ; MEP de-snag, FIREM sign-off |  | 12d | 2012-11-25 | 2012-12-10 | DP1PA26015C0, DP1PA21113C0, DP1PA23019C0, DP1PA26017C0, DP1PA26003C0, DP1PA27030C0, DP1PA40303C0, DP1PA26019C0 |  |  |  |  | 19.8d | 0d | TESTING & COMMISSIONING [1275 h]; Cost | DP1TS01801C0 | DT | C | P1 | TS | SC | 018 | 01 | BILL 5 | B05 | S1 | 01 | R00 | ACF07 | 018 |  |  |  |  |  |  |  |  |  |  |  |  |  |  |  |  |  |
| DP1TS01813C0 |  | DT-P1 ; Touch-up & Clean / JV inspection /CIR /De-snag |  | 18d | 2012-12-10 | 2012-12-31 | DP1CO04401C0, DP1PA05501C0, DP1PA08709C0, DP1PA09601C0, DP1PA09701C0, DP1PA09903C0, DP1PA09907C0, DP1PA11001C0, DP1PA11009C0, DP1TS01808C0, DP1CO04407C10 FF, DP1PA09602C0, DP1PA09503C0 |  |  |  |  | 19.8d | 0d | TESTING & COMMISSIONING [213 h]; Cost | DP1TS01802C0 | DT | C | P1 | TS | SC | 018 | 02 | BILL 5 | B05 | S1 | 02 | R00 | ACF07 | 018 |  |  |  |  |  |  |  |  |  |  |  |  |  |  |  |  |  |
| DP1TS01818C0 |  | DT-P1 ; Consultant's final de-snag inspection |  | 7d | 2012-12-31 | 2013-01-09 | DP1TS01813C0 |  |  |  |  | 19.8d | 5.7d | Labor General [1 h]; Cost | DP1TS01803C0 | DT | C | P1 | TS | SC | 018 | 03 | BILL 5 | B05 | S1 | 03 | R00 | ACF07 | 018 |  |  |  |  |  |  |  |  |  |  |  |  |  |  |  |  |  |
|  | GL | **Ground Level** |  |  | 2010-08-19 | 2012-11-11 |  |  |  |  |  |  |  |  |  |  |  |  |  |  |  |  |  |  |  |  |  |  |  |  |  |  |  |  |  |  |  |  |  |  |  |  |  |  |  |  |
|  | 01 | **Structure & Envelopment** |  |  | 2010-08-19 | 2012-10-22 |  |  |  |  |  |  |  |  |  |  |  |  |  |  |  |  |  |  |  |  |  |  |  |  |  |  |  |  |  |  |  |  |  |  |  |  |  |  |  |  |
| DGLSA03301C0 |  | DT-GL ; Corewall concrete (Zone SA) - El 106 |  | 10d | 2010-08-19 A | 2010-08-26 A | DP1SA03301C0 | 100% |  | 2010-08-09 | 2010-08-21 |  |  | CONCRETE [11016 h]; CONCRETE [277 m3]; Cost | DGLSA03301C0 | DT | C | GL | SA | CT | 033 | 01 | BILL 5 | B05 | S2 | 04 | R00 | ACF03 | 033 | 100 |  |  |  |  |  |  |  |  |  |  |  |  |  |  |  |  |
| DGLS105101C0 |  | DT-GL ; Erection of Structural Steel of Ground FLR (Zone S1) |  | 9.25d | 2010-08-28 A | 2010-10-26 A | DP1S105103C0 | 100% |  | 2010-09-18 | 2010-09-28 |  |  | STRUCTURAL STEEL [19314 h]; STRUCTURAL STEEL [755 T(Fe)]; Cost | DGLS105101C0 | DT | C | GL | S1 | ST | 051 | 01 | BILL 5 | B05 | S2 | 01 | R00 | ACF03 | 051 | 100 | 3968618 | Z2 | DT | P03 | O | A3 | EREC | 1FLR | ST |  |  |  |  |  |  |  |
| DGLS105103C0 |  | DT-GL ; Alignment & welding of Ground FLR (Zone S1) |  | 3d | 2010-08-29 A | 2010-10-30 A | DGLS105101C0 | 100% |  | 2010-09-29 | 2010-10-03 |  |  | STRUCTURAL STEEL [1056 h]; Cost | DGLS105103C0 | DT | C | GL | S1 | ST | 051 | 03 | BILL 5 | B05 | S2 | 02 | R00 | ACF03 | 051 | 100 | 440958 | Z2 | DT | P03 | O | A3 | EREC | 1FLR | ST |  |  |  |  |  |  |  |
| DGLSB03303C0 |  | DT-GL ; Corewall concrete (Zone SB) - El 106 |  | 6d | 2010-09-04 A | 2010-09-08 A | DP1SB03303C0 | 100% |  | 2010-08-17 | 2010-08-24 |  |  | CONCRETE [11056 h]; CONCRETE [278 m3]; Cost | DGLSB03303C0 | DT | C | GL | SB | CT | 033 | 03 | BILL 5 | B05 | S2 | 04 | R00 | ACF03 | 033 | 100 |  |  |  |  |  |  |  |  |  |  |  |  |  |  |  |  |
| DGLS205101C0 |  | DT-GL ; Erection of Structural Steel of Ground FLR (Zone S2) |  | 9.26d | 2010-09-05 A | 2010-10-25 A | DP1S205103C0 | 100% |  | 2010-09-18 | 2010-09-28 |  |  | STRUCTURAL STEEL [9846 h]; STRUCTURAL STEEL [385 T(Fe)]; Cost | DGLS205101C0 | DT | C | GL | S2 | ST | 051 | 01 | BILL 5 | B05 | S2 | 01 | R00 | ACF03 | 051 | 100 | 4928536 | Z2 | DT | P03 | O | A3 | EREC | 1FLR | ST |  |  |  |  |  |  |  |
| DGLS205103C0 |  | DT-GL ; Alignment & welding of Ground FLR (Zone S2) |  | 4.99d | 2010-09-06 A | 2010-10-30 A | DGLS205101C0 | 100% |  | 2010-09-29 | 2010-10-04 |  |  | STRUCTURAL STEEL [1312 h]; Cost | DGLS205103C0 | DT | C | GL | S2 | ST | 051 | 03 | BILL 5 | B05 | S2 | 02 | R00 | ACF03 | 051 | 100 | 547615 | Z2 | DT | P03 | O | A3 | EREC | 1FLR | ST |  |  |  |  |  |  |  |
| DGLS305101C0 |  | DT-GL ; Erection of Structural Steel of Ground FLR (Zone S3) |  | 9.25d | 2010-10-04 A | 2010-12-03 A | DP1S305103C0 | 100% |  | 2010-09-23 | 2010-10-04 |  |  | STRUCTURAL STEEL [5345 h]; STRUCTURAL STEEL [209 T(Fe)]; Cost | DGLS305101C0 | DT | C | GL | S3 | ST | 051 | 01 | BILL 5 | B05 | S2 | 01 | R00 | ACF03 | 051 | 100 | 5429986 | Z2 | DT | P03 | O | A3 | EREC | 1FLR | ST | 5778 |  |  |  |  |  |  |
| DGLS305103C0 |  | DT-GL ; Alignment & welding of Ground FLR (Zone S3) |  | 5d | 2010-10-15 A | 2010-12-06 A | DGLS305101C0 | 100% |  | 2010-10-05 | 2010-10-11 |  |  | STRUCTURAL STEEL [1448 h]; Cost | DGLS305103C0 | DT | C | GL | S3 | ST | 051 | 03 | BILL 5 | B05 | S2 | 02 | R00 | ACF03 | 051 | 100 | 603332 | Z2 | DT | P03 | O | A3 | EREC | 1FLR | ST |  |  |  |  |  |  |  |
| DGLS105305C0 |  | DT-GL ; Metal Decking Ground FLR (Zone S1) |  | 15.02d | 2010-11-04 A | 2010-11-27 A | D01S105101C0, DGLS105103C0 | 100% |  | 2010-11-02 | 2010-11-23 |  |  | METAL DECKING [2504 h]; METAL DECKING [3166 m2]; Cost | DGLS105305C0 | DT | C | GL | S1 | ST | 053 | 05 | BILL 5 | B05 | S2 | 03 | R00 | ACF03 | 053 | 100 | 373605 | Z2 | DT | P03 | O | A3 | MDEC | 1FLR | ST |  |  |  |  |  |  |  |
| DGLS205305C0 |  | DT-GL ; Metal Decking Ground FLR (Zone S2) |  | 20d | 2010-11-10 A | 2010-12-03 A | D01S205101C0, DGLS205103C0 | 100% |  | 2010-11-07 | 2010-12-04 |  |  | METAL DECKING [3104 h]; METAL DECKING [3932 m2]; Cost | DGLS205305C0 | DT | C | GL | S2 | ST | 053 | 05 | BILL 5 | B05 | S2 | 03 | R00 | ACF03 | 053 | 100 | 463971 | Z2 | DT | P03 | O | A3 | MDEC | 1FLR | ST |  |  |  |  |  |  |  |
| DGLS305305C0 |  | DT-GL ; Metal Decking Ground FLR (Zone S3) |  | 20d | 2010-11-27 A | 2010-12-20 A | D01S305101C0, DGLS305103C0 | 100% |  | 2011-01-02 | 2011-01-24 |  |  | METAL DECKING [3422 h]; METAL DECKING [4332 m2]; Cost | DGLS305305C0 | DT | C | GL | S3 | ST | 053 | 05 | BILL 5 | B05 | S2 | 03 | R00 | ACF03 | 053 | 100 | 511177.83 | Z2 | DT | P03 | O | A3 | MDEC | 1FLR | ST |  |  |  |  |  |  |  |
| DGLS103399C0 |  | DT-GL ; Concrete on Metal Decking Ground FLR (Zone S1) |  | 10d | 2010-12-11 A | 2011-02-02 A | DGLS105305C0 | 100% |  | 2011-01-09 | 2011-01-20 |  |  | CONCRETE [14320 h]; CONCRETE [360 m3]; Cost | DGLS105335C0 | DT | C | GL | S1 | CT | 033 | 99 | BILL 5 | B05 | S2 | 08 | R00 | ACF03 | 033 | 100 |  | Z2 | DT | P03 | O | A3 | MDEC | 1FLR |  |  |  |  |  |  |  |  |
| DGLS203399C0 |  | DT-GL ; Concrete on Metal Decking Ground FLR (Zone S2) |  | 10d | 2010-12-11 A | 2011-02-09 A | DGLS205305C0 | 100% |  | 2011-01-12 | 2011-01-24 |  |  | CONCRETE [21384 h]; CONCRETE [538 m3]; Cost | DGLS205335C0 | DT | C | GL | S2 | CT | 033 | 99 | BILL 5 | B05 | S2 | 08 | R00 | ACF03 | 033 | 100 |  | Z2 | DT | P03 | O | A3 | MDEC | 1FLR |  |  |  |  |  |  |  |  |
| DGLS303399C0 |  | DT-GL ; Concrete on Metal Decking Ground FLR (Zone S3) |  | 11d | 2010-12-16 A | 2011-04-04 A | DGLS305305C0 | 100% |  | 2011-02-08 | 2011-02-21 |  |  | CONCRETE [23496 h]; CONCRETE [591 m3]; Cost | DGLS305335C0 | DT | C | GL | S3 | CT | 033 | 99 | BILL 5 | B05 | S2 | 08 | R00 | ACF03 | 033 | 100 |  | Z2 | DT | P03 | O | A3 | MDEC | 1FLR |  |  |  |  |  |  |  |  |
| DGLS207807C0 |  | DT-GL ; Cementitious Fire Proofing works Ground FLR (Zone S2) |  | 15d | 2011-02-08 A | 2011-03-08 A | D01S203399C0 | 100% |  | 2011-02-03 | 2011-02-21 |  |  | CEMENTITIOUS FIREPROOFING [2719 h]; CEMENTITIOUS FIREPROOFING [5438 m2]; Cost | DGLS207807C0 | DT | C | GL | S2 | ST | 078 | 07 | BILL 5 | B05 | S2 | 04 | R00 | ACF03 | 078 | 100 |  | Z2 | DT | P03 | O | A3 | FIRE | 1FLR | ST |  |  |  |  |  |  |  |
| DGLS307807C0 |  | DT-GL ; Cementitious Fire Proofing works Ground FLR (Zone S3) |  | 14d | 2011-02-09 A | 2011-05-24 A | D01S303399C0 | 100% |  | 2011-02-02 | 2011-02-17 |  |  | CEMENTITIOUS FIREPROOFING [2996 h]; CEMENTITIOUS FIREPROOFING [5992 m2]; Cost | DGLS307807C0 | DT | C | GL | S3 | ST | 078 | 07 | BILL 5 | B05 | S2 | 04 | R00 | ACF03 | 078 | 100 |  | Z2 | DT | P03 | O | A3 | FIRE | 1FLR | ST |  |  |  |  |  |  |  |
| DGLS107807C0 |  | DT-GL ; Cementitious Fire Proofing works Ground FLR (Zone S1) |  | 13d | 2011-02-12 A | 2011-03-05 A | D01S103399C0 | 100% |  | 2011-02-01 | 2011-02-16 |  |  | CEMENTITIOUS FIREPROOFING [2190 h]; CEMENTITIOUS FIREPROOFING [4379 m2]; Cost | DGLS107807C0 | DT | C | GL | S1 | ST | 078 | 07 | BILL 5 | B05 | S2 | 04 | R00 | ACF03 | 078 | 100 |  | Z2 | DT | P03 | O | A3 | FIRE | 1FLR | ST |  |  |  |  |  |  |  |
| DGLGN01204C0 |  | DT-GL ; Temporary Enclosure | level of effort | 214.25d | 2011-03-24 A | 2012-10-06 | DGLTF09203C0 SS, DGLMR09203C0 SS, DGLPA09203C0 SS, DGLPR09203C0 SS, DGLTR09203C0 SS |  | 308.05d | 2011-03-24 | 2011-12-08 | 150.95d | 0d | Labor General [1077.8 h]; Cost |  | DT | C | GL | GEN | FA | GEN |  |  | B05 |  | TE | R00 | ACF05 | 010 |  |  |  |  |  |  |  |  |  | FA |  | 6.99 | 0 |  |  |  |  |
| DGLCO04413C0 |  | DT-GL ; M1 Bracket (Common Zone) |  | 30d | 2011-04-02 A | 2011-04-26 A | DGLS107807C0, DGLS207807C0, DGLS307807C0 | 100% |  | 2011-03-03 | 2011-04-07 |  |  | FACADE METAL PANEL 1 [62.7 h]; Cost | DGLCO04413C0 | DT | C | GL | CO | FA | 044 | 13 | BILL 5 | B05 | S2 | FM1 | R00 | ACF05 | 044 | 100 |  |  |  |  |  |  |  |  | FA |  |  |  | 100 |  |  |  |
| DGLCO04403C0 |  | DT-GL ; C4 Bracket (Common Zone) |  | 30d | 2011-04-04 A | 2011-04-19 A | DGLS107807C0, DGLS207807C0, DGLS307807C0 | 100% |  | 2011-03-03 | 2011-04-07 |  |  | FACADE CURTAIN WALL 4 [886.1 h]; Cost | DGLCO04403C0 | DT | C | GL | CO | FA | 044 | 03 | BILL 5 | B05 | S2 | FC4 | R00 | ACF05 | 044 | 100 |  |  |  |  |  |  |  |  | FA |  |  |  | 100 |  |  |  |
| DGLCO04415C0 |  | DT-GL ; M1 External Partition (Common Zone) |  | 18d | 2011-04-19 A | 2011-07-31 A | DGLCO04413C0, DP1CO04415C0 SS+15d, DGLGN01204C0 FF | 100% |  | 2011-05-17 | 2011-06-07 |  |  | PARTITIONS [169.37 m]; PARTITIONS [843.6 h]; Cost | DGLCO04415C0 | DT | C | GL | CO | FA | 044 | 15 | BILL 5 | B05 | S2 | FM1 | R00 | ACF05 | 044 | 70 |  |  |  |  |  |  |  |  | FA |  |  |  | 100 |  |  |  |
| DGLCO04405C0 |  | DT-GL ; C4 Transom & Mullion (Common Zone) |  | 142d | 2011-04-20 A | 2011-09-29 A | DGLCO04403C0 | 100% |  | 2011-05-28 | 2011-11-16 |  |  | FACADE CURTAIN WALL 4 [3544.6 h]; Cost | DGLCO04405C0 | DT | C | GL | CO | FA | 044 | 05 | BILL 5 | B05 | S2 | FC4 | R00 | ACF05 | 044 | 70 |  |  |  |  |  |  |  |  | FA |  | 80 | 70 | 70 |  |  |  |
| DGLCO04407C0 |  | DT-GL ; C4 Glazing (Common Zone) |  | 22d | 2011-07-10 A | 2011-10-05 | DGLCO04405C0, DGLGN01204C0 FF, DP1CO04407C0 SS | 80% | 4.4d | 2011-08-21 | 2011-09-17 | 229.6d | 213.7d | FACADE CURTAIN WALL 4 [994.9 h]; FACADE CURTAIN WALL 4 [363 m2]; FACADE TOTAL QUANTITY m2 [363 m2]; Cost | DGLCO04407C0 | DT | C | GL | CO | FA | 044 | 07 | BILL 5 | B05 | S2 | FC4 | R00 | ACF05 | 044 |  |  |  |  |  |  |  |  |  | FA | 0 |  |  | 30 | 0 | 0 | 0 |
| DGLCO04417C0 |  | DT-GL ; M1 Metal Panel (Common Zone) |  | 24d | 2011-10-01 | 2011-10-27 | DGLCO04415C0 |  |  |  |  | 350d | 222.05d | FACADE METAL PANEL 1 [4103.7 h]; FACADE METAL PANEL 1 [1500 m2]; FACADE TOTAL QUANTITY m2 [1500 m2]; Cost | DGLCO04417C0 | DT | C | GL | CO | FA | 044 | 17 | BILL 5 | B05 | S2 | FM1 | R00 | ACF05 | 044 |  |  |  |  |  |  |  |  |  | FA |  |  |  | 50 |  |  |  |
| DGLCO04433C0 |  | DT-GL ; C3 Bracket (Common Zone & Canyon) |  | 42d | 2012-01-05 | 2012-02-23 | DGLS107807C0, DGLS207807C0, DGLS307807C0, CGLCO04403C03 SS |  |  |  |  | 105d | 0d | FACADE CURTAIN WALL 3 [320.3 h]; Cost | DGLCO04433C0 | DT | C | GL | CO | FA | 044 | 33 | BILL 5 | B05 | S2 | FC3 | R00 | ACF05 | 044 |  |  |  |  |  |  |  |  |  | FA |  |  |  |  |  |  |  |
| DGLCO04435C0 |  | DT-GL ; C3 Transom & Mullion (Common Zone & Canyon) |  | 48d | 2012-01-08 | 2012-03-04 | DGLCO04433C0 SS+2d, DGLCO04433C0 FF |  |  |  |  | 105d | 0d | FACADE CURTAIN WALL 3 [1280.9 h]; Cost | DGLCO04435C0 | DT | C | GL | CO | FA | 044 | 35 | BILL 5 | B05 | S2 | FC3 | R00 | ACF05 | 044 |  |  |  |  |  |  |  |  |  | FA |  |  |  |  |  |  |  |
| DGLCO04434C0 |  | DT-GL ; CA-1 Canyon atrium interior glazing (Canyon) |  | 60d | 2012-01-10 | 2012-03-20 | DGLCO04437C0 SS |  |  |  |  | 117d | 7d | Labor General [0.6 h]; Cost | DGLCO04433C0 | DT | C | GL | CO | FA | 044 | 33 | BILL 5 | B05 | S2 | CA | R00 | ACF05 | 044 |  |  |  |  |  |  |  |  |  | FA |  |  |  |  |  |  |  |
| DGLCO04437C0 |  | DT-GL ; C3 Glazing (Common Zone & Canyon) |  | 48d | 2012-01-10 | 2012-03-06 | DGLCO04435C0 SS+2d, DGLGN01204C0 FF, DGLCO04435C0 FF |  |  |  |  | 105d | 0d | FACADE CURTAIN WALL 3 [3075.7 h]; FACADE CURTAIN WALL 3 [1124 m2]; FACADE TOTAL QUANTITY m2 [1124 m2]; Cost | DGLCO04437C0 | DT | C | GL | CO | FA | 044 | 37 | BILL 5 | B05 | S2 | FC3 | R00 | ACF05 | 044 |  |  |  |  |  |  |  |  |  | FA |  |  |  |  |  |  |  |
| DGLCO04455C0 |  | DT-GL ; M1 Inner Side of External Partition (Common Zone) |  | 48d | 2012-01-23 | 2012-03-20 | DGLCO04415C0, DGLPR09205C0 SS, DGLPA09205C0 SS, DGLTF09205C0 SS |  |  |  |  | 29.15d | 18d | FACADE METAL PANEL 1 [3464.3 h]; Cost | DP3CO04415C0 | DT | C | GL | CO | FA | 044 | 15 | BILL 5 | B05 | S1 | FM1 | R00 | ACF05 | 044 |  |  |  |  |  |  |  |  |  | FA |  |  |  |  |  |  |  |
| DGLCO04401C0 |  | DT-GL ; VE Vestibule (Common Zone & Canyon) |  | 30d | 2012-02-11 | 2012-03-17 | DGLCO04435C0 FF, PGLS403392C0 FS+28d |  |  |  |  | 186.7d | 159.7d | Labor General [0.6 h]; Cost | DP3CO04403C0 | DT | C | GL | CO | FA | 044 | 03 | BILL 5 | B05 | S1 | VE | R00 | ACF05 | 044 |  |  |  |  |  |  |  |  |  | FA |  |  |  |  |  |  |  |
| DGLCO04423C0 |  | DT-GL ; S2 Bracket (Common Zone - to be S11) |  | 30d | 2012-07-25 | 2012-09-01 | DGLS107807C0, DGLS207807C0, DGLS307807C0, DP1CO04423C0 SS+6d |  |  |  |  | 150.95d | 0d | FACADE NATURAL STONE PANEL [8.3 h]; Cost | DGLCO04423C0 | DT | C | GL | CO | FA | 044 | 23 | BILL 5 | B05 | S2 | FS2 | R00 | ACF05 | 044 |  |  |  |  |  |  |  |  |  | FA |  |  |  |  |  |  |  |
| DGLCO04425C0 |  | DT-GL ; S2 External Partition (Common Zone - to be S11) |  | 30d | 2012-09-01 | 2012-10-06 | DGLCO04423C0, DGLGN01204C0 FF |  |  |  |  | 150.95d | 14.7d | PARTITIONS [5.03 m]; PARTITIONS [24.9 h]; Cost | DGLCO04425C0 | DT | C | GL | CO | FA | 044 | 25 | BILL 5 | B05 | S2 | FS2 | R00 | ACF05 | 044 |  |  |  |  |  |  |  |  |  | FA |  |  |  |  |  |  |  |
| DGLCO04427C0 |  | DT-GL ; S2 Stone Panel (Common Zone - to be S11) |  | 30d | 2012-09-17 | 2012-10-22 | DGLCO04425C0 SS, DP1CO04427C0 SS, DGLCO04425C0 FF |  |  |  |  | 136.25d | 68.17d | FACADE NATURAL STONE PANEL [87.1 h]; FACADE NATURAL STONE PANEL [32 m2]; FACADE TOTAL QUANTITY m2 [32 m2]; Cost | DGLCO04427C0 | DT | C | GL | CO | FA | 044 | 27 | BILL 5 | B05 | S2 | FS2 | R00 | ACF05 | 044 |  |  |  |  |  |  |  |  |  | FA |  |  |  |  |  |  |  |

| ID | WBS | Activity | Duration | Start | Finish | Predecessors | Complete | Remaining | Planned start | Planned finish | Total float | Free float | Resources | Cost | Actual cost | change id | RENZ % COMPLETE | CCAD BUILDING(SET) | CCAD PHASE(SET) | CCAD FLOOR(SET) | CCAD ZONE(SET) | CCAD WORK(SET) | CCAD SECTION(SET) | CCAD SERIAL No.(SET) | CCAD SUB ZONE MEP(SET) | CCAD CBS(SET) | CCAD BILL(SET) | CCAD HANDOVER(SET) | CCAD TAG(SET) | CCAD REV(SET) | CCADACF (SET) | CCAD CSA | CCAD SSCF | Act Selector % | Claimed This Month | user_number8 | user_integer1 | user_integer2 | user_number7 | Change Order # | NEW ACTIVITY ID | P_811 | P_711 | PERCENT COMPLETE | July2011 Target% Complete | CCAD DIVISION(SET) | CCAD MEQ | R3 Finish |
| --- | --- | --- | --- | --- | --- | --- | --- | --- | --- | --- | --- | --- | --- | --- | --- | --- | --- | --- | --- | --- | --- | --- | --- | --- | --- | --- | --- | --- | --- | --- | --- | --- | --- | --- | --- | --- | --- | --- | --- | --- | --- | --- | --- | --- | --- | --- | --- | --- |
|  | 02 | **Treat, Observ, Fast Track** |  | 2011-02-23 | 2012-10-24 |  |  |  |  |  |  |  |  |  |  |  |  |  |  |  |  |  |  |  |  |  |  |  |  |  |  |  |  |  |  |  |  |  |  |  |  |  |  |  |  |  |  |  |
| DGLTF23001C0 |  | DT-GL ; 1st Fix, Inst. of Supports for MEP (Treat) | 26.88d | 2011-02-23 A | 2011-10-01 | DGLS207807C0 SS | 100% | 0d | 2011-03-01 | 2011-03-31 | 24d | 0d | MECHANICAL [4696.8 h]; Cost [75432.9 AED] | 75,432.94 | 67,889.64 | DGLTF23001C0 | 100 | DT | C | GL | TF | ME | 230 | 01 | 1S | BILL 5 | B05 | S2 | 1F | R00 | ACF04 | MEP | 230 | M1F |  |  |  |  |  |  |  |  |  |  |  |  |  |  |
| DGLTF21111C0 |  | DT-GL ; 1st Fix, Inst of Sprinkler main pipe (Treat) | 44d | 2011-03-01 A | 2011-10-03 | BLZHC01563C0, BLZHC01564C0, BLZHC01570C0, BLZHC01571C0, DGLS207807C0, DGLTF22005C0 SS+14d, DGLTF23001C0 | 95% | 2.2d | 2011-05-30 | 2011-07-21 | 51d | 0d | MECHANICAL [981.6 h]; Cost [53543.7 AED] | 53,543.69 | 50,866.51 | DGLTF21111C0 | 95 | DT | C | GL | TF | ME | 211 | 11 | 1S | BILL 5 | B05 | S2 | 1F | R00 | ACF04 | MEP | 211 | M1F | 3107.05 |  |  |  |  |  |  |  |  |  |  |  |  |  |
| DGLTF21117C0 |  | DT-GL ; 1st Fix, Inst of Sprinkler branch pipe (Treat) | 63d | 2011-03-01 A | 2011-12-11 | DGLS207807C0, DGLTF09201C0, DGLTF21111C0, DGLTF05503C0 FF+18d | 95% | 3.15d | 2011-07-23 | 2011-10-06 | 117.9d | 93.9d | MECHANICAL [1441.2 h]; Cost [78749.8 AED] | 78,749.79 | 74,812.3 | DGLTF21117C0 | 90 | DT | C | GL | TF | ME | 211 | 17 | 1S | BILL 5 | B05 | S2 | 1F | R00 | ACF04 | MEP | 211 | M1F | 9129.13 |  |  |  |  |  |  |  |  |  |  |  |  |  |
| DGLTF09201C0 |  | DT-GL ; Metal Studs (Treat) | 90d | 2011-03-20 A | 2011-10-31 | DGLTF23001C0 | 71% | 26.1d | 2011-05-08 | 2011-08-21 | 24d | 0d | PARTITIONS [9440 h]; PARTITIONS - Metal Studs [1553 m]; Cost |  |  | DGLTF09201C0 | 40 | DT | C | GL | TF | PT | 092 | 01 |  | BILL 5 | B05 | S2 | 1F | R00 | ACF06 | GP | 092 | PMS | 120861.6 | 0 | 0 | 0 | 0 | 313 | 944 | 65 | 61 |  |  |  |  |  |
| DGLTF22019C0 |  | DT-GL ; 1st Fix, Inst of Drainage pipe (ceiling) (Treat) | 62d | 2011-03-24 A | 2011-10-04 | BLZHC01563C0, BLZHC01564C0, BLZHC01570C0, BLZHC01571C0, DGLS207807C0, DGLTF23001C0, DGLTF26013C0 SS+12d | 95% | 3.1d | 2011-05-05 | 2011-07-18 | 51d | 0d | PLUMBING [1173.6 h]; Cost [61888.2 AED] | 61,888.15 | 58,793.75 | DGLTF22019C0 | 95 | DT | C | GL | TF | ME | 220 | 19 | 1S | BILL 5 | B05 | S2 | 1F | R00 | ACF04 | MEP | 220 | M1F | 3675.09 |  |  |  |  |  |  |  |  |  |  |  |  |  |
| DGLTF09203C0 |  | DT-GL ; Partitions 1st face (Treat) | 60d | 2011-03-28 A | 2011-11-03 | DGLTF09201C0 SS+12d | 50% | 30d | 2011-05-22 | 2011-07-31 | 66d | 42d | PARTITIONS [1553 m]; PARTITIONS [7382 h]; Cost |  |  | DGLTF09203C0 | 10 | DT | C | GL | TF | PT | 092 | 03 |  | BILL 5 | B05 | S2 | 2F | R00 | ACF06 | GP | 092 | P1F | 76142.9 | 0 | 0 | 0 | 0 | 314 | 945 | 40 | 22 |  |  |  |  |  |
| DGLTF26001C0 |  | DT-GL ; 1st Fix, Inst of Trunking/Conduiting (Treat) | 90d | 2011-04-09 A | 2011-12-01 | DGLS207807C0, DGLTF23001C0 | 45% | 49.5d | 2011-03-22 | 2011-07-06 | 51d | 0d | ELECTRICAL [824.4 h]; Cost [42423.2 AED] | 42,423.24 | 19,090.46 | DGLTF26001C0 | 90 | DT | C | GL | TF | ME | 260 | 01 | 1S | BILL 5 | B05 | S2 | 1F | R00 | ACF04 | MEP | 260 | M1F |  |  |  |  |  |  |  |  |  | 45 | 98 |  |  |  |
| DGLTF26013C0 |  | DT-GL ; 1st Fix, Inst of Cable Tray (Treat) | 120d | 2011-04-09 A | 2011-12-14 | DGLS207807C0, DGLTF23001C0, DGLTF27010C0 SS+12d | 50% | 60d | 2011-04-21 | 2011-09-12 | 51d | 0d | ELECTRICAL [430.8 h]; Cost [23263.3 AED] | 23,263.34 | 11,631.67 | DGLTF26013C0 | 50 | DT | C | GL | TF | ME | 260 | 13 | 1S | BILL 5 | B05 | S2 | 1F | R00 | ACF04 | MEP | 260 | M1F | 12151.05 |  |  |  |  |  |  | 75 | 60 | 50 | 98 |  |  |  |
| DGLTF27010C0 |  | DT-GL ; 1st Fix, Inst of Trunking for ELV system (Treat) | 66d | 2011-04-10 A | 2011-11-28 | DGLS207807C0, DGLTF23001C0, DGLTF26001C0 SS+14d | 30% | 46.2d | 2011-04-07 | 2011-06-23 | 51d | 0d | ELECTRICAL [1689.6 h]; Cost [88597.9 AED] | 88,597.89 | 26,579.37 | DGLTF27010C0 | 50 | DT | C | GL | TF | ME | 270 | 10 | 1S | BILL 5 | B05 | S2 | 1F | R00 | ACF04 | MEP | 270 | M1F | 35974.31 |  |  |  |  |  |  | 75 | 60 | 30 | 90 |  |  |  |
| DGLTF23015C0 |  | DT-GL ; 2nd Fix, Insulation of CHW pipe & Duct (Treat) | 150d | 2011-04-11 A | 2012-02-22 | DGLTF23009C0, DGLTF23017C0, DGLTF23023C0 | 80% | 30d | 2011-09-19 | 2012-03-20 | 56.4d | 32.4d | MECHANICAL [5311.2 h]; Cost [286617 AED] | 286,617.06 | 229,293.65 | DGLTF23015C0 | 35 | DT | C | GL | TF | ME | 230 | 15 | 2n | BILL 5 | B05 | S2 | 2F | R00 | ACF07 | MEP | 230 |  | 17053.5 |  |  |  |  |  |  | 80 | 70 |  | 80 |  |  |  |
| DGLTF22005C0 |  | DT-GL ; 1st Fix, Inst of Water supply pipe (ceiling) (Treat) | 100d | 2011-04-13 A | 2011-11-13 | BLZHC01563C0, BLZHC01564C0, BLZHC01570C0, BLZHC01571C0, DGLS207807C0, DGLTF22019C0 SS+7d, DGLTF23001C0 | 65% | 35d | 2011-05-14 | 2011-09-11 | 51d | 0d | PLUMBING [4896 h]; Cost [264473 AED] | 264,473.49 | 171,907.77 | DGLTF22005C0 | 30 | DT | C | GL | TF | ME | 220 | 05 | 1S | BILL 5 | B05 | S2 | 1F | R00 | ACF04 | MEP | 220 | M1F | 15338.85 |  |  |  |  |  |  | 65 | 50 |  | 60 |  |  |  |
| DGLTF23017C0 |  | DT-GL ; 1st Fix, Inst of CHW pipe (Treat) | 200d | 2011-04-13 A | 2011-12-11 | BLZHC01563C0, BLZHC01564C0, BLZHC01570C0, BLZHC01571C0, DGLS207807C0, DGLTF21111C0 SS+14d, DGLTF23001C0, DGLTF05503C0 FF+18d | 90% | 20d | 2011-06-15 | 2012-02-15 | 56.4d | 0d | MECHANICAL [9684 h]; Cost [345418 AED] | 345,418.28 | 310,876.46 | DGLTF23017C0 | 20 | DT | C | GL | TF | ME | 230 | 17 | 1S | BILL 5 | B05 | S2 | 1F | R00 | ACF04 | MEP | 230 | M1F | 186093.6 |  |  |  |  |  |  |  |  |  | 90 |  |  |  |
| DGLTF23023C0 |  | DT-GL ; 1st Fix, Inst of Main Ducting (Treat) | 250d | 2011-04-20 A | 2011-11-30 | BLZHC01563C0, BLZHC01564C0, BLZHC01570C0, BLZHC01571C0, DGLS207807C0, DGLTF23001C0, DGLTF23017C0 SS+7d | 95% | 12.5d | 2011-06-23 | 2012-04-22 | 95.4d | 0d | MECHANICAL [14760 h]; Cost [622619 AED] | 622,619.08 | 591,488.13 | DGLTF23023C0 | 35 | DT | C | GL | TF | ME | 230 | 23 | 1S | BILL 5 | B05 | S2 | 1F | R00 | ACF04 | MEP | 230 | M1F | 518015.85 |  |  |  |  |  |  |  |  |  | 95 |  |  |  |
| DGLTF22007C0 |  | DT-GL ; 1st Fix, Inst of Medical Gas pipe (Treat) | 150d | 2011-05-09 A | 2011-11-03 | BLZHC01563C0, BLZHC01564C0, BLZHC01570C0, BLZHC01571C0, DGLS207807C0, DGLTF21111C0 SS+12d, DGLTF23001C0, MGNMI00105M0 | 80% | 30d | 2011-06-08 | 2011-12-08 | 51d | 26.1d | PLUMBING [1616.4 h]; Cost [83529.6 AED] | 83,529.57 | 66,823.66 | DGLTF22007C0 | 20 | DT | C | GL | TF | ME | 220 | 07 | 1S | BILL 5 | B05 | S2 | 1F | R00 | ACF04 | MEP | 220 | M1F | 43562.8 |  |  |  |  |  |  | 80 | 70 |  | 70 |  |  |  |
| DGLTF27001C0 |  | DT-GL ; 1st Fix, Wiring/ Cabling work (Treat) | 60d | 2011-06-07 A | 2012-02-21 | DGLS207807C0, DGLTF26001C0, DGLTF26013C0, DGLTF27010C0 | 5% | 57d | 2011-07-06 | 2011-09-17 | 57d | 33d | ELECTRICAL [436.8 h]; Cost [21894.9 AED] | 21,894.91 | 1,094.75 | DGLTF27001C0 |  | DT | C | GL | TF | ME | 270 | 01 | 1S | BILL 5 | B05 | S2 | 1F | R00 | ACF04 | MEP | 270 | M1F | 9027.43 |  |  |  |  |  |  | 50 | 35 | 5 | 35 |  |  |  |
| DGLTF22015C0 |  | DT-GL ; 2nd Fix, Medical Gas pipe (Treat) | 78d | 2011-06-08 A | 2011-12-21 | DGLTF09201C0, DGLTF22007C0 SS | 50% | 39d | 2011-07-28 | 2011-10-30 | 24.9d | 0.9d | PLUMBING [1616.4 h]; Cost [83529.6 AED] | 83,529.57 | 41,764.78 | DGLTF22015C0 |  | DT | C | GL | TF | ME | 220 | 15 | 2n | BILL 5 | B05 | S2 | 2F | R00 | ACF07 | MEP | 220 |  | 48403.11 |  |  |  |  |  |  |  |  |  | 25 |  |  |  |
| DGLTF26009C0 |  | DT-GL ; 2nd Fix, Inst of Wall conduites (Treat) | 42d | 2011-06-08 A | 2011-12-21 | DGLTF09201C0 | 5% | 39.9d | 2011-06-08 | 2011-07-28 | 24d | 0d | ELECTRICAL [2889.6 h]; Cost [42423.2 AED] | 42,423.24 | 2,121.16 | DGLTF26009C0 |  | DT | C | GL | TF | ME | 260 | 09 | 2n | BILL 5 | B05 | S2 | 2F | R00 | ACF07 | MEP | 260 |  | 18509.63 |  |  |  |  |  |  | 50 | 10 | 5 | 25 |  |  |  |
| DGLTF23009C0 |  | DT-GL ; 2nd Fix, Inst of VAV'S CHW connection (Treat) | 90d | 2011-06-15 A | 2012-01-17 | DGLTF23017C0 | 65% | 31.5d | 2011-07-20 | 2011-11-03 | 56.4d | 0d | MECHANICAL [1684.8 h]; Cost [91006.1 AED] | 91,006.06 | 59,153.94 | DGLTF23009C0 |  | DT | C | GL | TF | ME | 230 | 09 | 2n | BILL 5 | B05 | S2 | 2F | R00 | ACF07 | MEP | 230 |  | 21640.94 | 0 | 0 | 0 | 0 |  |  | 60 | 25 |  | 25 |  |  |  |
| DGLTF05503C0 |  | DT-GL ; Ceiling Support for medical equipment (Treat) | 24d | 2011-07-07 A | 2011-11-17 | DGLTF09201C0, DAFMI22002R20 FS+58d | 50% | 12d | 2011-09-21 | 2011-10-19 | 56.4d | 0d | SECONDARY STEEL [192 h]; STRUCTURAL STEEL [1 T(Fe)]; Cost |  |  | DGLTF05503C0 |  | DT | C | GL | TF | SW | 055 | 03 |  | BILL 5 | B05 | S2 | 03 | R00 | ACF03 |  | b |  |  |  |  |  |  | 335 | 962 | 50 | 10 |  |  |  |  |  |
| DGLTF23008C0 |  | DT-GL ; 1st Fix, Inst of VCD's/FD's (Treat) | 100d | 2011-07-10 A | 2012-01-07 | DGLS207807C0, DGLTF23023C0, DGLTF05503C0 FF+18d | 70% | 30d | 2011-07-17 | 2011-11-16 | 95.4d | 71.4d | MECHANICAL [7671.6 h]; Cost [232964 AED] | 232,964.23 | 163,074.96 | DGLTF23008C0 |  | DT | C | GL | TF | ME | 230 | 08 | 1S | BILL 5 | B05 | S2 | 1F | R00 | ACF04 | MEP | 230 | M1F |  |  |  |  |  |  |  | 70 | 50 |  | 85 |  |  |  |
| DGLTF22011C0 |  | DT-GL ; 2nd Fix, Drainage/Water pipe (wall) (Treat) | 90d | 2011-08-10 A | 2011-12-18 | DGLTF09201C0, DAFMI22002R20 FS+58d | 60% | 36d | 2011-12-15 | 2012-03-31 | 27.9d | 3.9d | PLUMBING [1173.6 h]; Cost [61888.2 AED] | 61,888.15 | 37,132.89 | DGLTF22011C0 |  | DT | C | GL | TF | ME | 220 | 11 | 2n | BILL 5 | B05 | S2 | 2F | R00 | ACF07 | MEP | 220 |  |  |  |  |  |  |  |  | 60 | 0 |  | 35 |  |  |  |
| DGLTF26007C0 |  | DT-GL ; 2nd Fix, Cable Pulling (Treat) | 48d | 2011-09-02 A | 2011-11-27 | DGLTF09201C0 SS+6d | 5% | 45.6d | 2011-10-31 | 2012-01-02 | 44.4d | 20.4d | ELECTRICAL [8700 h]; Cost [332625 AED] | 332,625.29 | 16,631.26 | DGLTF26007C0 |  | DT | C | GL | TF | ME | 260 | 07 | 2n | BILL 5 | B05 | S2 | 2F | R00 | ACF07 | MEP | 260 |  |  |  |  |  |  |  |  |  |  | 5 | 35 |  |  |  |
| DGLTF08103C0 |  | DT-GL ; Door Frames (Treat) | 42d | 2011-11-12 | 2012-01-02 | DGLTF09201C0 SS+14d, GNHE08101C0 FS+79d |  |  |  |  | 69d | 45d | ASSORTED DOORS [898 h]; Cost |  |  | DGLTF08103C0 |  | DT | C | GL | TF | DO | 081 | 03 |  | BILL 5 | B05 | S2 | DF | R00 | ACF06 |  | 081 |  |  |  |  |  |  | 316 | 947 |  |  |  |  | 08 |  |  |
| DGLTF05511C0 |  | DT-GL ; Wall reinforcement for MEP/Medical (Treat) | 24d | 2011-11-30 | 2011-12-28 | DGLTF09201C0, DAFMI22002R02 FS+58d |  |  |  |  | 24d | 0d | SECONDARY STEEL [82 h]; Cost |  |  | DGLTF05511C0 |  | DT | C | GL | TF | SW | 055 | 11 |  | BILL 5 | B05 | S2 | 03 | R00 | ACF03 |  | b |  |  |  |  |  |  |  |  |  |  |  |  |  |  |  |
| DGLTF01005C0 |  | DT-GL ; 2nd, Wall Inspection by Consultant (Treat) | 6d | 2011-12-22 | 2011-12-28 | DGLTF22011C0, DGLTF22015C0, DGLTF26007C0, DGLTF26009C0 |  |  |  |  | 24d | 0d | Labor General [1.2 h]; Cost |  |  | DGLTF01005C0 |  | DT | C | GL | TF | ME | 010 | 05 | 2n | BILL 5 | B05 | S2 | WI | R00 | ACF07 | MEP | 010 |  |  |  |  |  |  |  |  |  |  |  | 20 |  |  |  |
| DGLTF09205C0 |  | DT-GL ; Partitions Closing (Treat) | 48d | 2011-12-29 | 2012-02-25 | DAFOA09206C1 FF, DGLTF01005C0, DGLTF05511C0, DGLTF09203C0, DGLTF22005C0, DGLTF22019C0, DGLTF08103C0 FF, DAFMI22002R20 FS+58d |  |  |  |  | 24d | 0d | PARTITIONS [1553 m]; PARTITIONS [9458 h]; Cost |  |  | DGLTF09205C0 |  | DT | C | GL | TF | PT | 092 | 05 |  | BILL 5 | B05 | S2 | FF | R00 | ACF06 | GP | 092 | P2F |  |  |  |  |  | 315 | 946 |  |  |  |  |  |  |  |
| DGLTF07103C0 |  | DT-GL ; Waterproofing (Treat) | 12d | 2012-02-26 | 2012-03-10 | DGLTF08103C0, DGLTF09205C0 |  |  |  |  | 52d | 0d | THERMAL & MOISTURE [776 h]; THERMAL & MOISTURE [5138 m2]; Cost |  |  | DGLTF07103C0 |  | DT | C | GL | TF | FF | 071 | 03 |  | BILL 5 | B05 | S2 | 01 | R00 | ACF03 |  | 071 |  |  |  |  |  |  | 105 | 999 |  |  |  |  |  |  |  |
| DGLTF09901C0 |  | DT-GL ; Wall Prime & 1st coat (Treat) | 30d | 2012-02-26 | 2012-03-31 | DGLTF09205C0 |  |  |  |  | 24d | 0d | WALL PAINT [2283 h]; WALL PAINT [2849 m2]; Cost |  |  | DGLTF09901C0 |  | DT | C | GL | TF | PA | 099 | 01 |  | BILL 5 | B05 | S2 | 01 | R00 | ACF06 |  | 099 |  |  |  |  |  |  | 328 | 956 |  |  |  |  |  |  |  |
| DGLTF26005C0 |  | DT-GL ; 2nd Fix, Wiring for Power/Lighting/Emergency (Treat) | 36d | 2012-02-26 | 2012-04-07 | DGLTF09205C0 |  |  |  |  | 108d | 0d | ELECTRICAL [2502 h]; Cost |  |  | DGLTF26005C0 |  | DT | C | GL | TF | ME | 260 | 05 | 2n | BILL 5 | B05 | S2 | 2F | R00 | ACF07 | MEP | 260 |  |  |  |  |  |  |  |  |  |  |  |  |  |  |  |
| DGLTF26011C0 |  | DT-GL ; 2nd Fix, Inst of Equipment (DB) (Treat) | 48d | 2012-02-26 | 2012-04-21 | DGLTF09205C0 |  |  |  |  | 96d | 54d | ELECTRICAL [4545.6 h]; Cost |  |  | DGLTF26011C0 |  | DT | C | GL | TF | ME | 260 | 11 | 2n | BILL 5 | B05 | S2 | 2F | R00 | ACF04 | MEP | 260 |  |  |  |  |  |  |  |  |  |  |  |  |  | E |  |
| DGLTF26053C0 |  | DT-GL ; 2nd Fix, Wiring / Cabling (Treat) | 36d | 2012-02-26 | 2012-04-07 | DGLTF26009C0, DGLTF09203C0, DGLTF09205C0 |  |  |  |  | 138d | 114d | ELECTRICAL [2502 h]; Cost |  |  | DGLTF26053C0 |  | DT | C | GL | TF | ME | 260 | 53 | 2n | BILL 5 | B05 | S2 | 2F | R00 | ACF07 | MEP | 260 |  |  |  |  |  |  | 389 | 977 |  |  |  |  |  |  |  |
| DGLTF27020C0 |  | DT-GL ; 2nd Fix, Inst of ELV Equipment (Panels) (Treat) | 48d | 2012-02-26 | 2012-04-21 | DGLTF09205C0 |  |  |  |  | 96d | 54d | ELECTRICAL [2215.2 h]; Cost |  |  | DGLTF27020C0 |  | DT | C | GL | TF | ME | 270 | 20 | 2n | BILL 5 | B05 | S2 | 2F | R00 | ACF04 | MEP | 270 |  |  |  |  |  |  |  |  |  |  |  |  |  | E |  |
| DGLTF09305C0 |  | DT-GL ; Ceramic floor tile (Treat) | 32d | 2012-03-11 | 2012-04-16 | DGLTF07103C0 |  |  |  |  | 52d | 0d | CERAMIC FLOOR TILES [280 h]; CERAMIC FLOOR TILES [155 m2]; Cost |  |  | DGLTF09305C0 |  | DT | C | GL | TF | FF | 093 | 05 |  | BILL 5 | B05 | S2 | 02 | R00 | ACF06 |  | CT |  |  |  |  |  |  | 106 | 1000 |  |  |  |  |  |  |  |
| DGLTF05501C0 |  | DT-GL ; Handrails & balustrade (Treat) | 36d | 2012-04-01 | 2012-05-12 | DGLTF09901C0 |  |  |  |  | 60d | 36d | SECONDARY STEEL [300 h]; Cost |  |  | DGLTF05501C0 |  | DT | C | GL | TF | SW | 055 | 01 |  | BILL 5 | B05 | S2 | 01 | R00 | ACF03 |  | a |  |  |  |  |  |  |  |  |  |  |  |  |  |  |  |
| DGLTF09501C0 |  | DT-GL ; Ceiling Grid and Service Tile (Treat) | 36d | 2012-04-01 | 2012-05-12 | DGLTF05503C0, DGLTF09205C0 SS+15d, DGLTF21117C0, DGLTF23008C0, DGLTF23009C0, DGLTF23015C0, DGLTF27001C0, DGLTF09901C0 |  |  |  |  | 24d | 0d | CEILING GRID FOR GYPSUM [6209.25 h]; CEILING GRID FOR GYPSUM [531.36 m2]; Cost |  |  | DGLTF09501C0 |  | DT | C | GL | TF | CE | 095 | 01 |  | BILL 5 | B05 | S2 | 01 | R00 | ACF06 |  | 095 |  |  |  |  |  |  | 323 | 952 |  |  |  |  |  |  |  |
| DGLTF26015C0 |  | DT-GL ; Final Fix, Termination & Gladding of Cables (Treat) | 48d | 2012-04-08 | 2012-06-02 | DGLTF26005C0 |  |  |  |  | 108d | 78d | ELECTRICAL [368.4 h]; Cost |  |  | DGLTF26015C0 |  | DT | C | GL | TF | ME | 260 | 15 | FF | BILL 5 | B05 | S2 | FF | R00 | ACF07 | MEP | 260 |  |  |  |  |  |  |  |  |  |  |  |  |  |  |  |
| DGLTF22025C0 |  | DT-GL ; Final Fix, Inst of Sanitary Ware (Treat) | 48d | 2012-04-17 | 2012-06-11 | DGLTF09205C0, DGLTF09305C0, A10230 FS+148d |  |  |  |  | 52d | 0d | PLUMBING [1917.6 h]; Cost |  |  | DGLTF22025C0 |  | DT | C | GL | TF | ME | 220 | 25 | FF | BILL 5 | B05 | S2 | FF | R00 | ACF07 | MEP | 220 |  |  |  |  |  |  |  |  |  |  |  |  |  |  |  |
| DGLTF09601C0 |  | DT-GL ; Flooring (Rubber & etc) (Treat) | 36d | 2012-05-13 | 2012-06-24 | DGLTF09901C0, DGLTF09501C0, DGLTF05501C0 FF |  |  |  |  | 24d | 0d | RUBBER FLOOR [608 h]; RUBBER FLOOR [1512 m2]; Cost |  |  | DGLTF09601C0 |  | DT | C | GL | TF | FF | 096 | 01 |  | BILL 5 | B05 | S2 | 03 | R00 | ACF06 |  | RF |  |  |  |  |  |  | 326 | 955 |  |  |  |  |  |  |  |
| DGLTF09905C0 |  | DT-GL ; Ceiling Prime & 1st coat (Treat) | 36d | 2012-05-13 | 2012-06-24 | DGLTF09501C0 |  |  |  |  | 66d | 0d | ASSORTED CEILING FINISH [207 h]; Cost |  |  | DGLTF09905C0 |  | DT | C | GL | TF | PA | 099 | 05 |  | BILL 5 | B05 | S2 | 01 | R00 | ACF06 |  | 099 |  |  |  |  |  |  | 330 | 958 |  |  |  |  |  |  |  |
| DGLTF21115C0 |  | DT-GL ; 2nd Fix, Inst of Sprinkler droppers (Treat) | 36d | 2012-05-13 | 2012-06-24 | DGLTF09501C0 |  |  |  |  | 42d | 0d | MECHANICAL [2067.6 h]; Cost |  |  | DGLTF21115C0 |  | DT | C | GL | TF | ME | 211 | 15 | 2n | BILL 5 | B05 | S2 | 2F | R00 | ACF07 | MEP | 211 |  |  |  |  |  |  |  |  |  |  |  |  |  |  |  |
| DGLTF23021C0 |  | DT-GL ; 2nd Fix, Inst of Flexible Duct & Plenum boxes (Treat) | 36d | 2012-05-13 | 2012-06-24 | DGLTF09205C0, DGLTF09501C0 |  |  |  |  | 48d | 0d | MECHANICAL [274.8 h]; Cost |  |  | DGLTF23021C0 |  | DT | C | GL | TF | ME | 230 | 21 | 2n | BILL 5 | B05 | S2 | 2F | R00 | ACF07 | MEP | 230 |  |  |  |  |  |  |  |  |  |  |  |  |  |  |  |
| DGLTF26017C0 |  | DT-GL ; Final Fix, Inst of Ceiling rose (Treat) | 48d | 2012-05-13 | 2012-07-08 | DGLTF09501C0 |  |  |  |  | 47d | 0d | ELECTRICAL [67.2 h]; Cost |  |  | DGLTF26017C0 |  | DT | C | GL | TF | ME | 260 | 17 | FF | BILL 5 | B05 | S2 | FF | R00 | ACF07 | MEP | 260 |  |  |  |  |  |  |  |  |  |  |  |  |  |  |  |
| DGLTF27002C0 |  | DT-GL ; 2nd Fix, Wiring Droppers (Treat) | 36d | 2012-05-13 | 2012-06-24 | DGLTF09501C0 |  |  |  |  | 60d | 0d | ELECTRICAL [2502 h]; Cost |  |  | DGLTF27002C0 |  | DT | C | GL | TF | ME | 270 | 02 | 2n | BILL 5 | B05 | S2 | 2F | R00 | ACF07 | MEP | 270 |  |  |  |  |  |  |  |  |  |  |  |  |  |  |  |
| DGLTF23019C0 |  | DT-GL ; Final Fix, Inst of Grilles & Diffusers (Treat) | 48d | 2012-05-20 | 2012-07-15 | DGLTF09501C0, DGLTF23021C0 SS+6d |  |  |  |  | 48d | 1d | MECHANICAL [2560.8 h]; Cost |  |  | DGLTF23019C0 |  | DT | C | GL | TF | ME | 230 | 19 | FF | BILL 5 | B05 | S2 | FF | R00 | ACF07 | MEP | 230 |  |  |  |  |  |  |  |  |  |  |  |  |  |  |  |
| DGLTF27030C0 |  | DT-GL ; Final Fix, Inst of ELV device (Detector/Speaker) (Treat) | 36d | 2012-05-20 | 2012-07-01 | DGLTF09501C0, DGLTF27002C0 SS+6d |  |  |  |  | 60d | 13d | ELECTRICAL [2152.8 h]; Cost |  |  | DGLTF27030C0 |  | DT | C | GL | TF | ME | 270 | 30 | FF | BILL 5 | B05 | S2 | FF | R00 | ACF07 | MEP | 270 |  |  |  |  |  |  |  |  |  |  |  |  |  |  |  |
| DGLTF26003C0 |  | DT-GL ; Final Fix, Inst of Light fittings (Treat) | 48d | 2012-05-21 | 2012-07-16 | DGLTF09501C0, DGLTF26017C0 SS+7d |  |  |  |  | 47d | 0d | ELECTRICAL [6626.4 h]; Cost |  |  | DGLTF26003C0 |  | DT | C | GL | TF | ME | 260 | 03 | FF | BILL 5 | B05 | S2 | FF | R00 | ACF07 | MEP | 260 |  |  |  |  |  |  |  |  |  |  |  |  |  |  |  |
| DGLTF22021C0 |  | DT-GL ; Final Fix, Terminate Sanitary Ware & Appliances (Treat) | 48d | 2012-06-12 | 2012-08-07 | DGLTF22011C0, DGLTF22025C0 |  |  |  |  | 52d | 22d | PLUMBING [1917.6 h]; Cost |  |  | DGLTF22021C0 |  | DT | C | GL | TF | ME | 220 | 21 | FF | BILL 5 | B05 | S2 | FF | R00 | ACF07 | MEP | 220 |  |  |  |  |  |  |  |  |  |  |  |  |  |  |  |
| DGLTF06101C0 |  | DT-GL ; Wood / caseworks (Treat) | 48d | 2012-06-25 | 2012-08-21 | DGLCO04415C0, DGLTF09901C0, DGLCO04437C0, DGLCO04407C0, CAFWA00113M0, DGLTF09601C0, DAFWA00119M0 |  |  |  |  | 24d | 0d | WOOD WORK/CASEWORK [774.29 no]; WOOD WORK/CASEWORK [6492 h]; Cost |  |  | DGLTF06101C0 |  | DT | C | GL | TF | WO | 061 | 01 |  | BILL 5 | B05 | S2 | WW | R00 | ACF06 |  | 061 |  |  |  |  |  |  | 332 | 960 |  |  |  |  |  |  |  |
| DGLTF06102C0 |  | DT-GL ; Head Wall (Treat) | 36d | 2012-06-25 | 2012-08-05 | DGLCO04415C0, DGLTF09501C0, DGLTF06101C0 SS, DAFWA00119M0 |  |  |  |  | 66d | 42d | WOOD WORK/CASEWORK [4332 h]; Cost |  |  | DGLTF06102C0 |  | DT | C | GL | TF | WO | 061 | 02 |  | BILL 5 | B05 | S2 | WW | R00 | ACF06 |  | 061 |  |  |  |  |  |  | 332 | 960 |  |  |  |  |  |  |  |
| DGLTF08107C0 |  | DT-GL ; Doors (Treat) | 42d | 2012-06-25 | 2012-08-12 | DGLTF08103C0, DGLTF09901C0, DGLTF09601C0 |  |  |  |  | 32.25d | 0d | ASSORTED DOORS [1450 h]; ASSORTED DOORS [145 no]; Cost |  |  | DGLTF08107C0 |  | DT | C | GL | TF | DO | 081 | 07 |  | BILL 5 | B05 | S2 | DR | R00 | ACF06 |  | 081 |  |  |  |  |  |  | 317 | 948 |  |  |  |  | 08 |  |  |
| DGLTF09701C0 |  | DT-GL ; Wall finishes (ST, WD, WC) (Treat) | 30d | 2012-06-25 | 2012-07-29 | DGLTF26011C0, DGLTF27020C0, DAFMI22003R02 FS+158d, DGLTF09601C0 |  |  |  |  | 42d | 0d | ASSORTED WALL FINISH [2103 h]; ASSORTED WALL FINISH [2417 m2]; Cost |  |  | DGLTF09701C0 |  | DT | C | GL | TF | WF | 097 | 01 |  | BILL 5 | B05 | S2 | 01 | R00 | ACF06 |  | 097 |  |  |  |  |  |  | 105 | 1002 |  |  |  |  |  |  | R3 |
| DGLTF09903C0 |  | DT-GL ; Wall Final Paint (Treat) | 36d | 2012-06-25 | 2012-08-05 | DGLTF09901C0, DGLTF09905C0 |  |  |  |  | 66d | 30d | WALL PAINT [1229 h]; WALL PAINT [1534 m2]; Cost |  |  | DGLTF09903C0 |  | DT | C | GL | TF | PA | 099 | 03 |  | BILL 5 | B05 | S2 | 02 | R00 | ACF06 |  | 099 |  |  |  |  |  |  | 329 | 957 |  |  |  |  |  |  |  |
| DGLTF21113C0 |  | DT-GL ; Final Fix, Inst of Sprinklers head/ Extinguisher (Treat) | 48d | 2012-06-25 | 2012-08-21 | DGLTF09501C0, DGLTF21115C0 |  |  |  |  | 42d | 12d | MECHANICAL [403.2 h]; Cost |  |  | DGLTF21113C0 |  | DT | C | GL | TF | ME | 211 | 13 | FF | BILL 5 | B05 | S2 | FF | R00 | ACF07 | MEP | 211 |  |  |  |  |  |  |  |  |  |  |  |  |  |  |  |
| DGLTF11005C0 |  | DT-GL ; Utility belt (Treat) | 36d | 2012-07-02 | 2012-08-12 | DGLTF06101C0 SS+6d, DGLTF09205C0 |  |  |  |  | 30d | 0d | FF&E [370 h]; FF&E [197.21 no]; Cost |  |  | DGLTF11005C0 |  | DT | C | GL | TF | WO | 110 | 05 |  | BILL 5 | B05 | S2 | 05 | R00 | ACF08 |  | e |  |  |  |  |  |  |  |  |  |  |  |  |  |  |  |
| DGLTF01006C0 |  | DT-GL ; 2nd, Ceiling Inspection by Consultants (Treat) | 6d | 2012-07-17 | 2012-07-23 | DGLTF21115C0, DGLTF23009C0, DGLTF23015C0, DGLTF27002C0, DGLTF09501C0, DGLTF23019C0, DGLTF26003C0, DGLTF27030C0 |  |  |  |  | 47d | 23d | Labor General [1.2 h]; Cost |  |  | DGLTF01006C0 |  | DT | C | GL | TF | ME | 010 | 06 | 2n | BILL 5 | B05 | S2 | CI | R00 | ACF07 | MEP | 010 |  |  |  |  |  |  |  |  |  |  |  |  |  |  |  |
| DGLTF11001C0 |  | DT-GL ; Wall Protection (WP, CG, WG, FCG) (Treat) | 24d | 2012-07-30 | 2012-08-28 | DGLTF09701C0, DGLTF09903C0 SS |  |  |  |  | 48d | 24d | FF&E [3094 h]; Cost |  |  | DGLTF11001C0 |  | DT | C | GL | TF | WF | 110 | 01 |  | BILL 5 | B05 | S2 | 03 | R00 | ACF08 |  | b |  |  |  |  |  |  | 326 | 1001 |  |  |  |  |  |  |  |
| DGLTF08709C0 |  | DT-GL ; Ironmongery (Treat) | 27.75d | 2012-08-13 | 2012-09-16 | DGLTF08107C0 |  |  |  |  | 32.25d | 8.25d | IRONMONGERY [670 h]; IRONMONGERY [67 no]; Cost |  |  | DGLTF08709C0 |  | DT | C | GL | TF | DO | 087 | 09 |  | BILL 5 | B05 | S2 | IM | R00 | ACF06 |  | 087 |  |  |  |  |  |  | 322 | 951 |  |  |  |  | 08 |  |  |
| DGLTF22029C0 |  | DT-GL ; Final Fix, Medical Gas pipe (Treat) | 18d | 2012-08-13 | 2012-09-04 | DGLTF09501C0, DGLTF11005C0 |  |  |  |  | 30d | 0d | PLUMBING [1616.4 h]; Cost |  |  | DGLTF22029C0 |  | DT | C | GL | TF | ME | 220 | 29 | FF | BILL 5 | B05 | S2 | FF | R00 | ACF07 | MEP | 220 |  |  |  |  |  |  |  |  |  |  |  |  |  |  |  |
| DGLTF09503C0 |  | DT-GL ; Ceiling closure - ACT/Gypsum (Treat) | 18d | 2012-08-22 | 2012-09-11 | DAFOA09505C1 FF, DGLTF01006C0, DGLTF21115C0, DGLTF26005C0, DGLTF27001C0, DGLTF27002C0, DGLTF06101C0, DGLTF09701C0, DGLTF23021C0, DGLTF26053C0 |  |  |  |  | 24d | 0d | ASSORTED CEILING FINISH [1258.29 h]; CEILING GYPSUM [174.25 h]; ASSORTED CEILING FINISH [2046 m2]; CEILING GYPSUM [531 m2]; Cost |  |  | DGLTF09503C0 |  | DT | C | GL | TF | CE | 095 | 03 |  | BILL 5 | B05 | S2 | 02 | R00 | ACF06 |  | 095 |  |  |  |  |  |  | 324 | 953 |  |  |  |  |  |  |  |
| DGLTF09676C1 |  | DT-GL, Carpet Tile Finish (Treat, Obser, Fast Track) | 0d | 2012-09-12 | 2012-09-12 | DGLTF09903C0 SS, DGLTF09907C0 SS |  |  |  |  | 36d | 12d | Cost |  |  |  |  | DT | C | GL | TF | FF | 096 |  |  |  | B05 |  |  | R00 | ACF06 | CPT | CPT |  |  |  |  |  |  |  |  |  |  |  |  |  |  |  |
| DGLTF09907C0 |  | DT-GL ; Ceiling Final paint (Treat) | 12d | 2012-09-12 | 2012-09-25 | DGLTF09601C0, DGLTF09905C0, DGLTF09503C0 |  |  |  |  | 24d | 0d | ASSORTED CEILING FINISH [111 h]; Cost |  |  | DGLTF09907C0 |  | DT | C | GL | TF | PA | 099 | 07 |  | BILL 5 | B05 | S2 | 02 | R00 | ACF06 |  | 099 |  |  |  |  |  |  | 331 | 959 |  |  |  |  |  |  |  |
| DGLTF11003C0 |  | DT-GL ; FF & E (Treat) | 12d | 2012-09-12 | 2012-09-25 | DGLTF09601C0, DGLTF09503C0 |  |  |  |  | 24d | 0d | FF&E [101 h]; FF&E [53.76 no]; Cost |  |  | DGLTF11003C0 |  | DT | C | GL | TF | WO | 110 | 03 |  | BILL 5 | B05 | S2 | 04 | R00 | ACF08 |  | a |  |  |  |  |  |  | 333 | 961 |  |  |  |  |  |  |  |
| DGLTF22027C0 |  | DT-GL ; Final Fix, Inst of All drain (Treat) | 12d | 2012-09-12 | 2012-09-25 | DGLTF09305C0, DGLTF09503C0 |  |  |  |  | 24d | 0d | PLUMBING [1173.6 h]; Cost |  |  | DGLTF22027C0 |  | DT | C | GL | TF | ME | 220 | 27 | FF | BILL 5 | B05 | S2 | FF | R00 | ACF07 | MEP | 220 |  |  |  |  |  |  |  |  |  |  |  |  |  |  |  |
| DGLTF26019C0 |  | DT-GL ; Final Fix, Inst of Switch/Sockets (Treat) | 12d | 2012-09-12 | 2012-09-25 | DGLTF09901C0, DGLTF09503C0 |  |  |  |  | 24d | 0d | ELECTRICAL [610.8 h]; Cost |  |  | DGLTF26019C0 |  | DT | C | GL | TF | ME | 260 | 19 | FF | BILL 5 | B05 | S2 | FF | R00 | ACF07 | MEP | 260 |  |  |  |  |  |  |  |  |  |  |  |  |  |  |  |

| ID | WBS | Activity | Duration | Start | Finish | Predecessors | Complete | Remaining | Planned start | Planned finish | Total float | Free float | Resources | Cost | Actual cost | change id | CCAD BUILDING(SET) | CCAD PHASE(SET) | CCAD FLOOR(SET) | CCAD ZONE(SET) | CCAD WORK(SET) | CCAD SECTION(SET) | CCAD SERIAL No.(SET) | CCAD CBS(SET) | CCAD BILL(SET) | CCAD HANDOVER(SET) | CCAD TAG(SET) | CCAD REV(SET) | CCADACF (SET) | CCAD SSCF | RENZ % COMPLETE | Claimed This Month | CCAD SUB ZONE MEP(SET) | CCAD CSA | Act Selector % | July2011 Target% Complete | P_811 | P_711 | user_number8 | user_integer1 | user_integer2 | user_number7 | Change Order # | NEW ACTIVITY ID | PERCENT COMPLETE | CCAD DIVISION(SET) | CCAD MEQ | R3 Finish |
| --- | --- | --- | --- | --- | --- | --- | --- | --- | --- | --- | --- | --- | --- | --- | --- | --- | --- | --- | --- | --- | --- | --- | --- | --- | --- | --- | --- | --- | --- | --- | --- | --- | --- | --- | --- | --- | --- | --- | --- | --- | --- | --- | --- | --- | --- | --- | --- | --- |
|  | 10 | **Precommissioning Tesing & snagging (Treat, Observ, Fast Track)** |  | 2012-09-05 | 2012-10-24 |  |  |  |  |  |  |  |  |  |  |  |  |  |  |  |  |  |  |  |  |  |  |  |  |  |  |  |  |  |  |  |  |  |  |  |  |  |  |  |  |  |  |  |
| DGLTS01801C0 |  | DT-GL ; MEP de-snag, FIREM sign-off | 12d | 2012-09-05 | 2012-09-18 | DGLTF11005C0, DGLTF26015C0, DGLTF22025C0, DGLTF22021C0, DGLTF21113C0, DGLTF23019C0, DGLTF22029C0, DGLTF26017C0, DGLTF26003C0, DGLTF27030C0 |  |  |  |  | 30d | 6d | TESTING & COMMISSIONING [2549 h]; Cost |  |  | DGLTS01801C0 | DT | C | GL | TS | SC | 018 | 01 | BILL 5 | B05 | S2 | 01 | R00 | ACF07 | 018 |  |  |  |  |  |  |  |  |  |  |  |  |  |  |  |  |  |  |
| DGLTS01807C0 |  | DT-GL ; Touch-up & Clean / JV inspection /CIR /De-snag | 18d | 2012-09-26 | 2012-10-16 | DGLTF06101C0, DGLTF06102C0, DGLTF08709C0, DGLTF09601C0, DGLTF09701C0, DGLTF09903C0, DGLTF09907C0, DGLTF11001C0, DGLTF11003C0, DGLTS01801C0, DGLTF05501C0, DGLTF09503C0, DGLTF09676C1, DGLTF26019C0, DGLTF22027C0 |  |  |  |  | 24d | 0d | TESTING & COMMISSIONING [213 h]; Cost |  |  | DGLTS01802C0 | DT | C | GL | TS | SC | 018 | 02 | BILL 5 | B05 | S2 | 02 | R00 | ACF07 | 018 |  |  |  |  |  |  |  |  |  |  |  |  |  |  |  |  |  |  |
| DGLTS01811C0 |  | DT-GL ; Consultant's final de-snag inspection | 7d | 2012-10-17 | 2012-10-24 | DGLTS01807C0 |  |  |  |  | 24d | 12.85d | Labor General [1 h]; Cost |  |  | DGLTS01803C0 | DT | C | GL | TS | SC | 018 | 03 | BILL 5 | B05 | S2 | 03 | R00 | ACF07 | 018 |  |  |  |  |  |  |  |  |  |  |  |  |  |  |  |  |  |  |
|  | 03 | **MRI, RAD, NUC MED & CT** |  | 2011-03-01 | 2012-10-21 |  |  |  |  |  |  |  |  |  |  |  |  |  |  |  |  |  |  |  |  |  |  |  |  |  |  |  |  |  |  |  |  |  |  |  |  |  |  |  |  |  |  |  |
| DGLMR22019C0 |  | DT-GL ; 1st Fix, Inst of Drainage pipe (ceiling) (MRI & CT) | 62d | 2011-03-01 A | 2011-10-04 | BLZHC01565C0, BLZHC01570C0, BLZHC01571C0, DGLMR23001C0, DGLMR26013C0 SS+14d, DGLS107807C0 | 95% | 3.1d | 2011-05-17 | 2011-07-30 | 79d | 0d | PLUMBING [1173.6 h]; Cost [61888.2 AED] | 61,888.15 | 58,793.75 | DGLMR22019C0 | DT | C | GL | MR | ME | 220 | 19 | BILL 5 | B05 | S2 | 1F | R00 | ACF04 | 220 | 98 | 1469.87 | 1S | MEP | M1F |  |  |  |  |  |  |  |  |  |  |  |  |  |
| DGLMR21111C0 |  | DT-GL ; 1st Fix, Inst of Sprinkler main pipe (MRI & CT) | 44d | 2011-03-02 A | 2011-10-03 | BLZHC01565C0, BLZHC01570C0, BLZHC01571C0, DGLMR22005C0 SS+12d, DGLMR23001C0, DGLS107807C0 | 95% | 2.2d | 2011-06-08 | 2011-07-31 | 86.5d | 48.1d | MECHANICAL [981.6 h]; Cost [53543.7 AED] | 53,543.69 | 50,866.51 | DGLMR21111C0 | DT | C | GL | MR | ME | 211 | 11 | BILL 5 | B05 | S2 | 1F | R00 | ACF04 | 211 | 95 | 3107.05 | 1S | MEP | M1F |  |  |  |  |  |  |  |  |  |  |  |  |  |
| DGLMR22005C0 |  | DT-GL ; 1st Fix, Inst of Water supply pipe (ceiling) (MRI & CT) | 200d | 2011-03-02 A | 2011-10-23 | BLZHC01565C0, BLZHC01570C0, BLZHC01571C0, DGLMR22019C0 SS+7d, DGLMR23001C0, DGLS107807C0 | 90% | 20d | 2011-05-25 | 2012-01-24 | 79d | 0d | PLUMBING [4896 h]; Cost [264473 AED] | 264,473.49 | 238,026.14 | DGLMR22005C0 | DT | C | GL | MR | ME | 220 | 05 | BILL 5 | B05 | S2 | 1F | R00 | ACF04 | 220 | 90 |  | 1S | MEP | M1F | 90 |  |  |  |  |  |  |  |  |  |  |  |  |
| DGLMR21117C0 |  | DT-GL ; 1st Fix, Inst of Sprinkler branch pipe (MRI & CT) | 63d | 2011-03-04 A | 2011-12-25 | DGLMR09201C0, DGLMR21111C0, DGLS107807C0, DGLMR05503C0 FF+18d | 95% | 3.15d | 2011-08-01 | 2011-10-16 | 105.9d | 78.9d | MECHANICAL [1441.2 h]; Cost [78749.8 AED] | 78,749.79 | 74,812.3 | DGLMR21117C0 | DT | C | GL | MR | ME | 211 | 17 | BILL 5 | B05 | S2 | 1F | R00 | ACF04 | 211 | 60 | 9128.93 | 1S | MEP | M1F | 98 | 100 | 98 |  |  |  |  |  |  |  |  |  |  |
| DGLMR23001C0 |  | DT-GL ; 1st Fix, Inst. of Supports for MEP (MRI & CT) | 27d | 2011-03-08 A | 2011-10-01 | DGLS107807C0 SS | 100% | 0d | 2011-02-28 | 2011-03-31 | 27d | 0d | MECHANICAL [4696.8 h]; Cost [75432.9 AED] | 75,432.94 | 67,889.64 | DGLMR23001C0 | DT | C | GL | MR | ME | 230 | 01 | BILL 5 | B05 | S2 | 1F | R00 | ACF04 | 230 | 100 |  | 1S | MEP | M1F |  |  |  |  |  |  |  |  |  |  |  |  |  |
| DGLMR09201C0 |  | DT-GL ; Metal Studs (MRI & CT) | 90d | 2011-03-20 A | 2011-10-31 | DGLMR23001C0 | 71% | 26.1d | 2011-05-15 | 2011-08-28 | 27d | 0d | PARTITIONS [10797 h]; PARTITIONS - Metal Studs [1775 m]; Cost |  |  | DGLMR09201C0 | DT | C | GL | MR | PT | 092 | 01 | BILL 5 | B05 | S2 | 1F | R00 | ACF06 | 092 | 35 | 172659.5 |  | GP | PMS |  | 65 | 61 | 0 | 0 | 0 | 0 | 313 | 944 |  |  |  |  |
| DGLMR09203C0 |  | DT-GL ; Partitions 1st face (MRI & CT) | 52d | 2011-04-05 A | 2011-12-25 | DGLMR09201C0 SS+12d, DGLMR23023C0 FF, DGLMR22005C0 FF, DGLMR26001C0 FF, DGLMR26013C0 FF, DGLMR27010C0 | 42% | 30d | 2011-08-03 | 2011-10-04 | 30d | 3d | PARTITIONS [1775 m]; PARTITIONS [8430 h]; Cost |  |  | DGLMR09203C0 | DT | C | GL | MR | PT | 092 | 03 | BILL 5 | B05 | S2 | 2F | R00 | ACF06 | 092 | 10 | 87020.46 |  | GP | P1F |  | 40 | 22 | 0 | 0 | 0 | 0 | 314 | 945 |  |  |  |  |
| DGLMR23023C0 |  | DT-GL ; 1st Fix, Inst of Main Ducting (MRI & CT) | 250d | 2011-04-05 A | 2011-12-15 | BLZHC01565C0, BLZHC01570C0, BLZHC01571C0, DGLMR23001C0, DGLMR23017C0 SS+10d, DGLS107807C0 | 95% | 12.5d | 2011-07-03 | 2012-04-30 | 38.4d | 0d | MECHANICAL [14760 h]; Cost [622619 AED] | 622,619.08 | 591,488.13 | DGLMR23023C0 | DT | C | GL | MR | ME | 230 | 23 | BILL 5 | B05 | S2 | 1F | R00 | ACF04 | 230 | 30 | 47092.35 | 1S | MEP | M1F | 85 |  |  |  |  |  |  |  |  |  |  |  |  |
| DGLMR26013C0 |  | DT-GL ; 1st Fix, Inst of Cable Tray (MRI & CT) | 120d | 2011-04-22 A | 2011-12-14 | DGLMR23001C0, DGLMR27010C0 SS+12d, DGLS107807C0 | 50% | 60d | 2011-05-01 | 2011-09-21 | 39d | 0d | ELECTRICAL [430.8 h]; Cost [23263.3 AED] | 23,263.34 | 11,631.67 | DGLMR26013C0 | DT | C | GL | MR | ME | 260 | 13 | BILL 5 | B05 | S2 | 1F | R00 | ACF04 | 260 | 50 | 8100.75 | 1S | MEP | M1F | 85 | 75 | 60 |  |  |  |  |  |  | 50 |  |  |  |
| DGLMR26001C0 |  | DT-GL ; 1st Fix, Inst of Trunking/Conduiting (MRI & CT) | 66d | 2011-04-25 A | 2011-11-15 | DGLMR23001C0, DGLS107807C0 | 45% | 36.3d | 2011-03-31 | 2011-06-16 | 30d | 0d | ELECTRICAL [824.4 h]; Cost [42423.2 AED] | 42,423.24 | 19,090.46 | DGLMR26001C0 | DT | C | GL | MR | ME | 260 | 01 | BILL 5 | B05 | S2 | 1F | R00 | ACF04 | 260 | 50 | 14996.29 | 1S | MEP | M1F | 85 | 75 | 60 |  |  |  |  |  |  | 45 |  |  |  |
| DGLMR27010C0 |  | DT-GL ; 1st Fix, Inst of Trunking for ELV system (MRI & CT) | 60d | 2011-04-25 A | 2011-11-17 | DGLMR23001C0, DGLMR26001C0 SS+14d, DGLS107807C0 | 35% | 39d | 2011-04-17 | 2011-06-26 | 30d | 0d | ELECTRICAL [1689.6 h]; Cost [88597.9 AED] | 88,597.89 | 31,009.26 | DGLMR27010C0 | DT | C | GL | MR | ME | 270 | 10 | BILL 5 | B05 | S2 | 1F | R00 | ACF04 | 270 | 50 | 46252.71 | 1S | MEP | M1F | 98 | 75 | 60 |  |  |  |  |  |  | 35 |  |  |  |
| DGLMR23008C0 |  | DT-GL ; 1st Fix, Inst of VCD's/FD's (MRI & CT) | 100d | 2011-05-09 A | 2012-01-21 | DGLMR23023C0, DGLS107807C0, DGLMR05503C0 FF+18d | 70% | 30d | 2011-08-27 | 2011-12-29 | 83.4d | 56.4d | MECHANICAL [7671.6 h]; Cost [232964 AED] | 232,964.23 | 163,074.96 | DGLMR23008C0 | DT | C | GL | MR | ME | 230 | 08 | BILL 5 | B05 | S2 | 1F | R00 | ACF04 | 230 | 15 | 24816.64 | 1S | MEP | M1F | 85 | 70 | 50 |  |  |  |  |  |  |  |  |  |  |
| DGLMR23017C0 |  | DT-GL ; 1st Fix, Inst of CHW pipe (MRI & CT) | 200d | 2011-05-15 A | 2011-12-25 | BLZHC01565C0, BLZHC01570C0, BLZHC01571C0, DGLMR21111C0 SS+10d, DGLMR23001C0, DGLS107807C0, DGLMR05503C0 FF+18d | 90% | 20d | 2011-05-31 | 2012-01-29 | 38.4d | 0d | MECHANICAL [9684 h]; Cost [345418 AED] | 345,418.28 | 310,876.46 | DGLMR23017C0 | DT | C | GL | MR | ME | 230 | 17 | BILL 5 | B05 | S2 | 1F | R00 | ACF04 | 230 | 30 | 124062.43 | 1S | MEP | M1F | 90 | 90 | 80 |  |  |  |  |  |  |  |  |  |  |
| DGLMR26009C0 |  | DT-GL ; 2nd Fix, Inst of Wall conduites (MRI & CT) | 42d | 2011-06-08 A | 2011-12-21 | DGLMR09201C0 | 5% | 39.9d | 2011-06-08 | 2011-07-28 | 27d | 0d | ELECTRICAL [2889.6 h]; Cost [42423.2 AED] | 42,423.24 | 2,121.16 | DGLMR26009C0 | DT | C | GL | MR | ME | 260 | 09 | BILL 5 | B05 | S2 | 2F | R00 | ACF07 | 260 |  | 55528.91 | 2n | MEP |  | 30 | 50 | 30 |  |  |  |  |  |  | 5 |  |  |  |
| DGLMR23009C0 |  | DT-GL ; 2nd Fix, Inst of VAV'S CHW connection (MRI & CT) | 90d | 2011-06-14 A | 2012-01-31 | DGLMR23017C0 | 65% | 31.5d | 2011-07-06 | 2011-10-22 | 44.4d | 0d | MECHANICAL [1684.8 h]; Cost [91006.1 AED] | 91,006.06 | 59,153.94 | DGLMR23009C0 | DT | C | GL | MR | ME | 230 | 09 | BILL 5 | B05 | S2 | 2F | R00 | ACF07 | 230 |  | 21640.94 | 2n | MEP |  | 25 | 60 | 25 | 0 | 0 | 0 | 0 |  |  |  |  |  |  |
| DGLMR27001C0 |  | DT-GL ; 1st Fix, Wiring/ Cabling work (MRI & CT) | 60d | 2011-06-15 A | 2012-02-21 | DGLMR26001C0, DGLMR26013C0, DGLMR27010C0, DGLS107807C0 | 5% | 57d | 2011-07-06 | 2011-09-17 | 57d | 30d | ELECTRICAL [436.8 h]; Cost [21894.9 AED] | 21,894.91 | 1,094.75 | DGLMR27001C0 | DT | C | GL | MR | ME | 270 | 01 | BILL 5 | B05 | S2 | 1F | R00 | ACF04 | 270 |  | 12896.34 | 1S | MEP | M1F | 50 |  |  |  |  |  |  |  |  | 5 |  |  |  |
| DGLMR23015C0 |  | DT-GL ; 2nd Fix, Insulation of CHW pipe & Duct (MRI & CT) | 150d | 2011-07-10 A | 2012-03-07 | DGLMR23009C0, DGLMR23017C0, DGLMR23023C0 | 80% | 30d | 2011-08-23 | 2012-02-25 | 44.4d | 17.4d | MECHANICAL [5311.2 h]; Cost [286617 AED] | 286,617.06 | 229,293.65 | DGLMR23015C0 | DT | C | GL | MR | ME | 230 | 15 | BILL 5 | B05 | S2 | 2F | R00 | ACF07 | 230 |  |  | 2n | MEP |  | 85 | 80 | 50 |  |  |  |  |  |  |  |  |  |  |
| DGLMR22011C0 |  | DT-GL ; 2nd Fix, Drainage/Water pipe (wall) (MRI & CT) | 72d | 2011-08-10 A | 2011-12-08 | DGLMR09201C0, DAFMI22002R20 FS+58d | 60% | 28.8d | 2011-12-15 | 2012-03-10 | 38.1d | 11.1d | PLUMBING [1173.6 h]; Cost [61888.2 AED] | 61,888.15 | 37,132.89 | DGLMR22011C0 | DT | C | GL | MR | ME | 220 | 11 | BILL 5 | B05 | S2 | 2F | R00 | ACF07 | 220 |  |  | 2n | MEP |  | 25 | 60 | 0 |  |  |  |  |  |  |  |  |  |  |
| DGLMR26007C0 |  | DT-GL ; 2nd Fix, Cable Pulling (MRI & CT) | 48d | 2011-09-02 A | 2011-11-27 | DGLMR09201C0 SS+6d | 5% | 45.6d | 2011-10-01 | 2011-11-29 | 47.4d | 20.4d | ELECTRICAL [8700 h]; Cost [332625 AED] | 332,625.29 | 16,631.26 | DGLMR26007C0 | DT | C | GL | MR | ME | 260 | 07 | BILL 5 | B05 | S2 | 2F | R00 | ACF07 | 260 |  |  | 2n | MEP |  | 20 |  |  |  |  |  |  |  |  | 5 |  |  |  |
| DGLMR05503C0 |  | DT-GL ; Ceiling Support for medical equipment (MRI & CT) | 24d | 2011-10-31 | 2011-12-04 | DGLMR09201C0, DAFMI22002R20 FS+58d |  |  |  |  | 38.4d | 0d | SECONDARY STEEL [222 h]; STRUCTURAL STEEL [1 T(Fe)]; Cost |  |  | DGLMR05503C0 | DT | C | GL | MR | SW | 055 | 03 | BILL 5 | B05 | S2 | 03 | R00 | ACF03 | b |  |  |  |  |  |  |  |  |  |  |  |  | 335 | 962 |  |  |  |  |
| DGLMR08103C0 |  | DT-GL ; Door Frames (MRI & CT) | 42d | 2011-11-12 | 2012-01-02 | DGLMR09201C0 SS+14d, GNHE08101C0 FS+79d |  |  |  |  | 69d | 42d | ASSORTED DOORS [1026 h]; Cost |  |  | DGLMR08103C0 | DT | C | GL | MR | DO | 081 | 03 | BILL 5 | B05 | S2 | DF | R00 | ACF06 | 081 |  |  |  |  |  |  |  |  |  |  |  |  | 316 | 947 |  | 08 |  |  |
| DGLMR05511C0 |  | DT-GL ; Wall reinforcement for MEP/Medical (MRI & CT) | 24d | 2011-11-30 | 2011-12-28 | DGLMR09201C0, DAFMI22002R02 FS+58d |  |  |  |  | 27d | 0d | SECONDARY STEEL [95 h]; Cost |  |  | DGLMR05511C0 | DT | C | GL | MR | SW | 055 | 11 | BILL 5 | B05 | S2 | 03 | R00 | ACF03 | b |  |  |  |  |  |  |  |  |  |  |  |  |  |  |  |  |  |  |
| DGLMR01005C0 |  | DT-GL ; 2nd, Wall Inspection by Consultant (MRI & CT) | 6d | 2011-12-22 | 2011-12-28 | DGLMR22011C0, DGLMR26007C0, DGLMR26009C0 |  |  |  |  | 27d | 0d | Labor General [1.2 h]; Cost |  |  | DGLMR01005C0 | DT | C | GL | MR | ME | 010 | 05 | BILL 5 | B05 | S2 | WI | R00 | ACF07 | 010 |  |  | 2n | MEP |  | 25 |  |  |  |  |  |  |  |  |  |  |  |  |
| DGLMR09205C0 |  | DT-GL ; Partitions Closing (MRI & CT) | 45d | 2011-12-29 | 2012-02-21 | DAFOA09206C1 FF, DGLMR01005C0, DGLMR05511C0, DGLMR09203C0, DGLMR22005C0, DGLMR22019C0, DGLMR08103C0 FF, DAFMI22002R20 FS+58d |  |  |  |  | 27d | 0d | PARTITIONS [1775 m]; PARTITIONS [10814 h]; Cost |  |  | DGLMR09205C0 | DT | C | GL | MR | PT | 092 | 05 | BILL 5 | B05 | S2 | FF | R00 | ACF06 | 092 |  |  |  | GP | P2F |  |  |  |  |  |  |  | 315 | 946 |  |  |  |  |
| DGLMR07103C0 |  | DT-GL ; Waterproofing (MRI & CT) | 12d | 2012-02-22 | 2012-03-06 | DGLMR08103C0, DGLMR09205C0 |  |  |  |  | 55d | 0d | THERMAL & MOISTURE [896 h]; THERMAL & MOISTURE [5950 m2]; Cost |  |  | DGLMR07103C0 | DT | C | GL | MR | FF | 071 | 03 | BILL 5 | B05 | S2 | 01 | R00 | ACF03 | 071 |  |  |  |  |  |  |  |  |  |  |  |  | 105 | 999 |  |  |  |  |
| DGLMR09901C0 |  | DT-GL ; Wall Prime & 1st coat (MRI & CT) | 30d | 2012-02-22 | 2012-03-27 | DGLMR09205C0 |  |  |  |  | 27d | 0d | WALL PAINT [2407 h]; WALL PAINT [3003 m2]; Cost |  |  | DGLMR09901C0 | DT | C | GL | MR | PA | 099 | 01 | BILL 5 | B05 | S2 | 01 | R00 | ACF06 | 099 |  |  |  |  |  |  |  |  |  |  |  |  | 328 | 956 |  |  |  |  |
| DGLMR26005C0 |  | DT-GL ; 2nd Fix, Wiring for Power/Lighting/Emergency (MRI & CT) | 20d | 2012-02-22 | 2012-03-15 | DGLMR09205C0 |  |  |  |  | 103d | 0d | ELECTRICAL [2502 h]; Cost |  |  | DGLMR26005C0 | DT | C | GL | MR | ME | 260 | 05 | BILL 5 | B05 | S2 | 2F | R00 | ACF07 | 260 | 10 | 48270.72 | 2n | MEP |  | 45 |  |  |  |  |  |  |  |  | 0 |  |  |  |
| DGLMR26011C0 |  | DT-GL ; 2nd Fix, Inst of Equipment (DB) (MRI & CT) | 48d | 2012-02-22 | 2012-04-17 | DGLMR09205C0 |  |  |  |  | 99d | 54d | ELECTRICAL [4545.6 h]; Cost |  |  | DGLMR26011C0 | DT | C | GL | MR | ME | 260 | 11 | BILL 5 | B05 | S2 | 2F | R00 | ACF04 | 260 |  |  | 2n | MEP |  |  |  |  |  |  |  |  |  |  |  |  | E |  |
| DGLMR26053C0 |  | DT-GL ; 2nd Fix, Wiring / Cabling (MRI & CT) | 36d | 2012-02-22 | 2012-04-03 | DGLMR26009C0, DGLMR09203C0, DGLMR09205C0 |  |  |  |  | 141d | 114d | ELECTRICAL [2502 h]; Cost |  |  | DGLMR26053C0 | DT | C | GL | MR | ME | 260 | 53 | BILL 5 | B05 | S2 | 2F | R00 | ACF07 | 260 |  |  | 2n | MEP |  |  |  |  |  |  |  |  | 389 | 977 |  |  |  |  |
| DGLMR27020C0 |  | DT-GL ; 2nd Fix, Inst of ELV Equipment (Panels) (MRI & CT) | 48d | 2012-02-22 | 2012-04-17 | DGLMR09205C0 |  |  |  |  | 99d | 54d | ELECTRICAL [2215.2 h]; Cost |  |  | DGLMR27020C0 | DT | C | GL | MR | ME | 270 | 20 | BILL 5 | B05 | S2 | 2F | R00 | ACF04 | 270 |  |  | 2n | MEP |  |  |  |  |  |  |  |  |  |  |  |  | E |  |
| DGLMR09305C0 |  | DT-GL ; Ceramic floor tile (MRI & CT) | 34d | 2012-03-07 | 2012-04-15 | DGLMR07103C0 |  |  |  |  | 55d | 0d | CERAMIC FLOOR TILES [328 h]; CERAMIC FLOOR TILES [180 m2]; Cost |  |  | DGLMR09305C0 | DT | C | GL | MR | FF | 093 | 05 | BILL 5 | B05 | S2 | 02 | R00 | ACF06 | CT |  |  |  |  |  |  |  |  |  |  |  |  | 106 | 1000 |  |  |  |  |
| DGLMR26015C0 |  | DT-GL ; Final Fix, Termination & Gladding of Cables (MRI & CT) | 48d | 2012-03-17 | 2012-05-10 | DGLMR26005C0 |  |  |  |  | 103d | 58d | ELECTRICAL [368.4 h]; Cost |  |  | DGLMR26015C0 | DT | C | GL | MR | ME | 260 | 15 | BILL 5 | B05 | S2 | FF | R00 | ACF07 | 260 |  |  | FF | MEP |  |  |  |  |  |  |  |  |  |  |  |  |  |  |
| DGLMR05501C0 |  | DT-GL ; Handrails & balustrade (MRI & CT) | 36d | 2012-03-28 | 2012-05-08 | DGLMR09901C0 |  |  |  |  | 63d | 36d | SECONDARY STEEL [343 h]; Cost |  |  | DGLMR05501C0 | DT | C | GL | MR | SW | 055 | 01 | BILL 5 | B05 | S2 | 01 | R00 | ACF03 | a |  |  |  |  |  |  |  |  |  |  |  |  |  |  |  |  |  |  |
| DGLMR09501C0 |  | DT-GL ; Ceiling Grid and Service Tile (MRI & CT) | 36d | 2012-03-28 | 2012-05-08 | DGLMR05503C0, DGLMR09205C0 SS+15d, DGLMR21117C0, DGLMR23008C0, DGLMR23009C0, DGLMR23015C0, DGLMR27001C0, DGLMR09901C0 |  |  |  |  | 27d | 0d | CEILING GRID FOR GYPSUM [7095.59 h]; CEILING GRID FOR GYPSUM [607.27 m2]; Cost |  |  | DGLMR09501C0 | DT | C | GL | MR | CE | 095 | 01 | BILL 5 | B05 | S2 | 01 | R00 | ACF06 | 095 |  |  |  |  |  |  |  |  |  |  |  |  | 323 | 952 |  |  |  |  |
| DGLMR22025C0 |  | DT-GL ; Final Fix, Inst of Sanitary Ware (MRI & CT) | 48d | 2012-04-16 | 2012-06-10 | DGLMR09205C0, DGLMR09305C0, A10230 FS+148d |  |  |  |  | 55d | 0d | PLUMBING [3304.8 h]; Cost |  |  | DGLMR22025C0 | DT | C | GL | MR | ME | 220 | 25 | BILL 5 | B05 | S2 | FF | R00 | ACF07 | 220 |  |  | FF | MEP |  |  |  |  |  |  |  |  |  |  |  |  |  |  |
| DGLMR09601C0 |  | DT-GL ; Flooring (Rubber & etc) (MRI & CT) | 36d | 2012-05-09 | 2012-06-20 | DGLMR09901C0, DGLMR09501C0, DGLMR05501C0 FF |  |  |  |  | 27d | 0d | RUBBER FLOOR [696 h]; RUBBER FLOOR [1728 m2]; Cost |  |  | DGLMR09601C0 | DT | C | GL | MR | FF | 096 | 01 | BILL 5 | B05 | S2 | 03 | R00 | ACF06 | RF |  |  |  |  |  |  |  |  |  |  |  |  | 326 | 955 |  |  |  |  |
| DGLMR09905C0 |  | DT-GL ; Ceiling Prime & 1st coat (MRI & CT) | 36d | 2012-05-09 | 2012-06-20 | DGLMR09501C0 |  |  |  |  | 69d | 0d | ASSORTED CEILING FINISH [236 h]; Cost |  |  | DGLMR09905C0 | DT | C | GL | MR | PA | 099 | 05 | BILL 5 | B05 | S2 | 01 | R00 | ACF06 | 099 |  |  |  |  |  |  |  |  |  |  |  |  | 330 | 958 |  |  |  |  |
| DGLMR21115C0 |  | DT-GL ; 2nd Fix, Inst of Sprinkler droppers (MRI & CT) | 36d | 2012-05-09 | 2012-06-20 | DGLMR09501C0 |  |  |  |  | 51d | 0d | MECHANICAL [2067.6 h]; Cost |  |  | DGLMR21115C0 | DT | C | GL | MR | ME | 211 | 15 | BILL 5 | B05 | S2 | 2F | R00 | ACF07 | 211 |  |  | 2n | MEP |  |  |  |  |  |  |  |  |  |  |  |  |  |  |
| DGLMR23021C0 |  | DT-GL ; 2nd Fix, Inst of Flexible Duct & Plenum boxes (MRI & CT) | 36d | 2012-05-09 | 2012-06-20 | DGLMR09205C0, DGLMR09501C0 |  |  |  |  | 63d | 0d | MECHANICAL [274.8 h]; Cost |  |  | DGLMR23021C0 | DT | C | GL | MR | ME | 230 | 21 | BILL 5 | B05 | S2 | 2F | R00 | ACF07 | 230 |  |  | 2n | MEP |  |  |  |  |  |  |  |  |  |  |  |  |  |  |
| DGLMR26017C0 |  | DT-GL ; Final Fix, Inst of Ceiling rose (MRI & CT) | 48d | 2012-05-09 | 2012-07-04 | DGLMR09501C0 |  |  |  |  | 50d | 0d | ELECTRICAL [67.2 h]; Cost |  |  | DGLMR26017C0 | DT | C | GL | MR | ME | 260 | 17 | BILL 5 | B05 | S2 | FF | R00 | ACF07 | 260 |  |  | FF | MEP |  |  |  |  |  |  |  |  |  |  |  |  |  |  |
| DGLMR27002C0 |  | DT-GL ; 2nd Fix, Wiring Droppers (MRI & CT) | 36d | 2012-05-09 | 2012-06-20 | DGLMR09501C0 |  |  |  |  | 45d | 0d | ELECTRICAL [2502 h]; Cost |  |  | DGLMR27002C0 | DT | C | GL | MR | ME | 270 | 02 | BILL 5 | B05 | S2 | 2F | R00 | ACF07 | 270 |  |  | 2n | MEP |  |  |  |  |  |  |  |  |  |  |  |  |  |  |
| DGLMR21113C0 |  | DT-GL ; Final Fix, Inst of Sprinklers head/ Extinguisher (MRI & CT) | 48d | 2012-05-16 | 2012-07-11 | DGLMR09501C0, DGLMR21115C0 SS+6d |  |  |  |  | 51d | 6d | MECHANICAL [403.2 h]; Cost |  |  | DGLMR21113C0 | DT | C | GL | MR | ME | 211 | 13 | BILL 5 | B05 | S2 | FF | R00 | ACF07 | 211 |  |  | FF | MEP |  |  |  |  |  |  |  |  |  |  |  |  |  |  |
| DGLMR23019C0 |  | DT-GL ; Final Fix, Inst of Grilles & Diffusers (MRI & CT) | 36d | 2012-05-16 | 2012-06-27 | DGLMR09501C0, DGLMR23021C0 SS+6d |  |  |  |  | 63d | 18d | MECHANICAL [2560.8 h]; Cost |  |  | DGLMR23019C0 | DT | C | GL | MR | ME | 230 | 19 | BILL 5 | B05 | S2 | FF | R00 | ACF07 | 230 |  |  | FF | MEP |  |  |  |  |  |  |  |  |  |  |  |  |  |  |
| DGLMR27030C0 |  | DT-GL ; Final Fix, Inst of ELV device (Detector/Speaker) (MRI & CT) | 54d | 2012-05-16 | 2012-07-18 | DGLMR09501C0, DGLMR27002C0 SS+6d |  |  |  |  | 45d | 0d | ELECTRICAL [2152.8 h]; Cost |  |  | DGLMR27030C0 | DT | C | GL | MR | ME | 270 | 30 | BILL 5 | B05 | S2 | FF | R00 | ACF07 | 270 |  |  | FF | MEP |  |  |  |  |  |  |  |  |  |  |  |  |  |  |
| DGLMR26003C0 |  | DT-GL ; Final Fix, Inst of Light fittings (MRI & CT) | 48d | 2012-05-17 | 2012-07-12 | DGLMR09501C0, DGLMR26017C0 SS+7d |  |  |  |  | 50d | 5d | ELECTRICAL [6626.4 h]; Cost |  |  | DGLMR26003C0 | DT | C | GL | MR | ME | 260 | 03 | BILL 5 | B05 | S2 | FF | R00 | ACF07 | 260 |  |  | FF | MEP |  |  |  |  |  |  |  |  |  |  |  |  |  |  |
| DGLMR22021C0 |  | DT-GL ; Final Fix, Terminate Sanitary Ware & Appliances (MRI & CT) | 48d | 2012-06-11 | 2012-08-06 | DGLMR22011C0, DGLMR22025C0 |  |  |  |  | 55d | 0d | PLUMBING [1917.6 h]; Cost |  |  | DGLMR22021C0 | DT | C | GL | MR | ME | 220 | 21 | BILL 5 | B05 | S2 | FF | R00 | ACF07 | 220 |  |  | FF | MEP |  |  |  |  |  |  |  |  |  |  |  |  |  |  |
| DGLMR06101C0 |  | DT-GL ; Wood / caseworks (MRI & CT) | 48d | 2012-06-21 | 2012-08-15 | DGLCO04415C0, DGLMR09501C0, DGLMR09901C0, DGLCO04437C0, DGLCO04407C0, CAFWA00113M0, DGLMR09601C0, DAFWA00119M0 |  |  |  |  | 27d | 0d | WOOD WORK/CASEWORK [896.54 no]; WOOD WORK/CASEWORK [7516 h]; Cost |  |  | DGLMR06101C0 | DT | C | GL | MR | WO | 061 | 01 | BILL 5 | B05 | S2 | WW | R00 | ACF06 | 061 |  |  |  |  |  |  |  |  |  |  |  |  | 332 | 960 |  |  |  |  |
| DGLMR08107C0 |  | DT-GL ; Doors (MRI & CT) | 42d | 2012-06-21 | 2012-08-08 | DGLMR08103C0, DGLMR09901C0, DGLMR09601C0 |  |  |  |  | 39d | 0d | ASSORTED DOORS [1660 h]; ASSORTED DOORS [166 no]; Cost |  |  | DGLMR08107C0 | DT | C | GL | MR | DO | 081 | 07 | BILL 5 | B05 | S2 | DR | R00 | ACF06 | 081 |  |  |  |  |  |  |  |  |  |  |  |  | 317 | 948 |  | 08 |  |  |
| DGLMR09701C0 |  | DT-GL ; Wall finishes (ST, WD, WC) (MRI & CT) | 30d | 2012-06-21 | 2012-07-25 | DGLMR26011C0, DGLMR27020C0, DAFMI22003R02 FS+158d, DGLMR09601C0 |  |  |  |  | 45d | 0d | ASSORTED WALL FINISH [2366 h]; ASSORTED WALL FINISH [2719 m2]; Cost |  |  | DGLMR09701C0 | DT | C | GL | MR | WF | 097 | 01 | BILL 5 | B05 | S2 | 01 | R00 | ACF06 | 097 |  |  |  |  |  |  |  |  |  |  |  |  | 105 | 1002 |  |  |  | R3 |
| DGLMR09903C0 |  | DT-GL ; Wall Final Paint (MRI & CT) | 36d | 2012-06-21 | 2012-08-01 | DGLMR09901C0, DGLMR09905C0 |  |  |  |  | 69d | 42d | WALL PAINT [1297 h]; WALL PAINT [1617 m2]; Cost |  |  | DGLMR09903C0 | DT | C | GL | MR | PA | 099 | 03 | BILL 5 | B05 | S2 | 02 | R00 | ACF06 | 099 |  |  |  |  |  |  |  |  |  |  |  |  | 329 | 957 |  |  |  |  |
| DGLMR01006C0 |  | DT-GL ; 2nd, Ceiling Inspection by Consultants (MRI & CT) | 6d | 2012-07-19 | 2012-07-25 | DGLMR21115C0, DGLMR23009C0, DGLMR23015C0, DGLMR27002C0, DGLMR09501C0, DGLMR21113C0, DGLMR23019C0, DGLMR26003C0, DGLMR26017C0, DGLMR27030C0, DGLMR26015C0 |  |  |  |  | 45d | 18d | Labor General [1.2 h]; Cost |  |  | DGLMR01006C0 | DT | C | GL | MR | ME | 010 | 06 | BILL 5 | B05 | S2 | CI | R00 | ACF07 | 010 |  |  | 2n | MEP |  |  |  |  |  |  |  |  |  |  |  |  |  |  |
| DGLMR11001C0 |  | DT-GL ; Wall Protection (WP, CG, WG, FCG) (MRI & CT) | 24d | 2012-07-26 | 2012-08-25 | DGLMR09701C0 |  |  |  |  | 51d | 24d | FF&E [3538 h]; Cost |  |  | DGLMR11001C0 | DT | C | GL | MR | WF | 110 | 01 | BILL 5 | B05 | S2 | 03 | R00 | ACF08 | b |  |  |  |  |  |  |  |  |  |  |  |  | 326 | 1001 |  |  |  |  |
| DGLMR08709C0 |  | DT-GL ; Ironmongery (MRI & CT) | 24d | 2012-08-09 | 2012-09-08 | DGLMR08107C0 |  |  |  |  | 39d | 12d | IRONMONGERY [760 h]; IRONMONGERY [76 no]; Cost |  |  | DGLMR08709C0 | DT | C | GL | MR | DO | 087 | 09 | BILL 5 | B05 | S2 | IM | R00 | ACF06 | 087 |  |  |  |  |  |  |  |  |  |  |  |  | 322 | 951 |  | 08 |  |  |
| DGLMR09503C0 |  | DT-GL ; Ceiling closure - ACT/Gypsum (MRI & CT) | 18d | 2012-08-16 | 2012-09-08 | DAFOA09505C1 FF, DGLMR01006C0, DGLMR21115C0, DGLMR26005C0, DGLMR27001C0, DGLMR27002C0, DGLMR06101C0, DGLMR09701C0, DGLMR23021C0, DGLMR26053C0 |  |  |  |  | 27d | 0d | ASSORTED CEILING FINISH [1437.87 h]; CEILING GYPSUM [199.26 h]; ASSORTED CEILING FINISH [2338 m2]; CEILING GYPSUM [607 m2]; Cost |  |  | DGLMR09503C0 | DT | C | GL | MR | CE | 095 | 03 | BILL 5 | B05 | S2 | 02 | R00 | ACF06 | 095 |  |  |  |  |  |  |  |  |  |  |  |  | 324 | 953 |  |  |  |  |
| DGLMR09675C1 |  | DT-GL, Carpet Tile Finish (MRI, RAD, NUC MED & CT) | 0d | 2012-09-09 | 2012-09-09 | DGLMR09903C0 SS, DGLMR09907C0 SS |  |  |  |  | 39d | 12d | Cost |  |  |  | DT | C | GL | MR | FF | 096 |  |  | B05 |  |  | R00 | ACF06 | CPT |  |  |  | CPT |  |  |  |  |  |  |  |  |  |  |  |  |  |  |
| DGLMR09907C0 |  | DT-GL ; Ceiling Final paint (MRI & CT) | 12d | 2012-09-09 | 2012-09-22 | DGLMR09601C0, DGLMR09905C0, DGLMR09503C0 |  |  |  |  | 27d | 0d | ASSORTED CEILING FINISH [127 h]; Cost |  |  | DGLMR09907C0 | DT | C | GL | MR | PA | 099 | 07 | BILL 5 | B05 | S2 | 02 | R00 | ACF06 | 099 |  |  |  |  |  |  |  |  |  |  |  |  | 331 | 959 |  |  |  |  |
| DGLMR11003C0 |  | DT-GL ; FF & E (MRI & CT) | 12d | 2012-09-09 | 2012-09-22 | DGLMR09601C0, DGLMR09503C0 |  |  |  |  | 27d | 0d | FF&E [117 h]; FF&E [62.25 no]; Cost |  |  | DGLMR11003C0 | DT | C | GL | MR | WO | 110 | 03 | BILL 5 | B05 | S2 | 04 | R00 | ACF08 | a |  |  |  |  |  |  |  |  |  |  |  |  | 333 | 961 |  |  |  |  |
| DGLMR22027C0 |  | DT-GL ; Final Fix, Inst of All drain (MRI & CT) | 12d | 2012-09-09 | 2012-09-22 | DGLMR09305C0, DGLMR09503C0 |  |  |  |  | 27d | 0d | PLUMBING [1173.6 h]; Cost |  |  | DGLMR22027C0 | DT | C | GL | MR | ME | 220 | 27 | BILL 5 | B05 | S2 | FF | R00 | ACF07 | 220 |  |  | FF | MEP |  |  |  |  |  |  |  |  |  |  |  |  |  |  |
| DGLMR26019C0 |  | DT-GL ; Final Fix, Inst of Switch/Sockets (MRI & CT) | 12d | 2012-09-09 | 2012-09-22 | DGLMR09901C0, DGLMR09503C0 |  |  |  |  | 27d | 0d | ELECTRICAL [610.8 h]; Cost |  |  | DGLMR26019C0 | DT | C | GL | MR | ME | 260 | 19 | BILL 5 | B05 | S2 | FF | R00 | ACF07 | 260 |  |  | FF | MEP |  |  |  |  |  |  |  |  |  |  |  |  |  |  |

| ID | WBS | Activity | Duration | Start | Finish | Predecessors | Complete | Remaining | Planned start | Planned finish | Total float | Free float | Resources | Cost | Actual cost | change id | CCAD BUILDING(SET) | CCAD PHASE(SET) | CCAD FLOOR(SET) | CCAD ZONE(SET) | CCAD WORK(SET) | CCAD SECTION(SET) | CCAD SERIAL No.(SET) | CCAD CBS(SET) | CCAD BILL(SET) | CCAD HANDOVER(SET) | CCAD TAG(SET) | CCAD REV(SET) | CCADACF (SET) | CCAD SSCF | RENZ % COMPLETE | Claimed This Month | CCAD SUB ZONE MEP(SET) | CCAD CSA | Act Selector % | user_number8 | user_integer1 | user_integer2 | user_number7 | Change Order # | NEW ACTIVITY ID | P_811 | P_711 | July2011 Target% Complete | PERCENT COMPLETE | CCAD DIVISION(SET) | CCAD MEQ | R3 Finish |
| --- | --- | --- | --- | --- | --- | --- | --- | --- | --- | --- | --- | --- | --- | --- | --- | --- | --- | --- | --- | --- | --- | --- | --- | --- | --- | --- | --- | --- | --- | --- | --- | --- | --- | --- | --- | --- | --- | --- | --- | --- | --- | --- | --- | --- | --- | --- | --- | --- |
|  | 10 | **Precommissioning Tesing & snagging (MRI, RAD, NUC MED & CT)** |  | 2012-08-07 | 2012-10-21 |  |  |  |  |  |  |  |  |  |  |  |  |  |  |  |  |  |  |  |  |  |  |  |  |  |  |  |  |  |  |  |  |  |  |  |  |  |  |  |  |  |  |  |
| DGLTS01804C0 |  | DT-GL ; MEP de-snag, FIREM sign-off | 10d | 2012-08-07 | 2012-08-18 | DGLMR26015C0, DGLMR22025C0, DGLMR21113C0, DGLMR23019C0, DGLMR22021C0, DGLMR26017C0, DGLMR26003C0, DGLMR27030C0 |  |  |  |  | 55d | 28d | TESTING & COMMISSIONING [1275 h]; Cost |  |  | DGLTS01801C0 | DT | C | GL | TS | SC | 018 | 01 | BILL 5 | B05 | S2 | 01 | R00 | ACF07 | 018 |  |  |  |  |  |  |  |  |  |  |  |  |  |  |  |  |  |  |
| DGLTS01808C0 |  | DT-GL ; Touch-up & Clean / JV inspection /CIR /De-snag | 18d | 2012-09-23 | 2012-10-13 | DGLCO04401C0, DGLMR06101C0, DGLMR07103C0, DGLMR08709C0, DGLMR09601C0, DGLMR09701C0, DGLMR09903C0, DGLMR09907C0, DGLMR11001C0, DGLMR11003C0, DGLTS01804C0, DGLMR05501C0, DGLMR09503C0, DGLMR09675C1, DGLMR26019C0, DGLMR22027C0 |  |  |  |  | 27d | 0d | TESTING & COMMISSIONING [213 h]; Cost |  |  | DGLTS01802C0 | DT | C | GL | TS | SC | 018 | 02 | BILL 5 | B05 | S2 | 02 | R00 | ACF07 | 018 |  |  |  |  |  |  |  |  |  |  |  |  |  |  |  |  |  |  |
| DGLTS01812C0 |  | DT-GL ; Consultant's final de-snag inspection | 7d | 2012-10-14 | 2012-10-21 | DGLTS01808C0 |  |  |  |  | 27d | 15.85d | Labor General [1 h]; Cost |  |  | DGLTS01803C0 | DT | C | GL | TS | SC | 018 | 03 | BILL 5 | B05 | S2 | 03 | R00 | ACF07 | 018 |  |  |  |  |  |  |  |  |  |  |  |  |  |  |  |  |  |  |
|  | 05 | **Corridor, Public area (Lobby)** |  | 2011-03-02 | 2012-11-11 |  |  |  |  |  |  |  |  |  |  |  |  |  |  |  |  |  |  |  |  |  |  |  |  |  |  |  |  |  |  |  |  |  |  |  |  |  |  |  |  |  |  |  |
| DGLPA21111C0 |  | DT-GL ; 1st Fix, Inst of Sprinkler main pipe (Public Area) | 45d | 2011-03-02 A | 2011-10-05 | DGLPA23001C0, DGLS107807C0, DGLS207807C0, DGLS307807C0 | 95% | 2.25d | 2011-04-02 | 2011-05-23 | 161.22d | 21.16d | MECHANICAL [7842 h]; Cost [53543.7 AED] | 53,543.69 | 50,866.51 | DGLPA21111C0 | DT | C | GL | PA | ME | 211 | 11 | BILL 5 | B05 | S2 | 1F | R00 | ACF04 | 211 | 95 | 25545.78 | 1S | MEP | M1F |  |  |  |  |  |  |  |  |  |  |  |  |  |
| DGLPA23001C0 |  | DT-GL ; 1st Fix, Inst. of Supports for MEP (Public Area) | 26.88d | 2011-03-02 A | 2011-10-03 | DGLS107807C0 SS, DGLS207807C0 SS, DGLS307807C0 SS | 90% | 2.69d | 2011-03-01 | 2011-03-31 | 11.15d | 0d | MECHANICAL [4696.8 h]; Cost [75432.9 AED] | 75,432.94 | 67,889.64 | DGLPA23001C0 | DT | C | GL | PA | ME | 230 | 01 | BILL 5 | B05 | S2 | 1F | R00 | ACF04 | 230 | 95 | 15358.11 | 1S | MEP | M1F |  |  |  |  |  |  |  |  |  |  |  |  |  |
| DGLPA09201C0 |  | DT-GL ; Metal Studs (Public Area) | 90d | 2011-03-20 A | 2011-10-31 | DGLPA23001C0 SS+12d | 71% | 26.1d | 2011-04-20 | 2011-08-03 | 11.15d | 0d | PARTITIONS [9094 h]; PARTITIONS - Metal Studs [1495 m]; Cost |  |  | DGLPA09201C0 | DT | C | GL | PA | PT | 092 | 01 | BILL 5 | B05 | S2 | 1F | R00 | ACF06 | 092 | 50 | 59135.1 |  | GP | PMS | 0 | 0 | 0 | 0 | 313 | 944 | 65 | 61 |  |  |  |  |  |
| DGLPA09203C0 |  | DT-GL ; Partitions 1st face (Public Area) | 90d | 2011-03-24 A | 2011-11-24 | DGLPA09201C0 SS+12d, DAFCO21101R02 FF, DGLPA22019C0 FF, DGLPA23023C0 FF, DGLPA23017C0 FF | 50% | 45d | 2011-05-04 | 2011-08-17 | 46.25d | 35.1d | PARTITIONS [1495 m]; PARTITIONS [7108 h]; Cost |  |  | DGLPA09203C0 | DT | C | GL | PA | PT | 092 | 03 | BILL 5 | B05 | S2 | 2F | R00 | ACF06 | 092 | 15 | 41394.66 |  | GP | P1F | 0 | 0 | 0 | 0 | 314 | 945 | 40 | 22 |  |  |  |  |  |
| DGLPA22019C0 |  | DT-GL ; 1st Fix, Inst of Drainage pipe (ceiling) (Public Area) | 250d | 2011-03-27 A | 2011-10-09 | DGLPA23001C0, DGLPA27010C0 SS+14d, DGLS107807C0, DGLS207807C0, DGLS307807C0 | 98% | 5d | 2011-05-02 | 2012-02-28 | 58.56d | 0d | PLUMBING [10887.6 h]; Cost [61888.2 AED] | 61,888.15 | 60,650.39 | DGLPA22019C0 | DT | C | GL | PA | ME | 220 | 19 | BILL 5 | B05 | S2 | 1F | R00 | ACF04 | 220 | 95 |  | 1S | MEP | M1F |  |  |  |  |  |  | 98 | 95 | 95 |  |  |  |  |
| DGLPA21117C0 |  | DT-GL ; 1st Fix, Inst of Sprinkler branch pipe (Public Area) | 61.88d | 2011-03-28 A | 2011-11-03 | DGLPA09201C0, DGLPA21111C0 | 95% | 3.09d | 2011-05-24 | 2011-08-04 | 140.06d | 128.91d | MECHANICAL [1441.2 h]; Cost [78749.8 AED] | 78,749.79 | 74,812.3 | DGLPA21117C0 | DT | C | GL | PA | ME | 211 | 17 | BILL 5 | B05 | S2 | 1F | R00 | ACF04 | 211 | 80 | 18258.49 | 1S | MEP | M1F |  |  |  |  |  |  |  |  |  |  |  |  |  |
| DGLPA26001C0 |  | DT-GL ; 1st Fix, Inst of Trunking/Conduiting (Public Area) | 63d | 2011-04-07 A | 2011-11-23 | DGLPA23001C0, DGLS107807C0, DGLS207807C0, DGLS307807C0 | 35% | 40.95d | 2011-04-02 | 2011-06-13 | 58.56d | 0d | ELECTRICAL [824.4 h]; Cost [42423.2 AED] | 42,423.24 | 14,848.13 | DGLPA26001C0 | DT | C | GL | PA | ME | 260 | 01 | BILL 5 | B05 | S2 | 1F | R00 | ACF04 | 260 | 25 | 27492.94 | 1S | MEP | M1F |  |  |  |  |  |  | 100 | 70 | 85 |  |  |  |  |
| DGLPA27010C0 |  | DT-GL ; 1st Fix, Inst of Trunking for ELV system (Public Area) | 60d | 2011-04-21 A | 2011-12-04 | DGLPA23001C0, DGLPA26001C0 SS+12d, DGLS107807C0, DGLS207807C0, DGLS307807C0 | 20% | 48d | 2011-04-16 | 2011-06-23 | 58.56d | 0d | ELECTRICAL [2046 h]; Cost [88597.9 AED] | 88,597.89 | 17,719.58 | DGLPA27010C0 | DT | C | GL | PA | ME | 270 | 10 | BILL 5 | B05 | S2 | 1F | R00 | ACF04 | 270 | 30 | 69344.1 | 1S | MEP | M1F |  |  |  |  |  |  | 80 | 70 | 85 | 20 |  |  |  |
| DGLPA22005C0 |  | DT-GL ; 1st Fix, Inst of Water supply pipe (ceiling) (Public Area) | 100d | 2011-04-27 A | 2011-11-10 | DGLPA22019C0 SS+10d, DGLPA23001C0, DGLS107807C0, DGLS207807C0, DGLS307807C0 | 70% | 30d | 2011-05-14 | 2011-09-10 | 58.56d | 0d | PLUMBING [4896 h]; Cost [264473 AED] | 264,473.49 | 185,131.44 | DGLPA22005C0 | DT | C | GL | PA | ME | 220 | 05 | BILL 5 | B05 | S2 | 1F | R00 | ACF04 | 220 | 45 | 15338.85 | 1S | MEP | M1F |  |  |  |  |  |  |  |  | 85 |  |  |  |  |
| DGLPA23017C0 |  | DT-GL ; 1st Fix, Inst of CHW pipe (Public Area) | 200d | 2011-04-27 A | 2011-10-26 | DGLPA22005C0 SS+10d, DGLPA23001C0, DGLS107807C0, DGLS207807C0, DGLS307807C0 | 90% | 20d | 2011-05-25 | 2012-01-23 | 68.56d | 0d | MECHANICAL [9684 h]; Cost [345418 AED] | 345,418.28 | 310,876.46 | DGLPA23017C0 | DT | C | GL | PA | ME | 230 | 17 | BILL 5 | B05 | S2 | 1F | R00 | ACF04 | 230 | 30 | 62031.2 | 1S | MEP | M1F |  |  |  |  |  |  | 90 | 75 | 65 |  |  |  |  |
| DGLPA22011C0 |  | DT-GL ; 2nd Fix, Drainage/Water pipe (wall) (Public Area) | 78d | 2011-05-15 A | 2011-12-28 | DGLPA09201C0, DAFMI22002R02 FS+58d | 70% | 23.4d | 2011-05-31 | 2011-09-01 | 13.85d | 2.7d | PLUMBING [1173.6 h]; Cost [61888.2 AED] | 61,888.15 | 43,321.71 | DGLPA22011C0 | DT | C | GL | PA | ME | 220 | 11 | BILL 5 | B05 | S2 | 2F | R00 | ACF07 | 220 | 10 | 7350.18 | 2n | MEP |  |  |  |  |  |  |  |  |  | 70 |  |  |  |  |
| DGLPA23023C0 |  | DT-GL ; 1st Fix, Inst of Main Ducting (Public Area) | 250d | 2011-05-15 A | 2011-10-18 | DGLPA23001C0, DGLPA23017C0 SS+7d, DGLS107807C0, DGLS207807C0, DGLS307807C0 | 95% | 12.5d | 2011-06-01 | 2012-03-31 | 76.06d | 0d | MECHANICAL [14760 h]; Cost [622619 AED] | 622,619.08 | 591,488.13 | DGLPA23023C0 | DT | C | GL | PA | ME | 230 | 23 | BILL 5 | B05 | S2 | 1F | R00 | ACF04 | 230 | 60 | 235461.87 | 1S | MEP | M1F |  |  |  |  |  |  |  |  | 90 |  |  |  |  |
| DGLPA40302C0 |  | DT-GL ; 2nd Fix, Pneumatic tube (Public Area) | 180d | 2011-05-15 A | 2011-12-07 | DGLPA09201C0 | 85% | 27d | 2011-05-31 | 2012-01-05 | 32.15d | 21d | MECHANICAL [7657.2 h]; Cost [291897 AED] | 291,897.23 | 248,112.64 | C03E140302C0 | DT | C | GL | PA | ME | 403 | 02 | BILL 5 | B05 | S2 | 2F | R00 | ACF07 | 403 | 25 | 93940.84 | 2n | MEP |  |  |  |  |  |  |  | 85 | 80 | 45 |  |  |  |  |
| DGLPA23009C0 |  | DT-GL ; 2nd Fix, Inst of VAV'S CHW connection (Public Area) | 90d | 2011-06-15 A | 2011-12-08 | DGLPA23017C0 | 65% | 31.5d | 2011-07-07 | 2011-10-23 | 85.06d | 0d | MECHANICAL [1684.8 h]; Cost [91006.1 AED] | 91,006.06 | 59,153.94 | DGLPA23009C0 | DT | C | GL | PA | ME | 230 | 09 | BILL 5 | B05 | S2 | 2F | R00 | ACF07 | 230 |  | 10820.47 | 2n | MEP |  | 0 | 0 | 0 | 0 |  |  | 60 | 25 | 25 |  |  |  |  |
| DGLPA23008C0 |  | DT-GL ; 1st Fix, Inst of VCD's/FD's (Public Area) | 100d | 2011-06-23 A | 2011-11-27 | DGLPA23023C0 | 70% | 30d | 2011-07-05 | 2011-11-01 | 94.06d | 82.91d | MECHANICAL [7671.6 h]; Cost [232964 AED] | 232,964.23 | 163,074.96 | DGLPA23008C0 | DT | C | GL | PA | ME | 230 | 08 | BILL 5 | B05 | S2 | 1F | R00 | ACF04 | 230 |  | 49633.28 | 1S | MEP | M1F |  |  |  |  |  |  | 70 | 50 | 35 |  |  |  |  |
| DGLPA23015C0 |  | DT-GL ; 2nd Fix, Insulation of CHW pipe & Duct (Public Area) | 150d | 2011-07-10 A | 2012-01-14 | DGLPA23009C0, DGLPA23017C0, DGLPA23023C0 | 80% | 30d | 2011-09-04 | 2012-03-04 | 85.06d | 73.91d | MECHANICAL [5311.2 h]; Cost [286617 AED] | 286,617.06 | 229,293.65 | DGLPA23015C0 | DT | C | GL | PA | ME | 230 | 15 | BILL 5 | B05 | S2 | 2F | R00 | ACF07 | 230 |  |  | 2n | MEP |  |  |  |  |  |  |  | 80 | 60 | 95 |  |  |  |  |
| DGLPA26013C0 |  | DT-GL ; 1st Fix, Inst of Cable Tray (Public Area) | 48d | 2011-10-03 | 2011-12-04 | DGLPA23001C0, DGLPA27010C0 SS+10d, DGLS107807C0, DGLS207807C0, DGLS307807C0 |  |  |  |  | 76.56d | 0d | ELECTRICAL [430.8 h]; Cost |  |  | DGLPA26013C0 | DT | C | GL | PA | ME | 260 | 13 | BILL 5 | B05 | S2 | 1F | R00 | ACF04 | 260 | 30 | 13501.09 | 1S | MEP | M1F |  |  |  |  |  |  | 80 | 70 | 80 | 0 |  |  |  |
| DGLPA26009C0 |  | DT-GL ; 2nd Fix, Inst of Wall conduites (Public Area) | 48d | 2011-10-31 | 2012-01-02 | DGLPA09201C0 |  |  |  |  | 11.15d | 0d | ELECTRICAL [7426.8 h]; Cost |  |  | DGLPA26009C0 | DT | C | GL | PA | ME | 260 | 09 | BILL 5 | B05 | S2 | 2F | R00 | ACF07 | 260 |  |  | 2n | MEP |  |  |  |  |  |  |  | 50 | 10 | 15 | 0 |  |  |  |
| DGLPA08103C0 |  | DT-GL ; Door Frames (Public Area) | 42d | 2011-11-12 | 2012-01-02 | DGLPA09201C0, GNHE08101C0 FS+79d |  |  |  |  | 64.25d | 53.1d | ASSORTED DOORS [866 h]; Cost |  |  | DGLPA08103C0 | DT | C | GL | PA | DO | 081 | 03 | BILL 5 | B05 | S2 | DF | R00 | ACF06 | 081 |  |  |  |  |  |  |  |  |  | 316 | 947 |  |  |  |  | 08 |  |  |
| DGLPA27001C0 |  | DT-GL ; 1st Fix, Wiring/ Cabling work (Public Area) | 42d | 2011-12-04 | 2012-01-23 | DGLPA26001C0, DGLPA26013C0, DGLPA27010C0 |  |  |  |  | 76.56d | 65.41d | ELECTRICAL [436.8 h]; Cost |  |  | DGLPA27001C0 | DT | C | GL | PA | ME | 270 | 01 | BILL 5 | B05 | S2 | 1F | R00 | ACF04 | 270 |  | 12896.34 | 1S | MEP | M1F |  |  |  |  |  |  |  |  | 55 | 0 |  |  |  |
| DGLPA01005C0 |  | DT-GL ; 2nd, Wall Inspection by Consultant (Public Area) | 6d | 2012-01-02 | 2012-01-09 | DGLPA22011C0, DGLPA26009C0, DGLPA40302C0 |  |  |  |  | 11.15d | 0d | Labor General [1.2 h]; Cost |  |  | DGLPA01005C0 | DT | C | GL | PA | ME | 010 | 05 | BILL 5 | B05 | S2 | WI | R00 | ACF07 | 010 |  |  | 2n | MEP |  |  |  |  |  |  |  |  |  | 25 |  |  |  |  |
| DGLPA09205C0 |  | DT-GL ; Partitions Closing (Public Area) | 48d | 2012-01-09 | 2012-03-06 | DAFOA09206C1 FF, DGLPA01005C0, DGLPA09203C0, DGLPA22005C0, DGLPA22019C0, DAFMI22002R02 FS+58d, DGLPA08103C0 FF, DGLPA23008C0 FF |  |  |  |  | 11.15d | 0d | PARTITIONS [1495 m]; PARTITIONS [9114 h]; Cost |  |  | DGLPA09205C0 | DT | C | GL | PA | PT | 092 | 05 | BILL 5 | B05 | S2 | FF | R00 | ACF06 | 092 |  |  |  | GP | P2F |  |  |  |  | 315 | 946 |  |  |  |  |  |  |  |
| DGLPA09901C0 |  | DT-GL ; Wall Prime & 1st coat (Public Area) | 30d | 2012-03-06 | 2012-04-10 | DGLPA09205C0, DGLCO04455C0 FF |  |  |  |  | 11.15d | 0d | WALL PAINT [310 h]; WALL PAINT [385 m2]; Cost |  |  | DGLPA09901C0 | DT | C | GL | PA | PA | 099 | 01 | BILL 5 | B05 | S2 | 01 | R00 | ACF06 | 099 |  |  |  |  |  |  |  |  |  | 328 | 956 |  |  |  |  |  |  |  |
| DGLPA26005C0 |  | DT-GL ; 2nd Fix, Wiring for Power/Lighting/Emergency (Public Area) | 36d | 2012-03-06 | 2012-04-17 | DGLPA09205C0 |  |  |  |  | 65.15d | 0d | ELECTRICAL [2502 h]; Cost |  |  | DGLPA26005C0 | DT | C | GL | PA | ME | 260 | 05 | BILL 5 | B05 | S2 | 2F | R00 | ACF07 | 260 |  |  | 2n | MEP |  |  |  |  |  |  |  |  |  |  |  |  |  |  |
| DGLPA26007C0 |  | DT-GL ; 2nd Fix, Cable Pulling (Public Area) | 48d | 2012-03-06 | 2012-05-01 | DGLPA09201C0 SS+6d, DGLPA09205C0 |  |  |  |  | 107.15d | 96d | ELECTRICAL [8700 h]; Cost |  |  | DGLPA26007C0 | DT | C | GL | PA | ME | 260 | 07 | BILL 5 | B05 | S2 | 2F | R00 | ACF07 | 260 |  |  | 2n | MEP |  |  |  |  |  |  |  |  |  | 25 |  |  |  |  |
| DGLPA26011C0 |  | DT-GL ; 2nd Fix, Inst of Equipment (DB) (Public Area) | 48d | 2012-03-06 | 2012-05-01 | DGLPA09205C0 |  |  |  |  | 77.15d | 66d | ELECTRICAL [4545.6 h]; Cost |  |  | DGLPA26011C0 | DT | C | GL | PA | ME | 260 | 11 | BILL 5 | B05 | S2 | 2F | R00 | ACF04 | 260 |  |  | 2n | MEP |  |  |  |  |  |  |  |  |  |  |  |  | E |  |
| DGLPA26053C0 |  | DT-GL ; 2nd Fix, Wiring / Cabling (Public Area) | 36d | 2012-03-06 | 2012-04-17 | DGLPA26009C0, DGLPA09205C0 |  |  |  |  | 119.15d | 108d | ELECTRICAL [2502 h]; Cost |  |  | DGLPA26053C0 | DT | C | GL | PA | ME | 260 | 53 | BILL 5 | B05 | S2 | 2F | R00 | ACF07 | 260 |  |  | 2n | MEP |  |  |  |  |  | 389 | 977 |  |  |  |  |  |  |  |
| DGLPA27020C0 |  | DT-GL ; 2nd Fix, Inst of ELV Equipment (Panels) (Public Area) | 48d | 2012-03-06 | 2012-05-01 | DGLPA09205C0 |  |  |  |  | 77.15d | 66d | ELECTRICAL [2354.4 h]; Cost |  |  | DGLPA27020C0 | DT | C | GL | PA | ME | 270 | 20 | BILL 5 | B05 | S2 | 2F | R00 | ACF04 | 270 |  |  | 2n | MEP |  |  |  |  |  |  |  |  |  |  |  |  | E |  |
| DGLPA05501C0 |  | DT-GL ; Handrails & balustrade (Public Area) | 31.75d | 2012-04-10 | 2012-05-16 | DGLPA09901C0, DAFT205509C0, DAFT805509C0, DAFT905509C0, DAFT305509C0, DAFT105509C0, DAFT1005509C0, DAFT505509C0 |  |  |  |  | 63.4d | 52.25d | SECONDARY STEEL [289 h]; Cost |  |  | DGLPA05501C0 | DT | C | GL | PA | SW | 055 | 01 | BILL 5 | B05 | S2 | 01 | R00 | ACF03 | a |  |  |  |  |  |  |  |  |  |  |  |  |  |  |  |  |  |  |
| DGLPA09501C0 |  | DT-GL ; Ceiling Grid and Service Tile (Public Area) | 36d | 2012-04-10 | 2012-05-22 | DGLPA09205C0 SS+15d, DGLPA21117C0, DGLPA23008C0, DGLPA23009C0, DGLPA23015C0, DGLPA27001C0, DAFMI22003R02 FS+58d, DGLPA09901C0 |  |  |  |  | 11.15d | 0d | CEILING GRID FOR GYPSUM [5990.1 h]; CEILING GRID FOR GYPSUM [512.38 m2]; Cost |  |  | DGLPA09501C0 | DT | C | GL | PA | CE | 095 | 01 | BILL 5 | B05 | S2 | 01 | R00 | ACF06 | 095 |  |  |  |  |  |  |  |  |  | 323 | 952 |  |  |  |  |  |  | R3 |
| DGLPA26015C0 |  | DT-GL ; Final Fix, Termination & Gladding of Cables (Public Area) | 48d | 2012-04-17 | 2012-06-12 | DGLPA26005C0 |  |  |  |  | 65.15d | 42d | ELECTRICAL [368.4 h]; Cost |  |  | DGLPA26015C0 | DT | C | GL | PA | ME | 260 | 15 | BILL 5 | B05 | S2 | FF | R00 | ACF07 | 260 |  |  | FF | MEP |  |  |  |  |  |  |  |  |  |  |  |  |  |  |
| DGLPA09601C0 |  | DT-GL ; Flooring (Rubber & etc) (Public Area) | 48d | 2012-05-22 | 2012-07-18 | DGLPA09901C0, DAFMI22003R02 FS+58d, DGLPA09501C0, DGLPA05501C0 FF |  |  |  |  | 11.15d | 0d | RUBBER FLOOR [584 h]; RUBBER FLOOR [1459 m2]; Cost |  |  | DGLPA09601C0 | DT | C | GL | PA | FF | 096 | 01 | BILL 5 | B05 | S2 | 03 | R00 | ACF06 | RF |  |  |  |  |  |  |  |  |  | 326 | 955 |  |  |  |  |  |  | R3 |
| DGLPA09602C0 |  | DT-GL ; Flooring (Stone) (Public Area) | 48d | 2012-05-22 | 2012-07-18 | DGLPA09901C0, DAFMI22003R02 FS+58d, DGLPA09501C0, A10410 |  |  |  |  | 11.15d | 0d | STONE FLOOR [2583 m2]; STONE FLOOR [2328 h]; Cost |  |  | DGLPA09601C0 | DT | C | GL | PA | FF | 096 | 01 | BILL 5 | B05 | S2 | 09 | R00 | ACF06 | ST |  |  |  |  |  |  |  |  |  | 326 | 955 |  |  |  |  |  |  | R3 |
| DGLPA09905C0 |  | DT-GL ; Ceiling Prime & 1st coat (Public Area) | 36d | 2012-05-22 | 2012-07-04 | DGLPA09501C0 |  |  |  |  | 57.9d | 0d | ASSORTED CEILING FINISH [199 h]; Cost |  |  | DGLPA09905C0 | DT | C | GL | PA | PA | 099 | 05 | BILL 5 | B05 | S2 | 01 | R00 | ACF06 | 099 |  |  |  |  |  |  |  |  |  | 330 | 958 |  |  |  |  |  |  |  |
| DGLPA21115C0 |  | DT-GL ; 2nd Fix, Inst of Sprinkler droppers (Public Area) | 36d | 2012-05-22 | 2012-07-04 | DGLPA09501C0 |  |  |  |  | 23.15d | 0d | MECHANICAL [2067.6 h]; Cost |  |  | DGLPA21115C0 | DT | C | GL | PA | ME | 211 | 15 | BILL 5 | B05 | S2 | 2F | R00 | ACF07 | 211 |  |  | 2n | MEP |  |  |  |  |  |  |  |  |  |  |  |  |  |  |
| DGLPA23021C0 |  | DT-GL ; 2nd Fix, Inst of Flexible Duct & Plenum boxes (Public Area) | 36d | 2012-05-22 | 2012-07-04 | DGLPA09205C0, DGLPA09501C0 |  |  |  |  | 47.15d | 0d | MECHANICAL [274.8 h]; Cost |  |  | DGLPA23021C0 | DT | C | GL | PA | ME | 230 | 21 | BILL 5 | B05 | S2 | 2F | R00 | ACF07 | 230 |  |  | 2n | MEP |  |  |  |  |  |  |  |  |  |  |  |  |  |  |
| DGLPA26017C0 |  | DT-GL ; Final Fix, Inst of Ceiling rose (Public Area) | 48d | 2012-05-22 | 2012-07-18 | DGLPA09501C0 |  |  |  |  | 28.15d | 0d | ELECTRICAL [67.2 h]; Cost |  |  | DGLPA26017C0 | DT | C | GL | PA | ME | 260 | 17 | BILL 5 | B05 | S2 | FF | R00 | ACF07 | 260 |  |  | FF | MEP |  |  |  |  |  |  |  |  |  |  |  |  |  |  |
| DGLPA27002C0 |  | DT-GL ; 2nd Fix, Wiring Droppers (Public Area) | 36d | 2012-05-22 | 2012-07-04 | DGLPA09501C0 |  |  |  |  | 23.15d | 0d | ELECTRICAL [2502 h]; Cost |  |  | DGLPA27002C0 | DT | C | GL | PA | ME | 270 | 02 | BILL 5 | B05 | S2 | 2F | R00 | ACF07 | 270 |  |  | 2n | MEP |  |  |  |  |  |  |  |  |  |  |  |  |  |  |
| DGLPA40303C0 |  | DT-GL ; Final Fix, Pneumatic Station (Public Area) | 48d | 2012-05-22 | 2012-07-18 | DGLPA09501C0 |  |  |  |  | 35.15d | 12d | MECHANICAL [5653.2 h]; Cost |  |  | C03E140303C0 | DT | C | GL | PA | ME | 403 | 03 | BILL 5 | B05 | S2 | FF | R00 | ACF07 | 403 |  |  | FF | MEP |  |  |  |  |  |  |  |  |  |  |  |  |  |  |
| DGLPA21113C0 |  | DT-GL ; Final Fix, Inst of Sprinklers head/ Extinguisher (Public Area) | 54d | 2012-05-29 | 2012-08-01 | DGLPA09501C0, DGLPA21115C0 SS+6d |  |  |  |  | 23.15d | 0d | MECHANICAL [1813.2 h]; Cost |  |  | DGLPA21113C0 | DT | C | GL | PA | ME | 211 | 13 | BILL 5 | B05 | S2 | FF | R00 | ACF07 | 211 |  |  | FF | MEP |  |  |  |  |  |  |  |  |  |  |  |  |  |  |
| DGLPA23019C0 |  | DT-GL ; Final Fix, Inst of Grilles & Diffusers (Public Area) | 30d | 2012-05-29 | 2012-07-04 | DGLPA09501C0, DGLPA23021C0 SS+6d |  |  |  |  | 47.15d | 24d | MECHANICAL [6355.2 h]; Cost |  |  | DGLPA23019C0 | DT | C | GL | PA | ME | 230 | 19 | BILL 5 | B05 | S2 | FF | R00 | ACF07 | 230 |  |  | FF | MEP |  |  |  |  |  |  |  |  |  |  |  |  |  |  |
| DGLPA27030C0 |  | DT-GL ; Final Fix, Inst of ELV device (Detector/Speaker) (Public Area) | 54d | 2012-05-29 | 2012-08-01 | DGLPA09501C0, DGLPA27002C0 SS+6d |  |  |  |  | 23.15d | 0d | ELECTRICAL [2152.8 h]; Cost |  |  | DGLPA27030C0 | DT | C | GL | PA | ME | 270 | 30 | BILL 5 | B05 | S2 | FF | R00 | ACF07 | 270 |  |  | FF | MEP |  |  |  |  |  |  |  |  |  |  |  |  |  |  |
| DGLPA26003C0 |  | DT-GL ; Final Fix, Inst of Light fittings (Public Area) | 48d | 2012-05-30 | 2012-07-26 | DGLPA09501C0, DGLPA26017C0 SS+7d |  |  |  |  | 28.15d | 5d | ELECTRICAL [6626.4 h]; Cost |  |  | DGLPA26003C0 | DT | C | GL | PA | ME | 260 | 03 | BILL 5 | B05 | S2 | FF | R00 | ACF07 | 260 |  |  | FF | MEP |  |  |  |  |  |  |  |  |  |  |  |  |  |  |
| DGLPA09903C0 |  | DT-GL ; Wall Final Paint (Public Area) | 36d | 2012-07-04 | 2012-08-15 | DGLPA09901C0, DGLPA09905C0 |  |  |  |  | 57.9d | 42d | WALL PAINT [167 h]; WALL PAINT [207 m2]; Cost |  |  | DGLPA09903C0 | DT | C | GL | PA | PA | 099 | 03 | BILL 5 | B05 | S2 | 02 | R00 | ACF06 | 099 |  |  |  |  |  |  |  |  |  | 329 | 957 |  |  |  |  |  |  |  |
| DGLPA08107C0 |  | DT-GL ; Doors (Public Area) | 42d | 2012-07-18 | 2012-09-08 | DGLPA08103C0, DGLPA09901C0, DGLPA09601C0 |  |  |  |  | 12.28d | 0d | ASSORTED DOORS [1400 h]; ASSORTED DOORS [140 no]; Cost |  |  | DGLPA08107C0 | DT | C | GL | PA | DO | 081 | 07 | BILL 5 | B05 | S2 | DR | R00 | ACF06 | 081 |  |  |  |  |  |  |  |  |  | 317 | 948 |  |  |  |  | 08 |  |  |
| DGLPA09701C0 |  | DT-GL ; Wall finishes (ST, WD, WC) (Public Area) | 30d | 2012-07-18 | 2012-08-25 | DGLPA26011C0, DGLPA27020C0, TVT0114211C0, TVT0214211C0, TVT1214211C0, TVT3114211C0, TVT3214255C0, TVT3314245C0, DGLPA09602C0, DGLPA09601C0 |  |  |  |  | 11.15d | 0d | ASSORTED WALL FINISH [1677 h]; ASSORTED WALL FINISH [1928 m2]; Cost |  |  | DGLPA09701C0 | DT | C | GL | PA | WF | 097 | 01 | BILL 5 | B05 | S2 | 01 | R00 | ACF06 | 097 |  |  |  |  |  |  |  |  |  | 105 | 1002 |  |  |  |  |  |  |  |
| DGLPA01006C0 |  | DT-GL ; 2nd, Ceiling Inspection by Consultants (Public Area) | 6d | 2012-08-01 | 2012-08-08 | DGLPA21115C0, DGLPA23009C0, DGLPA23015C0, DGLPA27002C0, DGLPA09501C0, DGLPA21113C0, DGLPA23019C0, DGLPA26003C0, DGLPA26017C0, DGLPA27030C0, DGLPA40303C0, DGLPA26015C0 |  |  |  |  | 23.15d | 12d | Labor General [1.2 h]; Cost |  |  | DGLPA01006C0 | DT | C | GL | PA | ME | 010 | 06 | BILL 5 | B05 | S2 | CI | R00 | ACF07 | 010 |  |  | 2n | MEP |  |  |  |  |  |  |  |  |  |  |  |  |  |  |
| DGLPA09503C0 |  | DT-GL ; Ceiling closure - ACT/Gypsum (Public Area) | 16.75d | 2012-08-25 | 2012-09-12 | DAFOA09505C1 FF, DGLPA01006C0, DGLPA21115C0, DGLPA26005C0, DGLPA27001C0, DGLPA27002C0, DGLPA09701C0, DGLPA23021C0, DGLPA26053C0, DGLPA26007C0 |  |  |  |  | 11.15d | 0d | ASSORTED CEILING FINISH [1213.39 h]; CEILING GYPSUM [168.1 h]; ASSORTED CEILING FINISH [1973 m2]; CEILING GYPSUM [512 m2]; Cost |  |  | DGLPA09503C0 | DT | C | GL | PA | CE | 095 | 03 | BILL 5 | B05 | S2 | 02 | R00 | ACF06 | 095 |  |  |  |  |  |  |  |  |  | 324 | 953 |  |  |  |  |  |  | R3 |
| DGLPA11001C0 |  | DT-GL ; Wall Protection (WP, CG, WG, FCG) (Public Area) | 24d | 2012-08-25 | 2012-09-22 | DGLPA09701C0, DGLPA09903C0 SS |  |  |  |  | 27.9d | 16.75d | FF&E [2985 h]; Cost |  |  | DGLPA11001C0 | DT | C | GL | PA | WF | 110 | 01 | BILL 5 | B05 | S2 | 03 | R00 | ACF08 | b |  |  |  |  |  |  |  |  |  | 326 | 1001 |  |  |  |  |  |  |  |
| DGLPA11009C0 |  | DT-GL ; Signage (Public Area) | 16d | 2012-08-25 | 2012-09-12 | DGLPA09701C0 |  |  |  |  | 35.9d | 24.75d | SIGNAGES [440 h]; SIGNAGES [439.68 no]; Cost |  |  | DGLPA11009C0 | DT | C | GL | PA | SA | 110 | 09 | BILL 5 | B05 | S2 | 09 | R00 | ACF08 | c |  |  |  |  |  |  |  |  |  | 322 | 951 |  |  |  |  | 08 |  |  |
| DGLPA08709C0 |  | DT-GL ; Ironmongery (Public Area) | 27.62d | 2012-09-08 | 2012-10-09 | DGLPA08107C0 |  |  |  |  | 12.28d | 1.12d | IRONMONGERY [640 h]; IRONMONGERY [64 no]; Cost |  |  | DGLPA08709C0 | DT | C | GL | PA | DO | 087 | 09 | BILL 5 | B05 | S2 | IM | R00 | ACF06 | 087 |  |  |  |  |  |  |  |  |  | 322 | 951 |  |  |  |  | 08 |  |  |
| DGLPA09907C0 |  | DT-GL ; Ceiling Final paint (Public Area) | 12d | 2012-09-12 | 2012-09-26 | DGLPA09601C0, DGLPA09905C0, DGLPA09602C0, DGLPA09503C0 |  |  |  |  | 23.15d | 12d | ASSORTED CEILING FINISH [108 h]; Cost |  |  | DGLPA09907C0 | DT | C | GL | PA | PA | 099 | 07 | BILL 5 | B05 | S2 | 02 | R00 | ACF06 | 099 |  |  |  |  |  |  |  |  |  | 331 | 959 |  |  |  |  |  |  |  |
| DGLPA26019C0 |  | DT-GL ; Final Fix, Inst of Switch/Sockets (Public Area) | 12d | 2012-09-12 | 2012-09-26 | DGLPA09901C0, DGLPA09503C0 |  |  |  |  | 11.15d | 0d | ELECTRICAL [610.8 h]; Cost |  |  | DGLPA26019C0 | DT | C | GL | PA | ME | 260 | 19 | BILL 5 | B05 | S2 | FF | R00 | ACF07 | 260 |  |  | FF | MEP |  |  |  |  |  |  |  |  |  |  |  |  |  |  |

| ID | WBS | Activity | Duration | Start | Finish | Predecessors | Complete | Remaining | Planned start | Planned finish | Total float | Free float | Resources | Cost | Actual cost | change id | CCAD BUILDING(SET) | CCAD PHASE(SET) | CCAD FLOOR(SET) | CCAD ZONE(SET) | CCAD WORK(SET) | CCAD SECTION(SET) | CCAD SERIAL No.(SET) | CCAD CBS(SET) | CCAD BILL(SET) | CCAD HANDOVER(SET) | CCAD TAG(SET) | CCAD REV(SET) | CCADACF (SET) | CCAD SSCF | RENZ % COMPLETE | Claimed This Month | CCAD SUB ZONE MEP(SET) | CCAD CSA | Act Selector % | July2011 Target% Complete | P_811 | P_711 | user_number8 | user_integer1 | user_integer2 | user_number7 | Change Order # | NEW ACTIVITY ID | PERCENT COMPLETE | CCAD DIVISION(SET) | CCAD MEQ | R3 Finish |
| --- | --- | --- | --- | --- | --- | --- | --- | --- | --- | --- | --- | --- | --- | --- | --- | --- | --- | --- | --- | --- | --- | --- | --- | --- | --- | --- | --- | --- | --- | --- | --- | --- | --- | --- | --- | --- | --- | --- | --- | --- | --- | --- | --- | --- | --- | --- | --- | --- |
|  | 10 | **Precommissioning Tesing & snagging (Lobby)** |  | 2012-09-26 | 2012-11-11 |  |  |  |  |  |  |  |  |  |  |  |  |  |  |  |  |  |  |  |  |  |  |  |  |  |  |  |  |  |  |  |  |  |  |  |  |  |  |  |  |  |  |  |
| DGLTS01805C0 |  | DT-GL ; MEP de-snag, FIREM sign-off | 12d | 2012-09-26 | 2012-10-10 | DGLPA26015C0, DGLPA21113C0, DGLPA23019C0, DGLPA26017C0, DGLPA26003C0, DGLPA27030C0, DGLPA40303C0, DGLPA26019C0, D03CO04434C0, D02CO04434C0, D01CO04434C0, DGLCO04434C0 |  |  |  |  | 11.15d | 0d | TESTING & COMMISSIONING [1275 h]; Cost |  |  | DGLTS01801C0 | DT | C | GL | TS | SC | 018 | 01 | BILL 5 | B05 | S2 | 01 | R00 | ACF07 | 018 |  |  |  |  |  |  |  |  |  |  |  |  |  |  |  |  |  |  |
| DGLTS01809C0 |  | DT-GL ; Touch-up & Clean / JV inspection /CIR /De-snag | 18d | 2012-10-10 | 2012-11-03 | DGLCO04401C0, DGLPA08709C0, DGLPA09601C0, DGLPA09701C0, DGLPA09903C0, DGLPA09907C0, DGLPA11001C0, DGLPA11009C0, DGLTS01805C0, DAFT205509C0, DGLPA05501C0, DGLPA09602C0, DGLPA09503C0 |  |  |  |  | 11.15d | 0d | TESTING & COMMISSIONING [213 h]; Cost |  |  | DGLTS01802C0 | DT | C | GL | TS | SC | 018 | 02 | BILL 5 | B05 | S2 | 02 | R00 | ACF07 | 018 |  |  |  |  |  |  |  |  |  |  |  |  |  |  |  |  |  |  |
| DGLTS01813C0 |  | DT-GL ; Consultant's final de-snag inspection | 7d | 2012-11-03 | 2012-11-11 | DGLTS01809C0 |  |  |  |  | 11.15d | 0d | Labor General [1 h]; Cost |  |  | DGLTS01803C0 | DT | C | GL | TS | SC | 018 | 03 | BILL 5 | B05 | S2 | 03 | R00 | ACF07 | 018 |  |  |  |  |  |  |  |  |  |  |  |  |  |  |  |  |  |  |
|  | 04 | **Phlebotomy, Radiograpy** |  | 2011-03-02 | 2012-11-06 |  |  |  |  |  |  |  |  |  |  |  |  |  |  |  |  |  |  |  |  |  |  |  |  |  |  |  |  |  |  |  |  |  |  |  |  |  |  |  |  |  |  |  |
| DGLPR23001C0 |  | DT-GL ; 1st Fix, Inst. of Supports for MEP (Phlebotomy) | 26.88d | 2011-03-02 A | 2011-10-01 | DGLS307807C0 SS | 100% | 0d | 2011-03-01 | 2011-03-31 | 15.9d | 0d | MECHANICAL [4696.8 h]; Cost [75432.9 AED] | 75,432.94 | 67,889.64 | DGLPR23001C0 | DT | C | GL | PR | ME | 230 | 01 | BILL 5 | B05 | S2 | 1F | R00 | ACF04 | 230 | 98 | 6143.48 | 1S | MEP | M1F |  |  |  |  |  |  |  |  |  |  |  |  |  |
| DGLPR21111C0 |  | DT-GL ; 1st Fix, Inst of Sprinkler main pipe (Phlebotomy) | 44d | 2011-03-06 A | 2011-10-01 | DGLPR22005C0 SS+12d, DGLPR23001C0, DGLS307807C0 | 100% | 0d | 2011-05-26 | 2011-07-17 | 74.5d | 31.1d | MECHANICAL [981.6 h]; Cost [53543.7 AED] | 53,543.69 | 50,866.51 | DGLPR21111C0 | DT | C | GL | PR | ME | 211 | 11 | BILL 5 | B05 | S2 | 1F | R00 | ACF04 | 211 | 100 |  | 1S | MEP | M1F |  |  |  |  |  |  |  |  |  |  |  |  |  |
| DGLPR22019C0 |  | DT-GL ; 1st Fix, Inst of Drainage pipe (ceiling) (Phlebotomy) | 250d | 2011-03-06 A | 2011-10-05 | DGLPR23001C0, DGLPR27010C0 SS+14d, DGLS307807C0 | 98% | 5d | 2011-05-04 | 2012-03-01 | 74.5d | 0d | PLUMBING [1173.6 h]; Cost [61888.2 AED] | 61,888.15 | 60,650.39 | DGLPR22019C0 | DT | C | GL | PR | ME | 220 | 19 | BILL 5 | B05 | S2 | 1F | R00 | ACF04 | 220 | 95 |  | 1S | MEP | M1F | 95 |  |  |  |  |  |  |  |  |  |  |  |  |
| DGLPR23017C0 |  | DT-GL ; 1st Fix, Inst of CHW pipe (Phlebotomy) | 200d | 2011-03-06 A | 2011-12-11 | DGLPR21111C0 SS+14d, DGLPR23001C0, DGLS307807C0, DGLPR05503C0 FF+18d | 90% | 20d | 2011-06-12 | 2012-02-11 | 38.4d | 0d | MECHANICAL [9684 h]; Cost [345418 AED] | 345,418.28 | 310,876.46 | DGLPR23017C0 | DT | C | GL | PR | ME | 230 | 17 | BILL 5 | B05 | S2 | 1F | R00 | ACF04 | 230 | 55 | 62031.2 | 1S | MEP | M1F | 65 | 90 | 75 |  |  |  |  |  |  |  |  |  |  |
| DGLPR09201C0 |  | DT-GL ; Metal Studs (Phlebotomy) | 90d | 2011-03-23 A | 2011-10-31 | DGLPR23001C0 | 71% | 26.1d | 2011-05-22 | 2011-09-06 | 15.9d | 0d | PARTITIONS [4388 h]; PARTITIONS - Metal Studs [722 m]; Cost |  |  | DGLPR09201C0 | DT | C | GL | PR | PT | 092 | 01 | BILL 5 | B05 | S2 | 1F | R00 | ACF06 | 092 | 30 | 28057.27 |  | GP | PMS |  | 65 | 61 | 0 | 0 | 0 | 0 | 313 | 944 |  |  |  |  |
| DGLPR09203C0 |  | DT-GL ; Partitions 1st face (Phlebotomy) | 90d | 2011-04-05 A | 2011-12-11 | DGLPR09201C0 SS+12d, DGLPR23017C0 FF, DGLPR26013C0 FF | 50% | 45d | 2011-06-05 | 2011-09-20 | 51.9d | 36d | PARTITIONS [722 m]; PARTITIONS [3417 h]; Cost |  |  | DGLPR09203C0 | DT | C | GL | PR | PT | 092 | 03 | BILL 5 | B05 | S2 | 2F | R00 | ACF06 | 092 | 10 | 35352 |  | GP | P1F |  | 40 | 22 | 0 | 0 | 0 | 0 | 314 | 945 |  |  |  |  |
| DGLPR26001C0 |  | DT-GL ; 1st Fix, Inst of Trunking/Conduiting (Phlebotomy) | 66d | 2011-04-06 A | 2011-11-22 | DGLPR23001C0, DGLS307807C0 | 35% | 42.9d | 2011-04-02 | 2011-06-16 | 58.5d | 0d | ELECTRICAL [824.4 h]; Cost [42423.2 AED] | 42,423.24 | 14,848.13 | DGLPR26001C0 | DT | C | GL | PR | ME | 260 | 01 | BILL 5 | B05 | S2 | 1F | R00 | ACF04 | 260 | 40 | 22494.3 | 1S | MEP | M1F | 90 | 80 | 70 |  |  |  |  |  |  | 35 |  |  |  |
| DGLPR21117C0 |  | DT-GL ; 1st Fix, Inst of Sprinkler branch pipe (Phlebotomy) | 250d | 2011-04-18 A | 2011-12-11 | DGLPR09201C0, DGLPR21111C0, DGLPR05503C0 FF+18d | 90% | 25d | 2011-07-19 | 2012-05-15 | 99.9d | 61.5d | MECHANICAL [1441.2 h]; Cost [78749.8 AED] | 78,749.79 | 70,874.81 | DGLPR21117C0 | DT | C | GL | PR | ME | 211 | 17 | BILL 5 | B05 | S2 | 1F | R00 | ACF04 | 211 | 95 |  | 1S | MEP | M1F | 98 |  |  |  |  |  |  |  |  | 90 |  |  |  |
| DGLPR27010C0 |  | DT-GL ; 1st Fix, Inst of Trunking for ELV system (Phlebotomy) | 66d | 2011-04-21 A | 2011-11-19 | DGLPR23001C0, DGLPR26001C0 SS+14d, DGLS307807C0 | 40% | 39.6d | 2011-04-18 | 2011-07-04 | 58.5d | 0d | ELECTRICAL [1689.6 h]; Cost [88597.9 AED] | 88,597.89 | 35,439.16 | DGLPR27010C0 | DT | C | GL | PR | ME | 270 | 10 | BILL 5 | B05 | S2 | 1F | R00 | ACF04 | 270 | 50 | 30835.11 | 1S | MEP | M1F | 95 | 75 | 70 |  |  |  |  |  |  | 40 |  |  |  |
| DGLPR23023C0 |  | DT-GL ; 1st Fix, Inst of Main Ducting (Phlebotomy) | 250d | 2011-04-24 A | 2011-11-30 | DGLPR23001C0, DGLPR23017C0 SS+7d, DGLS307807C0 | 95% | 12.5d | 2011-06-20 | 2012-04-17 | 77.4d | 0d | MECHANICAL [14760 h]; Cost [622619 AED] | 622,619.08 | 591,488.13 | DGLPR23023C0 | DT | C | GL | PR | ME | 230 | 23 | BILL 5 | B05 | S2 | 1F | R00 | ACF04 | 230 | 55 |  | 1S | MEP | M1F | 90 |  |  |  |  |  |  |  |  |  |  |  |  |
| DGLPR26013C0 |  | DT-GL ; 1st Fix, Inst of Cable Tray (Phlebotomy) | 90d | 2011-04-24 A | 2011-12-01 | DGLPR23001C0, DGLPR27010C0 SS+10d, DGLS307807C0 | 45% | 49.5d | 2011-04-30 | 2011-08-13 | 58.5d | 0d | ELECTRICAL [430.8 h]; Cost [23263.3 AED] | 23,263.34 | 10,468.5 | DGLPR26013C0 | DT | C | GL | PR | ME | 260 | 13 | BILL 5 | B05 | S2 | 1F | R00 | ACF04 | 260 | 50 | 8100.75 | 1S | MEP | M1F | 90 | 85 | 80 |  |  |  |  |  |  | 45 |  |  |  |
| DGLPR22005C0 |  | DT-GL ; 1st Fix, Inst of Water supply pipe (ceiling) (Phlebotomy) | 100d | 2011-05-10 A | 2011-11-03 | DGLPR22019C0 SS+7d, DGLPR23001C0, DGLS307807C0 | 70% | 30d | 2011-05-12 | 2011-09-08 | 74.5d | 0d | PLUMBING [4896 h]; Cost [264473 AED] | 264,473.49 | 185,131.44 | DGLPR22005C0 | DT | C | GL | PR | ME | 220 | 05 | BILL 5 | B05 | S2 | 1F | R00 | ACF04 | 220 | 50 | 15338.85 | 1S | MEP | M1F | 70 |  |  |  |  |  |  |  |  |  |  |  |  |
| DGLPR23008C0 |  | DT-GL ; 1st Fix, Inst of VCD's/FD's (Phlebotomy) | 100d | 2011-06-15 A | 2012-01-07 | DGLPR23023C0, DGLPR05503C0 FF+18d | 70% | 30d | 2011-07-07 | 2011-11-03 | 77.4d | 39d | MECHANICAL [7671.6 h]; Cost [232964 AED] | 232,964.23 | 163,074.96 | DGLPR23008C0 | DT | C | GL | PR | ME | 230 | 08 | BILL 5 | B05 | S2 | 1F | R00 | ACF04 | 230 |  | 272982.97 | 1S | MEP | M1F | 55 | 70 | 65 |  |  |  |  |  |  |  |  |  |  |
| DGLPR23015C0 |  | DT-GL ; 2nd Fix, Insulation of CHW pipe & Duct (Phlebotomy) | 150d | 2011-06-15 A | 2012-02-22 | DGLPR23009C0, DGLPR23017C0, DGLPR23023C0 | 80% | 30d | 2011-07-28 | 2012-01-29 | 38.4d | 0d | MECHANICAL [5311.2 h]; Cost [286617 AED] | 286,617.06 | 229,293.65 | DGLPR23015C0 | DT | C | GL | PR | ME | 230 | 15 | BILL 5 | B05 | S2 | 2F | R00 | ACF07 | 230 |  | 68214.07 | 2n | MEP |  | 65 | 80 | 65 |  |  |  |  |  |  |  |  |  |  |
| DGLPR23009C0 |  | DT-GL ; 2nd Fix, Inst of VAV'S CHW connection (Phlebotomy) | 90d | 2011-07-05 A | 2012-01-17 | DGLPR23017C0 | 65% | 31.5d | 2011-08-17 | 2011-12-08 | 38.4d | 0d | MECHANICAL [1684.8 h]; Cost [91006.1 AED] | 91,006.06 | 59,153.94 | DGLPR23009C0 | DT | C | GL | PR | ME | 230 | 09 | BILL 5 | B05 | S2 | 2F | R00 | ACF07 | 230 |  |  | 2n | MEP |  | 25 | 60 | 10 | 0 | 0 | 0 | 0 |  |  |  |  |  |  |
| DGLPR22011C0 |  | DT-GL ; 2nd Fix, Drainage/Water pipe (wall) (Phlebotomy) | 60d | 2011-08-10 A | 2011-12-25 | DGLPR09201C0, DAFMI22002R20 FS+58d | 30% | 42d | 2011-12-15 | 2012-02-25 | 33.9d | 18d | PLUMBING [1173.6 h]; Cost [61888.2 AED] | 61,888.15 | 18,566.45 | DGLPR22011C0 | DT | C | GL | PR | ME | 220 | 11 | BILL 5 | B05 | S2 | 2F | R00 | ACF07 | 220 |  |  | 2n | MEP |  | 35 | 30 | 0 |  |  |  |  |  |  |  |  |  |  |
| DGLPR05503C0 |  | DT-GL ; Ceiling Support for medical equipment (Phlebotomy) | 24d | 2011-09-05 A | 2011-11-17 | DGLPR09201C0, DAFMI22002R20 FS+58d | 50% | 12d | 2011-11-21 | 2011-12-21 | 38.4d | 0d | SECONDARY STEEL [91 h]; STRUCTURAL STEEL [1 T(Fe)]; Cost |  |  | DGLPR05503C0 | DT | C | GL | PR | SW | 055 | 03 | BILL 5 | B05 | S2 | 03 | R00 | ACF03 | b |  |  |  |  |  |  |  |  |  |  |  |  | 335 | 962 |  |  |  |  |
| DGLPR26009C0 |  | DT-GL ; 2nd Fix, Inst of Wall conduites (Phlebotomy) | 60d | 2011-10-31 | 2012-01-16 | DGLPR09201C0 |  |  |  |  | 15.9d | 0d | ELECTRICAL [2889.6 h]; Cost |  |  | DGLPR26009C0 | DT | C | GL | PR | ME | 260 | 09 | BILL 5 | B05 | S2 | 2F | R00 | ACF07 | 260 |  |  | 2n | MEP |  | 25 | 30 | 0 |  |  |  |  |  |  | 0 |  |  |  |
| DGLPR08103C0 |  | DT-GL ; Door Frames (Phlebotomy) | 42d | 2011-11-12 | 2012-01-02 | DGLPR09201C0 SS+14d, GNHE08101C0 FS+79d |  |  |  |  | 81d | 65.1d | ASSORTED DOORS [417 h]; Cost |  |  | DGLPR08103C0 | DT | C | GL | PR | DO | 081 | 03 | BILL 5 | B05 | S2 | DF | R00 | ACF06 | 081 |  |  |  |  |  |  |  |  |  |  |  |  | 316 | 947 |  | 08 |  |  |
| DGLPR05511C0 |  | DT-GL ; Wall reinforcement for MEP/Medical (Phlebotomy) | 24d | 2011-11-30 | 2011-12-28 | DGLPR09201C0, DAFMI22002R02 FS+58d |  |  |  |  | 36d | 20.1d | SECONDARY STEEL [39 h]; Cost |  |  | DGLPR05511C0 | DT | C | GL | PR | SW | 055 | 11 | BILL 5 | B05 | S2 | 03 | R00 | ACF03 | b |  |  |  |  |  |  |  |  |  |  |  |  |  |  |  |  |  |  |
| DGLPR27001C0 |  | DT-GL ; 1st Fix, Wiring/ Cabling work (Phlebotomy) | 48d | 2011-12-01 | 2012-01-29 | DGLPR26001C0, DGLPR26013C0, DGLPR27010C0 |  |  |  |  | 58.5d | 20.1d | ELECTRICAL [436.8 h]; Cost |  |  | DGLPR27001C0 | DT | C | GL | PR | ME | 270 | 01 | BILL 5 | B05 | S2 | 1F | R00 | ACF04 | 270 | 20 | 7737.9 | 1S | MEP | M1F | 50 |  |  |  |  |  |  |  |  | 0 |  |  |  |
| DGLPR01005C0 |  | DT-GL ; 2nd, Wall Inspection by Consultant (Phlebotomy) | 6d | 2012-01-16 | 2012-01-23 | DGLPR22011C0, DGLPR26009C0 |  |  |  |  | 15.9d | 0d | Labor General [1.2 h]; Cost |  |  | DGLPR01005C0 | DT | C | GL | PR | ME | 010 | 05 | BILL 5 | B05 | S2 | WI | R00 | ACF07 | 010 |  |  | 2n | MEP |  | 25 |  |  |  |  |  |  |  |  |  |  |  |  |
| DGLPR09205C0 |  | DT-GL ; Partitions Closing (Phlebotomy) | 48d | 2012-01-23 | 2012-03-20 | DAFOA09206C1 FF, DGLPR01005C0, DGLPR05511C0, DGLPR09203C0, DGLPR22005C0, DGLPR22019C0, DGLPR08103C0 FF, DAFMI22002R20 FS+58d |  |  |  |  | 15.9d | 0d | PARTITIONS [722 m]; PARTITIONS [4394 h]; Cost |  |  | DGLPR09205C0 | DT | C | GL | PR | PT | 092 | 05 | BILL 5 | B05 | S2 | FF | R00 | ACF06 | 092 |  |  |  | GP | P2F |  |  |  |  |  |  |  | 315 | 946 |  |  |  |  |
| DGLPR09501C0 |  | DT-GL ; Ceiling Grid and Service Tile (Phlebotomy) | 36d | 2012-02-22 | 2012-04-04 | DGLPR05503C0, DGLPR09205C0 SS+15d, DGLPR21117C0, DGLPR23008C0, DGLPR23009C0, DGLPR23015C0, DGLPR27001C0 |  |  |  |  | 38.4d | 0d | CEILING GRID FOR GYPSUM [2883.04 h]; CEILING GRID FOR GYPSUM [246.7 m2]; Cost |  |  | DGLPR09501C0 | DT | C | GL | PR | CE | 095 | 01 | BILL 5 | B05 | S2 | 01 | R00 | ACF06 | 095 |  |  |  |  |  |  |  |  |  |  |  |  | 323 | 952 |  |  |  |  |
| DGLPR07103C0 |  | DT-GL ; Waterproofing (Phlebotomy) | 12d | 2012-03-20 | 2012-04-03 | DGLPR08103C0, DGLPR09205C0 |  |  |  |  | 81.9d | 0d | THERMAL & MOISTURE [368 h]; THERMAL & MOISTURE [2434 m2]; Cost |  |  | DGLPR07103C0 | DT | C | GL | PR | FF | 071 | 03 | BILL 5 | B05 | S2 | 01 | R00 | ACF03 | 071 |  |  |  |  |  |  |  |  |  |  |  |  | 105 | 999 |  |  |  |  |
| DGLPR09901C0 |  | DT-GL ; Wall Prime & 1st coat (Phlebotomy) | 36d | 2012-03-20 | 2012-05-01 | DGLPR09205C0 |  |  |  |  | 15.9d | 0d | WALL PAINT [1173 h]; WALL PAINT [1463 m2]; Cost |  |  | DGLPR09901C0 | DT | C | GL | PR | PA | 099 | 01 | BILL 5 | B05 | S2 | 01 | R00 | ACF06 | 099 |  |  |  |  |  |  |  |  |  |  |  |  | 328 | 956 |  |  |  |  |
| DGLPR26005C0 |  | DT-GL ; 2nd Fix, Wiring for Power/Lighting/Emergency (Phlebotomy) | 54d | 2012-03-20 | 2012-05-22 | DGLPR09205C0 |  |  |  |  | 34.02d | 0d | ELECTRICAL [2502 h]; Cost |  |  | DGLPR26005C0 | DT | C | GL | PR | ME | 260 | 05 | BILL 5 | B05 | S2 | 2F | R00 | ACF07 | 260 |  | 32180.48 | 2n | MEP |  | 25 |  |  |  |  |  |  |  |  | 0 |  |  |  |
| DGLPR26007C0 |  | DT-GL ; 2nd Fix, Cable Pulling (Phlebotomy) | 48d | 2012-03-20 | 2012-05-15 | DGLPR09201C0 SS+6d, DGLPR09205C0 |  |  |  |  | 93.9d | 78d | ELECTRICAL [8700 h]; Cost |  |  | DGLPR26007C0 | DT | C | GL | PR | ME | 260 | 07 | BILL 5 | B05 | S2 | 2F | R00 | ACF07 | 260 |  |  | 2n | MEP |  | 25 |  |  |  |  |  |  |  |  |  |  |  |  |
| DGLPR26011C0 |  | DT-GL ; 2nd Fix, Inst of Equipment (DB) (Phlebotomy) | 48d | 2012-03-20 | 2012-05-15 | DGLPR09205C0 |  |  |  |  | 45.9d | 30d | ELECTRICAL [4545.6 h]; Cost |  |  | DGLPR26011C0 | DT | C | GL | PR | ME | 260 | 11 | BILL 5 | B05 | S2 | 2F | R00 | ACF04 | 260 |  |  | 2n | MEP |  |  |  |  |  |  |  |  |  |  |  |  | E |  |
| DGLPR26053C0 |  | DT-GL ; 2nd Fix, Wiring / Cabling (Phlebotomy) | 36d | 2012-03-20 | 2012-05-01 | DGLPR26009C0, DGLPR09205C0 |  |  |  |  | 105.9d | 90d | ELECTRICAL [2502 h]; Cost |  |  | DGLPR26053C0 | DT | C | GL | PR | ME | 260 | 53 | BILL 5 | B05 | S2 | 2F | R00 | ACF07 | 260 |  |  | 2n | MEP |  | 25 |  |  |  |  |  |  | 389 | 977 |  |  |  |  |
| DGLPR27020C0 |  | DT-GL ; 2nd Fix, Inst of ELV Equipment (Panels) (Phlebotomy) | 48d | 2012-03-20 | 2012-05-15 | DGLPR09205C0 |  |  |  |  | 45.9d | 30d | ELECTRICAL [2215.2 h]; Cost |  |  | DGLPR27020C0 | DT | C | GL | PR | ME | 270 | 20 | BILL 5 | B05 | S2 | 2F | R00 | ACF04 | 270 |  |  | 2n | MEP |  |  |  |  |  |  |  |  |  |  |  |  | E |  |
| DGLPR09305C0 |  | DT-GL ; Ceramic floor tile (Phlebotomy) | 24d | 2012-04-03 | 2012-05-01 | DGLPR07103C0 |  |  |  |  | 81.9d | 0d | CERAMIC FLOOR TILES [136 h]; CERAMIC FLOOR TILES [74 m2]; Cost |  |  | DGLPR09305C0 | DT | C | GL | PR | FF | 093 | 05 | BILL 5 | B05 | S2 | 02 | R00 | ACF06 | CT |  |  |  |  |  |  |  |  |  |  |  |  | 106 | 1000 |  |  |  |  |
| DGLPR21115C0 |  | DT-GL ; 2nd Fix, Inst of Sprinkler droppers (Phlebotomy) | 36d | 2012-04-04 | 2012-05-16 | DGLPR09501C0 |  |  |  |  | 68.53d | 0d | MECHANICAL [2067.6 h]; Cost |  |  | DGLPR21115C0 | DT | C | GL | PR | ME | 211 | 15 | BILL 5 | B05 | S2 | 2F | R00 | ACF07 | 211 |  |  | 2n | MEP |  |  |  |  |  |  |  |  |  |  |  |  |  |  |
| DGLPR23021C0 |  | DT-GL ; 2nd Fix, Inst of Flexible Duct & Plenum boxes (Phlebotomy) | 36d | 2012-04-04 | 2012-05-16 | DGLPR09205C0, DGLPR09501C0 |  |  |  |  | 56.52d | 0d | MECHANICAL [274.8 h]; Cost |  |  | DGLPR23021C0 | DT | C | GL | PR | ME | 230 | 21 | BILL 5 | B05 | S2 | 2F | R00 | ACF07 | 230 |  |  | 2n | MEP |  |  |  |  |  |  |  |  |  |  |  |  |  |  |
| DGLPR26017C0 |  | DT-GL ; Final Fix, Inst of Ceiling rose (Phlebotomy) | 36d | 2012-04-04 | 2012-05-16 | DGLPR09501C0 |  |  |  |  | 79.53d | 0d | ELECTRICAL [67.2 h]; Cost |  |  | DGLPR26017C0 | DT | C | GL | PR | ME | 260 | 17 | BILL 5 | B05 | S2 | FF | R00 | ACF07 | 260 |  |  | FF | MEP |  |  |  |  |  |  |  |  |  |  |  |  |  |  |
| DGLPR27002C0 |  | DT-GL ; 2nd Fix, Wiring Droppers (Phlebotomy) | 36d | 2012-04-04 | 2012-05-16 | DGLPR09501C0 |  |  |  |  | 62.52d | 0d | ELECTRICAL [2502 h]; Cost |  |  | DGLPR27002C0 | DT | C | GL | PR | ME | 270 | 02 | BILL 5 | B05 | S2 | 2F | R00 | ACF07 | 270 |  |  | 2n | MEP |  |  |  |  |  |  |  |  |  |  |  |  |  |  |
| DGLPR21113C0 |  | DT-GL ; Final Fix, Inst of Sprinklers head/ Extinguisher (Phlebotomy) | 48d | 2012-04-11 | 2012-06-06 | DGLPR09501C0, DGLPR21115C0 SS+6d |  |  |  |  | 68.53d | 34.5d | MECHANICAL [403.2 h]; Cost |  |  | DGLPR21113C0 | DT | C | GL | PR | ME | 211 | 13 | BILL 5 | B05 | S2 | FF | R00 | ACF07 | 211 |  |  | FF | MEP |  |  |  |  |  |  |  |  |  |  |  |  |  |  |
| DGLPR23019C0 |  | DT-GL ; Final Fix, Inst of Grilles & Diffusers (Phlebotomy) | 60d | 2012-04-11 | 2012-06-21 | DGLPR09501C0, DGLPR23021C0 SS+6d |  |  |  |  | 56.52d | 22.5d | MECHANICAL [2560.8 h]; Cost |  |  | DGLPR23019C0 | DT | C | GL | PR | ME | 230 | 19 | BILL 5 | B05 | S2 | FF | R00 | ACF07 | 230 |  |  | FF | MEP |  |  |  |  |  |  |  |  |  |  |  |  |  |  |
| DGLPR27030C0 |  | DT-GL ; Final Fix, Inst of ELV device (Detector/Speaker) (Phlebotomy) | 54d | 2012-04-11 | 2012-06-13 | DGLPR09501C0, DGLPR27002C0 SS+6d |  |  |  |  | 62.52d | 28.5d | ELECTRICAL [2152.8 h]; Cost |  |  | DGLPR27030C0 | DT | C | GL | PR | ME | 270 | 30 | BILL 5 | B05 | S2 | FF | R00 | ACF07 | 270 |  |  | FF | MEP |  |  |  |  |  |  |  |  |  |  |  |  |  |  |
| DGLPR26003C0 |  | DT-GL ; Final Fix, Inst of Light fittings (Phlebotomy) | 36d | 2012-04-12 | 2012-05-24 | DGLPR09501C0, DGLPR26017C0 SS+7d |  |  |  |  | 79.53d | 45.5d | ELECTRICAL [6626.4 h]; Cost |  |  | DGLPR26003C0 | DT | C | GL | PR | ME | 260 | 03 | BILL 5 | B05 | S2 | FF | R00 | ACF07 | 260 |  |  | FF | MEP |  |  |  |  |  |  |  |  |  |  |  |  |  |  |
| DGLPR05501C0 |  | DT-GL ; Handrails & balustrade (Phlebotomy) | 36d | 2012-05-01 | 2012-06-12 | DGLPR09901C0 |  |  |  |  | 21.9d | 6d | SECONDARY STEEL [139 h]; Cost |  |  | DGLPR05501C0 | DT | C | GL | PR | SW | 055 | 01 | BILL 5 | B05 | S2 | 01 | R00 | ACF03 | a |  |  |  |  |  |  |  |  |  |  |  |  |  |  |  |  |  |  |
| DGLPR09601C0 |  | DT-GL ; Flooring (Rubber & etc) (Phlebotomy) | 42d | 2012-05-01 | 2012-06-20 | DGLPR09901C0, DGLPR09501C0, DGLPR05501C0 FF |  |  |  |  | 15.9d | 0d | RUBBER FLOOR [288 h]; RUBBER FLOOR [701 m2]; Cost |  |  | DGLPR09601C0 | DT | C | GL | PR | FF | 096 | 01 | BILL 5 | B05 | S2 | 03 | R00 | ACF06 | RF |  |  |  |  |  |  |  |  |  |  |  |  | 326 | 955 |  |  |  |  |
| DGLPR09905C0 |  | DT-GL ; Ceiling Prime & 1st coat (Phlebotomy) | 36d | 2012-05-01 | 2012-06-12 | DGLPR09501C0, DGLPR09901C0 |  |  |  |  | 75.9d | 0d | ASSORTED CEILING FINISH [97 h]; Cost |  |  | DGLPR09905C0 | DT | C | GL | PR | PA | 099 | 05 | BILL 5 | B05 | S2 | 01 | R00 | ACF06 | 099 |  |  |  |  |  |  |  |  |  |  |  |  | 330 | 958 |  |  |  |  |
| DGLPR22025C0 |  | DT-GL ; Final Fix, Inst of Sanitary Ware (Phlebotomy) | 48d | 2012-05-01 | 2012-06-27 | DGLPR09205C0, DGLPR09305C0, A10230 FS+148d |  |  |  |  | 81.9d | 0d | PLUMBING [1917.6 h]; Cost |  |  | DGLPR22025C0 | DT | C | GL | PR | ME | 220 | 25 | BILL 5 | B05 | S2 | FF | R00 | ACF07 | 220 |  |  | FF | MEP |  |  |  |  |  |  |  |  |  |  |  |  |  |  |
| DGLPR22021C0 |  | DT-GL ; Final Fix, Terminate Sanitary Ware & Appliances (Phlebotomy) | 48d | 2012-05-08 | 2012-07-04 | DGLPR22011C0, DGLPR22025C0 SS+6d |  |  |  |  | 81.9d | 66d | PLUMBING [1917.6 h]; Cost |  |  | DGLPR22021C0 | DT | C | GL | PR | ME | 220 | 21 | BILL 5 | B05 | S2 | FF | R00 | ACF07 | 220 |  |  | FF | MEP |  |  |  |  |  |  |  |  |  |  |  |  |  |  |
| DGLPR26015C0 |  | DT-GL ; Final Fix, Termination & Gladding of Cables (Phlebotomy) | 48d | 2012-05-22 | 2012-07-18 | DGLPR26005C0 |  |  |  |  | 34.02d | 0d | ELECTRICAL [368.4 h]; Cost |  |  | DGLPR26015C0 | DT | C | GL | PR | ME | 260 | 15 | BILL 5 | B05 | S2 | FF | R00 | ACF07 | 260 |  |  | FF | MEP |  |  |  |  |  |  |  |  |  |  |  |  |  |  |
| DGLPR09903C0 |  | DT-GL ; Wall Final Paint (Phlebotomy) | 36d | 2012-06-12 | 2012-07-25 | DGLPR09901C0, DGLPR09905C0 |  |  |  |  | 75.9d | 54d | WALL PAINT [632 h]; WALL PAINT [788 m2]; Cost |  |  | DGLPR09903C0 | DT | C | GL | PR | PA | 099 | 03 | BILL 5 | B05 | S2 | 02 | R00 | ACF06 | 099 |  |  |  |  |  |  |  |  |  |  |  |  | 329 | 957 |  |  |  |  |
| DGLPR06101C0 |  | DT-GL ; Wood / caseworks (Phlebotomy) | 48d | 2012-06-20 | 2012-08-15 | DGLCO04415C0, DGLPR09501C0, DGLPR09901C0, DGLCO04437C0, DGLCO04407C0, CAFWA00113M0, DGLPR09601C0, DAFWA00119M0 |  |  |  |  | 15.9d | 0d | WOOD WORK/CASEWORK [366.77 no]; WOOD WORK/CASEWORK [3075 h]; Cost |  |  | DGLPR06101C0 | DT | C | GL | PR | WO | 061 | 01 | BILL 5 | B05 | S2 | WW | R00 | ACF06 | 061 |  |  |  |  |  |  |  |  |  |  |  |  | 332 | 960 |  |  |  |  |
| DGLPR08107C0 |  | DT-GL ; Doors (Phlebotomy) | 42d | 2012-06-20 | 2012-08-08 | DGLPR08103C0, DGLPR09901C0, DGLPR09601C0 |  |  |  |  | 40.02d | 0d | ASSORTED DOORS [670 h]; ASSORTED DOORS [67 no]; Cost |  |  | DGLPR08107C0 | DT | C | GL | PR | DO | 081 | 07 | BILL 5 | B05 | S2 | DR | R00 | ACF06 | 081 |  |  |  |  |  |  |  |  |  |  |  |  | 317 | 948 |  | 08 |  |  |
| DGLPR09701C0 |  | DT-GL ; Wall finishes (ST, WD, WC) (Phlebotomy) | 48d | 2012-06-20 | 2012-08-15 | DGLPR26011C0, DGLPR27020C0, DAFMI22003R02 FS+158d, DGLPR09601C0 |  |  |  |  | 15.9d | 0d | ASSORTED WALL FINISH [997 h]; ASSORTED WALL FINISH [1146 m2]; Cost |  |  | DGLPR09701C0 | DT | C | GL | PR | WF | 097 | 01 | BILL 5 | B05 | S2 | 01 | R00 | ACF06 | 097 |  |  |  |  |  |  |  |  |  |  |  |  | 105 | 1002 |  |  |  | R3 |
| DGLPR01006C0 |  | DT-GL ; 2nd, Ceiling Inspection by Consultants (Phlebotomy) | 5.88d | 2012-07-18 | 2012-07-24 | DGLPR21115C0, DGLPR23009C0, DGLPR23015C0, DGLPR27002C0, DGLPR09501C0, DGLPR21113C0, DGLPR23019C0, DGLPR26003C0, DGLPR26017C0, DGLPR27030C0, DGLPR26015C0 |  |  |  |  | 34.02d | 18.12d | Labor General [1.2 h]; Cost |  |  | DGLPR01006C0 | DT | C | GL | PR | ME | 010 | 06 | BILL 5 | B05 | S2 | CI | R00 | ACF07 | 010 |  |  | 2n | MEP |  |  |  |  |  |  |  |  |  |  |  |  |  |  |
| DGLPR08709C0 |  | DT-GL ; Ironmongery (Phlebotomy) | 23.88d | 2012-08-08 | 2012-09-06 | DGLPR08107C0 |  |  |  |  | 40.02d | 24.12d | IRONMONGERY [310 h]; IRONMONGERY [31 no]; Cost |  |  | DGLPR08709C0 | DT | C | GL | PR | DO | 087 | 09 | BILL 5 | B05 | S2 | IM | R00 | ACF06 | 087 |  |  |  |  |  |  |  |  |  |  |  |  | 322 | 951 |  | 08 |  |  |
| DGLPR09503C0 |  | DT-GL ; Ceiling closure - ACT/Gypsum (Phlebotomy) | 18d | 2012-08-15 | 2012-09-08 | DAFOA09505C1 FF, DGLPR01006C0, DGLPR21115C0, DGLPR26005C0, DGLPR27001C0, DGLPR27002C0, DGLPR06101C0, DGLPR09701C0, DGLPR09501C0, DGLPR23021C0, DGLPR26053C0, DGLPR26007C0 |  |  |  |  | 15.9d | 0d | ASSORTED CEILING FINISH [584.25 h]; CEILING GYPSUM [80.97 h]; ASSORTED CEILING FINISH [950 m2]; CEILING GYPSUM [247 m2]; Cost |  |  | DGLPR09503C0 | DT | C | GL | PR | CE | 095 | 03 | BILL 5 | B05 | S2 | 02 | R00 | ACF06 | 095 |  |  |  |  |  |  |  |  |  |  |  |  | 324 | 953 |  |  |  |  |
| DGLPR11001C0 |  | DT-GL ; Wall Protection (WP, CG, WG, FCG) (Phlebotomy) | 24d | 2012-08-15 | 2012-09-15 | DGLPR09701C0, DGLPR09903C0 SS |  |  |  |  | 33.9d | 18d | FF&E [1437 h]; Cost |  |  | DGLPR11001C0 | DT | C | GL | PR | WF | 110 | 01 | BILL 5 | B05 | S2 | 03 | R00 | ACF08 | b |  |  |  |  |  |  |  |  |  |  |  |  | 326 | 1001 |  |  |  |  |
| DGLPR09907C0 |  | DT-GL ; Ceiling Final paint (Phlebotomy) | 12d | 2012-09-08 | 2012-09-22 | DGLPR09601C0, DGLPR09905C0, DGLPR09503C0 |  |  |  |  | 27.9d | 12d | ASSORTED CEILING FINISH [52 h]; Cost |  |  | DGLPR09907C0 | DT | C | GL | PR | PA | 099 | 07 | BILL 5 | B05 | S2 | 02 | R00 | ACF06 | 099 |  |  |  |  |  |  |  |  |  |  |  |  | 331 | 959 |  |  |  |  |
| DGLPR11003C0 |  | DT-GL ; FF & E (Phlebotomy) | 12d | 2012-09-08 | 2012-09-22 | DGLPR09601C0, DGLPR09503C0 |  |  |  |  | 27.9d | 12d | FF&E [48 h]; FF&E [25.47 no]; Cost |  |  | DGLPR11003C0 | DT | C | GL | PR | WO | 110 | 03 | BILL 5 | B05 | S2 | 04 | R00 | ACF08 | a |  |  |  |  |  |  |  |  |  |  |  |  | 333 | 961 |  |  |  |  |
| DGLPR22027C0 |  | DT-GL ; Final Fix, Inst of All drain (Phlebotomy) | 12d | 2012-09-08 | 2012-09-22 | DGLPR09305C0, DGLPR09503C0 |  |  |  |  | 15.9d | 0d | PLUMBING [1173.6 h]; Cost |  |  | DGLPR22027C0 | DT | C | GL | PR | ME | 220 | 27 | BILL 5 | B05 | S2 | FF | R00 | ACF07 | 220 |  |  | FF | MEP |  |  |  |  |  |  |  |  |  |  |  |  |  |  |
| DGLPR26019C0 |  | DT-GL ; Final Fix, Inst of Switch/Sockets (Phlebotomy) | 12d | 2012-09-08 | 2012-09-22 | DGLPR09901C0, DGLPR09503C0 |  |  |  |  | 15.9d | 0d | ELECTRICAL [610.8 h]; Cost |  |  | DGLPR26019C0 | DT | C | GL | PR | ME | 260 | 19 | BILL 5 | B05 | S2 | FF | R00 | ACF07 | 260 |  |  | FF | MEP |  |  |  |  |  |  |  |  |  |  |  |  |  |  |

| ID | WBS | Activity | Duration | Start | Finish | Predecessors | Complete | Remaining | Planned start | Planned finish | Total float | Free float | Resources | Cost | Actual cost | change id | CCAD BUILDING(SET) | CCAD PHASE(SET) | CCAD FLOOR(SET) | CCAD ZONE(SET) | CCAD WORK(SET) | CCAD SECTION(SET) | CCAD SERIAL No.(SET) | CCAD CBS(SET) | CCAD BILL(SET) | CCAD HANDOVER(SET) | CCAD TAG(SET) | CCAD REV(SET) | CCADACF (SET) | CCAD SSCF | Change Order # | NEW ACTIVITY ID | RENZ % COMPLETE | P_811 | P_711 | CCAD CSA | Act Selector % | July2011 Target% Complete | Claimed This Month | CCAD SUB ZONE MEP(SET) | user_number8 | user_integer1 | user_integer2 | user_number7 | CCAD MEQ | CCAD DIVISION(SET) | IDDD |
| --- | --- | --- | --- | --- | --- | --- | --- | --- | --- | --- | --- | --- | --- | --- | --- | --- | --- | --- | --- | --- | --- | --- | --- | --- | --- | --- | --- | --- | --- | --- | --- | --- | --- | --- | --- | --- | --- | --- | --- | --- | --- | --- | --- | --- | --- | --- | --- |
|  | 10 | **Precommissioning Tesing & snagging (Phlebotomy, Radiography)** |  | 2012-09-22 | 2012-11-06 |  |  |  |  |  |  |  |  |  |  |  |  |  |  |  |  |  |  |  |  |  |  |  |  |  |  |  |  |  |  |  |  |  |  |  |  |  |  |  |  |  |  |
| DGLTS01806C0 |  | DT-GL ; MEP de-snag, FIREM sign-off | 12d | 2012-09-22 | 2012-10-06 | DGLPR22025C0, DGLPR22027C0, DGLPR26015C0, DGLPR22021C0, DGLPR21113C0, DGLPR23019C0, DGLPR26017C0, DGLPR26003C0, DGLPR27030C0, DGLPR26019C0 |  |  |  |  | 15.9d | 0d | TESTING & COMMISSIONING [1275 h]; Cost |  |  | DGLTS01801C0 | DT | C | GL | TS | SC | 018 | 01 | BILL 5 | B05 | S2 | 01 | R00 | ACF07 | 018 |  |  |  |  |  |  |  |  |  |  |  |  |  |  |  |  |  |
| DGLTS01810C0 |  | DT-GL ; Touch-up & Clean / JV inspection /CIR /De-snag | 18d | 2012-10-06 | 2012-10-29 | DGLCO04401C0, DGLPR06101C0, DGLPR07103C0, DGLPR08709C0, DGLPR09601C0, DGLPR09701C0, DGLPR09903C0, DGLPR09907C0, DGLPR11001C0, DGLPR11003C0, DGLTS01806C0, DGLPR05501C0, DGLPR09503C0 |  |  |  |  | 15.9d | 0d | TESTING & COMMISSIONING [213 h]; Cost |  |  | DGLTS01802C0 | DT | C | GL | TS | SC | 018 | 02 | BILL 5 | B05 | S2 | 02 | R00 | ACF07 | 018 |  |  |  |  |  |  |  |  |  |  |  |  |  |  |  |  |  |
| DGLTS01814C0 |  | DT-GL ; Consultant's final de-snag inspection | 7d | 2012-10-29 | 2012-11-06 | DGLTS01810C0 |  |  |  |  | 15.9d | 4.75d | Labor General [1 h]; Cost |  |  | DGLTS01803C0 | DT | C | GL | TS | SC | 018 | 03 | BILL 5 | B05 | S2 | 03 | R00 | ACF07 | 018 |  |  |  |  |  |  |  |  |  |  |  |  |  |  |  |  |  |
|  | 07 | **TR Room** |  | 2011-04-12 | 2012-07-05 |  |  |  |  |  |  |  |  |  |  |  |  |  |  |  |  |  |  |  |  |  |  |  |  |  |  |  |  |  |  |  |  |  |  |  |  |  |  |  |  |  |  |
| DGLTR09203C0 |  | DT-GL ; Partitions 1st face (TR RM) | 60d | 2011-04-12 A | 2011-10-06 | DGLTR09201C0 SS+12d | 90% | 6d | 2011-05-22 | 2011-07-31 | 63.88d | 42d | PARTITIONS [467 h]; PARTITIONS [100 m]; Cost |  |  | DGLTR09203C0 | DT | C | GL | TR | PT | 092 | 03 | BILL 5 | B05 | S2 | 2F | R00 | ACF06 | 092 | 314 | 886 | 10 | 90 | 22 | GP | P1F |  |  |  |  |  |  |  |  |  |  |
| DGLTR09201C0 |  | DT-GL ; Metal Studs (TR RM) | 60d | 2011-04-19 A | 2011-10-06 | DGLPA09201C0 SS | 90% | 6d | 2011-05-08 | 2011-07-17 | 21.88d | 0d | PARTITIONS [606 h]; PARTITIONS - Metal Studs [100 m]; Cost |  |  | DGLTR09201C0 | DT | C | GL | TR | PT | 092 | 01 | BILL 5 | B05 | S2 | 1F | R00 | ACF06 | 092 | 313 | 885 | 50 | 90 | 61 | GP | PMS |  |  |  |  |  |  |  |  |  |  |
| DGLTR26005C0 |  | DT-GL ; 2nd Fix, Wiring for Power/Lighting/Emergency (TR RM) | 60d | 2011-06-07 A | 2012-04-01 | DGLTR26026C0, DGLTR09501C0 | 50% | 30d | 2011-08-17 | 2011-10-29 | 24.88d | 3d | ELECTRICAL [2502 h]; Cost [21894.9 AED] | 21,894.91 | 10,947.45 | DGLTR26005C0 | DT | C | GL | TR | ME | 260 | 05 | BILL 5 | B05 | S2 | 2F | R00 | ACF07 | 260 |  |  |  | 50 | 40 | MEP |  | 45 | 64360.96 | 2n |  |  |  |  |  |  |  |
| DGLTR23013C0 |  | DT-GL ; 2nd Fix, Insulation of CHW pipe & Duct (TR RM) | 60d | 2011-06-10 A | 2012-02-19 | DGLTR23009C0, DGLTR23011C0 | 80% | 12d | 2011-09-10 | 2011-11-22 | 48.88d | 27d | MECHANICAL [5311.2 h]; Cost [286617 AED] | 286,617.06 | 229,293.65 | DGLTR23013C0 | DT | C | GL | TR | ME | 230 | 13 | BILL 5 | B05 | S2 | 2F | R00 | ACF07 | 230 |  |  |  | 80 | 60 | MEP |  | 80 | 34107.03 | 2n |  |  |  |  |  |  |  |
| DGLTR23011C0 |  | DT-GL ; 2nd Fix, Inst of VCD's/FD's (TR RM) | 60d | 2011-07-10 A | 2012-02-05 | DGLTR09205C0 | 60% | 24d | 2011-09-18 | 2011-12-01 | 48.88d | 0d | MECHANICAL [4312.8 h]; Cost [232964 AED] | 232,964.23 | 139,778.54 | DGLTR23011C0 | DT | C | GL | TR | ME | 230 | 11 | BILL 5 | B05 | S2 | 2F | R00 | ACF07 | 230 |  |  |  |  |  | MEP |  | 25 |  | 2n |  |  |  |  |  |  |  |
| DGLTR23009C0 |  | DT-GL ; 2nd Fix, Inst of VAV'S CHW connection (TR RM) | 60d | 2011-07-12 A | 2012-01-28 | DGLTR09205C0 | 70% | 18d | 2011-10-18 | 2012-01-03 | 54.88d | 6d | MECHANICAL [1684.8 h]; Cost [91006.1 AED] | 91,006.06 | 63,704.24 | DGLTR23009C0 | DT | C | GL | TR | ME | 230 | 09 | BILL 5 | B05 | S2 | 2F | R00 | ACF07 | 230 |  |  |  | 70 | 10 | MEP |  | 25 |  | 2n |  |  |  |  |  |  |  |
| DGLTR26009C0 |  | DT-GL ; 2nd Fix, Inst of Equipment (DB, TR, SG,BUS) (TR RM) | 60d | 2011-08-02 A | 2012-02-29 | DGLTR09205C0 | 25% | 45d | 2012-01-02 | 2012-03-13 | 21.88d | 0d | ELECTRICAL [14799.6 h]; Cost [3256347 AED] | 3,256,347.19 | 814,086.8 | DGLTR26009C0 | DT | C | GL | TR | ME | 260 | 09 | BILL 5 | B05 | S2 | 2F | R00 | ACF04 | 260 |  |  |  | 20 | 0 | MEP |  | 20 |  | 2n | 0 | 0 | 0 | 0 | E |  |  |
| DGLTR26026C0 |  | DT-GL ; 2nd Fix, Conduit (TR RM) | 60d | 2011-08-10 A | 2011-11-14 | DGLTR09201C0 SS+6d | 40% | 36d | 2011-10-17 | 2012-01-02 | 21.88d | 0d | ELECTRICAL [2889.6 h]; Cost [42423.2 AED] | 42,423.24 | 16,969.3 | DGLTR26026C0 | DT | C | GL | TR | ME | 260 | 26 | BILL 5 | B05 | S2 | 2F | R00 | ACF07 | 260 |  |  |  | 40 | 0 | MEP |  | 25 |  | 2n |  |  |  |  |  |  |  |
| DGLTR08101C0 |  | DT-GL ; Door Frames (TR RM) | 0d | 2011-11-12 | 2011-11-12 | DGLTR09201C0, GNHE08101C0 FS+79d |  |  |  |  | 67d | 45.12d | Cost |  |  | DGLTR08101C0 | DT | C | GL | TR | DO | 081 | 01 | BILL 5 | B05 | S2 | DF | R00 | ACF06 | 081 | 316 | 20001090 |  |  |  |  |  |  |  |  |  |  |  |  |  | 08 |  |
| DGLTR01005C0 |  | DT-GL ; 2nd, Wall Inspection by Consultant (TR RM) | 12d | 2011-11-15 | 2011-11-29 | DGLTR26026C0 |  |  |  |  | 21.88d | 0d | Labor General [1.2 h]; Cost |  |  | DGLTR01005C0 | DT | C | GL | TR | ME | 010 | 05 | BILL 5 | B05 | S2 | WI | R00 | ACF07 | 010 |  |  |  |  |  | MEP |  | 25 |  | 2n |  |  |  |  |  |  |  |
| DGLTR09205C0 |  | DT-GL ; Partitions Closing (TR RM) | 30.12d | 2011-11-30 | 2012-01-07 | DAFOA09206C1 FF, DGLTR01005C0, DGLTR09201C0, DGLTR09203C0, DGLTR08101C0 FF |  |  |  |  | 21.88d | 0d | PARTITIONS [597 h]; PARTITIONS [100 m]; Cost |  |  | DGLTR09205C0 | DT | C | GL | TR | PT | 092 | 05 | BILL 5 | B05 | S2 | FF | R00 | ACF06 | 092 | 315 | 887 |  |  |  | GP | P2F |  |  |  |  |  |  |  |  |  |  |
| DGLTR09901C0 |  | DT-GL ; Wall Prime & 1st coat (TR RM) | 18d | 2012-01-07 | 2012-01-28 | DGLTR09205C0 |  |  |  |  | 24.88d | 0d | Labor General [2 h]; Cost |  |  | DGLTR09901C0 | DT | C | GL | TR | PA | 099 | 01 | BILL 5 | B05 | S2 | 01 | R00 | ACF06 | 099 | 360 | 20001110 |  |  |  |  |  |  |  |  |  |  |  |  |  |  |  |
| DGLTR26007C0 |  | DT-GL ; 2nd Fix, Cable Pulling (TR RM) | 30d | 2012-01-07 | 2012-02-12 | DGLTR09203C0, DGLTR09205C0 |  |  |  |  | 66.88d | 45d | ELECTRICAL [8700 h]; Cost |  |  | DGLTR26007C0 | DT | C | GL | TR | ME | 260 | 07 | BILL 5 | B05 | S2 | 2F | R00 | ACF07 | 260 |  |  |  |  |  | MEP |  | 25 |  | 2n |  |  |  |  |  |  |  |
| DGLTR26027C0 |  | DT-GL ; 2nd Fix, Wiring / Cabling (TR RM) | 30d | 2012-01-07 | 2012-02-12 | DGLTR09203C0, DGLTR09205C0 |  |  |  |  | 66.88d | 45d | ELECTRICAL [2502 h]; Cost |  |  | DGLTR26027C0 | DT | C | GL | TR | ME | 260 | 27 | BILL 5 | B05 | S2 | 2F | R00 | ACF07 | 260 | 417 | 1318 |  |  |  | MEP |  | 25 |  | 2n |  |  |  |  |  |  |  |
| DGLTR08105C0 |  | DT-GL ; Doors (TR RM) | 0d | 2012-01-28 | 2012-01-28 | DGLTR08101C0, DGLTR09901C0 |  |  |  |  | 114.88d | 0d | Cost |  |  | DGLTR08105C0 | DT | C | GL | TR | DO | 081 | 05 | BILL 5 | B05 | S2 | DR | R00 | ACF06 | 081 | 317 | 1325 |  |  |  |  |  |  |  |  |  |  |  |  |  | 08 |  |
| DGLTR08709C0 |  | DT-GL ; Ironmongery (TR RM) | 6d | 2012-01-28 | 2012-02-05 | DGLTR08105C0 |  |  |  |  | 114.88d | 93d | Labor General [1 h]; Cost |  |  | DGLTR08709C0 | DT | C | GL | TR | DO | 087 | 09 | BILL 5 | B05 | S2 | IM | R00 | ACF06 | 087 | 322 | 20001100 |  |  |  |  |  |  |  |  |  |  |  |  |  | 08 |  |
| DGLTR09501C0 |  | DT-GL ; Ceiling Grid and Service Tile (TR RM) | 24d | 2012-01-28 | 2012-02-26 | DGLTR09205C0 SS+15d, DGLTR09901C0 |  |  |  |  | 24.88d | 0d | Labor General [4.87 h]; Cost |  |  | DGLTR09501C0 | DT | C | GL | TR | CE | 095 | 01 | BILL 5 | B05 | S2 | 01 | R00 | ACF06 | 095 | 336 | 1327 |  |  |  |  |  |  |  |  |  |  |  |  |  |  | 1 |
| DGLTR09903C0 |  | DT-GL ; Wall - Final Paint (TR RM) | 12d | 2012-01-28 | 2012-02-12 | DGLTR09901C0 |  |  |  |  | 108.88d | 87d | Labor General [2 h]; Cost |  |  | DGLTR09903C0 | DT | C | GL | TR | PA | 099 | 03 | BILL 5 | B05 | S2 | 02 | R00 | ACF06 | 099 | 361 | 1312 |  |  |  |  |  |  |  |  |  |  |  |  |  |  |  |
| DGLTR09601C0 |  | DT-GL ; Floor Finishes (TR RM) | 0d | 2012-02-26 | 2012-02-26 | DGLTR09501C0 |  |  |  |  | 24.88d | 0d | Cost |  |  | DGLTR09601C0 | DT | C | GL | TR | FF | 096 | 01 | BILL 5 | B05 | S2 | 01 | R00 | ACF06 | FF | 359 | 20001120 |  |  |  |  |  |  |  |  |  |  |  |  |  |  |  |
| DGLTR09905C0 |  | DT-GL ; Ceiling Prime & 1st coat (TR RM) | 18d | 2012-02-26 | 2012-03-18 | DGLTR09501C0 |  |  |  |  | 66.88d | 27d | Labor General [2 h]; Cost |  |  | DGLTR09905C0 | DT | C | GL | TR | PA | 099 | 05 | BILL 5 | B05 | S2 | 01 | R00 | ACF06 | 099 | 362 | 1313 |  |  |  |  |  |  |  |  |  |  |  |  |  |  |  |
| DGLTR21115C0 |  | DT-GL ; 2nd Fix, Gaseous Fire Suppression (TR RM) | 30d | 2012-02-26 | 2012-04-01 | DGLTR09601C0 |  |  |  |  | 24.88d | 3d | MECHANICAL [12560.4 h]; Cost |  |  | DGLTR21115C0 | DT | C | GL | TR | ME | 211 | 15 | BILL 5 | B05 | S2 | 2F | R00 | ACF07 | 211 | 411 | 20001130 |  |  |  | MEP |  |  |  | 2n |  |  |  |  |  |  |  |
| DGLTR23003C0 |  | DT-GL ; Final Fix, Inst of Grilles & Diffusers (TR RM) | 18d | 2012-02-26 | 2012-03-18 | DGLTR09501C0 |  |  |  |  | 24.88d | 3d | MECHANICAL [2560.8 h]; Cost |  |  | DGLTR23003C0 | DT | C | GL | TR | ME | 230 | 03 | BILL 5 | B05 | S2 | FF | R00 | ACF07 | 230 |  |  |  |  |  | MEP |  |  |  | FF |  |  |  |  |  |  |  |
| DGLTR23023C0 |  | DT-GL ; 2nd Fix, Flexible ducts (TR RM) | 30d | 2012-02-26 | 2012-04-01 | DGLTR09205C0, DGLTR09501C0 |  |  |  |  | 24.88d | 3d | MECHANICAL [274.8 h]; Cost |  |  | DGLTR23023C0 | DT | C | GL | TR | ME | 230 | 23 | BILL 5 | B05 | S2 | 2F | R00 | ACF07 | 230 | 412 | 20001140 |  |  |  | MEP |  |  |  | 2n |  |  |  |  |  |  |  |
| DGLTR23074C0 |  | DT-GL ; Final Fix, Grilles, panels & diffusers (TR RM) | 18d | 2012-02-26 | 2012-03-18 | DGLTR09501C0 |  |  |  |  | 24.88d | 3d | MECHANICAL [2560.8 h]; Cost |  |  | DGLTR23074C0 | DT | C | GL | TR | ME | 230 | 74 | BILL 5 | B05 | S2 | FF | R00 | ACF07 | 230 | 419 | 20001160 |  |  |  | MEP |  |  |  | FF |  |  |  |  |  |  |  |
| DGLTR26015C0 |  | DT-GL ; Final Fix, Inst of Ceiling rose (TR RM) | 18d | 2012-02-26 | 2012-03-18 | DGLTR09501C0 |  |  |  |  | 24.88d | 3d | ELECTRICAL [67.2 h]; Cost |  |  | DGLTR26015C0 | DT | C | GL | TR | ME | 260 | 15 | BILL 5 | B05 | S2 | FF | R00 | ACF07 | 260 |  |  |  |  |  | MEP |  |  |  | FF |  |  |  |  |  |  |  |
| DGLTR26019C0 |  | DT-GL ; Final Fix, Inst of Light fittings (TR RM) | 18d | 2012-02-26 | 2012-03-18 | DGLTR09501C0 |  |  |  |  | 24.88d | 3d | ELECTRICAL [6626.4 h]; Cost |  |  | DGLTR26019C0 | DT | C | GL | TR | ME | 260 | 19 | BILL 5 | B05 | S2 | FF | R00 | ACF07 | 260 |  |  |  |  |  | MEP |  |  |  | FF |  |  |  |  |  |  |  |
| DGLTR26076C0 |  | DT-GL ; Final Fix, Lighting fittings (TR RM) | 18d | 2012-02-26 | 2012-03-18 | DGLTR09501C0 |  |  |  |  | 24.88d | 3d | ELECTRICAL [6626.4 h]; Cost |  |  | DGLTR26076C0 | DT | C | GL | TR | ME | 260 | 76 | BILL 5 | B05 | S2 | FF | R00 | ACF07 | 260 | 420 | 20001170 |  |  |  | MEP |  |  |  | FF |  |  |  |  |  |  |  |
| DGLTR27002C0 |  | DT-GL ; 2nd Fix, Dressing of ELV panels (TR RM) | 30d | 2012-02-26 | 2012-04-01 | DGLTR09205C0, DGLTR27020C0 SS |  |  |  |  | 30.88d | 0d | ELECTRICAL [2407.2 h]; Cost |  |  | DGLTR27002C0 | DT | C | GL | TR | ME | 270 | 02 | BILL 5 | B05 | S2 | 2F | R00 | ACF07 | 270 |  |  |  |  |  | MEP |  |  |  | 2n |  |  |  |  |  |  |  |
| DGLTR27020C0 |  | DT-GL ; 2nd Fix, Inst of ELV Equipment (Panels) (TR RM) | 30d | 2012-02-26 | 2012-04-01 | DGLTR09205C0, DGLTR09501C0 |  |  |  |  | 30.88d | 0d | ELECTRICAL [2215.2 h]; Cost |  |  | DGLTR27020C0 | DT | C | GL | TR | ME | 270 | 20 | BILL 5 | B05 | S2 | 2F | R00 | ACF04 | 270 |  |  |  |  |  | MEP |  | 20 |  | 2n |  |  |  |  | E |  |  |
| DGLTR26013C0 |  | DT-GL ; Final Fix, Termination & Gladding of Cables (TR RM) | 18d | 2012-02-29 | 2012-03-21 | DGLTR26009C0 |  |  |  |  | 21.88d | 0d | ELECTRICAL [368.4 h]; Cost |  |  | DGLTR26013C0 | DT | C | GL | TR | ME | 260 | 13 | BILL 5 | B05 | S2 | FF | R00 | ACF07 | 260 |  |  |  |  |  | MEP |  |  |  | FF |  |  |  |  |  |  |  |
| DGLTR01006C0 |  | DT-GL ; 2nd, Ceiling Inspection by Consultants (TR RM) | 12d | 2012-03-21 | 2012-04-04 | DGLTR23009C0, DGLTR23011C0, DGLTR23013C0, DGLTR09501C0, DGLTR23003C0, DGLTR23074C0, DGLTR26015C0, DGLTR26019C0, DGLTR26076C0, DGLTR26013C0 |  |  |  |  | 21.88d | 0d | Labor General [1.2 h]; Cost |  |  | DGLTR01006C0 | DT | C | GL | TR | ME | 010 | 06 | BILL 5 | B05 | S2 | CI | R00 | ACF07 | 010 |  |  |  |  |  | MEP |  |  |  | 2n |  |  |  |  |  |  |  |
| DGLTR27030C0 |  | DT-GL ; Final Fix, Inst of ELV device (Detector/Speaker) (TR RM) | 18d | 2012-04-01 | 2012-04-22 | DGLTR27002C0 |  |  |  |  | 30.88d | 9d | ELECTRICAL [2152.8 h]; Cost |  |  | DGLTR27030C0 | DT | C | GL | TR | ME | 270 | 30 | BILL 5 | B05 | S2 | FF | R00 | ACF07 | 270 |  |  |  |  |  | MEP |  |  |  | FF |  |  |  |  |  |  |  |
| DGLTR09503C0 |  | DT-GL ; Ceiling closure (TR RM) | 12d | 2012-04-04 | 2012-04-18 | DGLTR01006C0, DGLTR21115C0, DGLTR26005C0, DGLTR26007C0, DGLTR26026C0, DGLTR26027C0, DGLTR23023C0 |  |  |  |  | 21.88d | 0d | Labor General [0.2 h]; Cost |  |  | DGLTR09503C0 | DT | C | GL | TR | CE | 095 | 03 | BILL 5 | B05 | S2 | 02 | R00 | ACF06 | 095 | 337 | 20001080 |  |  |  |  |  |  |  |  |  |  |  |  |  |  |  |
| DGLTR09907C0 |  | DT-GL ; Ceiling - Final paint (TR RM) | 12d | 2012-04-18 | 2012-05-02 | DGLTR09905C0, DGLTR09503C0 |  |  |  |  | 39.88d | 18d | Labor General [2 h]; Cost |  |  | DGLTR09907C0 | DT | C | GL | TR | PA | 099 | 07 | BILL 5 | B05 | S2 | 02 | R00 | ACF06 | 099 | 363 | 1314 |  |  |  |  |  |  |  |  |  |  |  |  |  |  |  |
| DGLTR26017C0 |  | DT-GL ; Final Fix, Inst of Switch/Sockets (TR RM) | 12d | 2012-04-18 | 2012-05-02 | DGLTR09901C0, DGLTR09503C0 |  |  |  |  | 21.88d | 0d | ELECTRICAL [610.8 h]; Cost |  |  | DGLTR26017C0 | DT | C | GL | TR | ME | 260 | 17 | BILL 5 | B05 | S2 | FF | R00 | ACF07 | 260 |  |  |  |  |  | MEP |  |  |  | FF |  |  |  |  |  |  |  |
| DGLTR01802C0 |  | DT-GL ; MEP de-snag, FIREM sign-off | 18d | 2012-05-02 | 2012-05-23 | DGLTR26017C0, DGLTR23074C0, DGLTR23003C0, DGLTR26076C0, DGLTR26013C0, DGLTR26015C0, DGLTR26019C0, DGLTR27030C0 |  |  |  |  | 21.88d | 0d | TESTING & COMMISSIONING [510 h]; Cost |  |  | CP3TR01851C0 | DT | C | GL | TR | SC | 018 | 53 | BILL 5 | B05 | S2 | 01 | R00 | ACF07 | 018 | 396 |  |  |  |  |  |  |  |  |  |  |  |  |  |  |  |  |
| DGLTR01801C0 |  | DT-GL ; Touch-up & Clean / JV inspection /CIR /De-snag | 24d | 2012-05-23 | 2012-06-21 | DGLTR01802C0, DGLTR08709C0, DGLTR09601C0, DGLTR09903C0, DGLTR09907C0, DGLTR09503C0 |  |  |  |  | 21.88d | 0d | TESTING & COMMISSIONING [85 h]; Cost |  |  | DGLTR01851C0 | DT | C | GL | TR | SC | 018 | 51 | BILL 5 | B05 | S2 | 02 | R00 | ACF07 | 018 | 396 |  |  |  |  |  |  |  |  |  |  |  |  |  |  |  |  |
| DGLTR01803C0 |  | DT-GL ; Consultant's final de-snag inspection | 12d | 2012-06-21 | 2012-07-05 | DGLTR01801C0 |  |  |  |  | 21.88d | 10.07d | Labor General [1 h]; Cost |  |  | CP3TS01803C0 | DT | C | GL | TR | SC | 018 | 03 | BILL 5 | B05 | S1 | 03 | R00 | ACF07 | 018 |  |  |  |  |  |  |  |  |  |  |  |  |  |  |  |  |  |

| ID | WBS | Activity | Type | Duration | Start | Finish | Predecessors | Complete | Remaining | Planned start | Planned finish | Total float | Free float | Resources | change id | RENZ % COMPLETE | CCAD BUILDING(SET) | CCAD PHASE(SET) | CCAD FLOOR(SET) | CCAD ZONE(SET) | CCAD WORK(SET) | CCAD SECTION(SET) | CCAD SERIAL No.(SET) | CCAD CBS(SET) | CCAD BILL(SET) | CCAD HANDOVER(SET) | CCAD TAG(SET) | CCAD REV(SET) | CCADACF (SET) | CCAD SSCF | Actual Cost | Phase | Area/ Department | Grids | Are | Weight & Nos | Process | Levels | CCAD CSA | Claimed This Month | N_% | P_811 | P_711 | Change Order # | NEW ACTIVITY ID | CCAD DIVISION(SET) | user_number8 | user_integer1 | user_integer2 | user_number7 |
| --- | --- | --- | --- | --- | --- | --- | --- | --- | --- | --- | --- | --- | --- | --- | --- | --- | --- | --- | --- | --- | --- | --- | --- | --- | --- | --- | --- | --- | --- | --- | --- | --- | --- | --- | --- | --- | --- | --- | --- | --- | --- | --- | --- | --- | --- | --- | --- | --- | --- | --- |
|  | 01 | **Level 1** |  |  | 2010-08-29 | 2012-12-23 |  |  |  |  |  |  |  |  |  |  |  |  |  |  |  |  |  |  |  |  |  |  |  |  |  |  |  |  |  |  |  |  |  |  |  |  |  |  |  |  |  |  |  |  |
|  | 01 | **Structure & Envelopment** |  |  | 2010-08-29 | 2012-07-30 |  |  |  |  |  |  |  |  |  |  |  |  |  |  |  |  |  |  |  |  |  |  |  |  |  |  |  |  |  |  |  |  |  |  |  |  |  |  |  |  |  |  |  |  |
| D01SA03301C0 |  | DT-01 ; Corewall concrete (Zone SA) |  | 8d | 2010-08-29 A | 2010-09-05 A | DGLSA03301C0 | 100% |  | 2010-08-21 | 2010-08-30 |  |  | CONCRETE [11016 h]; CONCRETE [277 m3]; Cost | D01SA03301C0 | 100 | DT | C | 01 | SA | CT | 033 | 01 | BILL 5 | B05 | S1 | 04 | R00 | ACF03 | 033 |  |  |  |  |  |  |  |  |  |  |  |  |  |  |  |  |  |  |  |  |
| D01SB03303C0 |  | DT-01 ; Corewall concrete (Zone SB) |  | 6d | 2010-09-19 A | 2010-09-23 A | DGLSB03303C0 | 100% |  | 2010-08-24 | 2010-08-31 |  |  | CONCRETE [11056 h]; CONCRETE [278 m3]; Cost | D01SB03303C0 | 100 | DT | C | 01 | SB | CT | 033 | 03 | BILL 5 | B05 | S1 | 04 | R00 | ACF03 | 033 |  |  |  |  |  |  |  |  |  |  |  |  |  |  |  |  |  |  |  |  |
| D01S105101C0 |  | DT-01 ; Erection of Structural Steel of 1st Floor (Zone S1) |  | 5d | 2010-10-13 A | 2010-12-04 A | DGLS105103C0 | 100% |  | 2010-10-03 | 2010-10-09 |  |  | STRUCTURAL STEEL [20765 h]; STRUCTURAL STEEL [812 T(Fe)]; Cost | D01S105101C0 | 100 | DT | C | 01 | S1 | ST | 051 | 01 | BILL 5 | B05 | S1 | 01 | R00 | ACF03 | 051 | 3979136 | Z2 | DT | P03 | O | A3 | EREC | 1FLR | ST |  |  |  |  |  |  |  |  |  |  |  |
| D01S105103C0 |  | DT-01 ; Alignment & welding of 1st Floor (Zone S1) |  | 3.01d | 2010-10-16 A | 2010-12-08 A | D01S105101C0 SS+4d | 100% |  | 2010-10-07 | 2010-10-11 |  |  | STRUCTURAL STEEL [1064 h]; Cost | D01S105103C0 | 100 | DT | C | 01 | S1 | ST | 051 | 03 | BILL 5 | B05 | S1 | 02 | R00 | ACF03 | 051 | 442126 | Z2 | DT | P03 | O | A3 | EREC | 1FLR | ST |  |  |  |  |  |  |  |  |  |  |  |
| D01S205101C0 |  | DT-01 ; Erection of Structural Steel of 1st Floor (Zone S2) |  | 9d | 2010-10-17 A | 2011-02-20 A | DGLS205103C0 | 100% |  | 2010-10-05 | 2010-10-14 |  |  | STRUCTURAL STEEL [11519 h]; STRUCTURAL STEEL [451 T(Fe)]; Cost | D01S205101C0 | 100 | DT | C | 01 | S2 | ST | 051 | 01 | BILL 5 | B05 | S1 | 01 | R00 | ACF03 | 051 | 4941599 | Z2 | DT | P03 | O | A3 | EREC | 1FLR | ST |  |  |  |  |  |  |  |  |  |  |  |
| D01S205103C0 |  | DT-01 ; Alignment & welding of 1st Floor (Zone S2) |  | 5.01d | 2010-10-25 A | 2011-02-22 A | D01S205101C0 | 100% |  | 2010-11-07 | 2010-11-13 |  |  | STRUCTURAL STEEL [1320 h]; Cost | D01S205103C0 | 100 | DT | C | 01 | S2 | ST | 051 | 03 | BILL 5 | B05 | S1 | 02 | R00 | ACF03 | 051 | 549067 | Z2 | DT | P03 | O | A3 | EREC | 1FLR | ST |  |  |  |  |  |  |  |  |  |  |  |
| D01S305101C0 |  | DT-01 ; Erection of Structural Steel of 1st Floor (Zone S3) |  | 10d | 2010-11-08 A | 2010-12-16 A | DGLS305103C0 | 100% |  | 2010-11-18 | 2010-11-30 |  |  | STRUCTURAL STEEL [10216 h]; STRUCTURAL STEEL [399 T(Fe)]; Cost | D01S305101C0 | 100 | DT | C | 01 | S3 | ST | 051 | 01 | BILL 5 | B05 | S1 | 01 | R00 | ACF03 | 051 | 5444378 | Z2 | DT | P03 | O | A3 | EREC | 1FLR | ST |  |  |  |  |  |  |  |  |  |  |  |
| D01S305103C0 |  | DT-01 ; Alignment & welding of 1st Floor (Zone S3) |  | 5.01d | 2010-11-15 A | 2010-12-23 A | D01S305101C0 | 100% |  | 2010-11-30 | 2010-12-06 |  |  | STRUCTURAL STEEL [1456 h]; Cost | D01S305103C0 | 100 | DT | C | 01 | S3 | ST | 051 | 03 | BILL 5 | B05 | S1 | 02 | R00 | ACF03 | 051 | 604931 | Z2 | DT | P03 | O | A3 | EREC | 1FLR | ST |  |  |  |  |  |  |  |  |  |  |  |
| D01S105305C0 |  | DT-01 ; Metal Decking 1st FLR (Zone S1) |  | 15d | 2010-11-23 A | 2011-03-05 A | D01S105103C0, D02S105101C0 | 100% |  | 2011-01-02 | 2011-01-18 |  |  | METAL DECKING [2310 h]; METAL DECKING [2923 m2]; Cost | D01S105305C0 | 100 | DT | C | 01 | S1 | ST | 053 | 05 | BILL 5 | B05 | S1 | 03 | R00 | ACF03 | 053 | 344866.06 | Z2 | DT | P03 | O | A3 | MDEC | 1FLR | ST |  |  |  |  |  |  |  |  |  |  |  |
| D01S205305C0 |  | DT-01 ; Metal Decking 1st FLR (Zone S2) |  | 18d | 2010-12-07 A | 2011-02-27 A | D01S205103C0, D02S205101C0 | 100% |  | 2011-01-09 | 2011-01-30 |  |  | METAL DECKING [2868 h]; METAL DECKING [3630 m2]; Cost | D01S205305C0 | 100 | DT | C | 01 | S2 | ST | 053 | 05 | BILL 5 | B05 | S1 | 03 | R00 | ACF03 | 053 | 428281.32 | Z2 | DT | P03 | O | A3 | MDEC | 1FLR | ST |  |  |  |  |  |  |  |  |  |  |  |
| D01S305305C0 |  | DT-01 ; Metal Decking 1st FLR (Zone S3) |  | 20d | 2010-12-08 A | 2010-12-27 A | D01S305103C0, D02S305101C0 | 100% |  | 2011-01-02 | 2011-01-24 |  |  | METAL DECKING [3160 h]; METAL DECKING [3999 m2]; Cost | D01S305305C0 | 100 | DT | C | 01 | S3 | ST | 053 | 05 | BILL 5 | B05 | S1 | 03 | R00 | ACF03 | 053 | 471856.46 | Z2 | DT | P03 | O | A3 | MDEC | 1FLR | ST |  |  |  |  |  |  |  |  |  |  |  |
| D01S103399C0 |  | DT-01 ; Concrete on Metal Decking 1st FLR (Zone S1) |  | 10d | 2010-12-22 A | 2011-02-28 A | D01S105305C0 | 100% |  | 2011-01-03 | 2011-01-15 |  |  | CONCRETE [14320 h]; CONCRETE [360 m3]; Cost | D01S105335C0 | 100 | DT | C | 01 | S1 | CT | 033 | 99 | BILL 5 | B05 | S1 | 08 | R00 | ACF03 | 033 |  | Z2 | DT | P03 | O | A3 | MDEC | 1FLR |  |  |  |  |  |  |  |  |  |  |  |  |
| D01S203399C0 |  | DT-01 ; Concrete on Metal Decking 1st FLR (Zone S2) |  | 10d | 2010-12-28 A | 2011-02-28 A | D01S205305C0 | 100% |  | 2011-01-11 | 2011-01-23 |  |  | CONCRETE [21384 h]; CONCRETE [538 m3]; Cost | D01S205335C0 | 100 | DT | C | 01 | S2 | CT | 033 | 99 | BILL 5 | B05 | S1 | 08 | R00 | ACF03 | 033 |  | Z2 | DT | P03 | O | A3 | MDEC | 1FLR |  |  |  |  |  |  |  |  |  |  |  |  |
| D01S303399C0 |  | DT-01 ; Concrete on Metal Decking 1st FLR (Zone S3) |  | 9.88d | 2010-12-28 A | 2011-02-28 A | D01S305305C0 | 100% |  | 2011-01-03 | 2011-01-13 |  |  | CONCRETE [23496 h]; CONCRETE [591 m3]; Cost | D01S305335C0 | 100 | DT | C | 01 | S3 | CT | 033 | 99 | BILL 5 | B05 | S1 | 08 | R00 | ACF03 | 033 |  | Z2 | DT | P03 | O | A3 | MDEC | 1FLR |  |  |  |  |  |  |  |  |  |  |  |  |
| D01S107807C0 |  | DT-01 ; Cementitious Fire Proofing works 1st FLR (Zone S1) |  | 12d | 2011-03-12 A | 2011-05-30 A | D02S103399C0 | 100% |  | 2011-03-01 | 2011-03-15 |  |  | CEMENTITIOUS FIREPROOFING [2190 h]; CEMENTITIOUS FIREPROOFING [4379 m2]; Cost | D01S107807C0 | 100 | DT | C | 01 | S1 | ST | 078 | 07 | BILL 5 | B05 | S1 | 04 | R00 | ACF03 | 078 |  | Z2 | DT | P03 | O | A3 | FIRE | 1FLR | ST |  |  |  |  |  |  |  |  |  |  |  |
| D01S207807C0 |  | DT-01 ; Cementitious Fire Proofing works 1st FLR (Zone S2) |  | 14d | 2011-03-12 A | 2011-06-02 A | D02S203399C0 | 100% |  | 2011-03-12 | 2011-03-27 |  |  | CEMENTITIOUS FIREPROOFING [2719 h]; CEMENTITIOUS FIREPROOFING [5438 m2]; Cost | D01S207807C0 | 95 | DT | C | 01 | S2 | ST | 078 | 07 | BILL 5 | B05 | S1 | 04 | R00 | ACF03 | 078 |  | Z2 | DT | P03 | O | A3 | FIRE | 1FLR | ST | 25609.97 |  |  |  |  |  |  |  |  |  |  |
| D01S307807C0 |  | DT-01 ; Cementitious Fire Proofing works 1st FLR (Zone S3) |  | 14d | 2011-03-12 A | 2011-06-01 A | D02S303399C0 | 100% |  | 2011-03-06 | 2011-03-21 |  |  | CEMENTITIOUS FIREPROOFING [2996 h]; CEMENTITIOUS FIREPROOFING [5992 m2]; Cost | D01S307807C0 | 90 | DT | C | 01 | S3 | ST | 078 | 07 | BILL 5 | B05 | S1 | 04 | R00 | ACF03 | 078 |  | Z2 | DT | P03 | O | A3 | FIRE | 1FLR | ST | 56431.09 |  |  |  |  |  |  |  |  |  |  |
| D01CO04403C0 |  | DT-01 ; C4 Bracket (Common Zone) |  | 200d | 2011-04-03 A | 2011-09-29 A | D01S107807C0, D01S207807C0, D01S307807C0 | 100% |  | 2011-03-28 | 2011-11-22 |  |  | FACADE CURTAIN WALL 4 [683 h]; Cost | D01CO04403C0 | 50 | DT | C | 01 | CO | FA | 044 | 03 | BILL 5 | B05 | S1 | FC4 | R00 | ACF05 | 044 |  |  |  |  |  |  |  |  | FA | 36506.94 | 97 |  |  |  |  |  |  |  |  |  |
| D01CO04413C0 |  | DT-01 ; M1 Bracket (Common Zone) |  | 12d | 2011-04-03 A | 2011-04-24 A | D01S107807C0, D01S207807C0, D01S307807C0 | 100% |  | 2011-03-28 | 2011-04-10 |  |  | FACADE METAL PANEL 1 [1015.6 h]; Cost | D01CO04413C0 | 100 | DT | C | 01 | CO | FA | 044 | 13 | BILL 5 | B05 | S1 | FM1 | R00 | ACF05 | 044 |  |  |  |  |  |  |  |  | FA |  | 100 |  |  |  |  |  |  |  |  |  |
| D01CO04415C0 |  | DT-01 ; M1 External Partition (Common Zone) |  | 150d | 2011-05-09 A | 2011-09-29 A | D01CO04413C0, DGLCO04415C0 SS+3d, D01GN01305C0 FF, D01CO04403C0 FF | 100% |  | 2011-06-02 | 2011-12-04 |  |  | PARTITIONS [2738.37 m]; PARTITIONS [13637.4 h]; Cost | D01CO04415C0 | 50 | DT | C | 01 | CO | FA | 044 | 15 | BILL 5 | B05 | S1 | FM1 | R00 | ACF05 | 044 |  |  |  |  |  |  |  |  | FA | 23795.14 | 90 |  |  |  |  |  |  |  |  |  |
| D01GN01305C0 |  | DT-01 ; Temporary Enclosure | level of effort | 140.9d | 2011-05-09 A | 2012-05-15 | D01M109203C0 SS, D01M209203C0 SS, D01TR09203C0 SS, D01PA09203C0 SS |  | 189d | 2011-07-02 | 2011-12-20 | 110d | 0d | Labor General [0.6 h]; Cost |  |  | DT | C | 01 | GEN | FA | GEN |  | BILL 5 | B05 |  | TE | R00 | ACF05 | 010 |  |  |  |  |  |  |  |  | FA |  | 18 | 36.12 | 17.67 |  |  |  |  |  |  |  |
| D01CO04001C0 |  | DT-P1 ; Blockworks (Common Zone) |  | 24d | 2011-05-15 A | 2011-10-01 | D01S107807C0, D01S207807C0, D01S307807C0 | 80% | 0d | 2011-06-02 | 2011-07-02 | 151.4d | 0d | Cost | DP1CO04001C0 | 30 | DT | C | 01 | CO | BL | 040 | 01 | BILL 5 | B05 | S1 | BL | R00 | ACF06 | 040 |  |  |  |  |  |  |  |  |  |  |  |  |  | 73 | 73 | 04 |  |  |  |  |
| D01CO04003C0 |  | DT-P1 ; Plaster to Blockwork (Common Zone) |  | 24d | 2011-07-10 A | 2011-10-05 | D01CO04001C0 | 79% | 5d | 2011-07-07 | 2011-08-04 | 151.4d | 127d | Labor General [1 h]; Cost | DP1CO04003C0 |  | DT | C | 01 | CO | BL | 040 | 03 | BILL 5 | B05 | S1 | BL | R00 | ACF06 | 040 |  |  |  |  |  |  |  |  |  |  |  |  |  |  |  |  |  |  |  |  |
| D01CO04405C0 |  | DT-01 ; C4 Transom & Mullion (Common Zone) |  | 54d | 2011-07-10 A | 2011-09-29 A | D01CO04403C0, DGLCO04405C0 SS+7d | 100% |  | 2011-07-16 | 2011-09-19 |  |  | FACADE CURTAIN WALL 4 [2730.6 h]; Cost | D01CO04405C0 |  | DT | C | 01 | CO | FA | 044 | 05 | BILL 5 | B05 | S1 | FC4 | R00 | ACF05 | 044 |  |  |  |  |  |  |  |  | FA |  | 50 | 55 | 20 |  |  |  |  |  |  |  |
| D01CO04407C0 |  | DT-01 ; C4 Glazing (Common Zone) |  | 24d | 2011-08-10 A | 2011-10-06 | D01CO04405C0, D01GN01305C0 FF, D01CO04405C0 FF | 75% | 6d | 2011-09-28 | 2011-10-26 | 278d | 116d | FACADE CURTAIN WALL 4 [2408.3 h]; FACADE CURTAIN WALL 4 [880 m2]; FACADE TOTAL QUANTITY m2 [880 m2]; Cost | D01CO04407C0 |  | DT | C | 01 | CO | FA | 044 | 07 | BILL 5 | B05 | S1 | FC4 | R00 | ACF05 | 044 |  |  |  |  |  |  |  |  | FA |  |  | 15 | 0 |  |  |  | 0 | 0 | 0 | 0 |
| D01CO04408C0 |  | DT-01 ; Louvers Bracket (Common Zone) |  | 30d | 2011-10-01 | 2011-11-03 | D01CO04403C0 SS |  |  |  |  | 232.25d | 0d | FACADE SAND LOUVERS [524.9 h]; Cost | I05CO04405C0 |  | DT | C | 01 | CO | FA | 044 | 05 | BILL 5 | B05 | S2 | FSL | R00 | ACF05 | 044 |  |  |  |  |  |  |  |  | FA |  |  |  |  |  |  |  |  |  |  |  |
| D01CO04419C0 |  | DT-01 ; Louvers transom & mullion (Common Zone) |  | 42d | 2011-11-05 | 2011-12-28 | D01CO04408C0 |  |  |  |  | 232.25d | 0d | FACADE SAND LOUVERS [2099 h]; Cost | I05CO04417C0 |  | DT | C | 01 | CO | FA | 044 | 17 | BILL 5 | B05 | S2 | FSL | R00 | ACF05 | 044 |  |  |  |  |  |  |  |  | FA |  |  |  |  |  |  |  |  |  |  |  |
| D01CO04412C0 |  | DT-01 ; Louvers installation (Common Zone) |  | 36d | 2011-12-29 | 2012-02-11 | D01CO04419C0 |  |  |  |  | 232.25d | 20.6d | FACADE STEEL GRILL [874.7 h]; Cost | I05CO04413C0 |  | DT | C | 01 | CO | FA | 044 | 13 | BILL 5 | B05 | S2 | FSL | R00 | ACF05 | 044 |  |  |  |  |  |  |  |  | FA |  |  |  |  |  |  |  |  |  |  |  |
| D01CO04433C0 |  | DT-01 ; C3 Bracket (Canyon) |  | 50d | 2012-02-05 | 2012-04-02 | D01S107807C0, D01S207807C0, D01S307807C0, D02CO04433C0 SS |  |  |  |  | 110d | 0d | FACADE CURTAIN WALL 3 [216.6 h]; Cost | D01CO04433C0 |  | DT | C | 01 | CO | FA | 044 | 33 | BILL 5 | B05 | S1 | FC3 | R00 | ACF05 | 044 |  |  |  |  |  |  |  |  | FA |  |  |  |  |  |  |  |  |  |  |  |
| D01CO04455C0 |  | DT-01 ; M1 Inner Side of External Partition (Common Zone) |  | 30d | 2012-02-05 | 2012-03-10 | D01CO04415C0, D01PA09205C0 SS, D01M209205C0 SS, D01M109205C0 SS |  |  |  |  | 96.8d | 36d | FACADE METAL PANEL 1 [493.3 h]; Cost | DP3CO04415C0 |  | DT | C | 01 | CO | FA | 044 | 15 | BILL 5 | B05 | S1 | FM1 | R00 | ACF05 | 044 |  |  |  |  |  |  |  |  | FA |  |  |  |  |  |  |  |  |  |  |  |
| D01CO04435C0 |  | DT-01 ; C3 Transom & Mullion (Canyon) |  | 60d | 2012-02-07 | 2012-04-16 | D01CO04433C0 SS+2d, D01CO04433C0 FF |  |  |  |  | 110d | 0d | FACADE CURTAIN WALL 3 [865.9 h]; Cost | D01CO04435C0 |  | DT | C | 01 | CO | FA | 044 | 35 | BILL 5 | B05 | S1 | FC3 | R00 | ACF05 | 044 |  |  |  |  |  |  |  |  | FA |  |  |  |  |  |  |  |  |  |  |  |
| D01CO04434C0 |  | DT-01 ; CA-1 Canyon atrium interior glazing (Canyon) |  | 60d | 2012-02-09 | 2012-04-18 | D01CO04437C0 SS, DGLCO04434C0 SS+18d |  |  |  |  | 110d | 65d | Labor General [0.6 h]; Cost | DGLCO04433C0 |  | DT | C | 01 | CO | FA | 044 | 33 | BILL 5 | B05 | S2 | CA | R00 | ACF05 | 044 |  |  |  |  |  |  |  |  | FA |  |  |  |  |  |  |  |  |  |  |  |
| D01CO04437C0 |  | DT-01 ; C3 Glazing (Canyon) |  | 83d | 2012-02-09 | 2012-05-15 | D01CO04435C0 SS+2d, D01GN01305C0 FF, D01CO04435C0 FF |  |  |  |  | 110d | 0d | FACADE CURTAIN WALL 3 [1695.4 h]; FACADE CURTAIN WALL 3 [619 m2]; FACADE TOTAL QUANTITY m2 [619 m2]; Cost | D01CO04437C0 |  | DT | C | 01 | CO | FA | 044 | 37 | BILL 5 | B05 | S1 | FC3 | R00 | ACF05 | 044 |  |  |  |  |  |  |  |  | FA |  |  |  |  |  |  |  |  |  |  |  |
| D01CO04417C0 |  | DT-01 ; M1 Metal Panel (Common Zone) |  | 30d | 2012-06-25 | 2012-07-30 | D01CO04415C0, DGLCO04417C0 SS, PGLS503391C0 FS+30d |  |  |  |  | 127.95d | 31.95d | FACADE METAL PANEL 1 [5790.7 h]; FACADE METAL PANEL 1 [2116 m2]; FACADE TOTAL QUANTITY m2 [2116 m2]; Cost | D01CO04417C0 |  | DT | C | 01 | CO | FA | 044 | 17 | BILL 5 | B05 | S1 | FM1 | R00 | ACF05 | 044 |  |  |  |  |  |  |  |  | FA |  |  |  |  |  |  |  |  |  |  |  |

| ID | WBS | Activity | Duration | Start | Finish | Predecessors | Complete | Remaining | Planned start | Planned finish | Total float | Free float | Resources | Cost | Actual cost | user_number8 | user_integer1 | user_integer2 | user_number7 | Change Order # | NEW ACTIVITY ID | change id | RENZ % COMPLETE | Claimed This Month | CCAD BUILDING(SET) | CCAD PHASE(SET) | CCAD FLOOR(SET) | CCAD ZONE(SET) | CCAD WORK(SET) | CCAD SECTION(SET) | CCAD SERIAL No.(SET) | CCAD CBS(SET) | CCAD BILL(SET) | CCAD HANDOVER(SET) | CCAD TAG(SET) | CCAD REV(SET) | CCADACF (SET) | CCAD CSA | CCAD SSCF | Act Selector % | July2011 Target% Complete | CCAD SUB ZONE MEP(SET) | CCAD MEQ | P_811 | P_711 | CCAD DIVISION(SET) |
| --- | --- | --- | --- | --- | --- | --- | --- | --- | --- | --- | --- | --- | --- | --- | --- | --- | --- | --- | --- | --- | --- | --- | --- | --- | --- | --- | --- | --- | --- | --- | --- | --- | --- | --- | --- | --- | --- | --- | --- | --- | --- | --- | --- | --- | --- | --- |
|  | 02 | **Mech, Air Comp, Pump Rm** |  | 2011-05-09 | 2012-10-03 |  |  |  |  |  |  |  |  |  |  |  |  |  |  |  |  |  |  |  |  |  |  |  |  |  |  |  |  |  |  |  |  |  |  |  |  |  |  |  |  |  |
| D01M109203C0 |  | DT-01 ; Partitions 1st face (Mech RM) | 90d | 2011-05-09 A | 2012-01-29 | D01M109201C0 SS+12d, D01M126009C0 FF | 25% | 67.5d | 2011-07-31 | 2011-11-19 | 149.5d | 72d | PARTITIONS [1286 m]; PARTITIONS [4465 h]; Cost |  |  | 0 | 0 | 0 | 0 | 314 | 1463 | D01ME09203C0 | 2 | 66536.66 | DT | C | 01 | M1 | PT | 092 | 03 | BILL 5 | B05 | S1 | 2F | R00 | ACF06 | GP | 092 | P1F |  |  |  |  |  |  |
| D01M109201C0 |  | DT-01 ; Metal Studs (Mech RM) | 90d | 2011-05-10 A | 2012-01-17 | D01M123001C0 | 36% | 57.6d | 2011-07-17 | 2011-11-01 | 91.9d | 0d | PARTITIONS [5716 h]; PARTITIONS - Metal Studs [1286 m]; Cost |  |  | 0 | 0 | 0 | 0 |  |  | D01ME09201C0 | 20 | 18281.6 | DT | C | 01 | M1 | PT | 092 | 01 | BILL 5 | B05 | S1 | 1F | R00 | ACF06 | GP | 092 | PMS |  |  |  |  |  |  |
| D01M123001C0 |  | DT-01 ; 1st Fix, Inst. of Supports for MEP (Mech RM) | 150d | 2011-05-15 A | 2011-11-03 | D01S107807C0 SS, D01S207807C0 SS | 80% | 30d | 2011-05-31 | 2011-11-29 | 77.5d | 0d | MECHANICAL [1338 h]; Cost [75432.9 AED] | 75,432.94 | 60,346.35 |  |  |  |  |  |  | D01ME23001C0 | 60 | 4375.11 | DT | C | 01 | M1 | ME | 230 | 01 | BILL 5 | B05 | S1 | 1F | R00 | ACF04 | MEP | 230 | M1F | 100 | 1S |  |  |  |  |
| D01M123013C0 |  | DT-01 ; 2nd Fix, Inst of Equipment (AHU) (Mech RM) | 200d | 2011-05-15 A | 2011-12-01 | D01S107807C0, D01S207807C0, D01S307807C0, D01M123001C0 | 90% | 20d | 2011-07-24 | 2012-03-24 | 89.5d | 0d | MECHANICAL [52650 h]; Cost [11980949 AED] | 11,980,948.98 | 10,782,854.08 |  |  |  |  |  |  | D01ME23013C0 | 10 | 10423423.24 | DT | C | 01 | M1 | ME | 230 | 13 | BILL 5 | B05 | S1 | 2F | R00 | ACF04 | MEP | 230 |  | 100 | 2n | H |  |  |  |
| D01M121111C0 |  | DT-01 ; 1st Fix, Inst of Sprinkler main pipe (Mech RM) | 78d | 2011-06-06 A | 2012-02-01 | D01M123001C0, D01S107807C0, D01S207807C0 | 10% | 70.2d | 2011-07-25 | 2011-10-26 | 93.1d | 0d | MECHANICAL [981.6 h]; Cost [53543.7 AED] | 53,543.69 | 5,354.37 |  |  |  |  |  |  | D01ME21111C0 |  | 12428.21 | DT | C | 01 | M1 | ME | 211 | 11 | BILL 5 | B05 | S1 | 1F | R00 | ACF04 | MEP | 211 | M1F | 45 | 1S |  |  |  |  |
| D01M123019C0 |  | DT-01 ; 1st Fix, Inst of CHW pipe (Mech RM) | 72d | 2011-06-07 A | 2012-01-30 | D01M121111C0 SS+10d, D01M123001C0, D01S107807C0, D01S207807C0 | 5% | 68.4d | 2011-08-06 | 2011-10-31 | 141.1d | 0d | MECHANICAL [6325.2 h]; Cost [345418 AED] | 345,418.28 | 17,270.91 |  |  |  |  |  |  | D01ME23019C0 |  | 40065.21 | DT | C | 01 | M1 | ME | 230 | 19 | BILL 5 | B05 | S1 | 1F | R00 | ACF04 | MEP | 230 | M1F | 30 | 1S |  |  |  |  |
| D01M126009C0 |  | DT-01 ; 2nd Fix, Inst of Equipment (DB, TR, SG) (Mech RM) | 150d | 2011-06-19 A | 2011-11-03 | D01S107807C0, D01S207807C0, D01S307807C0 | 80% | 30d | 2011-10-17 | 2012-04-17 | 191.5d | 67.5d | ELECTRICAL [10124.4 h]; Cost [2303986 AED] | 2,303,985.68 | 1,843,188.54 |  |  |  |  |  |  | D01ME26009C0 |  | 1547606.46 | DT | C | 01 | M1 | ME | 260 | 09 | BILL 5 | B05 | S1 | 2F | R00 | ACF04 | MEP | 260 |  | 60 | 2n | E | 80 | 35 |  |
| D01M122011C0 |  | DT-01 ; 1st Fix, Inst of Drainage pipe (Mech RM) | 78d | 2011-07-10 A | 2012-02-01 | D01M123001C0, D01S107807C0, D01S207807C0 | 10% | 70.2d | 2011-08-02 | 2011-11-03 | 77.5d | 0d | PLUMBING [1173.6 h]; Cost [61888.2 AED] | 61,888.15 | 6,188.82 |  |  |  |  |  |  | D01ME22011C0 |  |  | DT | C | 01 | M1 | ME | 220 | 11 | BILL 5 | B05 | S1 | 1F | R00 | ACF04 | MEP | 220 | M1F | 25 | 1S |  |  |  |  |
| D01M121119C0 |  | DT-01 ; 1st Fix, Inst of Sprinkler branch pipe (Mech RM) | 78d | 2011-08-10 A | 2012-04-24 | D01M121111C0 | 10% | 70.2d | 2011-12-22 | 2012-03-25 | 93.1d | 0d | MECHANICAL [1441.2 h]; Cost [78749.8 AED] | 78,749.79 | 7,874.98 |  |  |  |  |  |  | D01ME21119C0 |  |  | DT | C | 01 | M1 | ME | 211 | 19 | BILL 5 | B05 | S1 | 1F | R00 | ACF04 | MEP | 211 | M1F |  | 1S |  | 10 | 0 |  |
| D01M122006C0 |  | DT-01 ; 1st Fix, Inst of Water supply pipe (Mech RM) | 72d | 2011-11-05 | 2012-02-02 | D01M122011C0 SS+7d, D01M123001C0, D01S107807C0, D01S207807C0 |  |  |  |  | 77.5d | 0d | PLUMBING [4896 h]; Cost |  |  |  |  |  |  |  |  | D01ME22006C0 |  | 61355.42 | DT | C | 01 | M1 | ME | 220 | 06 | BILL 5 | B05 | S1 | 1F | R00 | ACF04 | MEP | 220 | M1F | 25 | 1S |  |  |  |  |
| D01M123005C0 |  | DT-01 ; 1st Fix, Inst of Ducting (Mech RM) | 84d | 2011-11-05 | 2012-02-18 | D01M123001C0, D01M123013C0 SS+12d |  |  |  |  | 89.5d | 0d | MECHANICAL [11402.4 h]; Cost |  |  |  |  |  |  |  |  | D01ME23005C0 |  | 144437.5 | DT | C | 01 | M1 | ME | 230 | 05 | BILL 5 | B05 | S1 | 1F | R00 | ACF04 | MEP | 230 | M1F | 35 | 1S |  |  |  |  |
| D01M126001C0 |  | DT-01 ; 1st Fix, Inst of Trunking/Conduiting (Mech RM) | 48d | 2011-11-05 | 2012-01-05 | D01M123001C0, D01S107807C0, D01S207807C0 |  |  |  |  | 137.5d | 0d | ELECTRICAL [824.4 h]; Cost |  |  |  |  |  |  |  |  | D01ME26001C0 |  |  | DT | C | 01 | M1 | ME | 260 | 01 | BILL 5 | B05 | S1 | 1F | R00 | ACF04 | MEP | 260 | M1F | 35 | 1S |  |  |  |  |
| D01M107101C0 |  | DT-01 ; Waterproofing (Mech RM) | 15d | 2011-12-04 | 2011-12-20 | D01M123013C0 |  |  |  |  | 230.5d | 79d | THERMAL & MOISTURE [2481 m2]; THERMAL & MOISTURE [376 h]; Cost |  |  |  |  |  |  | 328 | 1469 | I05ME09901C0 |  |  | DT | C | 01 | M1 | FF | 071 | 01 | BILL 5 | B05 | S1 | 01 | R00 | ACF03 |  | 071 |  |  |  |  |  |  |  |
| D01M123011C0 |  | DT-01 ; 2nd Fix, Inst of Equipment (FCU,FAN,PUMP) (Mech RM) | 48d | 2011-12-04 | 2012-01-29 | D01M123013C0 |  |  |  |  | 97d | 0d | MECHANICAL [2226 h]; Cost |  |  |  |  |  |  |  |  | D01ME23011C0 |  |  | DT | C | 01 | M1 | ME | 230 | 11 | BILL 5 | B05 | S1 | 2F | R00 | ACF04 | MEP | 230 |  |  | 2n | H |  |  |  |
| D01M127020C0 |  | DT-01 ; 2nd Fix, Inst of ELV Equipment (Panels) (Mech RM) | 42d | 2011-12-04 | 2012-01-22 | D01M123013C0 |  |  |  |  | 129.5d | 52d | ELECTRICAL [1723.2 h]; Cost |  |  |  |  |  |  |  |  | D01ME27020C0 |  |  | DT | C | 01 | M1 | ME | 270 | 20 | BILL 5 | B05 | S1 | 2F | R00 | ACF04 | MEP | 270 |  |  | 2n | E |  |  |  |
| D01M126011C0 |  | DT-01 ; 1st Fix, Inst of Cable Tray (Mech RM) | 48d | 2012-01-07 | 2012-03-03 | D01M123013C0, D01M126001C0 |  |  |  |  | 137.5d | 0d | ELECTRICAL [430.8 h]; Cost |  |  |  |  |  |  |  |  | D01ME26011C0 |  |  | DT | C | 01 | M1 | ME | 260 | 11 | BILL 5 | B05 | S1 | 1F | R00 | ACF04 | MEP | 260 | M1F | 30 | 1S |  |  |  |  |
| D01M127001C0 |  | DT-01 ; 1st Fix, Wiring/ Cabling work (Mech RM) | 48d | 2012-01-07 | 2012-03-03 | D01M126001C0 |  |  |  |  | 137.5d | 24d | ELECTRICAL [436.8 h]; Cost |  |  |  |  |  |  |  |  | D01ME27001C0 |  |  | DT | C | 01 | M1 | ME | 270 | 01 | BILL 5 | B05 | S1 | 1F | R00 | ACF04 | MEP | 270 | M1F |  | 1S |  |  |  |  |
| D01M108101C0 |  | DT-01 ; Metal Door Frames (Mech RM) | 18d | 2012-01-17 | 2012-02-08 | D01M109201C0, GNHE08101C0 FS+79d |  |  |  |  | 115.9d | 38.4d | METAL DOORS [473 h]; Cost |  |  |  |  |  |  | 316 | 1465 | D01ME08101C0 |  |  | DT | C | 01 | M1 | DO | 081 | 01 | BILL 5 | B05 | S1 | DF | R00 | ACF06 |  | 081 |  |  |  |  |  |  | 08 |
| D01M123009C0 |  | DT-01 ; 2nd Fix, Inst of VAV'S CHW connection (Mech RM) | 36d | 2012-01-30 | 2012-03-12 | D01M123011C0 |  |  |  |  | 159.5d | 30d | MECHANICAL [1684.8 h]; Cost |  |  |  |  |  |  |  |  | D01ME23009C0 |  |  | DT | C | 01 | M1 | ME | 230 | 09 | BILL 5 | B05 | S1 | 2F | R00 | ACF07 | MEP | 230 |  |  | 2n |  |  |  |  |
| D01M121117C0 |  | DT-01 ; 2nd Fix, Inst of Zone Control Valve (Mech RM) | 36d | 2012-01-30 | 2012-03-13 | D01M123013C0, D01M123019C0 |  |  |  |  | 153.1d | 15.6d | MECHANICAL [902.4 h]; Cost |  |  |  |  |  |  |  |  | D01ME21117C0 |  |  | DT | C | 01 | M1 | ME | 211 | 17 | BILL 5 | B05 | S1 | 2F | R00 | ACF07 | MEP | 211 |  |  | 2n |  |  |  |  |
| D01M109205C0 |  | DT-01 ; Partitions Closing (Mech RM) | 42d | 2012-02-05 | 2012-03-24 | D01M109201C0, D01M109203C0 SS+30d, D01M121111C0 FF, D01M122006C0, D01M122011C0, D01M126009C0 FF, D01M127020C0 FF, DAFOA09206C1 FF, D01M108101C0 FF |  |  |  |  | 77.5d | 0d | PARTITIONS [1286 m]; PARTITIONS [5715 h]; Cost |  |  |  |  |  |  | 315 | 1464 | D01ME09205C0 |  |  | DT | C | 01 | M1 | PT | 092 | 05 | BILL 5 | B05 | S1 | FF | R00 | ACF06 | GP | 092 | P2F |  |  |  |  |  |  |
| D01M123015C0 |  | DT-01 ; 2nd Fix, Inst of VCD's/FD's (Mech RM) | 36d | 2012-02-19 | 2012-03-31 | D01M123005C0 |  |  |  |  | 89.5d | 0d | MECHANICAL [4312.8 h]; Cost |  |  |  |  |  |  |  |  | D01ME23015C0 |  |  | DT | C | 01 | M1 | ME | 230 | 15 | BILL 5 | B05 | S1 | 2F | R00 | ACF07 | MEP | 230 |  | 30 | 2n |  |  |  |  |
| D01M123017C0 |  | DT-01 ; 2nd Fix, Insulation of CHW pipe & Duct (Mech RM) | 42d | 2012-02-19 | 2012-04-07 | D01M123005C0, D01M123019C0 |  |  |  |  | 125.5d | 36d | MECHANICAL [5311.2 h]; Cost |  |  |  |  |  |  |  |  | D01ME23017C0 |  |  | DT | C | 01 | M1 | ME | 230 | 17 | BILL 5 | B05 | S1 | 2F | R00 | ACF07 | MEP | 230 |  |  | 2n |  |  |  |  |
| D01M127010C0 |  | DT-01 ; 1st Fix, Inst of Trunking for ELV system (Mech RM) | 48d | 2012-02-19 | 2012-04-14 | D01M123005C0 |  |  |  |  | 101.5d | 0d | ELECTRICAL [1689.6 h]; Cost |  |  |  |  |  |  |  |  | D01ME27010C0 |  |  | DT | C | 01 | M1 | ME | 270 | 10 | BILL 5 | B05 | S1 | 1F | R00 | ACF04 | MEP | 270 | M1F | 60 | 1S |  |  |  |  |
| D01M126007C0 |  | DT-01 ; 2nd Fix, Cable Pulling (Mech RM) | 42d | 2012-03-04 | 2012-04-21 | D01M126011C0 |  |  |  |  | 161.5d | 0d | ELECTRICAL [6634.8 h]; Cost |  |  |  |  |  |  |  |  | D01ME26007C0 |  |  | DT | C | 01 | M1 | ME | 260 | 07 | BILL 5 | B05 | S1 | 2F | R00 | ACF07 | MEP | 260 |  |  | 2n |  |  |  |  |
| D01M109601C0 |  | DT-01 ; Floor Finishes (Mech RM) | 40d | 2012-03-25 | 2012-05-09 | D01M107101C0, D01M109205C0 |  |  |  |  | 151.5d | 0d | ASSORTED FLOOR FINISH [27120 h]; ASSORTED FLOOR FINISH [19733 m2]; Cost |  |  |  |  |  |  | 326 | 1501 | D01ME09601C0 |  |  | DT | C | 01 | M1 | FF | 096 | 01 | BILL 5 | B05 | S1 | 01 | R00 | ACF06 |  | FF |  |  |  |  |  |  |  |
| D01M109901C0 |  | DT-01 ; Wall Prime & 1st coat (Mech RM) | 20d | 2012-03-25 | 2012-04-16 | D01CO04003C0, D01M109205C0 |  |  |  |  | 105.5d | 0d | ASSORTED WALL FINISH [146 h]; Cost |  |  |  |  |  |  | 328 | 1469 | D01ME09901C0 |  |  | DT | C | 01 | M1 | PA | 099 | 01 | BILL 5 | B05 | S1 | 01 | R00 | ACF06 |  | 099 |  |  |  |  |  |  |  |
| D01M121123C0 |  | DT-01 ; Final Fix, Inst of Fire Extinguishers/FHC (Mech RM) | 72d | 2012-03-25 | 2012-06-17 | D01M109205C0 |  |  |  |  | 131.5d | 54d | MECHANICAL [5833.2 h]; Cost |  |  |  |  |  |  |  |  | D01ME21123C0 |  |  | DT | C | 01 | M1 | ME | 211 | 23 | BILL 5 | B05 | S1 | FF | R00 | ACF07 | MEP | 211 |  |  | FF |  |  |  |  |
| D01M126015C0 |  | DT-01 ; Final Fix, Inst of Ceiling rose (Mech RM) | 48d | 2012-03-25 | 2012-05-19 | D01M109205C0 |  |  |  |  | 77.5d | 0d | ELECTRICAL [67.2 h]; Cost |  |  |  |  |  |  |  |  | D01ME26015C0 |  |  | DT | C | 01 | M1 | ME | 260 | 15 | BILL 5 | B05 | S1 | FF | R00 | ACF07 | MEP | 260 |  |  | FF |  |  |  |  |
| D01M123023C0 |  | DT-01 ; 2nd Fix, Inst of Flexible Duct & Plenum boxes (Mech RM) | 48d | 2012-04-01 | 2012-05-26 | D01M123015C0, D01M123017C0 SS |  |  |  |  | 89.5d | 0d | MECHANICAL [274.8 h]; Cost |  |  |  |  |  |  |  |  | D01ME23023C0 |  |  | DT | C | 01 | M1 | ME | 230 | 23 | BILL 5 | B05 | S1 | FF | R00 | ACF07 | MEP | 230 |  |  | FF |  |  |  |  |
| D01M127003C0 |  | DT-01 ; Final Fix, BMS connection work to Equipment (Mech RM) | 60d | 2012-04-01 | 2012-06-09 | D01M121117C0, D01M123011C0, D01M123013C0, D01M123015C0, D01M126009C0, D01M127001C0, D01M127020C0 |  |  |  |  | 137.5d | 60d | ELECTRICAL [29847.6 h]; Cost |  |  |  |  |  |  |  |  | D01ME27003C0 |  |  | DT | C | 01 | M1 | ME | 270 | 03 | BILL 5 | B05 | S1 | FF | R00 | ACF07 | MEP | 270 |  |  | FF |  |  |  |  |
| D01M126005C0 |  | DT-01 ; 2nd Fix, Wiring for Power/Lighting/Emergency (Mech RM) | 36d | 2012-04-15 | 2012-05-26 | D01M126001C0, D01M126011C0, D01M127001C0, D01M127010C0 |  |  |  |  | 101.5d | 0d | ELECTRICAL [436.8 h]; Cost |  |  |  |  |  |  |  |  | D01ME26005C0 |  |  | DT | C | 01 | M1 | ME | 260 | 05 | BILL 5 | B05 | S1 | 2F | R00 | ACF07 | MEP | 260 |  |  | 2n |  |  |  |  |
| D01M108105C0 |  | DT-01 ; Metal Doors (Mech RM) | 24d | 2012-04-17 | 2012-05-14 | D01M108101C0, D01M109901C0 |  |  |  |  | 137d | 0d | METAL DOORS [1900 h]; METAL DOORS [190 no]; Cost |  |  |  |  |  |  | 317 | 1466 | D01ME08105C0 |  |  | DT | C | 01 | M1 | DO | 081 | 05 | BILL 5 | B05 | S1 | DR | R00 | ACF06 |  | 081 |  |  |  |  |  |  | 08 |
| D01M109903C0 |  | DT-01 ; Wall - Final Paint (Mech RM) | 20d | 2012-04-17 | 2012-05-09 | D01M109901C0 |  |  |  |  | 175d | 97.5d | ASSORTED WALL FINISH [79 h]; Cost |  |  |  |  |  |  | 329 | 1470 | D01ME09903C0 |  |  | DT | C | 01 | M1 | PA | 099 | 03 | BILL 5 | B05 | S1 | 02 | R00 | ACF06 |  | 099 |  |  |  |  |  |  |  |
| D01M127030C0 |  | DT-01 ; Final Fix, Inst of ELV device (Detector/Speaker) (Mech RM) | 54d | 2012-04-17 | 2012-06-19 | D01M109901C0, D01M123009C0, D01M127020C0 |  |  |  |  | 129.5d | 52d | ELECTRICAL [2152.8 h]; Cost |  |  |  |  |  |  |  |  | D01ME27030C0 |  |  | DT | C | 01 | M1 | ME | 270 | 30 | BILL 5 | B05 | S1 | FF | R00 | ACF07 | MEP | 270 |  |  | FF |  |  |  |  |
| D01M126017C0 |  | DT-01 ; Final Fix, Inst of Switch/Sockets (Mech RM) | 18d | 2012-04-22 | 2012-05-12 | D01M109901C0, D01M126007C0 |  |  |  |  | 161.5d | 84d | ELECTRICAL [610.8 h]; Cost |  |  |  |  |  |  |  |  | D01ME26017C0 |  |  | DT | C | 01 | M1 | ME | 260 | 17 | BILL 5 | B05 | S1 | FF | R00 | ACF07 | MEP | 260 |  |  | FF |  |  |  |  |
| D01M121115C0 |  | DT-01 ; 2nd Fix, Inst of Sprinkler droppers (Mech RM) | 36d | 2012-04-24 | 2012-06-05 | D01M109205C0, D01M121119C0 |  |  |  |  | 93.1d | 0d | MECHANICAL [2067.6 h]; Cost |  |  |  |  |  |  |  |  | D01ME21115C0 |  |  | DT | C | 01 | M1 | ME | 211 | 15 | BILL 5 | B05 | S1 | 2F | R00 | ACF07 | MEP | 211 |  |  | 2n |  |  |  |  |
| D01M122003C0 |  | DT-01 ; Final Fix, Inst of All drain (Mech RM) | 12d | 2012-05-10 | 2012-05-23 | D01M109601C0 |  |  |  |  | 151.5d | 74d | PLUMBING [1173.6 h]; Cost |  |  |  |  |  |  |  |  | D01ME22003C0 |  |  | DT | C | 01 | M1 | ME | 220 | 03 | BILL 5 | B05 | S1 | FF | R00 | ACF07 | MEP | 220 |  |  | FF |  |  |  |  |
| D01M108709C0 |  | DT-01 ; Ironmongery (Mech RM) | 34d | 2012-05-15 | 2012-06-24 | D01M108105C0 |  |  |  |  | 137d | 59.5d | IRONMONGERY [1050 h]; IRONMONGERY [105 no]; Cost |  |  |  |  |  |  | 322 | 1467 | D01ME08709C0 |  |  | DT | C | 01 | M1 | DO | 087 | 09 | BILL 5 | B05 | S1 | IM | R00 | ACF06 |  | 087 |  |  |  |  |  |  | 08 |
| D01M126019C0 |  | DT-01 ; Final Fix, Inst of Light fittings (Mech RM) | 78d | 2012-05-20 | 2012-08-21 | D01M109901C0, D01M126015C0 |  |  |  |  | 77.5d | 0d | ELECTRICAL [6626.4 h]; Cost |  |  |  |  |  |  |  |  | D01ME26019C0 |  |  | DT | C | 01 | M1 | ME | 260 | 19 | BILL 5 | B05 | S1 | FF | R00 | ACF07 | MEP | 260 |  |  | FF |  |  |  |  |
| D01M123021C0 |  | DT-01 ; Final Fix, Inst of Grilles & Diffusers (Mech RM) | 60d | 2012-05-27 | 2012-08-05 | D01M123023C0 |  |  |  |  | 89.5d | 12d | MECHANICAL [2560.8 h]; Cost |  |  |  |  |  |  |  |  | D01ME23021C0 |  |  | DT | C | 01 | M1 | ME | 230 | 21 | BILL 5 | B05 | S1 | FF | R00 | ACF07 | MEP | 230 |  |  | FF |  |  |  |  |
| D01M126013C0 |  | DT-01 ; Final Fix, Termination & Gladding of Cables (Mech RM) | 48d | 2012-05-27 | 2012-07-22 | D01M109205C0, D01M126005C0 |  |  |  |  | 101.5d | 24d | ELECTRICAL [368.4 h]; Cost |  |  |  |  |  |  |  |  | D01ME26013C0 |  |  | DT | C | 01 | M1 | ME | 260 | 13 | BILL 5 | B05 | S1 | FF | R00 | ACF07 | MEP | 260 |  |  | FF |  |  |  |  |
| D01M121121C0 |  | DT-01 ; Final Fix, Inst of Sprinklers head (Mech RM) | 48d | 2012-06-05 | 2012-08-01 | D01M121115C0, D01M121115C0 FF |  |  |  |  | 93.1d | 15.6d | MECHANICAL [403.2 h]; Cost |  |  |  |  |  |  |  |  | D01ME21121C0 |  |  | DT | C | 01 | M1 | ME | 211 | 21 | BILL 5 | B05 | S1 | FF | R00 | ACF07 | MEP | 211 |  |  | FF |  |  |  |  |

| ID | WBS | Activity | Duration | Start | Finish | Predecessors | Complete | Remaining | Planned start | Planned finish | Total float | Free float | Resources | Cost | Actual cost | change id | CCAD BUILDING(SET) | CCAD PHASE(SET) | CCAD FLOOR(SET) | CCAD ZONE(SET) | CCAD WORK(SET) | CCAD SECTION(SET) | CCAD SERIAL No.(SET) | CCAD CBS(SET) | CCAD BILL(SET) | CCAD HANDOVER(SET) | CCAD TAG(SET) | CCAD REV(SET) | CCADACF (SET) | CCAD SSCF | RENZ % COMPLETE | July2011 Target% Complete | Claimed This Month | CCAD SUB ZONE MEP(SET) | CCAD CSA | Act Selector % | user_number8 | user_integer1 | user_integer2 | user_number7 | Change Order # | NEW ACTIVITY ID | P_811 | P_711 | CCAD MEQ | Actual Cost | Phase | Area/ Department | Grids | Are | Weight & Nos | Process | Levels | CCAD DIVISION(SET) |
| --- | --- | --- | --- | --- | --- | --- | --- | --- | --- | --- | --- | --- | --- | --- | --- | --- | --- | --- | --- | --- | --- | --- | --- | --- | --- | --- | --- | --- | --- | --- | --- | --- | --- | --- | --- | --- | --- | --- | --- | --- | --- | --- | --- | --- | --- | --- | --- | --- | --- | --- | --- | --- | --- | --- |
|  | 10 | **Precommissioning Tesing & snagging (Mech, Air Comp, Pump Rm)** |  | 2012-08-22 | 2012-10-03 |  |  |  |  |  |  |  |  |  |  |  |  |  |  |  |  |  |  |  |  |  |  |  |  |  |  |  |  |  |  |  |  |  |  |  |  |  |  |  |  |  |  |  |  |  |  |  |  |  |
| D01TS01804C0 |  | DT-01 ; MEP de-snag, FIREM sign-off | 11.5d | 2012-08-22 | 2012-09-04 | D01M121123C0, D01M126015C0, D01M126017C0, D01M126019C0, D01M122003C0, D01M123023C0, D01M127030C0, D01M127003C0, D01M123021C0, D01M121121C0, D01M126013C0, D01CO04412C0 |  |  |  |  | 77.5d | 0d | TESTING & COMMISSIONING [1275 h]; Cost |  |  | D01TS01801C0 | DT | C | 01 | TS | SC | 018 | 01 | BILL 5 | B05 | S1 | 01 | R00 | ACF07 | 018 |  |  |  |  |  |  |  |  |  |  |  |  |  |  |  |  |  |  |  |  |  |  |  |  |
| D01TS01809C0 |  | DT-01 ; Touch-up & Clean / JV inspection /CIR /De-snag | 18d | 2012-09-04 | 2012-09-25 | D01M108709C0, D01M109903C0, D01TS01804C0 |  |  |  |  | 77.5d | 0d | TESTING & COMMISSIONING [213 h]; Cost |  |  | D01TS01802C0 | DT | C | 01 | TS | SC | 018 | 02 | BILL 5 | B05 | S1 | 02 | R00 | ACF07 | 018 |  |  |  |  |  |  |  |  |  |  |  |  |  |  |  |  |  |  |  |  |  |  |  |  |
| D01TS01814C0 |  | DT-01 ; Consultant's final de-snag inspection | 7d | 2012-09-25 | 2012-10-03 | D01TS01809C0, D01TS01815C0 |  |  |  |  | 77.5d | 0d | Labor General [1 h]; Cost |  |  | D01TS01803C0 | DT | C | 01 | TS | SC | 018 | 03 | BILL 5 | B05 | S1 | 03 | R00 | ACF07 | 018 |  |  |  |  |  |  |  |  |  |  |  |  |  |  |  |  |  |  |  |  |  |  |  |  |
|  | 03 | **Mech -2** |  | 2011-04-12 | 2012-10-11 |  |  |  |  |  |  |  |  |  |  |  |  |  |  |  |  |  |  |  |  |  |  |  |  |  |  |  |  |  |  |  |  |  |  |  |  |  |  |  |  |  |  |  |  |  |  |  |  |  |
| D01M223001C0 |  | DT-01 ; 1st Fix, Inst. of Supports for MEP (Mech RM-2) | 150d | 2011-04-12 A | 2011-11-03 | D01S107807C0 SS, D01S307807C0 SS | 80% | 30d | 2011-03-06 | 2011-08-28 | 91d | 0d | MECHANICAL [1338 h]; Cost [75432.9 AED] | 75,432.94 | 60,346.35 | D01M223001C0 | DT | C | 01 | M2 | ME | 230 | 01 | BILL 5 | B05 | S1 | 1F | R00 | ACF04 | 230 | 60 | 100 | 4375.1 | 1S | MEP | M1F |  |  |  |  |  |  |  |  |  |  |  |  |  |  |  |  |  |  |
| D01M209201C0 |  | DT-01 ; Metal Studs (Mech RM-2) | 90d | 2011-05-24 A | 2012-01-17 | D01M223001C0 | 36% | 57.6d | 2011-07-24 | 2011-11-12 | 91d | 0d | PARTITIONS; PARTITIONS - Metal Studs [884 m]; Cost |  |  | D01M209201C0 | DT | C | 01 | M2 | PT | 092 | 01 | BILL 5 | B05 | S1 | 1F | R00 | ACF06 | 092 | 5 |  | 50274.4 |  | GP | PMS |  |  |  |  |  |  |  |  |  |  |  |  |  |  |  |  |  |  |
| D01M209203C0 |  | DT-01 ; Partitions 1st face (Mech RM-2) | 90d | 2011-05-24 A | 2012-01-29 | D01M209201C0 SS+12d, D01M226009C0 FF | 25% | 67.5d | 2011-08-07 | 2011-11-27 | 101.3d | 2.7d | PARTITIONS [884 m]; PARTITIONS [3062 h]; Cost |  |  | D01M209203C0 | DT | C | 01 | M2 | PT | 092 | 03 | BILL 5 | B05 | S1 | 2F | R00 | ACF06 | 092 | 2 |  | 45745.26 |  | GP | P1F | 0 | 0 | 0 | 0 | 314 | 1463 | 20 | 17 |  |  |  |  |  |  |  |  |  |  |
| D01M222011C0 |  | DT-01 ; 1st Fix, Inst of Drainage pipe (Mech RM-2) | 78d | 2011-06-09 A | 2012-02-01 | D01M223001C0, D01S107807C0, D01S307807C0 | 10% | 70.2d | 2011-07-03 | 2011-10-04 | 98.6d | 0d | PLUMBING [1173.6 h]; Cost [61888.2 AED] | 61,888.15 | 6,188.82 | D01M222011C0 | DT | C | 01 | M2 | ME | 220 | 11 | BILL 5 | B05 | S1 | 1F | R00 | ACF04 | 220 |  | 25 | 7350.18 | 1S | MEP | M1F |  |  |  |  |  |  |  |  |  |  |  |  |  |  |  |  |  |  |
| D01M223013C0 |  | DT-01 ; 2nd Fix, Inst of Equipment (AHU) (Mech RM-2) | 200d | 2011-06-15 A | 2011-12-01 | D01S107807C0, D01S207807C0, D01S307807C0, D01M223001C0 | 90% | 20d | 2011-06-29 | 2012-02-28 | 138d | 0d | MECHANICAL [52650 h]; Cost [11980949 AED] | 11,980,948.98 | 10,782,854.08 | D01M223013C0 | DT | C | 01 | M2 | ME | 230 | 13 | BILL 5 | B05 | S1 | 2F | R00 | ACF04 | 230 |  | 55 | 6948948.83 | 2n | MEP |  |  |  |  |  |  |  |  |  | H |  |  |  |  |  |  |  |  |  |
| D01M222006C0 |  | DT-01 ; 1st Fix, Inst of Water supply pipe (Mech RM-2) | 78d | 2011-07-10 A | 2012-02-01 | D01M223001C0, D01S107807C0, D01S307807C0 | 10% | 70.2d | 2011-07-31 | 2011-11-01 | 98.6d | 0d | PLUMBING [4896 h]; Cost [264473 AED] | 264,473.49 | 26,447.35 | D01M222006C0 | DT | C | 01 | M2 | ME | 220 | 06 | BILL 5 | B05 | S1 | 1F | R00 | ACF04 | 220 |  | 15 |  | 1S | MEP | M1F |  |  |  |  |  |  |  |  |  |  |  |  |  |  |  |  |  |  |
| D01M205101C10 |  | DT-01 ; Secondary Steel (Mech RM-2) | 1d | 2011-07-31 A | 2011-08-24 A | D01S107807C0, D01S207807C0, D01S307807C0 | 100% |  | 2011-07-31 | 2011-07-31 |  |  | STRUCTURAL STEEL [10 T(Fe)]; Cost |  |  | DP1S205101C0 | DT | C | 01 | M2 | SW | 055 | 01 | BILL 5 | B05 | S1 | 03 | R00 | ACF03 | 055 |  |  |  |  |  |  |  |  |  |  |  |  | 100 | 0 |  | 4012589 | Z2 | DT | P03 | O | A3 | EREC | 1FLR |  |
| D01M226009C0 |  | DT-01 ; 2nd Fix, Inst of Equipment (DB, TR, SG) (Mech RM-2) | 54d | 2011-08-02 A | 2011-11-23 | D01S107807C0, D01S207807C0, D01S307807C0 | 20% | 43.2d | 2012-01-10 | 2012-03-14 | 155.6d | 54.3d | ELECTRICAL [10124.4 h]; Cost [2303986 AED] | 2,303,985.68 | 460,797.14 | D01M226009C0 | DT | C | 01 | M2 | ME | 260 | 09 | BILL 5 | B05 | S1 | 2F | R00 | ACF04 | 260 |  |  |  | 2n | MEP |  | 0 | 0 | 0 | 0 |  |  | 10 | 0 | E |  |  |  |  |  |  |  |  |  |
| D01M221111C0 |  | DT-01 ; 1st Fix, Inst of Sprinkler main pipe (Mech RM-2) | 48d | 2011-11-05 | 2012-01-05 | D01M222006C0 SS+12d, D01M223001C0, D01S107807C0, D01S307807C0 |  |  |  |  | 162d | 0d | MECHANICAL [981.6 h]; Cost |  |  | D01M221111C0 | DT | C | 01 | M2 | ME | 211 | 11 | BILL 5 | B05 | S1 | 1F | R00 | ACF04 | 211 |  | 15 |  | 1S | MEP | M1F |  |  |  |  |  |  |  |  |  |  |  |  |  |  |  |  |  |  |
| D01M223005C0 |  | DT-01 ; 1st Fix, Inst of Ducting (Mech RM-2) | 72d | 2011-11-05 | 2012-02-02 | D01M223001C0, D01M223013C0 SS |  |  |  |  | 138d | 0d | MECHANICAL [11402.4 h]; Cost |  |  | D01M223005C0 | DT | C | 01 | M2 | ME | 230 | 05 | BILL 5 | B05 | S1 | 1F | R00 | ACF04 | 230 |  | 25 |  | 1S | MEP | M1F |  |  |  |  |  |  |  |  |  |  |  |  |  |  |  |  |  |  |
| D01M226001C0 |  | DT-01 ; 1st Fix, Inst of Trunking/Conduiting (Mech RM-2) | 48d | 2011-11-05 | 2012-01-05 | D01M223001C0, D01S107807C0, D01S307807C0 |  |  |  |  | 162d | 20d | ELECTRICAL [824.4 h]; Cost |  |  | D01M226001C0 | DT | C | 01 | M2 | ME | 260 | 01 | BILL 5 | B05 | S1 | 1F | R00 | ACF04 | 260 |  | 35 |  | 1S | MEP | M1F |  |  |  |  |  |  |  |  |  |  |  |  |  |  |  |  |  |  |
| D01M223019C0 |  | DT-01 ; 1st Fix, Inst of CHW pipe (Mech RM-2) | 66d | 2011-11-20 | 2012-02-08 | D01M221111C0 SS+10d, D01M223001C0, D01S107807C0, D01S307807C0 |  |  |  |  | 170d | 0d | MECHANICAL [6325.2 h]; Cost |  |  | D01M223019C0 | DT | C | 01 | M2 | ME | 230 | 19 | BILL 5 | B05 | S1 | 1F | R00 | ACF04 | 230 |  | 25 |  | 1S | MEP | M1F |  |  |  |  |  |  |  |  |  |  |  |  |  |  |  |  |  |  |
| D01M226011C0 |  | DT-01 ; 1st Fix, Inst of Cable Tray (Mech RM-2) | 48d | 2011-12-04 | 2012-01-29 | D01M223013C0 |  |  |  |  | 142d | 0d | ELECTRICAL [430.8 h]; Cost |  |  | D01M226011C0 | DT | C | 01 | M2 | ME | 260 | 11 | BILL 5 | B05 | S1 | 1F | R00 | ACF04 | 260 |  |  |  | 1S | MEP | M1F |  |  |  |  |  |  |  |  |  |  |  |  |  |  |  |  |  |  |
| D01M207101C0 |  | DT-01 ; Waterproofing (Mech RM-2) | 15d | 2011-12-19 | 2012-01-05 | D01M123013C0, DV10GZ03352R2 FF |  |  |  |  | 228d | 64.2d | THERMAL & MOISTURE [1834 m2]; THERMAL & MOISTURE [280 h]; Cost |  |  | I05ME09901C0 | DT | C | 01 | M2 | FF | 071 | 02 | BILL 5 | B05 | S1 | 01 | R00 | ACF03 | 071 |  |  |  |  |  |  |  |  |  |  | 328 | 1469 |  |  |  |  |  |  |  |  |  |  |  |  |
| D01M221119C0 |  | DT-01 ; 1st Fix, Inst of Sprinkler branch pipe (Mech RM-2) | 48d | 2012-01-07 | 2012-03-03 | D01M221111C0 |  |  |  |  | 162d | 16.2d | MECHANICAL [1441.2 h]; Cost |  |  | D01M221119C0 | DT | C | 01 | M2 | ME | 211 | 19 | BILL 5 | B05 | S1 | 1F | R00 | ACF04 | 211 |  |  |  | 1S | MEP | M1F |  |  |  |  |  |  |  |  |  |  |  |  |  |  |  |  |  |  |
| D01M208101C0 |  | DT-01 ; Metal Door Frames (Mech RM-2) | 18d | 2012-01-17 | 2012-02-08 | D01M209201C0, GNHE08101C0 FS+79d |  |  |  |  | 135.2d | 36.6d | METAL DOORS [245 h]; Cost |  |  | D01M208101C0 | DT | C | 01 | M2 | DO | 081 | 01 | BILL 5 | B05 | S1 | DF | R00 | ACF06 | 081 |  |  |  |  |  |  |  |  |  |  | 316 | 1465 |  |  |  |  |  |  |  |  |  |  |  | 08 |
| D01M223011C0 |  | DT-01 ; 2nd Fix, Inst of Equipment (FCU,FAN,PUMP) (Mech RM-2) | 48d | 2012-01-17 | 2012-03-14 | D01M209201C0, D01M223013C0 |  |  |  |  | 128.4d | 0d | MECHANICAL [2226 h]; Cost |  |  | D01M223011C0 | DT | C | 01 | M2 | ME | 230 | 11 | BILL 5 | B05 | S1 | 2F | R00 | ACF04 | 230 |  |  |  | 2n | MEP |  |  |  |  |  |  |  |  |  | H |  |  |  |  |  |  |  |  |  |
| D01M227020C0 |  | DT-01 ; 2nd Fix, Inst of ELV Equipment (Panels) (Mech RM-2) | 42d | 2012-01-17 | 2012-03-07 | D01M209201C0, D01M223013C0 |  |  |  |  | 170.4d | 16.4d | ELECTRICAL [1723.2 h]; Cost |  |  | D01M227020C0 | DT | C | 01 | M2 | ME | 270 | 20 | BILL 5 | B05 | S1 | 2F | R00 | ACF04 | 270 |  |  |  | 2n | MEP |  |  |  |  |  |  |  |  |  | E |  |  |  |  |  |  |  |  |  |
| D01M226007C0 |  | DT-01 ; 2nd Fix, Cable Pulling (Mech RM-2) | 42d | 2012-01-30 | 2012-03-19 | D01M226011C0 |  |  |  |  | 148d | 10d | ELECTRICAL [6634.8 h]; Cost |  |  | D01M226007C0 | DT | C | 01 | M2 | ME | 260 | 07 | BILL 5 | B05 | S1 | 2F | R00 | ACF07 | 260 |  |  |  | 2n | MEP |  |  |  |  |  |  |  |  |  |  |  |  |  |  |  |  |  |  |  |
| D01M227001C0 |  | DT-01 ; 1st Fix, Wiring/ Cabling work (Mech RM-2) | 48d | 2012-01-30 | 2012-03-26 | D01M226001C0, D01M226011C0 |  |  |  |  | 142d | 0d | ELECTRICAL [436.8 h]; Cost |  |  | D01M227001C0 | DT | C | 01 | M2 | ME | 270 | 01 | BILL 5 | B05 | S1 | 1F | R00 | ACF04 | 270 |  |  |  | 1S | MEP | M1F |  |  |  |  |  |  |  |  |  |  |  |  |  |  |  |  |  |  |
| D01M209205C0 |  | DT-01 ; Partitions Closing (Mech RM-2) | 42d | 2012-02-01 | 2012-03-22 | D01M205101C10, D01M209201C0, D01M209203C0, D01M222006C0, D01M222011C0, DAFOA09206C1 FF, D01M208101C0 FF |  |  |  |  | 98.6d | 0d | PARTITIONS [884 m]; PARTITIONS [3942 h]; Cost |  |  | D01M209205C0 | DT | C | 01 | M2 | PT | 092 | 05 | BILL 5 | B05 | S1 | FF | R00 | ACF06 | 092 |  |  |  |  | GP | P2F |  |  |  |  | 315 | 1464 |  |  |  |  |  |  |  |  |  |  |  |  |
| D01M223015C0 |  | DT-01 ; 2nd Fix, Inst of VCD's/FD's (Mech RM-2) | 36d | 2012-02-05 | 2012-03-17 | D01M223005C0 |  |  |  |  | 138d | 0d | MECHANICAL [4312.8 h]; Cost |  |  | D01M223015C0 | DT | C | 01 | M2 | ME | 230 | 15 | BILL 5 | B05 | S1 | 2F | R00 | ACF07 | 230 |  |  |  | 2n | MEP |  |  |  |  |  |  |  |  |  |  |  |  |  |  |  |  |  |  |  |
| D01M227010C0 |  | DT-01 ; 1st Fix, Inst of Trunking for ELV system (Mech RM-2) | 48d | 2012-02-05 | 2012-03-31 | D01M223005C0 |  |  |  |  | 138d | 0d | ELECTRICAL [1689.6 h]; Cost |  |  | D01M227010C0 | DT | C | 01 | M2 | ME | 270 | 10 | BILL 5 | B05 | S1 | 1F | R00 | ACF04 | 270 |  |  |  | 1S | MEP | M1F |  |  |  |  |  |  |  |  |  |  |  |  |  |  |  |  |  |  |
| D01M221117C0 |  | DT-01 ; 2nd Fix, Inst of Zone Control Valve (Mech RM-2) | 36d | 2012-02-09 | 2012-03-21 | D01M223013C0, D01M223019C0 |  |  |  |  | 182d | 4d | MECHANICAL [902.4 h]; Cost |  |  | D01M221117C0 | DT | C | 01 | M2 | ME | 211 | 17 | BILL 5 | B05 | S1 | 2F | R00 | ACF07 | 211 |  |  |  | 2n | MEP |  |  |  |  |  |  |  |  |  |  |  |  |  |  |  |  |  |  |  |
| D01M223017C0 |  | DT-01 ; 2nd Fix, Insulation of CHW pipe & Duct (Mech RM-2) | 42d | 2012-02-09 | 2012-03-28 | D01M223005C0, D01M223019C0 |  |  |  |  | 170d | 32d | MECHANICAL [5311.2 h]; Cost |  |  | D01M223017C0 | DT | C | 01 | M2 | ME | 230 | 17 | BILL 5 | B05 | S1 | 2F | R00 | ACF07 | 230 |  |  |  | 2n | MEP |  |  |  |  |  |  |  |  |  |  |  |  |  |  |  |  |  |  |  |
| D01M223009C0 |  | DT-01 ; 2nd Fix, Inst of VAV'S CHW connection (Mech RM-2) | 36d | 2012-03-14 | 2012-04-25 | D01M223011C0 |  |  |  |  | 128.4d | 0.6d | MECHANICAL [1684.8 h]; Cost |  |  | D01M223009C0 | DT | C | 01 | M2 | ME | 230 | 09 | BILL 5 | B05 | S1 | 2F | R00 | ACF07 | 230 |  |  |  | 2n | MEP |  |  |  |  |  |  |  |  |  |  |  |  |  |  |  |  |  |  |  |
| D01M223023C0 |  | DT-01 ; 2nd Fix, Inst of Flexible Duct & Plenum boxes (Mech RM-2) | 48d | 2012-03-18 | 2012-05-12 | D01M223015C0, D01M223017C0 SS |  |  |  |  | 138d | 0d | MECHANICAL [274.8 h]; Cost |  |  | D01M223023C0 | DT | C | 01 | M2 | ME | 230 | 23 | BILL 5 | B05 | S1 | FF | R00 | ACF07 | 230 |  |  |  | FF | MEP |  |  |  |  |  |  |  |  |  |  |  |  |  |  |  |  |  |  |  |
| D01M209601C0 |  | DT-01 ; Floor Finishes (Mech RM-2) | 36d | 2012-03-22 | 2012-05-03 | D01M207101C0, D01M209205C0 |  |  |  |  | 163.8d | 0d | ASSORTED FLOOR FINISH [22120 h]; ASSORTED FLOOR FINISH [12287 m2]; Cost |  |  | D01M209601C0 | DT | C | 01 | M2 | FF | 096 | 01 | BILL 5 | B05 | S1 | 01 | R00 | ACF06 | FF |  |  |  |  |  |  |  |  |  |  | 326 | 1501 |  |  |  |  |  |  |  |  |  |  |  |  |
| D01M209901C0 |  | DT-01 ; Wall Prime & 1st coat (Mech RM-2) | 30d | 2012-03-22 | 2012-04-26 | D01CO04003C0, D01M209205C0 |  |  |  |  | 127.8d | 0d | WALL PAINT [2112 h]; WALL PAINT [2636 m2]; Cost |  |  | D01M209901C0 | DT | C | 01 | M2 | PA | 099 | 01 | BILL 5 | B05 | S1 | 01 | R00 | ACF06 | 099 |  |  |  |  |  |  |  |  |  |  | 328 | 1469 |  |  |  |  |  |  |  |  |  |  |  |  |
| D01M221115C0 |  | DT-01 ; 2nd Fix, Inst of Sprinkler droppers (Mech RM-2) | 36d | 2012-03-22 | 2012-05-03 | D01M209205C0, D01M221119C0 |  |  |  |  | 145.8d | 0d | MECHANICAL [2067.6 h]; Cost |  |  | D01M221115C0 | DT | C | 01 | M2 | ME | 211 | 15 | BILL 5 | B05 | S1 | 2F | R00 | ACF07 | 211 |  |  |  | 2n | MEP |  |  |  |  |  |  |  |  |  |  |  |  |  |  |  |  |  |  |  |
| D01M221123C0 |  | DT-01 ; Final Fix, Inst of Fire Extinguishers/FHC (Mech RM-2) | 30d | 2012-03-22 | 2012-04-26 | D01M209205C0 |  |  |  |  | 181.8d | 54d | MECHANICAL [5833.2 h]; Cost |  |  | D01M221123C0 | DT | C | 01 | M2 | ME | 211 | 23 | BILL 5 | B05 | S1 | FF | R00 | ACF07 | 211 |  |  |  | FF | MEP |  |  |  |  |  |  |  |  |  |  |  |  |  |  |  |  |  |  |  |
| D01M226015C0 |  | DT-01 ; Final Fix, Inst of Ceiling rose (Mech RM-2) | 48d | 2012-03-22 | 2012-05-17 | D01M209205C0 |  |  |  |  | 133.8d | 0d | ELECTRICAL [67.2 h]; Cost |  |  | D01M226015C0 | DT | C | 01 | M2 | ME | 260 | 15 | BILL 5 | B05 | S1 | FF | R00 | ACF07 | 260 |  |  |  | FF | MEP |  |  |  |  |  |  |  |  |  |  |  |  |  |  |  |  |  |  |  |
| D01M227003C0 |  | DT-01 ; Final Fix, BMS connection work to Equipment (Mech RM-2) | 30d | 2012-03-27 | 2012-04-30 | D01M221117C0, D01M223011C0, D01M223013C0, D01M223015C0, D01M226009C0, D01M227001C0, D01M227020C0 |  |  |  |  | 178d | 50.2d | ELECTRICAL [29847.6 h]; Cost |  |  | D01M227003C0 | DT | C | 01 | M2 | ME | 270 | 03 | BILL 5 | B05 | S1 | FF | R00 | ACF07 | 270 |  |  |  | FF | MEP |  |  |  |  |  |  |  |  |  |  |  |  |  |  |  |  |  |  |  |
| D01M226005C0 |  | DT-01 ; 2nd Fix, Wiring for Power/Lighting/Emergency (Mech RM-2) | 36d | 2012-04-01 | 2012-05-12 | D01M226001C0, D01M226007C0, D01M226011C0, D01M227001C0, D01M227010C0 |  |  |  |  | 138d | 0d | ELECTRICAL [436.8 h]; Cost |  |  | D01M226005C0 | DT | C | 01 | M2 | ME | 260 | 05 | BILL 5 | B05 | S1 | 2F | R00 | ACF07 | 260 |  |  |  | 2n | MEP |  |  |  |  |  |  |  |  |  |  |  |  |  |  |  |  |  |  |  |
| D01M208105C0 |  | DT-01 ; Metal Doors (Mech RM-2) | 22d | 2012-04-26 | 2012-05-22 | D01M208101C0, D01M209901C0 |  |  |  |  | 139.8d | 0d | METAL DOORS [980 h]; METAL DOORS [98 no]; Cost |  |  | D01M208105C0 | DT | C | 01 | M2 | DO | 081 | 05 | BILL 5 | B05 | S1 | DR | R00 | ACF06 | 081 |  |  |  |  |  |  |  |  |  |  | 317 | 1466 |  |  |  |  |  |  |  |  |  |  |  | 08 |
| D01M209903C0 |  | DT-01 ; Wall - Final Paint (Mech RM-2) | 18d | 2012-04-26 | 2012-05-17 | D01M209901C0 |  |  |  |  | 175.8d | 48d | WALL PAINT [1138 h]; WALL PAINT [1420 m2]; Cost |  |  | D01M209903C0 | DT | C | 01 | M2 | PA | 099 | 03 | BILL 5 | B05 | S1 | 02 | R00 | ACF06 | 099 |  |  |  |  |  |  |  |  |  |  | 329 | 1470 |  |  |  |  |  |  |  |  |  |  |  |  |
| D01M226017C0 |  | DT-01 ; Final Fix, Inst of Switch/Sockets (Mech RM-2) | 18d | 2012-04-26 | 2012-05-17 | D01M209901C0 |  |  |  |  | 163.8d | 36d | ELECTRICAL [610.8 h]; Cost |  |  | D01M226017C0 | DT | C | 01 | M2 | ME | 260 | 17 | BILL 5 | B05 | S1 | FF | R00 | ACF07 | 260 |  |  |  | FF | MEP |  |  |  |  |  |  |  |  |  |  |  |  |  |  |  |  |  |  |  |
| D01M227030C0 |  | DT-01 ; Final Fix, Inst of ELV device (Detector/Speaker) (Mech RM-2) | 54d | 2012-04-26 | 2012-06-30 | D01M209901C0, D01M223009C0, D01M227020C0 |  |  |  |  | 127.8d | 0d | ELECTRICAL [2152.8 h]; Cost |  |  | D01M227030C0 | DT | C | 01 | M2 | ME | 270 | 30 | BILL 5 | B05 | S1 | FF | R00 | ACF07 | 270 |  |  |  | FF | MEP |  |  |  |  |  |  |  |  |  |  |  |  |  |  |  |  |  |  |  |
| D01M221121C0 |  | DT-01 ; Final Fix, Inst of Sprinklers head (Mech RM-2) | 30d | 2012-05-03 | 2012-06-07 | D01M221115C0, D01M221115C0 FF |  |  |  |  | 145.8d | 18d | MECHANICAL [403.2 h]; Cost |  |  | D01M221121C0 | DT | C | 01 | M2 | ME | 211 | 21 | BILL 5 | B05 | S1 | FF | R00 | ACF07 | 211 |  |  |  | FF | MEP |  |  |  |  |  |  |  |  |  |  |  |  |  |  |  |  |  |  |  |
| D01M222003C0 |  | DT-01 ; Final Fix, Inst of All drain (Mech RM-2) | 12d | 2012-05-03 | 2012-05-17 | D01M209601C0 |  |  |  |  | 163.8d | 36d | PLUMBING [1173.6 h]; Cost |  |  | D01M222003C0 | DT | C | 01 | M2 | ME | 220 | 03 | BILL 5 | B05 | S1 | FF | R00 | ACF07 | 220 |  |  |  | FF | MEP |  |  |  |  |  |  |  |  |  |  |  |  |  |  |  |  |  |  |  |
| D01M223021C0 |  | DT-01 ; Final Fix, Inst of Grilles & Diffusers (Mech RM-2) | 30d | 2012-05-13 | 2012-06-17 | D01M223023C0 |  |  |  |  | 138d | 10.2d | MECHANICAL [2560.8 h]; Cost |  |  | D01M223021C0 | DT | C | 01 | M2 | ME | 230 | 21 | BILL 5 | B05 | S1 | FF | R00 | ACF07 | 230 |  |  |  | FF | MEP |  |  |  |  |  |  |  |  |  |  |  |  |  |  |  |  |  |  |  |
| D01M226013C0 |  | DT-01 ; Final Fix, Termination & Gladding of Cables (Mech RM-2) | 30d | 2012-05-13 | 2012-06-17 | D01M209205C0, D01M226005C0 |  |  |  |  | 138d | 10.2d | ELECTRICAL [368.4 h]; Cost |  |  | D01M226013C0 | DT | C | 01 | M2 | ME | 260 | 13 | BILL 5 | B05 | S1 | FF | R00 | ACF07 | 260 |  |  |  | FF | MEP |  |  |  |  |  |  |  |  |  |  |  |  |  |  |  |  |  |  |  |
| D01M226019C0 |  | DT-01 ; Final Fix, Inst of Light fittings (Mech RM-2) | 30d | 2012-05-17 | 2012-06-23 | D01M209901C0, D01M226015C0 |  |  |  |  | 133.8d | 6d | ELECTRICAL [6626.4 h]; Cost |  |  | D01M226019C0 | DT | C | 01 | M2 | ME | 260 | 19 | BILL 5 | B05 | S1 | FF | R00 | ACF07 | 260 |  |  |  | FF | MEP |  |  |  |  |  |  |  |  |  |  |  |  |  |  |  |  |  |  |  |
| D01M208709C0 |  | DT-01 ; Ironmongery (Mech RM-2) | 32d | 2012-05-22 | 2012-06-30 | D01M208105C0 |  |  |  |  | 139.8d | 12d | IRONMONGERY [660 h]; IRONMONGERY [66 no]; Cost |  |  | D01M208709C0 | DT | C | 01 | M2 | DO | 087 | 09 | BILL 5 | B05 | S1 | IM | R00 | ACF06 | 087 |  |  |  |  |  |  |  |  |  |  | 322 | 1467 |  |  |  |  |  |  |  |  |  |  |  | 08 |

| ID | WBS | Activity | Duration | Start | Finish | Predecessors | Complete | Remaining | Planned start | Planned finish | Total float | Free float | Resources | Cost | Actual cost | change id | CCAD BUILDING(SET) | CCAD PHASE(SET) | CCAD FLOOR(SET) | CCAD ZONE(SET) | CCAD WORK(SET) | CCAD SECTION(SET) | CCAD SERIAL No.(SET) | CCAD CBS(SET) | CCAD BILL(SET) | CCAD HANDOVER(SET) | CCAD TAG(SET) | CCAD REV(SET) | CCADACF (SET) | CCAD SSCF | RENZ % COMPLETE | Claimed This Month | CCAD SUB ZONE MEP(SET) | CCAD CSA | Act Selector % | user_number8 | user_integer1 | user_integer2 | user_number7 | Change Order # | NEW ACTIVITY ID | P_811 | P_711 | July2011 Target% Complete | CCAD MEQ | U% | CCAD DIVISION(SET) |
| --- | --- | --- | --- | --- | --- | --- | --- | --- | --- | --- | --- | --- | --- | --- | --- | --- | --- | --- | --- | --- | --- | --- | --- | --- | --- | --- | --- | --- | --- | --- | --- | --- | --- | --- | --- | --- | --- | --- | --- | --- | --- | --- | --- | --- | --- | --- | --- |
|  | 10 | **Precommissioning Tesing & snagging (Mech -2)** |  | 2012-06-30 | 2012-10-11 |  |  |  |  |  |  |  |  |  |  |  |  |  |  |  |  |  |  |  |  |  |  |  |  |  |  |  |  |  |  |  |  |  |  |  |  |  |  |  |  |  |  |
| D01TS01801C0 |  | DT-01 ; MEP de-snag, FIREM sign-off | 12d | 2012-06-30 | 2012-07-14 | D01M221123C0, D01M226015C0, D01M226017C0, D01M226019C0, D01M222003C0, D01M223023C0, D01M227030C0, D01M223021C0, D01M221121C0, D01M227003C0, D01M226013C0, D01CO04412C0 |  |  |  |  | 127.8d | 0d | TESTING & COMMISSIONING [2549 h]; Cost |  |  | D01TS01801C0 | DT | C | 01 | TS | SC | 018 | 01 | BILL 5 | B05 | S1 | 01 | R00 | ACF07 | 018 |  |  |  |  |  |  |  |  |  |  |  |  |  |  |  |  |  |
| D01TS01808C0 |  | DT-01 ; Touch-up & Clean / JV inspection /CIR /De-snag | 18d | 2012-07-14 | 2012-08-04 | D01M208709C0, D01M209601C0, D01M209903C0, D01TS01801C0 |  |  |  |  | 127.8d | 50.3d | TESTING & COMMISSIONING [213 h]; Cost |  |  | D01TS01802C0 | DT | C | 01 | TS | SC | 018 | 02 | BILL 5 | B05 | S1 | 02 | R00 | ACF07 | 018 |  |  |  |  |  |  |  |  |  |  |  |  |  |  |  |  |  |
| D01TS01813C0 |  | DT-01 ; Consultant's final de-snag inspection | 7d | 2012-10-03 | 2012-10-11 | D01TS01808C0, D01TS01814C0 |  |  |  |  | 77.5d | 43.7d | Labor General [1 h]; Cost |  |  | D01TS01803C0 | DT | C | 01 | TS | SC | 018 | 03 | BILL 5 | B05 | S1 | 03 | R00 | ACF07 | 018 |  |  |  |  |  |  |  |  |  |  |  |  |  |  |  |  |  |
|  | 04 | **HV Rm, Trans Rm, LV Rm** |  | 2011-04-12 | 2012-05-12 |  |  |  |  |  |  |  |  |  |  |  |  |  |  |  |  |  |  |  |  |  |  |  |  |  |  |  |  |  |  |  |  |  |  |  |  |  |  |  |  |  |  |
| D01ER23010C0 |  | DT-01 ; 1st Fix, Inst. of Supports for MEP (Elec RM) | 36d | 2011-04-12 A | 2011-06-29 A | D01S107807C0 | 100% |  | 2011-03-15 | 2011-04-26 |  |  | MECHANICAL [1338 h]; Cost [75432.9 AED] | 75,432.94 | 75,432.94 | D01ER23010C0 | DT | C | 01 | ER | ME | 230 | 10 | BILL 5 | B05 | S1 | 1F | R00 | ACF04 | 230 | 30 | 61251.62 | 1S | MEP | M1F |  |  |  |  |  |  |  |  |  |  |  |  |
| D01ER09203C0 |  | DT-01 ; Partitions 1st face - Block (Elec RM) | 54d | 2011-05-09 A | 2011-11-21 | D01ER09201C0 SS+12d, D01ER09601C0 FF | 24% | 41.04d | 2011-07-24 | 2011-09-27 | 22.36d | 9.96d | PARTITIONS [318 m]; PARTITIONS [1112 h]; Cost |  |  | D01ER09203C0 | DT | C | 01 | ER | PT | 092 | 03 | BILL 5 | B05 | S1 | 2F | R00 | ACF06 | 092 | 2 | 16634.17 |  | GP | P1F | 0 | 0 | 0 | 0 | 314 | 1373 | 20 | 17 |  |  |  |  |
| D01ER09201C0 |  | DT-01 ; Metal Studs - Block (Elec RM) | 42d | 2011-05-24 A | 2011-11-01 | D01ER23010C0 | 35% | 27.3d | 2011-07-10 | 2011-08-28 | 18.1d | 0d | PARTITIONS [1415 h]; PARTITIONS - Metal Studs [318 m]; Cost |  |  | D01ER09201C0 | DT | C | 01 | ER | PT | 092 | 01 | BILL 5 | B05 | S1 | 1F | R00 | ACF06 | 092 | 20 | 4570.4 |  | GP | PMS | 0 | 0 | 0 | 0 | 313 | 1372 |  |  |  |  |  |  |
| D01ER26024C0 |  | DT-01 ; 2nd Fix, Inst of Equipment (DB, TR, SG) (Elec RM) | 150d | 2011-06-07 A | 2011-11-03 | D01ER23010C0 | 80% | 30d | 2011-10-20 | 2012-04-21 | 35.4d | 0d | ELECTRICAL [10124.4 h]; Cost [2303986 AED] | 2,303,985.68 | 1,843,188.54 | D01ER26024C0 | DT | C | 01 | ER | ME | 260 | 24 | BILL 5 | B05 | S1 | 2F | R00 | ACF04 | 260 |  | 703457.48 | 2n | MEP |  |  |  |  |  |  |  |  |  | 50 | E |  |  |
| D01ER26012C0 |  | DT-01 ; 1st Fix, Inst of Cable Tray (Elec RM) | 45d | 2011-06-13 A | 2011-06-15 A | D01ER23010C0, D01ER27010C0 SS+10d, D01S107807C0 | 100% |  | 2011-07-27 | 2011-09-20 |  |  | ELECTRICAL [430.8 h]; Cost [23263.3 AED] | 23,263.34 | 23,263.34 | D01ER26012C0 | DT | C | 01 | ER | ME | 260 | 12 | BILL 5 | B05 | S1 | 1F | R00 | ACF04 | 260 |  | 27001.7 | 1S | MEP | M1F |  |  |  |  |  |  |  |  | 25 |  |  |  |
| D01ER09601C0 |  | DT-01 ; Floor Finishes (Elec RM) | 30d | 2011-07-10 A | 2011-10-20 | D01ER26024C0 SS | 40% | 18d | 2012-03-27 | 2012-04-30 | 45.4d | 23.04d | ASSORTED FLOOR FINISH [8048 h]; ASSORTED FLOOR FINISH [4468 m2]; Cost |  |  | D01ER09601C0 | DT | C | 01 | ER | FF | 096 | 01 | BILL 5 | B05 | S1 | 01 | R00 | ACF06 | FF |  |  |  |  |  |  |  |  |  | 326 | 1377 |  |  |  |  |  |  |
| D01ER23012C0 |  | DT-01 ; 1st Fix, Inst of CHW pipe (Elec RM) | 54d | 2011-07-10 A | 2011-11-30 | D01ER23010C0 SS, D01S107807C0 | 10% | 48.6d | 2011-07-28 | 2011-10-01 | 41.4d | 0d | MECHANICAL [6325.2 h]; Cost [345418 AED] | 345,418.28 | 34,541.83 | D01ER23012C0 | DT | C | 01 | ER | ME | 230 | 12 | BILL 5 | B05 | S1 | 1F | R00 | ACF04 | 230 |  |  | 1S | MEP | M1F |  |  |  |  |  |  |  |  | 25 |  |  |  |
| D01ER09501C0 |  | DT-01 ; Ceiling Grid and Service Tile and Service Tile (Elec RM) | 18d | 2011-09-05 A | 2012-01-30 | D01ER09205C0 SS+15d, D01ER23012C0, D01ER23014C0, D01ER23020C0, D01ER23024C0, D01ER23026C0, D01ER26010C0, D01ER26012C0, D01ER27012C0, D01ER08106C0, D01ER23022C0, D01ER23016C0, D01ER09903C0, D01ER09901C0 | 80% | 3.6d | 2012-01-24 | 2012-02-14 | 12.4d | 0d | CEILING GRID FOR GYPSUM [3506.4 h]; Cost |  |  | D01ER09501C0 | DT | C | 01 | ER | CE | 095 | 01 | BILL 5 | B05 | S1 | 01 | R00 | ACF06 | 095 |  |  |  |  |  |  |  |  |  | 323 | 1408 |  |  |  |  | 50 |  |
| D01ER23014C0 |  | DT-01 ; 1st Fix, Inst of Ducting (Elec RM) | 42d | 2011-10-01 | 2011-11-21 | D01ER23010C0, D01ER23012C0 SS+7d, D01S107807C0 |  |  |  |  | 41.4d | 0d | MECHANICAL [11402.4 h]; Cost |  |  | D01ER23014C0 | DT | C | 01 | ER | ME | 230 | 14 | BILL 5 | B05 | S1 | 1F | R00 | ACF04 | 230 |  |  | 1S | MEP | M1F |  |  |  |  |  |  |  |  | 25 |  |  |  |
| D01ER23020C0 |  | DT-01 ; 2nd Fix, Inst of VAV'S CHW connection (Elec RM) | 36d | 2011-10-01 | 2011-11-14 | D01ER23010C0, D01S107807C0 |  |  |  |  | 71.4d | 59d | MECHANICAL [1684.8 h]; Cost |  |  | D01ER23020C0 | DT | C | 01 | ER | ME | 230 | 20 | BILL 5 | B05 | S1 | 2F | R00 | ACF07 | 230 |  |  | 2n | MEP |  |  |  |  |  |  |  |  |  | 25 |  |  |  |
| D01ER23026C0 |  | DT-01 ; 2nd Fix, Insulation of CHW pipe & Duct (Elec RM) | 42d | 2011-10-01 | 2011-11-21 | D01ER23010C0, D01S107807C0 |  |  |  |  | 65.4d | 53d | MECHANICAL [5311.2 h]; Cost |  |  | D01ER23026C0 | DT | C | 01 | ER | ME | 230 | 26 | BILL 5 | B05 | S1 | 2F | R00 | ACF07 | 230 |  |  | 2n | MEP |  |  |  |  |  |  |  |  |  | 25 |  |  |  |
| D01ER26010C0 |  | DT-01 ; 1st Fix, Inst of Trunking/Conduiting (Elec RM) | 48d | 2011-10-01 | 2011-11-29 | D01ER23010C0, D01S107807C0 |  |  |  |  | 21.4d | 0d | ELECTRICAL [824.4 h]; Cost |  |  | D01ER26010C0 | DT | C | 01 | ER | ME | 260 | 10 | BILL 5 | B05 | S1 | 1F | R00 | ACF04 | 260 |  |  | 1S | MEP | M1F |  |  |  |  |  |  |  |  | 25 |  |  |  |
| D01ER23024C0 |  | DT-01 ; 2nd Fix, Inst of VCD's/FD's (Elec RM) | 36d | 2011-10-08 | 2011-11-21 | D01ER23014C0 SS, D01ER23014C0 FF |  |  |  |  | 65.4d | 53d | MECHANICAL [4312.8 h]; Cost |  |  | D01ER23024C0 | DT | C | 01 | ER | ME | 230 | 24 | BILL 5 | B05 | S1 | 2F | R00 | ACF07 | 230 |  |  | 2n | MEP |  |  |  |  |  |  |  |  |  | 10 |  |  |  |
| D01ER27010C0 |  | DT-01 ; 1st Fix, Inst of Trunking for ELV system (Elec RM) | 48d | 2011-10-17 | 2011-12-17 | D01ER23010C0, D01ER26010C0 SS+14d, D01S107807C0 |  |  |  |  | 21.4d | 0d | ELECTRICAL [1689.6 h]; Cost |  |  | D01ER27010C0 | DT | C | 01 | ER | ME | 270 | 10 | BILL 5 | B05 | S1 | 1F | R00 | ACF04 | 270 |  |  | 1S | MEP | M1F |  |  |  |  |  |  |  |  | 25 |  |  |  |
| D01ER26022C0 |  | DT-01 ; 2nd Fix, Cable Pulling (Elec RM) | 42d | 2011-10-29 | 2011-12-21 | D01ER26012C0, D01S107807C0 |  |  |  |  | 75d | 62.6d | ELECTRICAL [6634.8 h]; Cost |  |  | D01ER26022C0 | DT | C | 01 | ER | ME | 260 | 22 | BILL 5 | B05 | S1 | 2F | R00 | ACF07 | 260 |  |  | 2n | MEP |  |  |  |  |  |  |  |  |  |  |  |  |  |
| D01ER09205C0 |  | DT-01 ; Partitions - Blocks (Elec RM) | 24d | 2011-11-01 | 2011-12-04 | D01ER09201C0 SS, D01ER09203C0 SS, D01ER09203C0 FF, D01ER09201C0 FF, D01ER08101C0 FF |  |  |  |  | 12.4d | 0d | PARTITIONS [318 m]; PARTITIONS [1429 h]; Cost |  |  | D01ER09205C0 | DT | C | 01 | ER | PT | 092 | 05 | BILL 5 | B05 | S1 | FF | R00 | ACF06 | 092 |  |  |  | GP | P2F |  |  |  |  |  | 1540 |  |  |  |  |  |  |
| D01ER23022C0 |  | DT-01 ; 2nd Fix, Inst of Equipment (FCU,FAN) (Elec RM) | 42d | 2011-11-05 | 2011-12-28 | D01ER26024C0 |  |  |  |  | 35.4d | 23d | MECHANICAL [1588.8 h]; Cost |  |  | D01ER23022C0 | DT | C | 01 | ER | ME | 230 | 22 | BILL 5 | B05 | S1 | 2F | R00 | ACF04 | 230 |  |  | 2n | MEP |  |  |  |  |  |  |  |  |  | 20 | H |  |  |
| D01ER08101C0 |  | DT-01 ; Metal Door Frames (Elec RM) | 18d | 2011-11-12 | 2011-12-04 | D01ER09201C0, OGNMU00027S0, GNHE08101C0 FS+79d |  |  |  |  | 12.4d | 0d | METAL DOORS [158 h]; Cost |  |  | D01ER08101C0 | DT | C | 01 | ER | DO | 081 | 01 | BILL 5 | B05 | S1 | DF | R00 | ACF06 | 081 |  |  |  |  |  |  |  |  |  | 316 | 1374 |  |  |  |  |  | 08 |
| D01ER23016C0 |  | DT-01 ; 1st Fix, Inst of VCD's/FD's (Elec RM) | 24d | 2011-11-22 | 2011-12-21 | D01ER23014C0 |  |  |  |  | 41.4d | 29d | MECHANICAL [4312.8 h]; Cost |  |  | D01ER23016C0 | DT | C | 01 | ER | ME | 230 | 16 | BILL 5 | B05 | S1 | 1F | R00 | ACF04 | 230 |  |  | 1S | MEP | M1F |  |  |  |  |  |  |  |  | 10 |  |  |  |
| D01ER26020C0 |  | DT-01 ; 2nd Fix, Wiring for Power/Lighting/Emergency (Elec RM) | 36d | 2011-11-30 | 2012-01-12 | D01ER26010C0, D01S107807C0 |  |  |  |  | 45d | 14.6d | ELECTRICAL [436.8 h]; Cost |  |  | D01ER26020C0 | DT | C | 01 | ER | ME | 260 | 20 | BILL 5 | B05 | S1 | 2F | R00 | ACF07 | 260 |  |  | 2n | MEP |  |  |  |  |  |  |  |  |  | 20 |  |  |  |
| D01ER09901C0 |  | DT-01 ; Wall Prime & 1st coat (Elec RM) | 20d | 2011-12-05 | 2011-12-27 | D01ER09205C0 |  |  |  |  | 12.4d | 0d | ASSORTED WALL FINISH [39 h]; Cost |  |  | D01ER09901C0 | DT | C | 01 | ER | PA | 099 | 01 | BILL 5 | B05 | S1 | 01 | R00 | ACF06 | 099 |  |  |  |  |  |  |  |  |  | 328 | 1378 |  |  |  |  |  |  |
| D01ER27020C0 |  | DT-01 ; 2nd Fix, Inst of ELV Equipment (Panels) (Elec RM) | 24d | 2011-12-05 | 2012-01-02 | D01ER09205C0 |  |  |  |  | 66d | 53.6d | ELECTRICAL [1723.2 h]; Cost |  |  | D01ER27020C0 | DT | C | 01 | ER | ME | 270 | 20 | BILL 5 | B05 | S1 | 2F | R00 | ACF04 | 270 |  |  | 2n | MEP |  |  |  |  |  |  |  |  |  | 20 | E |  |  |
| D01ER27012C0 |  | DT-01 ; 1st Fix, Wiring/ Cabling work (Elec RM) | 24d | 2011-12-18 | 2012-01-15 | D01ER27010C0, D01S107807C0 |  |  |  |  | 21.4d | 9d | ELECTRICAL [436.8 h]; Cost |  |  | D01ER27012C0 | DT | C | 01 | ER | ME | 270 | 12 | BILL 5 | B05 | S1 | 1F | R00 | ACF04 | 270 |  |  | 1S | MEP | M1F |  |  |  |  |  |  |  |  |  |  |  |  |
| D01ER08105C0 |  | DT-01 ; Metal Doors (Elec RM) | 12d | 2011-12-28 | 2012-01-11 | D01ER08101C0, D01ER09901C0 |  |  |  |  | 64d | 0d | METAL DOORS [630 h]; METAL DOORS [63 no]; Cost |  |  | D01ER08105C0 | DT | C | 01 | ER | DO | 081 | 05 | BILL 5 | B05 | S1 | DR | R00 | ACF06 | 081 |  |  |  |  |  |  |  |  |  | 317 | 1375 |  |  |  |  |  | 08 |
| D01ER08106C0 |  | DT-01 ; Steel Platform Access Floor (Elec RM) | 24d | 2011-12-28 | 2012-01-25 | D01ER09901C0 |  |  |  |  | 12.4d | 0d | ASSORTED DOORS [72 h]; Cost |  |  | CP2ER08105C0 | DT | C | 01 | ER | DO | 081 | 06 | BILL 5 | B05 | S1 | DR | R00 | ACF06 | 081 |  |  |  |  |  |  |  |  |  | 317 | 1375 |  |  |  |  |  | 08 |
| D01ER09903C0 |  | DT-01 ; Wall - Final Paint (Elec RM) | 20d | 2011-12-28 | 2012-01-21 | D01ER09901C0 |  |  |  |  | 16.4d | 4d | ASSORTED WALL FINISH [21 h]; Cost |  |  | D01ER09903C0 | DT | C | 01 | ER | PA | 099 | 03 | BILL 5 | B05 | S1 | 02 | R00 | ACF06 | 099 |  |  |  |  |  |  |  |  |  | 329 | 1379 |  |  |  |  |  |  |
| D01ER08709C0 |  | DT-01 ; Ironmongery (Elec RM) | 20d | 2012-01-12 | 2012-02-05 | D01ER08105C0 |  |  |  |  | 249.12d | 43.6d | IRONMONGERY [240 h]; IRONMONGERY [24 no]; Cost |  |  | D01ER08709C0 | DT | C | 01 | ER | DO | 087 | 09 | BILL 5 | B05 | S1 | IM | R00 | ACF06 | 087 |  |  |  |  |  |  |  |  |  | 322 | 6230 |  |  |  |  |  | 08 |
| D01ER09905C0 |  | DT-01 ; Ceiling Prime & 1st coat (Elec RM) | 12d | 2012-01-30 | 2012-02-14 | D01ER09501C0 |  |  |  |  | 229.53d | 24d | ASSORTED CEILING FINISH [491 h]; Cost |  |  | D01ER09905C0 | DT | C | 01 | ER | PA | 099 | 05 | BILL 5 | B05 | S1 | 01 | R00 | ACF06 | 099 |  |  |  |  |  |  |  |  |  |  | 1544 |  |  |  |  |  |  |
| D01ER21109C0 |  | DT-01 ; Final Fix, Gaseous Fire Suppression (Elec RM) | 12d | 2012-01-30 | 2012-02-14 | D01ER09501C0 |  |  |  |  | 36.4d | 18d | MECHANICAL [12560.4 h]; Cost |  |  | D01ER21109C0 | DT | C | 01 | ER | ME | 211 | 09 | BILL 5 | B05 | S1 | FF | R00 | ACF07 | 211 |  |  | FF | MEP |  |  |  |  |  |  |  |  |  |  |  |  |  |
| D01ER21124C0 |  | DT-01 ; 2nd Fix, Inst of Zone Control Valve (Elec RM) | 24d | 2012-01-30 | 2012-02-28 | D01ER09501C0 |  |  |  |  | 217.65d | 6d | MECHANICAL [902.4 h]; Cost |  |  | D01ER21124C0 | DT | C | 01 | ER | ME | 211 | 24 | BILL 5 | B05 | S1 | 2F | R00 | ACF07 | 211 |  |  | 2n | MEP |  |  |  |  |  |  |  |  |  |  |  |  |  |
| D01ER23032C0 |  | DT-01 ; 2nd Fix, Inst of Flexible Duct & Plenum boxes (Elec RM) | 18d | 2012-01-30 | 2012-02-21 | D01ER09501C0 |  |  |  |  | 12.4d | 0d | MECHANICAL [274.8 h]; Cost |  |  | D01ER23032C0 | DT | C | 01 | ER | ME | 230 | 32 | BILL 5 | B05 | S1 | FF | R00 | ACF07 | 230 |  |  | FF | MEP |  |  |  |  |  |  |  |  |  |  |  |  |  |
| D01ER26030C0 |  | DT-01 ; Final Fix, Termination & Gladding of Cables (Elec RM) | 12d | 2012-01-30 | 2012-02-14 | D01ER09501C0, D01ER26020C0 |  |  |  |  | 30.4d | 18d | ELECTRICAL [368.4 h]; Cost |  |  | D01ER26030C0 | DT | C | 01 | ER | ME | 260 | 30 | BILL 5 | B05 | S1 | FF | R00 | ACF07 | 260 |  |  | FF | MEP |  |  |  |  |  |  |  |  |  |  |  |  |  |
| D01ER26032C0 |  | DT-01 ; Final Fix, Inst of Ceiling rose (Elec RM) | 24d | 2012-01-30 | 2012-02-28 | D01ER09501C0 |  |  |  |  | 30.4d | 0d | ELECTRICAL [67.2 h]; Cost |  |  | D01ER26032C0 | DT | C | 01 | ER | ME | 260 | 32 | BILL 5 | B05 | S1 | FF | R00 | ACF07 | 260 |  |  | FF | MEP |  |  |  |  |  |  |  |  |  |  |  |  |  |
| D01ER26034C0 |  | DT-01 ; Final Fix, Inst of Switch/Sockets (Elec RM) | 18d | 2012-01-30 | 2012-02-21 | D01ER09501C0 |  |  |  |  | 24.4d | 12d | ELECTRICAL [610.8 h]; Cost |  |  | D01ER26034C0 | DT | C | 01 | ER | ME | 260 | 34 | BILL 5 | B05 | S1 | FF | R00 | ACF07 | 260 |  |  | FF | MEP |  |  |  |  |  |  |  |  |  |  |  |  |  |
| D01ER26039C0 |  | DT-01 ; Final Fix, Inst of Light fittings (Elec RM) | 12d | 2012-01-30 | 2012-02-14 | D01ER09501C0, D01ER26032C0 SS |  |  |  |  | 30.4d | 18d | ELECTRICAL [6626.4 h]; Cost |  |  | D01ER26039C0 | DT | C | 01 | ER | ME | 260 | 39 | BILL 5 | B05 | S1 | FF | R00 | ACF07 | 260 |  |  | FF | MEP |  |  |  |  |  |  |  |  |  |  |  |  |  |
| D01ER27022C0 |  | DT-01 ; 2nd Fix, Wiring Droppers (Elec RM) | 12d | 2012-01-30 | 2012-02-14 | D01ER09501C0 |  |  |  |  | 30.4d | 18d | ELECTRICAL [436.8 h]; Cost |  |  | D01ER27022C0 | DT | C | 01 | ER | ME | 270 | 22 | BILL 5 | B05 | S1 | 2F | R00 | ACF07 | 270 |  |  | 2n | MEP |  |  |  |  |  |  |  |  |  |  |  |  |  |
| D01ER27030C0 |  | DT-01 ; Final Fix, Inst of ELV device (Detector/Speaker) (Elec RM) | 12d | 2012-01-30 | 2012-02-14 | D01ER09501C0 |  |  |  |  | 30.4d | 18d | ELECTRICAL [2152.8 h]; Cost |  |  | D01ER27030C0 | DT | C | 01 | ER | ME | 270 | 30 | BILL 5 | B05 | S1 | FF | R00 | ACF07 | 270 |  |  | FF | MEP |  |  |  |  |  |  |  |  |  |  |  |  |  |
| D01ER27032C0 |  | DT-01 ; Final Fix, BMS connection work to Equipment (Elec RM) | 30d | 2012-01-30 | 2012-03-06 | D01ER26024C0, D01ER09501C0 |  |  |  |  | 211.65d | 0d | ELECTRICAL [29847.6 h]; Cost |  |  | D01ER27032C0 | DT | C | 01 | ER | ME | 270 | 32 | BILL 5 | B05 | S1 | FF | R00 | ACF07 | 270 |  |  | FF | MEP |  |  |  |  |  |  |  |  |  |  |  |  |  |
| D01ER23030C0 |  | DT-01 ; Final Fix, Inst of Grilles & Diffusers (Elec RM) | 12d | 2012-02-21 | 2012-03-06 | D01ER09501C0, D01ER23032C0 |  |  |  |  | 12.4d | 0d | MECHANICAL [2560.8 h]; Cost |  |  | D01ER23030C0 | DT | C | 01 | ER | ME | 230 | 30 | BILL 5 | B05 | S1 | FF | R00 | ACF07 | 230 |  |  | FF | MEP |  |  |  |  |  |  |  |  |  |  |  |  |  |
| D01ER09503C0 |  | DT-01 ; Ceiling closure (Elec RM) | 6d | 2012-03-06 | 2012-03-13 | D01ER09501C0, D01ER23032C0, D01ER26020C0, D01ER26022C0, D01ER27012C0, DAFOA09505C1 FF, D01ER27022C0, D01ER23030C0, D01ER26030C0, D01ER26034C0, D01ER26039C0, D01ER27030C0, D01ER27020C0 |  |  |  |  | 12.4d | 0d | CEILING GYPSUM [98.4 h]; Cost |  |  | D01ER09503C0 | DT | C | 01 | ER | CE | 095 | 03 | BILL 5 | B05 | S1 | 02 | R00 | ACF06 | 095 |  |  |  |  |  |  |  |  |  | 324 | 1409 |  |  |  |  |  |  |
| D01ER09907C0 |  | DT-01 ; Ceiling - Final Paint (Elec RM) | 12d | 2012-03-13 | 2012-03-27 | D01ER09905C0, D01ER09503C0 |  |  |  |  | 205.53d | 0d | ASSORTED CEILING FINISH [265 h]; Cost |  |  | D01ER09907C0 | DT | C | 01 | ER | PA | 099 | 07 | BILL 5 | B05 | S1 | 02 | R00 | ACF06 | 099 |  |  |  |  |  |  |  |  |  |  | 1546 |  |  |  |  |  |  |

| ID | WBS | Activity | Duration | Start | Finish | Predecessors | Complete | Remaining | Planned start | Planned finish | Total float | Free float | Resources | Cost | Actual cost | change id | CCAD BUILDING(SET) | CCAD PHASE(SET) | CCAD FLOOR(SET) | CCAD ZONE(SET) | CCAD WORK(SET) | CCAD SECTION(SET) | CCAD SERIAL No.(SET) | CCAD CBS(SET) | CCAD BILL(SET) | CCAD HANDOVER(SET) | CCAD TAG(SET) | CCAD REV(SET) | CCADACF (SET) | CCAD SSCF | CCAD SUB ZONE MEP(SET) | CCAD CSA | Change Order # | NEW ACTIVITY ID | RENZ % COMPLETE | Claimed This Month | Act Selector % | July2011 Target% Complete | P_811 | P_711 | CCAD MEQ | IDDD | CCAD DIVISION(SET) |
| --- | --- | --- | --- | --- | --- | --- | --- | --- | --- | --- | --- | --- | --- | --- | --- | --- | --- | --- | --- | --- | --- | --- | --- | --- | --- | --- | --- | --- | --- | --- | --- | --- | --- | --- | --- | --- | --- | --- | --- | --- | --- | --- | --- |
|  | 10 | **Precommissioning Tesing & snagging (HV Rm, Trans Rm, LV Rm)** |  | 2012-03-06 | 2012-05-12 |  |  |  |  |  |  |  |  |  |  |  |  |  |  |  |  |  |  |  |  |  |  |  |  |  |  |  |  |  |  |  |  |  |  |  |  |  |  |
| D01TS01805C0 |  | DT-01 ; MEP de-snag, FIREM sign-off | 11.88d | 2012-03-06 | 2012-03-20 | D01ER23032C0, D01ER26032C0, D01ER27032C0, D01ER21109C0, D01ER23030C0, D01ER26030C0, D01ER26034C0, D01ER26039C0, D01ER27030C0, D01CO04412C0, D01ER23016C0, D01ER21124C0 |  |  |  |  | 211.65d | 6.12d | TESTING & COMMISSIONING [1275 h]; Cost |  |  | D01TS01801C0 | DT | C | 01 | TS | SC | 018 | 01 | BILL 5 | B05 | S1 | 01 | R00 | ACF07 | 018 |  |  |  |  |  |  |  |  |  |  |  |  |  |
| D01TS01810C0 |  | DT-01 ; Touch-up & Clean / JV inspection /CIR /De-snag | 17.88d | 2012-03-27 | 2012-04-17 | D01ER08709C0, D01ER09601C0, D01ER09903C0, D01ER09907C0, D01TS01805C0, D01ER09503C0 |  |  |  |  | 205.53d | 14.53d | TESTING & COMMISSIONING [213 h]; Cost |  |  | D01TS01802C0 | DT | C | 01 | TS | SC | 018 | 02 | BILL 5 | B05 | S1 | 02 | R00 | ACF07 | 018 |  |  |  |  |  |  |  |  |  |  |  |  |  |
| D01TS01815C0 |  | DT-01 ; Consultant's final de-snag inspection | 7d | 2012-05-05 | 2012-05-12 | D01TS01810C0, DVTTS01803C0 |  |  |  |  | 191d | 16.75d | Labor General [1 h]; Cost |  |  | D01TS01803C0 | DT | C | 01 | TS | SC | 018 | 03 | BILL 5 | B05 | S1 | 03 | R00 | ACF07 | 018 |  |  |  |  |  |  |  |  |  |  |  |  |  |
|  | 05 | **Canyon Artrium (From GF) + ST LNG** |  | 2012-05-31 | 2012-12-23 |  |  |  |  |  |  |  |  |  |  |  |  |  |  |  |  |  |  |  |  |  |  |  |  |  |  |  |  |  |  |  |  |  |  |  |  |  |  |
| D01AR26039C0 |  | DT-01 ; Display case Installation (Canyon Artrium) | 60d | 2012-05-31 | 2012-08-11 | D04S107807C0, D04S207807C0, D04S307807C0, D01PA09501C0 |  |  |  |  | 51.8d | 0d | Labor General [1.2 h]; Cost |  |  | D01ER26039C0 | DT | C | 01 | AR | ME | 260 | 39 | BILL 5 | B05 | S1 | MEL | R00 | ACF07 | 260 | FF | MEP |  |  |  |  |  |  |  |  |  |  |  |
| D01AR26041C0 |  | DT-01 ; GMS Frame for Metal Panel (Canyon Artrium) | 66d | 2012-05-31 | 2012-08-18 | D01AR26039C0 SS, D01PA09501C0 |  |  |  |  | 51.8d | 18d | Labor General [1.2 h]; Cost |  |  | D01ER26039C0 | DT | C | 01 | AR | ME | 260 | 41 | BILL 5 | B05 | S1 | MEL | R00 | ACF07 | 260 | FF | MEP |  |  |  |  |  |  |  |  |  |  |  |
| D01AR26043C0 |  | DT-01 ; ST-2 Strip Installation (Canyon Artrium) | 48d | 2012-05-31 | 2012-07-28 | D01PA09501C0 |  |  |  |  | 49.8d | 0d | Labor General [1.2 h]; Cost |  |  | D01ER26039C0 | DT | C | 01 | AR | ME | 260 | 43 | BILL 5 | B05 | S1 | MEL | R00 | ACF07 | 260 | FF | MEP |  |  |  |  |  |  |  |  |  |  |  |
| D01AR26045C0 |  | DT-01 ; Metal Panel (MWP-1) Installation (Canyon Artrium) | 48d | 2012-06-07 | 2012-08-04 | D01AR26043C0 SS+6d, D01PA09501C0 |  |  |  |  | 49.8d | 0d | Labor General [1.2 h]; Cost |  |  | D01ER26039C0 | DT | C | 01 | AR | ME | 260 | 45 | BILL 5 | B05 | S1 | MEL | R00 | ACF07 | 260 | FF | MEP |  |  |  |  |  |  |  |  |  |  |  |
| D01AR26047C0 |  | DT-01 ; Sculpture Glass (Wall/Floor) Installation (Canyon Artrium) | 48d | 2012-06-25 | 2012-08-22 | D01AR26045C0 SS+14d, D01PA09501C0 |  |  |  |  | 49.8d | 0d | Labor General [1.2 h]; Cost |  |  | D01ER26039C0 | DT | C | 01 | AR | ME | 260 | 47 | BILL 5 | B05 | S1 | MEL | R00 | ACF07 | 260 | FF | MEP |  |  |  |  |  |  |  |  |  |  |  |
| D01AR26049C0 |  | DT-01 ; ST LNG Stone Floor Installation (Canyon Artrium) | 60d | 2012-08-22 | 2012-11-03 | D01AR26047C0 |  |  |  |  | 49.8d | 0d | Labor General [1.2 h]; Cost |  |  | D01ER26039C0 | DT | C | 01 | AR | ME | 260 | 49 | BILL 5 | B05 | S1 | MEL | R00 | ACF07 | 260 | FF | MEP |  |  |  |  |  |  |  |  |  |  |  |
|  | 10 | **Precommissioning Tesing & snagging (Canyon Artrium (From GF) + ST LNG)** |  | 2012-08-11 | 2012-12-23 |  |  |  |  |  |  |  |  |  |  |  |  |  |  |  |  |  |  |  |  |  |  |  |  |  |  |  |  |  |  |  |  |  |  |  |  |  |  |
| D01TS01806C0 |  | DT-01 ; MEP de-snag, FIREM sign-off | 12d | 2012-08-11 | 2012-08-27 | D01AR26039C0 |  |  |  |  | 105.8d | 56d | TESTING & COMMISSIONING [1275 h]; Cost |  |  | D01TS01801C0 | DT | C | 01 | TS | SC | 018 | 01 | BILL 5 | B05 | S1 | 01 | R00 | ACF07 | 018 |  |  |  |  |  |  |  |  |  |  |  |  |  |
| D01TS01811C0 |  | DT-01 ; Touch-up & Clean / JV inspection /CIR /De-snag | 18d | 2012-11-03 | 2012-11-25 | D01TS01806C0, D01AR26049C0, D01AR26047C0, D01AR26039C0, D01AR26041C0, D01AR26043C0, D01AR26045C0 |  |  |  |  | 49.8d | 16d | TESTING & COMMISSIONING [213 h]; Cost |  |  | D01TS01802C0 | DT | C | 01 | TS | SC | 018 | 02 | BILL 5 | B05 | S1 | 02 | R00 | ACF07 | 018 |  |  |  |  |  |  |  |  |  |  |  |  |  |
| D01TS01816C0 |  | DT-01 ; Consultant's final de-snag inspection | 7d | 2012-12-15 | 2012-12-23 | D01TS01811C0, D01TS01817C0 |  |  |  |  | 33.8d | 19.7d | Labor General [1 h]; Cost |  |  | D01TS01803C0 | DT | C | 01 | TS | SC | 018 | 03 | BILL 5 | B05 | S1 | 03 | R00 | ACF07 | 018 |  |  |  |  |  |  |  |  |  |  |  |  |  |
|  | 07 | **TR Room** |  | 2011-05-16 | 2012-09-15 |  |  |  |  |  |  |  |  |  |  |  |  |  |  |  |  |  |  |  |  |  |  |  |  |  |  |  |  |  |  |  |  |  |  |  |  |  |  |
| D01TR09203C0 |  | DT-01 ; Partitions 1st face (TR RM) | 60d | 2011-05-16 A | 2011-09-29 A | D01ER09201C0 SS+12d, D01M209201C0 SS+12d, D01TR09201C0 SS+12d | 100% |  | 2011-08-07 | 2011-10-18 |  |  | PARTITIONS [52 m]; PARTITIONS [193 h]; Cost |  |  | D01TR09203C0 | DT | C | 01 | TR | PT | 092 | 03 | BILL 5 | B05 | S1 | 2F | R00 | ACF06 | 092 |  | GP | 314 | 886 | 20 | 1066.42 | P1F |  |  |  |  |  |  |
| D01TR09201C0 |  | DT-01 ; Metal Studs (TR RM) | 60d | 2011-05-24 A | 2011-09-29 A | D01PA09201C0 SS | 100% |  | 2011-06-23 | 2011-09-05 |  |  | PARTITIONS [231 h]; PARTITIONS - Metal Studs [52 m]; Cost |  |  | D01TR09201C0 | DT | C | 01 | TR | PT | 092 | 01 | BILL 5 | B05 | S1 | 1F | R00 | ACF06 | 092 |  | GP | 313 | 885 | 20 | 761.74 | PMS |  |  |  |  |  |  |
| D01TR26009C0 |  | DT-01 ; 2nd Fix, Inst of Equipment (DB, TR, SG,BUS) (TR RM) | 60d | 2011-06-08 A | 2012-05-20 | D01TR09205C0, D01TR09601C0 | 65% | 21d | 2011-09-04 | 2011-11-16 | 45.4d | 0d | ELECTRICAL [14310 h]; Cost [3256347 AED] | 3,256,347.19 | 2,116,625.67 | D01TR26009C0 | DT | C | 01 | TR | ME | 260 | 09 | BILL 5 | B05 | S1 | 2F | R00 | ACF04 | 260 | 2n | MEP |  |  |  | 2636818.75 |  | 65 | 65 | 60 | E |  |  |
| D01TR26026C0 |  | DT-01 ; 2nd Fix, Conduit (TR RM) | 60d | 2011-06-21 A | 2011-11-21 | D01TR09201C0 SS+6d | 30% | 42d | 2011-06-21 | 2011-09-03 | 67d | 0d | ELECTRICAL [824.4 h]; Cost [42423.2 AED] | 42,423.24 | 12,726.97 | D01TR26026C0 | DT | C | 01 | TR | ME | 260 | 26 | BILL 5 | B05 | S1 | 2F | R00 | ACF07 | 260 | 2n | MEP |  |  |  | 14995.99 |  | 35 |  |  |  |  |  |
| D01TR09501C0 |  | DT-01 ; Ceiling Grid and Service Tile (TR RM) | 18d | 2011-09-05 A | 2012-04-04 | D01TR09205C0 SS+15d, D01TR09901C0 | 80% | 3.6d | 2012-02-18 | 2012-03-08 | 24.4d | 0d | CEILING GRID FOR GYPSUM [355.51 h]; CEILING GRID FOR GYPSUM [30.36 m2]; Cost |  |  | D01TR09501C0 | DT | C | 01 | TR | CE | 095 | 01 | BILL 5 | B05 | S1 | 01 | R00 | ACF06 | 095 |  |  | 336 | 1327 |  |  |  |  |  |  |  | 1 |  |
| D01TR08101C0 |  | DT-01 ; Door Frames (TR RM) | 20d | 2011-11-12 | 2011-12-06 | D01TR09201C0, GNHE08101C0 FS+79d |  |  |  |  | 98d | 79d | ASSORTED DOORS [453 h]; Cost |  |  | D01TR08101C0 | DT | C | 01 | TR | DO | 081 | 01 | BILL 5 | B05 | S1 | DF | R00 | ACF06 | 081 |  |  | 316 | 20001090 |  |  |  |  |  |  |  |  | 08 |
| D01TR01005C0 |  | DT-01 ; 2nd, Wall Inspection by Consultant (TR RM) | 12d | 2011-11-22 | 2011-12-07 | D01TR26026C0 |  |  |  |  | 67d | 48d | Labor General [1.2 h]; Cost |  |  | D01TR01005C0 | DT | C | 01 | TR | ME | 010 | 05 | BILL 5 | B05 | S1 | WI | R00 | ACF07 | 010 | 2n | MEP |  |  |  |  |  | 25 |  |  |  |  |  |
| D01TR09205C0 |  | DT-01 ; Partitions Closing (TR RM) | 30d | 2012-02-05 | 2012-03-10 | D01TR01005C0, D01TR09201C0, D01TR09203C0, DAFOA09206C1 FF, D01TR08101C0 FF, D01PA09205C0 SS |  |  |  |  | 19d | 0d | PARTITIONS [52 m]; PARTITIONS [235 h]; Cost |  |  | D01TR09205C0 | DT | C | 01 | TR | PT | 092 | 05 | BILL 5 | B05 | S1 | FF | R00 | ACF06 | 092 |  | GP | 315 | 887 |  |  | P2F |  |  |  |  |  |  |
| D01TR09901C0 |  | DT-01 ; Wall Prime & 1st coat (TR RM) | 18d | 2012-03-11 | 2012-03-31 | D01CO04003C0, D01TR09205C0 |  |  |  |  | 24.4d | 0d | WALL PAINT [66 h]; WALL PAINT [82 m2]; Cost |  |  | D01TR09901C0 | DT | C | 01 | TR | PA | 099 | 01 | BILL 5 | B05 | S1 | 01 | R00 | ACF06 | 099 |  |  | 360 | 20001110 |  |  |  |  |  |  |  |  |  |
| D01TR23009C0 |  | DT-01 ; 2nd Fix, Inst of VAV'S CHW connection (TR RM) | 30d | 2012-03-11 | 2012-04-14 | D01TR09205C0 |  |  |  |  | 19d | 0d | MECHANICAL [1684.8 h]; Cost |  |  | D01TR23009C0 | DT | C | 01 | TR | ME | 230 | 09 | BILL 5 | B05 | S1 | 2F | R00 | ACF07 | 230 | 2n | MEP |  |  |  |  |  | 25 |  |  |  |  |  |
| D01TR23011C0 |  | DT-01 ; 2nd Fix, Inst of VCD's/FD's (TR RM) | 30d | 2012-03-11 | 2012-04-14 | D01TR09205C0 |  |  |  |  | 19d | 0d | MECHANICAL [4312.8 h]; Cost |  |  | D01TR23011C0 | DT | C | 01 | TR | ME | 230 | 11 | BILL 5 | B05 | S1 | 2F | R00 | ACF07 | 230 | 2n | MEP |  |  |  |  |  | 25 |  |  |  |  |  |
| D01TR26007C0 |  | DT-01 ; 2nd Fix, Cable Pulling (TR RM) | 30d | 2012-03-11 | 2012-04-14 | D01TR09203C0, D01TR09205C0 |  |  |  |  | 49d | 30d | ELECTRICAL [6634.8 h]; Cost |  |  | D01TR26007C0 | DT | C | 01 | TR | ME | 260 | 07 | BILL 5 | B05 | S1 | 2F | R00 | ACF07 | 260 | 2n | MEP |  |  |  |  |  | 15 |  |  |  |  |  |
| D01TR26027C0 |  | DT-01 ; 2nd Fix, Wiring / Cabling (TR RM) | 30d | 2012-03-11 | 2012-04-14 | D01TR09205C0 |  |  |  |  | 64d | 45d | ELECTRICAL [436.8 h]; Cost |  |  | D01TR26027C0 | DT | C | 01 | TR | ME | 260 | 27 | BILL 5 | B05 | S1 | 2F | R00 | ACF07 | 260 | 2n | MEP | 417 | 1318 |  |  |  | 15 |  |  |  |  |  |
| D01TR27002C0 |  | DT-01 ; 2nd Fix, Dressing of ELV panels (TR RM) | 30d | 2012-03-11 | 2012-04-14 | D01TR09205C0, D01TR27020C0 SS |  |  |  |  | 31d | 0d | ELECTRICAL [333.6 h]; Cost |  |  | D01TR27002C0 | DT | C | 01 | TR | ME | 270 | 02 | BILL 5 | B05 | S1 | 2F | R00 | ACF07 | 270 | 2n | MEP |  |  |  |  |  |  |  |  |  |  |  |
| D01TR27020C0 |  | DT-01 ; 2nd Fix, Inst of ELV Equipment (Panels) (TR RM) | 30d | 2012-03-11 | 2012-04-14 | D01TR09205C0 |  |  |  |  | 31d | 0d | ELECTRICAL [1723.2 h]; Cost |  |  | D01TR27020C0 | DT | C | 01 | TR | ME | 270 | 20 | BILL 5 | B05 | S1 | 2F | R00 | ACF04 | 270 | 2n | MEP |  |  |  |  |  |  |  |  | E |  |  |
| D01TR08105C0 |  | DT-01 ; Doors (TR RM) | 24d | 2012-04-01 | 2012-04-28 | D01TR08101C0, D01TR09901C0 |  |  |  |  | 86d | 0d | ASSORTED DOORS [1830 h]; ASSORTED DOORS [183 no]; Cost |  |  | D01TR08105C0 | DT | C | 01 | TR | DO | 081 | 05 | BILL 5 | B05 | S1 | DR | R00 | ACF06 | 081 |  |  | 317 | 1325 |  |  |  |  |  |  |  |  | 08 |
| D01TR09903C0 |  | DT-01 ; Wall - Final Paint (TR RM) | 12d | 2012-04-01 | 2012-04-14 | D01TR09901C0 |  |  |  |  | 112d | 93d | WALL PAINT [36 h]; WALL PAINT [44 m2]; Cost |  |  | D01TR09903C0 | DT | C | 01 | TR | PA | 099 | 03 | BILL 5 | B05 | S1 | 02 | R00 | ACF06 | 099 |  |  | 361 | 1312 |  |  |  |  |  |  |  |  |  |
| D01TR09601C0 |  | DT-01 ; Floor Finishes (TR RM) | 18d | 2012-04-04 | 2012-04-25 | D01TR09501C0 |  |  |  |  | 24.4d | 0d | ASSORTED FLOOR FINISH [1344 h]; ASSORTED FLOOR FINISH [745 m2]; Cost |  |  | D01TR09601C0 | DT | C | 01 | TR | FF | 096 | 01 | BILL 5 | B05 | S1 | 01 | R00 | ACF06 | FF |  |  | 359 | 20001120 |  |  |  |  |  |  |  |  |  |
| D01TR09905C0 |  | DT-01 ; Ceiling Prime & 1st coat (TR RM) | 18d | 2012-04-04 | 2012-04-25 | D01TR09501C0 |  |  |  |  | 90.4d | 53.4d | ASSORTED CEILING FINISH [31 h]; Cost |  |  | D01TR09905C0 | DT | C | 01 | TR | PA | 099 | 05 | BILL 5 | B05 | S1 | 01 | R00 | ACF06 | 099 |  |  | 362 | 1313 |  |  |  |  |  |  |  |  |  |
| D01TR23003C0 |  | DT-01 ; Final Fix, Inst of Grilles & Diffusers (TR RM) | 18d | 2012-04-04 | 2012-04-25 | D01TR09501C0 |  |  |  |  | 39.4d | 20.4d | MECHANICAL [2560.8 h]; Cost |  |  | D01TR23003C0 | DT | C | 01 | TR | ME | 230 | 03 | BILL 5 | B05 | S1 | FF | R00 | ACF07 | 230 | FF | MEP |  |  |  |  |  |  |  |  |  |  |  |
| D01TR23023C0 |  | DT-01 ; 2nd Fix, Flexible ducts (TR RM) | 30d | 2012-04-04 | 2012-05-09 | D01TR09205C0, D01TR09501C0 |  |  |  |  | 42.4d | 23.4d | MECHANICAL [274.8 h]; Cost |  |  | D01TR23023C0 | DT | C | 01 | TR | ME | 230 | 23 | BILL 5 | B05 | S1 | 2F | R00 | ACF07 | 230 | 2n | MEP | 412 | 20001140 |  |  |  | 25 |  |  |  |  |  |
| D01TR23074C0 |  | DT-01 ; Final Fix, Grilles, panels & diffusers (TR RM) | 18d | 2012-04-04 | 2012-04-25 | D01TR09501C0 |  |  |  |  | 39.4d | 20.4d | MECHANICAL [2560.8 h]; Cost |  |  | D01TR23074C0 | DT | C | 01 | TR | ME | 230 | 74 | BILL 5 | B05 | S1 | FF | R00 | ACF07 | 230 | FF | MEP | 419 | 20001160 |  |  |  |  |  |  |  |  |  |
| D01TR26005C0 |  | DT-01 ; 2nd Fix, Wiring for Power/Lighting/Emergency (TR RM) | 30d | 2012-04-04 | 2012-05-09 | D01TR26026C0, D01TR09501C0 |  |  |  |  | 42.4d | 23.4d | ELECTRICAL [436.8 h]; Cost |  |  | D01TR26005C0 | DT | C | 01 | TR | ME | 260 | 05 | BILL 5 | B05 | S1 | 2F | R00 | ACF07 | 260 | 2n | MEP |  |  |  |  |  | 15 |  |  |  |  |  |
| D01TR26015C0 |  | DT-01 ; Final Fix, Inst of Ceiling rose (TR RM) | 18d | 2012-04-04 | 2012-04-25 | D01TR09501C0 |  |  |  |  | 39.4d | 20.4d | ELECTRICAL [67.2 h]; Cost |  |  | D01TR26015C0 | DT | C | 01 | TR | ME | 260 | 15 | BILL 5 | B05 | S1 | FF | R00 | ACF07 | 260 | FF | MEP |  |  |  |  |  |  |  |  |  |  |  |
| D01TR26019C0 |  | DT-01 ; Final Fix, Inst of Light fittings (TR RM) | 18d | 2012-04-04 | 2012-04-25 | D01TR09501C0 |  |  |  |  | 39.4d | 20.4d | ELECTRICAL [6626.4 h]; Cost |  |  | D01TR26019C0 | DT | C | 01 | TR | ME | 260 | 19 | BILL 5 | B05 | S1 | FF | R00 | ACF07 | 260 | FF | MEP |  |  |  |  |  |  |  |  |  |  |  |
| D01TR26076C0 |  | DT-01 ; Final Fix, Lighting fittings (TR RM) | 18d | 2012-04-04 | 2012-04-25 | D01TR09501C0 |  |  |  |  | 39.4d | 20.4d | ELECTRICAL [6626.4 h]; Cost |  |  | D01TR26076C0 | DT | C | 01 | TR | ME | 260 | 76 | BILL 5 | B05 | S1 | FF | R00 | ACF07 | 260 | FF | MEP | 420 | 20001170 |  |  |  |  |  |  |  |  |  |
| D01TR23013C0 |  | DT-01 ; 2nd Fix, Insulation of CHW pipe & Duct (TR RM) | 30d | 2012-04-15 | 2012-05-19 | D01TR23009C0, D01TR23011C0 |  |  |  |  | 19d | 0d | MECHANICAL [5311.2 h]; Cost |  |  | D01TR23013C0 | DT | C | 01 | TR | ME | 230 | 13 | BILL 5 | B05 | S1 | 2F | R00 | ACF07 | 230 | 2n | MEP |  |  |  |  |  |  |  |  |  |  |  |
| D01TR27030C0 |  | DT-01 ; Final Fix, Inst of ELV device (Detector/Speaker) (TR RM) | 18d | 2012-04-15 | 2012-05-05 | D01TR27002C0 |  |  |  |  | 31d | 12d | ELECTRICAL [2152.8 h]; Cost |  |  | D01TR27030C0 | DT | C | 01 | TR | ME | 270 | 30 | BILL 5 | B05 | S1 | FF | R00 | ACF07 | 270 | FF | MEP |  |  |  |  |  |  |  |  |  |  |  |
| D01TR21115C0 |  | DT-01 ; 2nd Fix, Gaseous Fire Suppression (TR RM) | 30d | 2012-04-25 | 2012-05-30 | D01TR09501C0, D01TR09601C0 |  |  |  |  | 24.4d | 5.4d | MECHANICAL [12560.4 h]; Cost |  |  | D01TR21115C0 | DT | C | 01 | TR | ME | 211 | 15 | BILL 5 | B05 | S1 | 2F | R00 | ACF07 | 211 | 2n | MEP | 411 | 20001130 |  |  |  | 25 |  |  |  |  |  |
| D01TR08709C0 |  | DT-01 ; Ironmongery (TR RM) | 14d | 2012-04-29 | 2012-05-14 | D01TR08105C0 |  |  |  |  | 86d | 67d | IRONMONGERY [40 h]; IRONMONGERY [4 no]; Cost |  |  | D01TR08709C0 | DT | C | 01 | TR | DO | 087 | 09 | BILL 5 | B05 | S1 | IM | R00 | ACF06 | 087 |  |  | 322 | 20001100 |  |  |  |  |  |  |  |  | 08 |
| D01TR01006C0 |  | DT-01 ; 2nd, Ceiling Inspection by Consultants (TR RM) | 15d | 2012-05-20 | 2012-06-05 | D01TR23009C0, D01TR23011C0, D01TR23013C0, D01TR26007C0, D01TR09501C0, D01TR23003C0, D01TR23074C0, D01TR26015C0, D01TR26019C0, D01TR26076C0, D01TR27030C0 |  |  |  |  | 19d | 0d | Labor General [1.2 h]; Cost |  |  | D01TR01006C0 | DT | C | 01 | TR | ME | 010 | 06 | BILL 5 | B05 | S1 | CI | R00 | ACF07 | 010 | 2n | MEP |  |  |  |  |  |  |  |  |  |  |  |
| D01TR26013C0 |  | DT-01 ; Final Fix, Termination & Gladding of Cables (TR RM) | 18d | 2012-05-20 | 2012-06-10 | D01TR26009C0 |  |  |  |  | 45.4d | 26.4d | ELECTRICAL [368.4 h]; Cost |  |  | D01TR26013C0 | DT | C | 01 | TR | ME | 260 | 13 | BILL 5 | B05 | S1 | FF | R00 | ACF07 | 260 | FF | MEP |  |  |  |  |  |  |  |  |  |  |  |
| D01TR09503C0 |  | DT-01 ; Ceiling closure (TR RM) | 18d | 2012-06-06 | 2012-06-27 | D01TR01006C0, D01TR21115C0, D01TR26005C0, D01TR26007C0, D01TR26026C0, D01TR26027C0, D01TR23023C0 |  |  |  |  | 19d | 0d | ASSORTED CEILING FINISH [71.95 h]; CEILING GYPSUM [10.04 h]; ASSORTED CEILING FINISH [117 m2]; CEILING GYPSUM [30 m2]; Cost |  |  | D01TR09503C0 | DT | C | 01 | TR | CE | 095 | 03 | BILL 5 | B05 | S1 | 02 | R00 | ACF06 | 095 |  |  | 337 | 20001080 |  |  |  |  |  |  |  |  |  |
| D01TR09907C0 |  | DT-01 ; Ceiling - Final paint (TR RM) | 12d | 2012-06-28 | 2012-07-11 | D01TR09905C0, D01TR09503C0 |  |  |  |  | 37d | 18d | ASSORTED CEILING FINISH [17 h]; Cost |  |  | D01TR09907C0 | DT | C | 01 | TR | PA | 099 | 07 | BILL 5 | B05 | S1 | 02 | R00 | ACF06 | 099 |  |  | 363 | 1314 |  |  |  |  |  |  |  |  |  |
| D01TR26017C0 |  | DT-01 ; Final Fix, Inst of Switch/Sockets (TR RM) | 12d | 2012-06-28 | 2012-07-11 | D01TR09901C0, D01TR09503C0 |  |  |  |  | 19d | 0d | ELECTRICAL [610.8 h]; Cost |  |  | D01TR26017C0 | DT | C | 01 | TR | ME | 260 | 17 | BILL 5 | B05 | S1 | FF | R00 | ACF07 | 260 | FF | MEP |  |  |  |  |  |  |  |  |  |  |  |
| D01TR01802C0 |  | DT-01 ; MEP de-snag, FIREM sign-off | 18d | 2012-07-12 | 2012-08-01 | D01TR26017C0, D01TR23074C0, D01TR23003C0, D01TR26076C0, D01TR26013C0, D01TR26015C0, D01TR26019C0, D01TR27030C0 |  |  |  |  | 19d | 0d | TESTING & COMMISSIONING [510 h]; Cost |  |  | CP3TR01851C0 | DT | C | 01 | TR | SC | 018 | 53 | BILL 5 | B05 | S1 | 01 | R00 | ACF07 | 018 |  |  | 396 |  |  |  |  |  |  |  |  |  |  |
| D01TR01801C0 |  | DT-01 ; Touch-up & Clean / JV inspection /CIR /De-snag | 24d | 2012-08-02 | 2012-09-01 | D01TR01802C0, D01TR08709C0, D01TR09601C0, D01TR09903C0, D01TR09907C0, D01TR09503C0 |  |  |  |  | 19d | 0d | TESTING & COMMISSIONING [85 h]; Cost |  |  | D01TR01851C0 | DT | C | 01 | TR | SC | 018 | 51 | BILL 5 | B05 | S1 | 02 | R00 | ACF07 | 018 |  |  | 396 |  |  |  |  |  |  |  |  |  |  |
| D01TR01803C0 |  | DT-01 ; Consultant's final de-snag inspection | 12d | 2012-09-02 | 2012-09-15 | D01TR01801C0 |  |  |  |  | 19d | 0d | Labor General [1 h]; Cost |  |  | CP3TS01803C0 | DT | C | 01 | TR | SC | 018 | 03 | BILL 5 | B05 | S1 | 03 | R00 | ACF07 | 018 |  |  |  |  |  |  |  |  |  |  |  |  |  |
