# CCAD CPM Rev.3 dt 24-Oct-2011 (Subcontractor Copy)

Schedule from Primavera P6, 2010-03-07 to 2013-06-22, data date 2011-09-30, costs in EGP, A marks actual dates.
Must finish by 2013-07-04

| ID | WBS | Activity | Duration | Start | Finish | Predecessors | Total float | Free float | Resources | Change Order # | NEW ACTIVITY ID | change id | IDDD | CCAD BUILDING(SET) | CCAD PHASE(SET) | CCAD DIVISION(SET) | CCAD FLOOR(SET) | CCAD ZONE(SET) | CCAD WORK(SET) | CCAD SECTION(SET) | CCAD SERIAL No.(SET) | CCAD Carpark code(SET) | CCAD Carpark district code(set) | CCAD CBS(SET) | CCAD BILL(SET) | CCAD HANDOVER(SET) | CCAD TAG(SET) | CCAD REV(SET) | CCADACF (SET) | FSP CODE | CCAD SSCF | CCAD SUB ZONE MEP(SET) | CCAD CSA | Act Selector % | CCAD MEQ |
| --- | --- | --- | --- | --- | --- | --- | --- | --- | --- | --- | --- | --- | --- | --- | --- | --- | --- | --- | --- | --- | --- | --- | --- | --- | --- | --- | --- | --- | --- | --- | --- | --- | --- | --- | --- |
| PP2BE08701C0 |  | PA-P2 ; Ironmongery (Elec RM)_PB-1 | 12d | 2012-10-01 | 2012-10-15 | PP2BE08103C0, PGLS103331C360, PGLS103331C370, PGLS103331C350, PGLS103331C340, PGLS103331C330, PGLS103391C220 | 130.22d | 110.99d | IRONMONGERY [20 h]; IRONMONGERY [2 no]; Cost | 322 | 6230 | CP2ME08709C0 | PP2BE08701C0 | PA | C | 08 | P2 | ER | DO | 087 | 01 | PB | N | BILL 2 | B02 | S1 | IM | R00 | ACF06 | PB-1 | 087 |  |  |  |  |
|  | BM2 | **MECHANICAL ROOMS (1 NOS.) : Zone PB-2** |  | 2012-06-20 | 2013-02-28 |  |  |  |  |  |  |  |  |  |  |  |  |  |  |  |  |  |  |  |  |  |  |  |  |  |  |  |  |  |  |
| PP2BM09902C0 |  | PA-P2 ; Wall Prime & 1st coat (Mech RM)_PB-2 | 18d | 2012-06-20 | 2012-07-11 | PGLS103391C160, PGLS703394R02 SS, PGLS703394C0, PGLS103391C140 SS, PGLS103391C260, PGLS103392R02, PGLS103391C170, PGLS103394R02 SS, PGLS103391C190 SS | 19.24d | 0d | WALL PAINT [396 h]; WALL PAINT [493 m2]; Cost | 328 | 1469 | C04ME09901C0 | PP3BM09902C0 | PA | C |  | P2 | M1 | PA | 099 | 02 | PB | N | BILL 2 | B02 | S1 | 01 | R00 | ACF06 | PB-2 | 099 |  |  |  |  |
| PP2BM04001C0 |  | PA-P2 ; Block Wall Works (Mech RM)_PB-2 | 24d | 2012-07-11 | 2012-08-08 | PP2BM09902C0, PZ9GZ04052R2 FF, PV09GZ04053R2 FF | 19.24d | 0d | BLOCKWORKS [504 h]; BLOCKWORKS [144 m2]; Cost |  |  | AP2M104001C0 | PP3BM04001C0 | PA | C |  | P2 | M1 | BL | 040 | 01 | PB | N | BILL 2 | B02 | S1 | BL | R00 | ACF06 | PB-2 | 040 |  |  |  |  |
| PP2BM21101C0 |  | PA-P2 ; 1st Fix, Inst of Sprinkler branch pipe (Mech RM)_PB-2 | 24d | 2012-08-08 | 2012-09-08 | PP2BM21102C0 SS, PP2BM04001C0 | 114.24d | 0d | MECHANICAL [8076 h]; Cost |  |  | C04ME21119C0 | PP3BM21101C0 | PA | C |  | P2 | M1 | ME | 211 | 01 | PB | N | BILL 2 | B02 | S1 | 1F | R00 | ACF04 | PB-2 | 211 | 1S | MEP | M1F |  |
| PP2BM21102C0 |  | PA-P2 ; 1st Fix, Inst of Sprinkler main pipe (Mech RM)_PB-2 | 24d | 2012-08-08 | 2012-09-08 | PP2BM22003C0 SS, PP2BM23003C0 SS, PP2BM04001C0 | 84.24d | 0d | MECHANICAL [9823.2 h]; Cost |  |  | C04ME21111C0 | PP3BM21102C0 | PA | C |  | P2 | M1 | ME | 211 | 02 | PB | N | BILL 2 | B02 | S1 | 1F | R00 | ACF04 | PB-2 | 211 | 1S | MEP | M1F |  |
| PP2BM22001C0 |  | PA-P2 ; 1st Fix, Inst of Drainage pipe (Mech RM)_PB-2 | 24d | 2012-08-08 | 2012-09-08 | PP2BM23003C0 SS, PP2BM26002C0 SS, PP2BM04001C0 | 19.24d | 0d | PLUMBING [2156.4 h]; Cost |  |  | C04ME22011C0 | PP3BM22001C0 | PA | C |  | P2 | M1 | ME | 220 | 01 | PB | N | BILL 2 | B02 | S1 | 1F | R00 | ACF04 | PB-2 | 220 | 1S | MEP | M1F |  |
| PP2BM22003C0 |  | PA-P2 ; 1st Fix, Inst of Water supply pipe (Mech RM)_PB-2 | 24d | 2012-08-08 | 2012-09-08 | PP2BM22001C0 SS, PP2BM23003C0 SS, PP2BM04001C0 | 19.24d | 0d | PLUMBING [6082.8 h]; Cost |  |  | C04ME22006C0 | PP3BM22003C0 | PA | C |  | P2 | M1 | ME | 220 | 03 | PB | N | BILL 2 | B02 | S1 | 1F | R00 | ACF04 | PB-2 | 220 | 1S | MEP | M1F |  |
| PP2BM23001C0 |  | PA-P2 ; 1st Fix, Inst of CHW pipe (Mech RM)_PB-2 | 24d | 2012-08-08 | 2012-09-08 | PP2BM21102C0 SS, PP2BM23003C0 SS, PP2BM04001C0 | 84.24d | 0d | MECHANICAL [3097.2 h]; Cost |  |  | C04ME23019C0 | PP3BM23001C0 | PA | C |  | P2 | M1 | ME | 230 | 01 | PB | N | BILL 2 | B02 | S1 | 1F | R00 | ACF04 | PB-2 | 230 | 1S | MEP | M1F |  |
| PP2BM23002C0 |  | PA-P2 ; 1st Fix, Inst of Ducting (Mech RM)_PB-2 | 24d | 2012-08-08 | 2012-09-08 | PP2BM23003C0 SS, PP2BM04001C0 | 84.24d | 0d | MECHANICAL [3948 h]; Cost |  |  | C04ME23005C0 | PP3BM23002C0 | PA | C |  | P2 | M1 | ME | 230 | 02 | PB | N | BILL 2 | B02 | S1 | 1F | R00 | ACF04 | PB-2 | 230 | 1S | MEP | M1F |  |
| PP2BM23003C0 |  | PA-P2 ; 1st Fix, Inst. of Supports for MEP (Mech RM)_PB-2 | 12d | 2012-08-08 | 2012-08-25 | PP2BM04001C0 | 19.24d | 0d | MECHANICAL [625.2 h]; Cost |  |  | C04ME23001C0 | PP3BM23003C0 | PA | C |  | P2 | M1 | ME | 230 | 03 | PB | N | BILL 2 | B02 | S1 | 1F | R00 | ACF04 | PB-2 | 230 | 1S | MEP | M1F |  |
| PP2BM23004C0 |  | PA-P2 ; 2nd Fix, Inst of Equipment (AHU) (Mech RM)_PB-2 | 24d | 2012-08-08 | 2012-09-08 | PP2BM04001C0, PP2BM22001C0 FF, PP2BM22003C0 FF | 19.24d | 0d | MECHANICAL [528 h]; Cost |  |  | C04ME23013C0 | PP3BM23004C0 | PA | C |  | P2 | M1 | ME | 230 | 04 | PB | N | BILL 2 | B02 | S1 | 2F | R00 | ACF04 | PB-2 | 230 | 2n | MEP |  | H |
| PP2BM26001C0 |  | PA-P2 ; 1st Fix, Inst of Cable Tray (Mech RM)_PB-2 | 24d | 2012-08-08 | 2012-09-08 | PP2BM04001C0 | 84.24d | 0d | ELECTRICAL [63.6 h]; Cost |  |  | C04ME26011C0 | PP3BM26001C0 | PA | C |  | P2 | M1 | ME | 260 | 01 | PB | N | BILL 2 | B02 | S1 | 1F | R00 | ACF04 | PB-2 | 260 | 1S | MEP | M1F |  |
| PP2BM26002C0 |  | PA-P2 ; 1st Fix, Inst of Trunking/Conduiting (Mech RM)_PB-2 | 24d | 2012-08-08 | 2012-09-08 | PP2BM23003C0 SS, PP2BM04001C0 | 19.24d | 0d | ELECTRICAL [192 h]; Cost |  |  | C04ME26001C0 | PP3BM26002C0 | PA | C |  | P2 | M1 | ME | 260 | 02 | PB | N | BILL 2 | B02 | S1 | 1F | R00 | ACF04 | PB-2 | 260 | 1S | MEP | M1F |  |
| PP2BM27001C0 |  | PA-P2 ; 1st Fix, Inst of Trunking for ELV system (Mech RM)_PB-2 | 24d | 2012-08-08 | 2012-09-08 | PP2BM23002C0 SS, PP2BM04001C0 | 114.24d | 0d | ELECTRICAL [535.2 h]; Cost |  |  | C04ME27010C0 | PP3BM27001C0 | PA | C |  | P2 | M1 | ME | 270 | 01 | PB | N | BILL 2 | B02 | S1 | 1F | R00 | ACF04 | PB-2 | 270 | 1S | MEP | M1F |  |
| PP2BM27002C0 |  | PA-P2 ; 1st Fix, Wiring/ Cabling work (Mech RM)_PB-2 | 24d | 2012-08-08 | 2012-09-08 | PP2BM26001C0 SS, PP2BM26002C0 SS, PP2BM27001C0 SS, PP2BM04001C0 | 114.24d | 30d | ELECTRICAL [76.8 h]; Cost |  |  | C04ME27001C0 | PP3BM27002C0 | PA | C |  | P2 | M1 | ME | 270 | 02 | PB | N | BILL 2 | B02 | S1 | 1F | R00 | ACF04 | PB-2 | 270 | 1S | MEP | M1F |  |
| PP2BM09201C0 |  | PA-P2 ; Metal Studs (Mech RM)_PB-2 | 25d | 2012-09-08 | 2012-10-07 | PP2BM04001C0 SS+10d, PP2BM23004C0 | 19.24d | 0d | PARTITIONS [29 h]; PARTITIONS [4 m]; Cost |  |  | C04ME09201C0 | PP3BM09201C0 | PA | C |  | P2 | M1 | PT | 092 | 01 | PB | N | BILL 2 | B02 | S1 | 1F | R00 | ACF06 | PB-2 | 092 |  | GP | PMS |  |
| PP2BM21104C0 |  | PA-P2 ; 2nd Fix, Inst of Sprinkler droppers (Mech RM)_PB-2 | 30d | 2012-09-08 | 2012-10-13 | PP2BM21101C0 | 114.24d | 18d | MECHANICAL [3525.6 h]; Cost |  |  | C04ME21115C0 | PP3BM21104C0 | PA | C |  | P2 | M1 | ME | 211 | 04 | PB | N | BILL 2 | B02 | S1 | 2F | R00 | ACF07 | PB-2 | 211 | 2n | MEP |  |  |
| PP2BM21105C0 |  | PA-P2 ; 2nd Fix, Inst of Zone Control Valve (Mech RM)_PB-2 | 30d | 2012-09-08 | 2012-10-13 | PP2BM23001C0, PP2BM23004C0 | 114.24d | 0d | MECHANICAL [1062 h]; Cost |  |  | C04ME21117C0 | PP3BM21105C0 | PA | C |  | P2 | M1 | ME | 211 | 05 | PB | N | BILL 2 | B02 | S1 | 2F | R00 | ACF07 | PB-2 | 211 | 2n | MEP |  |  |
| PP2BM23005C0 |  | PA-P2 ; 2nd Fix, Inst of Equipment (FCU,FAN,PUMP) (Mech RM)_PB-2 | 30d | 2012-09-08 | 2012-10-13 | PP2BM23004C0 | 114.24d | 0d | MECHANICAL [2304 h]; Cost |  |  | C04ME23011C0 | PP3BM23005C0 | PA | C |  | P2 | M1 | ME | 230 | 05 | PB | N | BILL 2 | B02 | S1 | 2F | R00 | ACF04 | PB-2 | 230 | 2n | MEP |  | H |
| PP2BM23007C0 |  | PA-P2 ; 2nd Fix, Inst of VCD's/FD's (Mech RM)_PB-2 | 30d | 2012-09-08 | 2012-10-13 | PP2BM23002C0 | 96.24d | 0d | MECHANICAL [2206.8 h]; Cost |  |  | C04ME23015C0 | PP3BM23007C0 | PA | C |  | P2 | M1 | ME | 230 | 07 | PB | N | BILL 2 | B02 | S1 | 2F | R00 | ACF07 | PB-2 | 230 | 2n | MEP |  |  |
| PP2BM23008C0 |  | PA-P2 ; 2nd Fix, Insulation of CHW pipe & Duct (Mech RM)_PB-2 | 30d | 2012-09-08 | 2012-10-13 | PP2BM23001C0, PP2BM23002C0 | 84.24d | 0d | MECHANICAL [4740 h]; Cost |  |  | C04ME23017C0 | PP3BM23008C0 | PA | C |  | P2 | M1 | ME | 230 | 08 | PB | N | BILL 2 | B02 | S1 | 2F | R00 | ACF07 | PB-2 | 230 | 2n | MEP |  |  |
| PP2BM26003C0 |  | PA-P2 ; 2nd Fix, Cable Pulling (Mech RM)_PB-2 | 30d | 2012-09-08 | 2012-10-13 | PP2BM26001C0 | 84.24d | 0d | ELECTRICAL [5605.2 h]; Cost |  |  | C04ME26007C0 | PP3BM26003C0 | PA | C |  | P2 | M1 | ME | 260 | 03 | PB | N | BILL 2 | B02 | S1 | 2F | R00 | ACF07 | PB-2 | 260 | 2n | MEP |  |  |
| PP2BM26004C0 |  | PA-P2 ; 2nd Fix, Inst of Equipment (DB, TR, SG) (Mech RM)_PB-2 | 30d | 2012-09-08 | 2012-10-13 | PP2BM23004C0 | 114.24d | 0d | ELECTRICAL [1192.8 h]; Cost |  |  | C04ME26009C0 | PP3BM26004C0 | PA | C |  | P2 | M1 | ME | 260 | 04 | PB | N | BILL 2 | B02 | S1 | 2F | R00 | ACF04 | PB-2 | 260 | 2n | MEP |  | E |
| PP2BM27003C0 |  | PA-P2 ; 2nd Fix, Inst of ELV Equipment (Panels) (Mech RM)_PB-2 | 30d | 2012-09-08 | 2012-10-13 | PP2BM23004C0 | 114.24d | 0d | ELECTRICAL [183.6 h]; Cost |  |  | C04ME27020C0 | PP3BM27003C0 | PA | C |  | P2 | M1 | ME | 270 | 03 | PB | N | BILL 2 | B02 | S1 | 2F | R00 | ACF04 | PB-2 | 270 | 2n | MEP |  | E |
| PP2BM08102C0 |  | PA-P2 ; Metal Door Frames (Mech RM)_PB-2 | 9.75d | 2012-10-07 | 2012-10-18 | PP2BM09201C0, GNHE08101C0 | 61.49d | 0d | METAL DOORS [38 h]; Cost | 316 | 1465 | C04ME08101C0 | PP3BM08102C0 | PA | C | 08 | P2 | M1 | DO | 081 | 02 | PB | N | BILL 2 | B02 | S1 | DF | R00 | ACF06 | PB-2 | 081 |  |  |  |  |
| PP2BM09202C0 |  | PA-P2 ; Partitions 1st face (Mech RM)_PB-2 | 25d | 2012-10-07 | 2012-11-07 | PP2BM09201C0 | 19.24d | 0d | PARTITIONS [4 m]; PARTITIONS [16 h]; Cost | 314 | 1463 | C04ME09203C0 | PP3BM09202C0 | PA | C |  | P2 | M1 | PT | 092 | 02 | PB | N | BILL 2 | B02 | S1 | 2F | R00 | ACF06 | PB-2 | 092 |  | GP | P1F |  |
| PP2BM23006C0 |  | PA-P2 ; 2nd Fix, Inst of VAV'S CHW connection (Mech RM)_PB-2 | 30d | 2012-10-13 | 2012-11-20 | PP2BM23008C0 | 84.24d | 0d | MECHANICAL [50.4 h]; Cost |  |  | C04ME23009C0 | PP3BM23006C0 | PA | C |  | P2 | M1 | ME | 230 | 06 | PB | N | BILL 2 | B02 | S1 | 2F | R00 | ACF07 | PB-2 | 230 | 2n | MEP |  |  |
| PP2BM23009C0 |  | PA-P2 ; 2nd Fix, Inst of Flexible Duct & Plenum boxes (Mech RM)_PB-2 | 18d | 2012-10-13 | 2012-11-05 | PP2BM23007C0, PP2BM23008C0 | 96.24d | 0d | MECHANICAL [33.6 h]; Cost |  |  | C04ME23023C0 | PP3BM23009C0 | PA | C |  | P2 | M1 | ME | 230 | 09 | PB | N | BILL 2 | B02 | S1 | FF | R00 | ACF07 | PB-2 | 230 | FF | MEP |  |  |
| PP2BM26005C0 |  | PA-P2 ; 2nd Fix, Wiring for Power/Lighting/Emergency (Mech RM)_PB-2 | 30d | 2012-10-13 | 2012-11-20 | PP2BM26001C0, PP2BM26002C0, PP2BM26003C0, PP2BM27001C0, PP2BM27002C0 | 84.24d | 0d | ELECTRICAL [1585.2 h]; Cost |  |  | C04ME26005C0 | PP3BM26005C0 | PA | C |  | P2 | M1 | ME | 260 | 05 | PB | N | BILL 2 | B02 | S1 | 2F | R00 | ACF07 | PB-2 | 260 | 2n | MEP |  |  |
| PP2BM27004C0 |  | PA-P2 ; Final Fix, BMS connection work to Equipment (Mech RM)_PB-2 | 18d | 2012-10-13 | 2012-11-05 | PP2BM21105C0, PP2BM23004C0, PP2BM23005C0, PP2BM23007C0, PP2BM26004C0, PP2BM27002C0, PP2BM27003C0, PGLS103331C410, PGLS103331C420, PGLS103331C380, PGLS103331C390, PGLS103331C400, PGLS703394C10, PGLS703394C20, PGLS103391C240, PGLS103391C230, PGLS103371C250, PGLS103391C210 | 114.24d | 95d | ELECTRICAL [2473.2 h]; Cost |  |  | C04ME27003C0 | PP3BM27004C0 | PA | C |  | P2 | M1 | ME | 270 | 04 | PB | N | BILL 2 | B02 | S1 | FF | R00 | ACF07 | PB-2 | 270 | FF | MEP |  |  |
| PP2BM08103C0 |  | PA-P2 ; Metal Doors (Mech RM)_PB-2 | 10d | 2012-10-18 | 2012-11-01 | PP2BM08102C0, PGLS103331C410, PGLS103331C420, PGLS103331C380, PGLS103331C390, PGLS103331C400, PGLS703394C10, PGLS703394C20, PGLS103391C240, PGLS103391C230, PGLS103371C250, PGLS103391C210 | 85.49d | 0d | METAL DOORS [30 h]; METAL DOORS [3 no]; Cost | 317 | 1466 | C04ME08105C0 | PP3BM08103C0 | PA | C | 08 | P2 | M1 | DO | 081 | 03 | PB | N | BILL 2 | B02 | S1 | DR | R00 | ACF06 | PB-2 | 081 |  |  |  |  |
| PP2BM08101C0 |  | PA-P2 ; Al / Glass doors (Mech RM)_PB-2 | 18d | 2012-11-01 | 2012-11-24 | PP2BM08103C0, PGLS103331C410, PGLS103331C420, PGLS103331C380, PGLS103331C390, PGLS103331C400, PGLS703394C10, PGLS703394C20, PGLS103391C240, PGLS103391C230, PGLS103371C250, PGLS103391C210 | 85.49d | 0d | ASSORTED DOORS [50 h]; ASSORTED DOORS [5 no]; Cost |  |  | C04ME08109C0 | PP3BM08101C0 | PA | C |  | P2 | M1 | DO | 081 | 01 | PB | N | BILL 2 | B02 | S1 | 03 | R00 | ACF06 | PB-2 | 081 |  |  |  |  |
| PP2BM21107C0 |  | PA-P2 ; Final Fix, Inst of Sprinklers head (Mech RM)_PB-2 | 18d | 2012-11-05 | 2012-11-27 | PP2BM21104C0, PGLS103331C410, PGLS103331C420, PGLS103331C380, PGLS103331C390, PGLS103331C400, PGLS703394C10, PGLS703394C20, PGLS103391C240, PGLS103391C230, PGLS103371C250, PGLS103391C210, PP2BM23010C0 FF | 96.24d | 77d | MECHANICAL [1396.8 h]; Cost |  |  | C04ME21121C0 | PP3BM21107C0 | PA | C |  | P2 | M1 | ME | 211 | 07 | PB | N | BILL 2 | B02 | S1 | FF | R00 | ACF07 | PB-2 | 211 | FF | MEP |  |  |
| PP2BM23010C0 |  | PA-P2 ; Final Fix, Inst of Grilles & Diffusers (Mech RM)_PB-2 | 18d | 2012-11-05 | 2012-11-27 | PP2BM23009C0, PGLS103331C410, PGLS103331C420, PGLS103331C380, PGLS103331C390, PGLS103331C400, PGLS703394C10, PGLS703394C20, PGLS103391C240, PGLS103391C230, PGLS103371C250, PGLS103391C210 | 96.24d | 0d | MECHANICAL [495.6 h]; Cost |  |  | C04ME23021C0 | PP3BM23010C0 | PA | C |  | P2 | M1 | ME | 230 | 10 | PB | N | BILL 2 | B02 | S1 | FF | R00 | ACF07 | PB-2 | 230 | FF | MEP |  |  |
| PP2BM09203C0 |  | PA-P2 ; Partitions Closing (Mech RM)_PB-2 | 27d | 2012-11-07 | 2012-12-11 | PAFOA09201C1 FF, PP2BM09202C0, PP2BM22001C0, PP2BM22003C0, PP2BM08102C0 FF, PGLS103331C410, PGLS103331C420, PGLS103331C380, PGLS103331C390, PGLS103331C400, PGLS703394C10, PGLS703394C20, PGLS103391C240, PGLS103391C230, PGLS103371C250, PGLS103391C210 | 19.24d | 0d | PARTITIONS [4 m]; PARTITIONS [18 h]; Cost | 315 | 1464 | C04ME09205C0 | PP3BM09203C0 | PA | C |  | P2 | M1 | PT | 092 | 03 | PB | N | BILL 2 | B02 | S1 | FF | R00 | ACF06 | PB-2 | 092 |  | GP | P2F |  |
| PP2BM09901C0 |  | PA-P2 ; Wall - final Paint (Mech RM)_PB-2 | 12d | 2012-11-20 | 2012-12-05 | PP2BM09902C0, PGLS103331C410, PGLS103331C420, PGLS103331C380, PGLS103331C390, PGLS103331C400, PGLS703394C10, PGLS703394C20, PGLS103391C240, PGLS103391C230, PGLS103371C250, PGLS103391C210, PP2BM23006C0 | 90.24d | 71d | WALL PAINT [214 h]; WALL PAINT [265 m2]; Cost | 329 | 1470 | C04ME09903C0 | PP3BM09901C0 | PA | C |  | P2 | M1 | PA | 099 | 01 | PB | N | BILL 2 | B02 | S1 | 02 | R00 | ACF06 | PB-2 | 099 |  |  |  |  |
| PP2BM26007C0 |  | PA-P2 ; Final Fix, Inst of Light fittings (Mech RM)_PB-2 | 18d | 2012-11-20 | 2012-12-12 | PP2BM09902C0, PGLS103331C410, PGLS103331C420, PGLS103331C380, PGLS103331C390, PGLS103331C400, PGLS703394C10, PGLS703394C20, PGLS103391C240, PGLS103391C230, PGLS103371C250, PGLS103391C210, PP2BM26005C0 | 84.24d | 65d | ELECTRICAL [3124.8 h]; Cost |  |  | C04ME26019C0 | PP3BM26007C0 | PA | C |  | P2 | M1 | ME | 260 | 07 | PB | N | BILL 2 | B02 | S1 | FF | R00 | ACF07 | PB-2 | 260 | FF | MEP |  |  |
| PP2BM26008C0 |  | PA-P2 ; Final Fix, Inst of Switch/Sockets (Mech RM)_PB-2 | 18d | 2012-11-20 | 2012-12-12 | PP2BM09902C0, PGLS103331C410, PGLS103331C420, PGLS103331C380, PGLS103331C390, PGLS103331C400, PGLS703394C10, PGLS703394C20, PGLS103391C240, PGLS103391C230, PGLS103371C250, PGLS103391C210, PP2BM26005C0 | 84.24d | 65d | ELECTRICAL [124.8 h]; Cost |  |  | C04ME26017C0 | PP3BM26008C0 | PA | C |  | P2 | M1 | ME | 260 | 08 | PB | N | BILL 2 | B02 | S1 | FF | R00 | ACF07 | PB-2 | 260 | FF | MEP |  |  |
| PP2BM27005C0 |  | PA-P2 ; Final Fix, Inst of ELV device (Detector/Speaker) (Mech RM)_PB-2 | 18d | 2012-11-20 | 2012-12-12 | PP2BM09902C0, PP2BM23006C0, PP2BM27003C0, PGLS103331C410, PGLS103331C420, PGLS103331C380, PGLS103331C390, PGLS103331C400, PGLS703394C10, PGLS703394C20, PGLS103391C240, PGLS103391C230, PGLS103371C250, PGLS103391C210 | 84.24d | 65d | ELECTRICAL [78 h]; Cost |  |  | C04ME27030C0 | PP3BM27005C0 | PA | C |  | P2 | M1 | ME | 270 | 05 | PB | N | BILL 2 | B02 | S1 | FF | R00 | ACF07 | PB-2 | 270 | FF | MEP |  |  |
| PP2BM08701C0 |  | PA-P2 ; Ironmongery (Mech RM)_PB-2 | 14d | 2012-11-24 | 2012-12-11 | PP2BM08101C0, PP2BM08103C0, PGLS103331C410, PGLS103331C420, PGLS103331C380, PGLS103331C390, PGLS103331C400, PGLS703394C10, PGLS703394C20, PGLS103391C240, PGLS103391C230, PGLS103371C250, PGLS103391C210 | 85.49d | 66.25d | IRONMONGERY [30 h]; IRONMONGERY [3 no]; Cost | 322 | 1467 | C04ME08709C0 | PP3BM08701C0 | PA | C | 08 | P2 | M1 | DO | 087 | 01 | PB | N | BILL 2 | B02 | S1 | IM | R00 | ACF06 | PB-2 | 087 |  |  |  |  |
| PP2BM21106C0 |  | PA-P2 ; Final Fix, Inst of Fire Extinguishers/FHC (Mech RM)_PB-2 | 18d | 2012-12-11 | 2013-01-02 | PP2BM09203C0, PGLS103331C410, PGLS103331C420, PGLS103331C380, PGLS103331C390, PGLS103331C400, PGLS703394C10, PGLS703394C20, PGLS103391C240, PGLS103391C230, PGLS103371C250, PGLS103391C210 | 67.24d | 48d | MECHANICAL [2016 h]; Cost |  |  | C04ME21123C0 | PP3BM21106C0 | PA | C |  | P2 | M1 | ME | 211 | 06 | PB | N | BILL 2 | B02 | S1 | FF | R00 | ACF07 | PB-2 | 211 | FF | MEP |  |  |
| PP2BM26006C0 |  | PA-P2 ; Final Fix, Inst of Ceiling rose (Mech RM)_PB-2 | 18d | 2012-12-11 | 2013-01-02 | PP2BM09203C0, PGLS103331C410, PGLS103331C420, PGLS103331C380, PGLS103331C390, PGLS103331C400, PGLS703394C10, PGLS703394C20, PGLS103391C240, PGLS103391C230, PGLS103371C250, PGLS103391C210 | 19.24d | 0d | ELECTRICAL [25.2 h]; Cost |  |  | C04ME26015C0 | PP3BM26006C0 | PA | C |  | P2 | M1 | ME | 260 | 06 | PB | N | BILL 2 | B02 | S1 | FF | R00 | ACF07 | PB-2 | 260 | FF | MEP |  |  |
| PP2BM26009C0 |  | PA-P2 ; Final Fix, Termination & Gladding of Cables (Mech RM)_PB-2 | 18d | 2012-12-11 | 2013-01-02 | PP2BM09203C0, PP2BM26005C0, LAFGN26001R02 FF, PGLS103331C410, PGLS103331C420, PGLS103331C380, PGLS103331C390, PGLS103331C400, PGLS703394C10, PGLS703394C20, PGLS103391C240, PGLS103391C230, PGLS103371C250, PGLS103391C210 | 67.24d | 48d | ELECTRICAL [512.4 h]; Cost |  |  | C04ME26013C0 | PP3BM26009C0 | PA | C |  | P2 | M1 | ME | 260 | 09 | PB | N | BILL 2 | B02 | S1 | FF | R00 | ACF07 | PB-2 | 260 | FF | MEP |  |  |
| PP2BM09601C0 |  | PA-P2 ; Floor Finishes (Mech RM)_PB-2 | 30d | 2013-01-02 | 2013-02-07 | PP2BM09203C0, PGLS103331C410, PGLS103331C420, PGLS103331C380, PGLS103331C390, PGLS103331C400, PGLS703394C10, PGLS703394C20, PGLS103391C240, PGLS103391C230, PGLS103371C250, PGLS103391C210, PP2BM26006C0 | 19.24d | 0d | ASSORTED FLOOR FINISH [1704 h]; ASSORTED FLOOR FINISH [944 m2]; Cost | 326 | 1501 | C04ME09601C0 | PP3BM09601C0 | PA | C |  | P2 | M1 | FF | 096 | 01 | PB | N | BILL 2 | B02 | S1 | 01 | R00 | ACF06 | PB-2 | FF |  |  |  |  |
| PP2BM22004C0 |  | PA-P2 ; Final Fix, Inst of All drain (Mech RM)_PB-2 | 18d | 2013-02-07 | 2013-02-28 | PP2BM09601C0, PGLS103331C410, PGLS103331C420, PGLS103331C380, PGLS103331C390, PGLS103331C400, PGLS703394C10, PGLS703394C20, PGLS103391C240, PGLS103391C230, PGLS103371C250, PGLS103391C210, PV10AF26006R2 FF | 19.24d | 0d | PLUMBING [2156.4 h]; Cost |  |  | C04ME22003C0 | PP3BM22004C0 | PA | C |  | P2 | M1 | ME | 220 | 04 | PB | N | BILL 2 | B02 | S1 | FF | R00 | ACF07 | PB-2 | 220 | FF | MEP |  |  |

| ID | WBS | Activity | Duration | Start | Finish | Predecessors | Complete | Remaining | Planned start | Planned finish | Total float | Free float | Resources | Cost | Actual cost | Change Order # | NEW ACTIVITY ID | change id | IDDD | CCAD BUILDING(SET) | CCAD PHASE(SET) | CCAD FLOOR(SET) | CCAD ZONE(SET) | CCAD WORK(SET) | CCAD SECTION(SET) | CCAD SERIAL No.(SET) | CCAD Carpark code(SET) | CCAD Carpark district code(set) | CCAD CBS(SET) | CCAD BILL(SET) | CCAD HANDOVER(SET) | CCAD TAG(SET) | CCAD REV(SET) | CCADACF (SET) | FSP CODE | CCAD SSCF | CCAD SUB ZONE MEP(SET) | CCAD CSA | Act Selector % | user_number8 | user_integer1 | user_integer2 | user_number7 | P_811 | P_711 |
| --- | --- | --- | --- | --- | --- | --- | --- | --- | --- | --- | --- | --- | --- | --- | --- | --- | --- | --- | --- | --- | --- | --- | --- | --- | --- | --- | --- | --- | --- | --- | --- | --- | --- | --- | --- | --- | --- | --- | --- | --- | --- | --- | --- | --- | --- |
|  | CP1 | **PARKING AREA : Zone PC-1** |  | 2011-12-13 | 2012-10-01 |  |  |  |  |  |  |  |  |  |  |  |  |  |  |  |  |  |  |  |  |  |  |  |  |  |  |  |  |  |  |  |  |  |  |  |  |  |  |  |  |
| PP2CP09901C10 |  | PA-P2 ; Prime & 1st coat (Wall & Ceiling) (Parking Area)_PC-1 | 18d | 2011-12-13 | 2012-01-04 | PGLS603391C0 SS, PGLS703391C0 SS, PP3CP09901C10 |  |  |  |  | 23.2d | 0d | CEILING PAINT [1729 h]; WALL PAINT [374 h]; CEILING PAINT [2157 m2]; WALL PAINT [465.6 m2]; Cost |  |  | 328 | 956 | CP3PA09901C0 | PP2CP09901C0 | PA | C | P2 | PK | PA | 099 | 01 | PC | S | BILL 2 | B02 | S2 | 01 | R00 | ACF06 | PC-1 | 099 |  |  |  |  |  |  |  |  |  |
| PP2CP21114C10 |  | PA-P2 ; 1st Fix, Fire Fighting system (Parking Area)_PC-1 | 30d | 2012-01-18 | 2012-02-23 | PP2CP09901C10, PP3CP21114C10 |  |  |  |  | 11.2d | 0d | MECHANICAL [482.4 h]; Cost |  |  |  |  | CP3PA21109C0 | PP2CP21114C0 | PA | C | P2 | PK | ME | 211 | 14 | PC | S | BILL 2 | B02 | S2 | 1F | R00 | ACF04 | PC-1 | 211 | 1S | MEP | M1F |  |  |  |  |  |  |
| PP2CP21124C10 |  | PA-P2 ; 2nd Fix, Fire Fighting system (Parking Area)_PC-1 | 30d | 2012-02-23 | 2012-03-29 | PP2CP21114C10 |  |  |  |  | 113.2d | 102d | MECHANICAL [678 h]; Cost |  |  |  |  | CP3PA21115C0 | PP2CP21124C0 | PA | C | P2 | PK | ME | 211 | 24 | PC | S | BILL 2 | B02 | S2 | 2F | R00 | ACF07 | PC-1 | 211 | 2n | MEP |  |  |  |  |  |  |  |
| PP2CP22015C10 |  | PA-P2 ; 1st Fix, Plumbing / Drainage System (Parking Area)_PC-1 | 30d | 2012-02-23 | 2012-03-29 | PP2CP21114C10 SS, PP2CP09901C10, PP2CP21114C10 |  |  |  |  | 29.2d | 0d | PLUMBING [1293.6 h]; Cost |  |  |  |  | CP3PA22001C0 | PP2CP22015C0 | PA | C | P2 | PK | ME | 220 | 15 | PC | S | BILL 2 | B02 | S2 | 1F | R00 | ACF04 | PC-1 | 220 | 1S | MEP | M1F |  |  |  |  |  |  |
| PP2CP22025C10 |  | PA-P2 ; 2nd Fix, Plumbing / Drainage System (Parking Area)_PC-1 | 30d | 2012-03-29 | 2012-05-03 | PP2CP22015C10 |  |  |  |  | 92.2d | 81d | PLUMBING [1597.2 h]; Cost |  |  |  |  | CP3PA22011C0 | PP2CP22025C0 | PA | C | P2 | PK | ME | 220 | 25 | PC | S | BILL 2 | B02 | S2 | 2F | R00 | ACF07 | PC-1 | 220 | 2n | MEP |  |  |  |  |  |  |  |
| PP2CP23011C10 |  | PA-P2 ; 1st Fix, CHW / HVAC System (Parking Area)_PC-1 | 30d | 2012-03-29 | 2012-05-03 | PP2CP22015C10 SS, PP2CP09901C10, PP2CP22015C10 |  |  |  |  | 29.2d | 0d | MECHANICAL [3345.6 h]; Cost |  |  |  |  | CP3PA23001C0 | PP2CP23011C0 | PA | C | P2 | PK | ME | 230 | 11 | PC | S | BILL 2 | B02 | S2 | 1F | R00 | ACF04 | PC-1 | 230 | 1S | MEP | M1F |  |  |  |  |  |  |
| PP2CP23021C10 |  | PA-P2 ; 2nd Fix, CHW / HVAC System (Parking Area)_PC-1 | 30d | 2012-05-03 | 2012-06-07 | PP2CP23011C10 |  |  |  |  | 71.2d | 60d | MECHANICAL [3345.6 h]; Cost |  |  |  |  | CP3PA23011C0 | PP2CP23021C0 | PA | C | P2 | PK | ME | 230 | 21 | PC | S | BILL 2 | B02 | S2 | 2F | R00 | ACF07 | PC-1 | 230 | 2n | MEP |  |  |  |  |  |  |  |
| PP2CP26012C10 |  | PA-P2 ; 1st Fix, Electrical System (Parking Area)_PC-1 | 30d | 2012-05-03 | 2012-06-07 | PP2CP21114C10 SS, PP2CP09901C10, PP2CP23011C10 |  |  |  |  | 29.2d | 0d | ELECTRICAL [3112.8 h]; Cost |  |  |  |  | CP3PA26001C0 | PP2CP26012C0 | PA | C | P2 | PK | ME | 260 | 12 | PC | S | BILL 2 | B02 | S2 | 1F | R00 | ACF04 | PC-1 | 260 | 1S | MEP | M1F |  |  |  |  |  |  |
| PP2CP26022C10 |  | PA-P2 ; 2nd Fix, Electrical System (Parking Area)_PC-1 | 30d | 2012-06-07 | 2012-07-14 | PP2CP26012C10 |  |  |  |  | 50.2d | 39d | ELECTRICAL [3112.8 h]; Cost |  |  |  |  | CP3PA26005C0 | PP2CP26022C0 | PA | C | P2 | PK | ME | 260 | 22 | PC | S | BILL 2 | B02 | S2 | 2F | R00 | ACF07 | PC-1 | 260 | 2n | MEP |  |  |  |  |  |  |  |
| PP2CP27013C10 |  | PA-P2 ; 1st Fix, ELV system (Parking Area)_PC-1 | 30d | 2012-06-07 | 2012-07-14 | PP2CP09901C10, PP2CP26012C10 |  |  |  |  | 29.2d | 0d | ELECTRICAL [506.4 h]; Cost |  |  |  |  | CP3PA27010C0 | PP2CP27013C0 | PA | C | P2 | PK | ME | 270 | 13 | PC | S | BILL 2 | B02 | S2 | 1F | R00 | ACF04 | PC-1 | 270 | 1S | MEP | M1F |  |  |  |  |  |  |
| PP2CP27023C10 |  | PA-P2 ; 2nd Fix, ELV system (Parking Area)_PC-1 | 30d | 2012-07-14 | 2012-08-18 | PP2CP27013C10 |  |  |  |  | 29.2d | 18d | ELECTRICAL [506.4 h]; Cost |  |  |  |  | CP3PA27020C0 | PP2CP27023C0 | PA | C | P2 | PK | ME | 270 | 23 | PC | S | BILL 2 | B02 | S2 | 2F | R00 | ACF07 | PC-1 | 270 | 2n | MEP |  |  |  |  |  |  |  |
| PP2CP09902C10 |  | PA-P2 ; 2nd coat (Wall & Ceiling) (Parking Area)_PC-1 | 18d | 2012-07-28 | 2012-08-18 | PP2CP09901C10, PGLS703391C10, PGLS603391C10, PP1S103331C320, PP1S103331C310 |  |  |  |  | 47.2d | 39d | CEILING PAINT [931 h]; WALL PAINT [201 h]; CEILING PAINT [1161.6 m2]; WALL PAINT [250.8 m2]; Cost |  |  | 329 | 957 | CP3PA09903C0 | PP2CP09902C0 | PA | C | P2 | PK | PA | 099 | 02 | PC | S | BILL 2 | B02 | S2 | 02 | R00 | ACF06 | PC-1 | 099 |  |  |  |  |  |  |  |  |  |
| PP2CP21113C10 |  | PA-P2 ; Final Fix, Fire Fighting system (Parking Area)_PC-1 | 9d | 2012-07-28 | 2012-08-07 | PP2CP21124C10, PGLS703391C10, PGLS603391C10, PP1S103331C320, PP1S103331C310 |  |  |  |  | 11.2d | 0d | MECHANICAL [482.4 h]; Cost |  |  |  |  | CP3PA21113C0 | PP2CP21113C0 | PA | C | P2 | PK | ME | 211 | 13 | PC | S | BILL 2 | B02 | S2 | FF | R00 | ACF07 | PC-1 | 211 | FF | MEP |  |  |  |  |  |  |  |
| PP2CP22011C10 |  | PA-P2 ; Final Fix, Drainage System (Parking Area)_PC-1 | 9d | 2012-08-07 | 2012-08-18 | PP2CP22025C10, PGLS703391C10, PGLS603391C10, PP1S103331C320, PP1S103331C310, PP2CP21113C10 |  |  |  |  | 11.2d | 0d | PLUMBING [1293.6 h]; Cost |  |  |  |  | CP3PA22011C0 | PP2CP22011C0 | PA | C | P2 | PK | ME | 220 | 11 | PC | S | BILL 2 | B02 | S2 | FF | R00 | ACF07 | PC-1 | 220 | FF | MEP |  |  |  |  |  |  |  |
| PP2CP23019C10 |  | PA-P2 ; Final Fix, CHW / HVAC System (Parking Area)_PC-1 | 9d | 2012-08-18 | 2012-08-30 | PP2CP23021C10, PGLS703391C10, PGLS603391C10, PP1S103331C320, PP1S103331C310, PP2CP22011C10 |  |  |  |  | 11.2d | 0d | MECHANICAL [3345.6 h]; Cost |  |  |  |  | CP3PA23019C0 | PP2CP23019C0 | PA | C | P2 | PK | ME | 230 | 19 | PC | S | BILL 2 | B02 | S2 | FF | R00 | ACF07 | PC-1 | 230 | FF | MEP |  |  |  |  |  |  |  |
| PP2CP26017C10 |  | PA-P2 ; Final Fix, Electrical System (Parking Area)_PC-1 | 9d | 2012-08-30 | 2012-09-10 | PP2CP26022C10, PGLS703391C10, PGLS603391C10, PP1S103331C320, PP1S103331C310, PP2CP23019C10 |  |  |  |  | 11.2d | 0d | ELECTRICAL [3112.8 h]; Cost |  |  |  |  | CP3PA26017C0 | PP2CP26017C0 | PA | C | P2 | PK | ME | 260 | 17 | PC | S | BILL 2 | B02 | S2 | FF | R00 | ACF07 | PC-1 | 260 | FF | MEP |  |  |  |  |  |  |  |
| PP2CP09903C10 |  | PA-P2 ; Concrete Sealer (Floor) (Parking Area)_PC-1 | 9d | 2012-09-10 | 2012-09-20 | PP2CP21113C10 FF, PP2CP22011C10 FF, PP2CP23019C10 FF, PP2CP26017C10 FF, PP2CP27030C10 FF, PGLS703391C10, PGLS603391C10, PP1S103331C320, PP1S103331C310 |  |  |  |  | 11.2d | 0d | ASSORTED FLOOR FINISH [2904 h]; ASSORTED FLOOR FINISH [1612.2 m2]; Cost |  |  |  |  | AP2PK09903C0 | PP2CP09903C0 | PA | C | P2 | PK | FF | 096 | 03 | PC | S | BILL 2 | B02 | S2 | 05 | R00 | ACF06 | PC-1 | CS |  |  |  |  |  |  |  |  |  |
| PP2CP27030C10 |  | PA-P2 ; Final Fix, ELV system (Parking Area)_PC-1 | 9d | 2012-09-10 | 2012-09-20 | PP2CP27023C10, PP2CP27023C10 FF, PGLS703391C10, PGLS603391C10, PP1S103331C320, PP1S103331C310, PP2CP26017C10 |  |  |  |  | 11.2d | 0d | ELECTRICAL [506.4 h]; Cost |  |  |  |  | CP3PA27030C0 | PP2CP27030C0 | PA | C | P2 | PK | ME | 270 | 30 | PC | S | BILL 2 | B02 | S2 | FF | R00 | ACF07 | PC-1 | 270 | FF | MEP |  |  |  |  |  |  |  |
| PP2CP05509C10 |  | PA-P2 ; Grill & Louvers (Parking Area)_PC-1 | 9d | 2012-09-20 | 2012-10-01 | PP2CP09903C10, PGLS703391C10, PGLS603391C10, PP1S103331C320, PP1S103331C310 |  |  |  |  | 11.2d | 3d | SECONDARY STEEL [223 h]; Cost |  |  | 328 | 956 | CP3PA09901C0 | PP3AP09901C0 | PA | C | P2 | PK | SW | 055 | 01 | PC | S | BILL 2 | B02 | S2 | 02 | R00 | ACF03 | PC-1 | 056 |  |  |  |  |  |  |  |  |  |
| PP2CP11004C10 |  | PA-P2 ; Floor Marking & Signage (Parking Area)_PC-1 | 9d | 2012-09-20 | 2012-10-01 | PP2CP09903C10, PP2CP11006C10 FF, PGLS703391C10, PGLS603391C10, PP1S103331C320, PP1S103331C310 |  |  |  |  | 11.2d | 3d | SIGNAGES [671 h]; SIGNAGES [93.6 no]; Cost |  |  |  |  | AP2PK11004C0 | PP2CP11004C0 | PA | C | P2 | PK | SA | 110 | 04 | PC | S | BILL 2 | B02 | S2 | 09 | R00 | ACF08 | PC-1 | c |  |  |  |  |  |  |  |  |  |
| PP2CP11006C10 |  | PA-P2 ; Wall Protection (WP, CG, WG, FCG) (Parking Area)_PC-1 | 9d | 2012-09-20 | 2012-10-01 | PP2CP09903C10, PGLS703391C10, PGLS603391C10, PP1S103331C320, PP1S103331C310 |  |  |  |  | 11.2d | 0d | FF&E [56 h]; Cost |  |  | 326 | 1001 | CP3PA11001C0 | PP2CP11006C0 | PA | C | P2 | PK | WF | 097 | 06 | PC | S | BILL 2 | B02 | S2 | 03 | R00 | ACF08 | PC-1 | 097 |  |  |  |  |  |  |  |  |  |
|  | CP2 | **PARKING AREA : Zone PC-2** |  | 2011-08-10 | 2012-09-17 |  |  |  |  |  |  |  |  |  |  |  |  |  |  |  |  |  |  |  |  |  |  |  |  |  |  |  |  |  |  |  |  |  |  |  |  |  |  |  |  |
| PP2CP21114C20 |  | PA-P2 ; 1st Fix, Fire Fighting system (Parking Area)_PC-2 | 9d | 2011-08-10 A | 2011-10-22 | PP2CP09901C20 | 95% | 0.45d | 2011-07-31 | 2011-08-09 | 261.55d | 0d | MECHANICAL [321.6 h]; Cost [21954.2 AED] | 21,954.21 | 20,856.5 |  |  | CP3PA21109C0 | PP2CP21114C0 | PA | C | P2 | PK | ME | 211 | 14 | PC | S | BILL 2 | B02 | S2 | 1F | R00 | ACF04 | PC-2 | 211 | 1S | MEP | M1F | 0 | 0 | 0 | 0 | 25 | 0 |
| PP2CP21124C20 |  | PA-P2 ; 2nd Fix, Fire Fighting system (Parking Area)_PC-2 | 4.8d | 2011-08-10 A | 2011-09-29 A | PP2CP21114C20 | 100% |  | 2011-08-10 | 2011-08-15 |  |  | MECHANICAL [452.4 h]; Cost [21954.2 AED] | 21,954.21 | 21,954.21 |  |  | CP3PA21115C0 | PP2CP21124C0 | PA | C | P2 | PK | ME | 211 | 24 | PC | S | BILL 2 | B02 | S2 | 2F | R00 | ACF07 | PC-2 | 211 | 2n | MEP |  |  |  |  |  | 25 | 0 |
| PP2CP22015C20 |  | PA-P2 ; 1st Fix, Plumbing / Drainage System (Parking Area)_PC-2 | 5d | 2011-08-10 A | 2011-09-29 A | PP2CP21114C20 SS, PP2CP26012C20 SS, PP2CP09901C20 | 100% |  | 2011-08-28 | 2011-09-05 |  |  | PLUMBING [862.8 h]; Cost [58871.8 AED] | 58,871.75 | 58,871.75 |  |  | CP3PA22001C0 | PP2CP22015C0 | PA | C | P2 | PK | ME | 220 | 15 | PC | S | BILL 2 | B02 | S2 | 1F | R00 | ACF04 | PC-2 | 220 | 1S | MEP | M1F |  |  |  |  | 50 | 0 |
| PP2CP22025C20 |  | PA-P2 ; 2nd Fix, Plumbing / Drainage System (Parking Area)_PC-2 | 9d | 2011-08-10 A | 2011-09-29 A | PP2CP22015C20 | 100% |  | 2011-09-05 | 2011-09-15 |  |  | PLUMBING [1065.6 h]; Cost [58871.8 AED] | 58,871.75 | 58,871.75 |  |  | CP3PA22011C0 | PP2CP22025C0 | PA | C | P2 | PK | ME | 220 | 25 | PC | S | BILL 2 | B02 | S2 | 2F | R00 | ACF07 | PC-2 | 220 | 2n | MEP |  |  |  |  |  | 50 | 0 |
| PP2CP23011C20 |  | PA-P2 ; 1st Fix, CHW / HVAC System (Parking Area)_PC-2 | 6d | 2011-08-10 A | 2011-09-29 A | PP2CP22015C20 SS, PP2CP09901C20 | 100% |  | 2012-05-01 | 2012-05-08 |  |  | MECHANICAL [2230.8 h]; Cost [152284 AED] | 152,284.12 | 152,284.12 |  |  | CP3PA23001C0 | PP2CP23011C0 | PA | C | P2 | PK | ME | 230 | 11 | PC | S | BILL 2 | B02 | S2 | 1F | R00 | ACF04 | PC-2 | 230 | 1S | MEP | M1F |  |  |  |  | 50 | 0 |
| PP2CP23021C20 |  | PA-P2 ; 2nd Fix, CHW / HVAC System (Parking Area)_PC-2 | 8.74d | 2011-08-10 A | 2011-10-25 | PP2CP23011C20 | 60% | 3.5d | 2012-05-08 | 2012-05-17 | 270.5d | 247.3d | MECHANICAL [2230.8 h]; Cost [152284 AED] | 152,284.12 | 91,370.47 |  |  | CP3PA23011C0 | PP2CP23021C0 | PA | C | P2 | PK | ME | 230 | 21 | PC | S | BILL 2 | B02 | S2 | 2F | R00 | ACF07 | PC-2 | 230 | 2n | MEP |  | 0 | 0 | 0 | 0 | 10 | 0 |
| PP2CP26012C20 |  | PA-P2 ; 1st Fix, Electrical System (Parking Area)_PC-2 | 10.78d | 2011-08-10 A | 2011-10-23 | PP2CP21114C20 SS, PP2CP09901C20 | 90% | 1.08d | 2011-08-16 | 2011-08-28 | 268d | 0d | ELECTRICAL [2074.8 h]; Cost [139137 AED] | 139,137.27 | 125,223.54 |  |  | CP3PA26001C0 | PP2CP26012C0 | PA | C | P2 | PK | ME | 260 | 12 | PC | S | BILL 2 | B02 | S2 | 1F | R00 | ACF04 | PC-2 | 260 | 1S | MEP | M1F |  |  |  |  | 50 | 0 |
| PP2CP27013C20 |  | PA-P2 ; 1st Fix, ELV system (Parking Area)_PC-2 | 9d | 2011-08-10 A | 2011-10-23 | PP2CP26012C20 SS, PP2CP09901C20 | 85% | 1.35d | 2011-09-04 | 2011-09-13 | 279.03d | 0d | ELECTRICAL [337.2 h]; Cost [21051.9 AED] | 21,051.93 | 17,894.14 |  |  | CP3PA27010C0 | PP2CP27013C0 | PA | C | P2 | PK | ME | 270 | 13 | PC | S | BILL 2 | B02 | S2 | 1F | R00 | ACF04 | PC-2 | 270 | 1S | MEP | M1F | 0 | 0 | 0 | 0 | 25 | 0 |
| PP2CP11006C20 |  | PA-P2 ; Wall Protection (WP, CG, WG, FCG) (Parking Area)_PC-2 | 5d | 2011-09-05 A | 2012-09-11 | PP2CP09903C20, PGLS703391C10, PGLS603391C10, PP1S103331C320, PP1S103331C310 | 94% | 0.28d | 2012-07-26 | 2012-08-01 | 28.92d | 5.72d | FF&E [39 h]; Cost |  |  | 326 | 1001 | CP3PA11001C0 | PP2CP11006C0 | PA | C | P2 | PK | WF | 097 | 06 | PC | S | BILL 2 | B02 | S2 | 03 | R00 | ACF08 | PC-2 | 097 |  |  |  |  |  |  |  |  |  |
| PP2CP26022C20 |  | PA-P2 ; 2nd Fix, Electrical System (Parking Area)_PC-2 | 6d | 2011-09-05 A | 2011-10-23 | PP2CP26012C20 | 85% | 0.89d | 2011-09-07 | 2011-09-14 | 278.03d | 254.83d | ELECTRICAL [2074.8 h]; Cost [139137 AED] | 139,137.27 | 118,266.68 |  |  | CP3PA26005C0 | PP2CP26022C0 | PA | C | P2 | PK | ME | 260 | 22 | PC | S | BILL 2 | B02 | S2 | 2F | R00 | ACF07 | PC-2 | 260 | 2n | MEP |  |  |  |  |  |  |  |
| PP2CP09901C20 |  | PA-P2 ; Prime & 1st coat (Wall & Ceiling) (Parking Area)_PC-2 | 18d | 2011-10-01 | 2011-10-20 | PGLS703392C0 |  |  |  |  | 256d | 0d | CEILING PAINT [1152 h]; WALL PAINT [249 h]; CEILING PAINT [1438 m2]; WALL PAINT [310.4 m2]; Cost |  |  | 328 | 956 | CP3PA09901C0 | PP2CP09901C0 | PA | C | P2 | PK | PA | 099 | 01 | PC | S | BILL 2 | B02 | S2 | 01 | R00 | ACF06 | PC-2 | 099 |  |  |  |  |  |  |  |  |  |
| PP2CP27023C20 |  | PA-P2 ; 2nd Fix, ELV system (Parking Area)_PC-2 | 5.62d | 2011-10-23 | 2011-10-29 | PP2CP27013C20 |  |  |  |  | 279.03d | 255.83d | ELECTRICAL [337.2 h]; Cost |  |  |  |  | CP3PA27020C0 | PP2CP27023C0 | PA | C | P2 | PK | ME | 270 | 23 | PC | S | BILL 2 | B02 | S2 | 2F | R00 | ACF07 | PC-2 | 270 | 2n | MEP |  |  |  |  |  |  |  |
| PP2CP09902C20 |  | PA-P2 ; 2nd coat (Wall & Ceiling) (Parking Area)_PC-2 | 6d | 2012-07-28 | 2012-08-04 | PP2CP09901C20, PGLS703391C10, PGLS603391C10, PP1S103331C320, PP1S103331C310 |  |  |  |  | 23.2d | 0d | CEILING PAINT [620 h]; WALL PAINT [135 h]; CEILING PAINT [774.4 m2]; WALL PAINT [167.2 m2]; Cost |  |  | 329 | 957 | CP3PA09903C0 | PP2CP09902C0 | PA | C | P2 | PK | PA | 099 | 02 | PC | S | BILL 2 | B02 | S2 | 02 | R00 | ACF06 | PC-2 | 099 |  |  |  |  |  |  |  |  |  |
| PP2CP21113C20 |  | PA-P2 ; Final Fix, Fire Fighting system (Parking Area)_PC-2 | 6d | 2012-08-04 | 2012-08-11 | PP2CP09902C20, PP2CP21124C20, PGLS703391C10, PGLS603391C10, PP1S103331C320, PP1S103331C310 |  |  |  |  | 23.2d | 0d | MECHANICAL [321.6 h]; Cost |  |  |  |  | CP3PA21113C0 | PP2CP21113C0 | PA | C | P2 | PK | ME | 211 | 13 | PC | S | BILL 2 | B02 | S2 | FF | R00 | ACF07 | PC-2 | 211 | FF | MEP |  |  |  |  |  |  |  |
| PP2CP22011C20 |  | PA-P2 ; Final Fix, Drainage System (Parking Area)_PC-2 | 6d | 2012-08-11 | 2012-08-18 | PP2CP09902C20, PP2CP22025C20, PGLS703391C10, PGLS603391C10, PP1S103331C320, PP1S103331C310, PP2CP21113C20 |  |  |  |  | 23.2d | 0d | PLUMBING [862.8 h]; Cost |  |  |  |  | CP3PA22011C0 | PP2CP22011C0 | PA | C | P2 | PK | ME | 220 | 11 | PC | S | BILL 2 | B02 | S2 | FF | R00 | ACF07 | PC-2 | 220 | FF | MEP |  |  |  |  |  |  |  |
| PP2CP23019C20 |  | PA-P2 ; Final Fix, CHW / HVAC System (Parking Area)_PC-2 | 6d | 2012-08-18 | 2012-08-27 | PP2CP09902C20, PP2CP23021C20, PGLS703391C10, PGLS603391C10, PP1S103331C320, PP1S103331C310, PP2CP22011C20 |  |  |  |  | 23.2d | 0d | MECHANICAL [2230.8 h]; Cost |  |  |  |  | CP3PA23019C0 | PP2CP23019C0 | PA | C | P2 | PK | ME | 230 | 19 | PC | S | BILL 2 | B02 | S2 | FF | R00 | ACF07 | PC-2 | 230 | FF | MEP |  |  |  |  |  |  |  |
| PP2CP26017C20 |  | PA-P2 ; Final Fix, Electrical System (Parking Area)_PC-2 | 6d | 2012-08-27 | 2012-09-03 | PP2CP09902C20, PP2CP26022C20, PGLS703391C10, PGLS603391C10, PP1S103331C320, PP1S103331C310, PP2CP23019C20 |  |  |  |  | 23.2d | 0d | ELECTRICAL [2074.8 h]; Cost |  |  |  |  | CP3PA26017C0 | PP2CP26017C0 | PA | C | P2 | PK | ME | 260 | 17 | PC | S | BILL 2 | B02 | S2 | FF | R00 | ACF07 | PC-2 | 260 | FF | MEP |  |  |  |  |  |  |  |
| PP2CP09903C20 |  | PA-P2 ; Concrete Sealer (Floor) (Parking Area)_PC-2 | 6d | 2012-09-03 | 2012-09-10 | PP2CP21113C20 FF, PP2CP22011C20 FF, PP2CP23019C20 FF, PP2CP26017C20 FF, PP2CP27030C20 FF, PGLS703391C10, PGLS603391C10, PP1S103331C320, PP1S103331C310 |  |  |  |  | 23.2d | 0d | ASSORTED FLOOR FINISH [1936 h]; ASSORTED FLOOR FINISH [1074.8 m2]; Cost |  |  |  |  | AP2PK09903C0 | PP2CP09903C0 | PA | C | P2 | PK | FF | 096 | 03 | PC | S | BILL 2 | B02 | S2 | 05 | R00 | ACF06 | PC-2 | CS |  |  |  |  |  |  |  |  |  |
| PP2CP27030C20 |  | PA-P2 ; Final Fix, ELV system (Parking Area)_PC-2 | 6d | 2012-09-03 | 2012-09-10 | PP2CP09902C20, PP2CP27023C20, PP2CP27023C20 FF, PGLS703391C10, PGLS603391C10, PP1S103331C320, PP1S103331C310, PP2CP26017C20 |  |  |  |  | 23.2d | 0d | ELECTRICAL [337.2 h]; Cost |  |  |  |  | CP3PA27030C0 | PP2CP27030C0 | PA | C | P2 | PK | ME | 270 | 30 | PC | S | BILL 2 | B02 | S2 | FF | R00 | ACF07 | PC-2 | 270 | FF | MEP |  |  |  |  |  |  |  |
| PP2CP05509C20 |  | PA-P2 ; Grill & Louvers (Parking Area)_PC-2 | 5.59d | 2012-09-10 | 2012-09-17 | PP2CP09903C20, PGLS703391C10, PGLS603391C10, PP1S103331C320, PP1S103331C310 |  |  |  |  | 23.61d | 15.41d | SECONDARY STEEL [149 h]; Cost |  |  | 328 | 956 | CP3PA09901C0 | PP3AP09901C0 | PA | C | P2 | PK | SW | 055 | 01 | PC | S | BILL 2 | B02 | S2 | 02 | R00 | ACF03 | PC-2 | 056 |  |  |  |  |  |  |  |  |  |
| PP2CP11004C20 |  | PA-P2 ; Floor Marking & Signage (Parking Area)_PC-2 | 6d | 2012-09-10 | 2012-09-17 | PP2CP09903C20, PP2CP11006C20 FF, PGLS703391C10, PGLS603391C10, PP1S103331C320, PP1S103331C310 |  |  |  |  | 23.2d | 15d | SIGNAGES [448 h]; SIGNAGES [62.4 no]; Cost |  |  |  |  | AP2PK11004C0 | PP2CP11004C0 | PA | C | P2 | PK | SA | 110 | 04 | PC | S | BILL 2 | B02 | S2 | 09 | R00 | ACF08 | PC-2 | c |  |  |  |  |  |  |  |  |  |

| ID | WBS | Activity | Duration | Start | Finish | Predecessors | Total float | Free float | Resources | NEW ACTIVITY ID | change id | IDDD | CCAD BUILDING(SET) | CCAD PHASE(SET) | CCAD FLOOR(SET) | CCAD ZONE(SET) | CCAD WORK(SET) | CCAD SECTION(SET) | CCAD SERIAL No.(SET) | CCAD Carpark code(SET) | CCAD Carpark district code(set) | CCAD CBS(SET) | CCAD BILL(SET) | CCAD HANDOVER(SET) | CCAD TAG(SET) | CCAD REV(SET) | CCADACF (SET) | FSP CODE | CCAD SSCF | Change Order # | CCAD CSA | Act Selector % | CCAD SUB ZONE MEP(SET) | CCAD DIVISION(SET) | CCAD MEQ |
| --- | --- | --- | --- | --- | --- | --- | --- | --- | --- | --- | --- | --- | --- | --- | --- | --- | --- | --- | --- | --- | --- | --- | --- | --- | --- | --- | --- | --- | --- | --- | --- | --- | --- | --- | --- |
|  | CE1 | **ELECTRICAL ROOMS (4 NOS.) : Zone PC-1** |  | 2012-01-08 | 2012-09-22 |  |  |  |  |  |  |  |  |  |  |  |  |  |  |  |  |  |  |  |  |  |  |  |  |  |  |  |  |  |  |
| PP2CE09903C10 |  | PA-P2 ; Ceiling Prime & 1st coat (Elec RM)_PC-1 | 18d | 2012-01-08 | 2012-01-29 | PGLS603391C0, PGLS703391C0, PP3CE09903C0 | 19.2d | 0d | ASSORTED CEILING FINISH [7 h]; Cost | 1544 | CP2ME09905C0 | PP2CE09903C0 | PA | C | P2 | ER | PA | 099 | 03 | PC | S | BILL 2 | B02 | S2 | 01 | R00 | ACF06 | PC-1 | 099 |  |  |  |  |  |  |
| PP2CE04001C10 |  | PA-P2 ; Block Wall Works (Elec RM)_PC-1 | 30d | 2012-01-29 | 2012-03-05 | PP2CE09903C10 | 19.2d | 0d | BLOCKWORKS [1207 h]; BLOCKWORKS [344.67 m2]; Cost |  | AP2ER04001C0 | PP2CE04001C0 | PA | C | P2 | ER | BL | 040 | 01 | PC | S | BILL 2 | B02 | S2 | BL | R00 | ACF06 | PC-1 | 040 |  |  |  |  |  |  |
| PP2CE09201C10 |  | PA-P2 ; Metal Studs (Elec RM)_PC-1 | 7d | 2012-03-05 | 2012-03-13 | PP2CE04001C10 | 146.2d | 0d | PARTITIONS [58 h]; PARTITIONS [8 m]; Cost | 1372 | CP2ME09201C0 | PP2CE09201C0 | PA | C | P2 | ER | PT | 092 | 01 | PC | S | BILL 2 | B02 | S2 | 1F | R00 | ACF06 | PC-1 | 092 | 313 | GP | PMS |  |  |  |
| PP2CE23001C10 |  | PA-P2 ; 1st Fix, Inst. of Supports for MEP (Elec RM)_PC-1 | 12d | 2012-03-05 | 2012-03-19 | PP2CE04001C10 | 19.2d | 0d | MECHANICAL [416.4 h]; Cost |  | CP2ME23010C0 | PP2CE23001C0 | PA | C | P2 | ER | ME | 230 | 01 | PC | S | BILL 2 | B02 | S2 | 1F | R00 | ACF04 | PC-1 | 230 |  | MEP | M1F | 1S |  |  |
| PP2CE08102C10 |  | PA-P2 ; Metal Door Frames (Elec RM)_PC-1 | 11d | 2012-03-13 | 2012-03-26 | PP2CE09201C10, GNHE08101C0 | 146.2d | 105d | METAL DOORS [91 h]; Cost | 1374 | CP2ME08101C0 | PP2CE08102C0 | PA | C | P2 | ER | DO | 081 | 02 | PC | S | BILL 2 | B02 | S2 | DF | R00 | ACF06 | PC-1 | 081 | 316 |  |  |  | 08 |  |
| PP2CE09202C10 |  | PA-P2 ; Partitions 1st face (Elec RM)_PC-1 | 12d | 2012-03-19 | 2012-04-02 | PP2CE09201C10 SS+12d | 146.2d | 99d | PARTITIONS [8 m]; PARTITIONS [43 h]; Cost | 1373 | CP2ME09203C0 | PP2CE09202C0 | PA | C | P2 | ER | PT | 092 | 02 | PC | S | BILL 2 | B02 | S2 | 2F | R00 | ACF06 | PC-1 | 092 | 314 | GP | P1F |  |  |  |
| PP2CE23002C10 |  | PA-P2 ; 1st Fix, Inst of CHW pipe (Elec RM)_PC-1 | 30d | 2012-03-19 | 2012-04-23 | PP2CE23001C10, PP2CE04001C10 | 78.2d | 30d | MECHANICAL [2065.2 h]; Cost |  | CP2ME23012C0 | PP2CE23002C0 | PA | C | P2 | ER | ME | 230 | 02 | PC | S | BILL 2 | B02 | S2 | 1F | R00 | ACF04 | PC-1 | 230 |  | MEP | M1F | 1S |  |  |
| PP2CE23003C10 |  | PA-P2 ; 1st Fix, Inst of Ducting (Elec RM)_PC-1 | 30d | 2012-03-19 | 2012-04-23 | PP2CE23001C10, PP2CE04001C10 | 19.2d | 0d | MECHANICAL [2631.6 h]; Cost |  | CP2ME23014C0 | PP2CE23003C0 | PA | C | P2 | ER | ME | 230 | 03 | PC | S | BILL 2 | B02 | S2 | 1F | R00 | ACF04 | PC-1 | 230 |  | MEP | M1F | 1S |  |  |
| PP2CE23007C10 |  | PA-P2 ; 2nd Fix, Inst of VAV'S CHW connection (Elec RM)_PC-1 | 30d | 2012-03-19 | 2012-04-23 | PP2CE23001C10 | 78.2d | 30d | MECHANICAL [33.6 h]; Cost |  | CP2ME23020C0 | PP2CE23007C0 | PA | C | P2 | ER | ME | 230 | 07 | PC | S | BILL 2 | B02 | S2 | 2F | R00 | ACF07 | PC-1 | 230 |  | MEP |  | 2n |  |  |
| PP2CE23010C10 |  | PA-P2 ; 2nd Fix, Insulation of CHW pipe & Duct (Elec RM)_PC-1 | 30d | 2012-03-19 | 2012-04-23 | PP2CE23001C10 | 78.2d | 30d | MECHANICAL [2468.4 h]; Cost |  | CP2ME23026C0 | PP2CE23010C0 | PA | C | P2 | ER | ME | 230 | 10 | PC | S | BILL 2 | B02 | S2 | 2F | R00 | ACF07 | PC-1 | 230 |  | MEP |  | 2n |  |  |
| PP2CE26001C10 |  | PA-P2 ; 1st Fix, Inst of Trunking/Conduiting (Elec RM)_PC-1 | 30d | 2012-03-19 | 2012-04-23 | PP2CE04001C10, PP2CE23001C10 | 78.2d | 0d | ELECTRICAL [128.4 h]; Cost |  | CP2ME26010C0 | PP2CE26001C0 | PA | C | P2 | ER | ME | 260 | 01 | PC | S | BILL 2 | B02 | S2 | 1F | R00 | ACF04 | PC-1 | 260 |  | MEP | M1F | 1S |  |  |
| PP2CE09902C10 |  | PA-P2 ; Wall Prime & 1st coat (Elec RM)_PC-1 | 18d | 2012-03-22 | 2012-04-12 | PP2CE04001C10 FS+15d | 82.2d | 0d | WALL PAINT [949 h]; WALL PAINT [1183.33 m2]; Cost | 1378 | CP2ME09901C0 | PP2CE09902C0 | PA | C | P2 | ER | PA | 099 | 02 | PC | S | BILL 2 | B02 | S2 | 01 | R00 | ACF06 | PC-1 | 099 | 328 |  |  |  |  |  |
| PP2CE08109C10 |  | PA-P2 ; Access Floor (Elec RM)_PC-1 | 6d | 2012-04-12 | 2012-04-19 | PP2CE09902C10 | 82.2d | 0d | ASSORTED FLOOR FINISH [288 h]; ASSORTED FLOOR FINISH [157.33 m2]; Cost | 1375 | CP2ER08105C0 |  | PA | C | P2 | ER | FF | 096 | 09 | PC | S | BILL 2 | B02 | S2 | 04 | R00 | ACF06 | PC-1 | AF | 317 |  |  |  | 08 |  |
| PP2CE26009C10 |  | PA-P2 ; 2nd Fix, Inst of Equipment (DB, TR, SG) (Elec RM)_PC-1 | 30d | 2012-04-19 | 2012-05-24 | PP2CE08109C10 | 82.2d | 54d | ELECTRICAL [795.6 h]; Cost |  | CP2ME26024C0 | PP2CE26009C0 | PA | C | P2 | ER | ME | 260 | 09 | PC | S | BILL 2 | B02 | S2 | 2F | R00 | ACF04 | PC-1 | 260 |  | MEP |  | 2n |  | E |
| PP2CE23004C10 |  | PA-P2 ; 1st Fix, Inst of VCD's/FD's (Elec RM)_PC-1 | 30d | 2012-04-23 | 2012-05-28 | PP2CE23003C10, PP2CE04001C10 | 48.2d | 0d | MECHANICAL [778.8 h]; Cost |  | CP2ME23016C0 | PP2CE23004C0 | PA | C | P2 | ER | ME | 230 | 04 | PC | S | BILL 2 | B02 | S2 | 1F | R00 | ACF04 | PC-1 | 230 |  | MEP | M1F | 1S |  |  |
| PP2CE23009C10 |  | PA-P2 ; 2nd Fix, Inst of VCD's/FD's (Elec RM)_PC-1 | 30d | 2012-04-23 | 2012-05-28 | PP2CE23003C10 | 48.2d | 0d | MECHANICAL [778.8 h]; Cost |  | CP2ME23024C0 | PP2CE23009C0 | PA | C | P2 | ER | ME | 230 | 09 | PC | S | BILL 2 | B02 | S2 | 2F | R00 | ACF07 | PC-1 | 230 |  | MEP |  | 2n |  |  |
| PP2CE26002C10 |  | PA-P2 ; 1st Fix, Inst of Cable Tray (Elec RM)_PC-1 | 30d | 2012-04-23 | 2012-05-28 | PP2CE04001C10, PP2CE23003C10 | 19.2d | 0d | ELECTRICAL [42 h]; Cost |  | CP2ME26012C0 | PP2CE26002C0 | PA | C | P2 | ER | ME | 260 | 02 | PC | S | BILL 2 | B02 | S2 | 1F | R00 | ACF04 | PC-1 | 260 |  | MEP | M1F | 1S |  |  |
| PP2CE26007C10 |  | PA-P2 ; 2nd Fix, Wiring for Power/Lighting/Emergency (Elec RM)_PC-1 | 30d | 2012-04-23 | 2012-05-28 | PP2CE26001C10 | 82.2d | 51d | ELECTRICAL [1057.2 h]; Cost |  | CP2ME26020C0 | PP2CE26007C0 | PA | C | P2 | ER | ME | 260 | 07 | PC | S | BILL 2 | B02 | S2 | 2F | R00 | ACF07 | PC-1 | 260 |  | MEP |  | 2n |  |  |
| PP2CE27002C10 |  | PA-P2 ; 1st Fix, Inst of Trunking for ELV system (Elec RM)_PC-1 | 30d | 2012-04-23 | 2012-05-28 | PP2CE04001C10, PP2CE23003C10 | 49.2d | 30d | ELECTRICAL [356.4 h]; Cost |  | CP2ME27010C0 | PP2CE27002C0 | PA | C | P2 | ER | ME | 270 | 02 | PC | S | BILL 2 | B02 | S2 | 1F | R00 | ACF04 | PC-1 | 270 |  | MEP | M1F | 1S |  |  |
| PP2CE09501C10 |  | PA-P2 ; Ceiling Grid and Service Tile (Elec RM)_PC-1 | 16d | 2012-05-28 | 2012-06-17 | PP2CE23002C10, PP2CE23003C10, PP2CE23004C10, PP2CE23007C10, PP2CE23009C10, PP2CE23010C10, PP2CE26001C10, PP2CE26002C10 | 48.2d | 0d | CEILING GRID FOR GYPSUM [6170.29 h]; CEILING GRID FOR GYPSUM [528.67 m2]; Cost | 1408 | CP2ME09501C0 | PP2CE09501C0 | PA | C | P2 | ER | CE | 095 | 01 | PC | S | BILL 2 | B02 | S2 | 01 | R00 | ACF06 | PC-1 | 095 | 323 |  |  |  |  |  |
| PP2CE26008C10 |  | PA-P2 ; 2nd Fix, Cable Pulling (Elec RM)_PC-1 | 30d | 2012-05-28 | 2012-07-03 | PP2CE26002C10 | 52.2d | 21d | ELECTRICAL [2731.2 h]; Cost |  | CP2ME26022C0 | PP2CE26008C0 | PA | C | P2 | ER | ME | 260 | 08 | PC | S | BILL 2 | B02 | S2 | 2F | R00 | ACF07 | PC-1 | 260 |  | MEP |  | 2n |  |  |
| PP2CE27001C10 |  | PA-P2 ; 1st Fix, Wiring/ Cabling work (Elec RM)_PC-1 | 30d | 2012-05-28 | 2012-07-03 | PP2CE27002C10 SS, PP2CE04001C10, PP2CE26002C10 | 19.2d | 0d | ELECTRICAL [51.6 h]; Cost |  | CP2ME27012C0 | PP2CE27001C0 | PA | C | P2 | ER | ME | 270 | 01 | PC | S | BILL 2 | B02 | S2 | 1F | R00 | ACF04 | PC-1 | 270 |  | MEP | M1F | 1S |  |  |
| PP2CE21104C10 |  | PA-P2 ; 2nd Fix, Inst of Sprinkler droppers (Elec RM)_PC-1 | 30d | 2012-06-17 | 2012-07-22 | PP2CE09501C10 | 201.2d | 133.12d | MECHANICAL [2350.8 h]; Cost |  | CP2ME21120C0 | PP2CE21104C0 | PA | C | P2 | ER | ME | 211 | 04 | PC | S | BILL 2 | B02 | S2 | 2F | R00 | ACF07 | PC-1 | 211 |  | MEP |  | 2n |  |  |
| PP2CE21105C10 |  | PA-P2 ; 2nd Fix, Inst of Zone Control Valve (Elec RM)_PC-1 | 30d | 2012-06-17 | 2012-07-22 | PP2CE09501C10 | 201.2d | 133.12d | MECHANICAL [708 h]; Cost |  | CP2ME21124C0 | PP2CE21105C0 | PA | C | P2 | ER | ME | 211 | 05 | PC | S | BILL 2 | B02 | S2 | 2F | R00 | ACF07 | PC-1 | 211 |  | MEP |  | 2n |  |  |
| PP2CE23006C10 |  | PA-P2 ; 2nd Fix, Inst of Flexible Duct & Plenum boxes (Elec RM)_PC-1 | 18d | 2012-06-17 | 2012-07-08 | PP2CE09501C10 | 48.2d | 17d | MECHANICAL [22.8 h]; Cost |  | CP2ME23032C0 | PP2CE23006C0 | PA | C | P2 | ER | ME | 230 | 06 | PC | S | BILL 2 | B02 | S2 | FF | R00 | ACF07 | PC-1 | 230 |  | MEP |  | FF |  |  |
| PP2CE27005C10 |  | PA-P2 ; 2nd Fix, Wiring Droppers (Elec RM)_PC-1 | 30d | 2012-06-17 | 2012-07-22 | PP2CE09501C10 | 201.2d | 133.12d | ELECTRICAL [51.6 h]; Cost |  | CP2ME27022C0 | PP2CE27005C0 | PA | C | P2 | ER | ME | 270 | 05 | PC | S | BILL 2 | B02 | S2 | 2F | R00 | ACF07 | PC-1 | 270 |  | MEP |  | 2n |  |  |
| PP2CE23008C10 |  | PA-P2 ; 2nd Fix, Inst of Equipment (FCU,FAN,PUMP) (Elec RM)_PC-1 | 30d | 2012-07-03 | 2012-08-07 | PP2CE27001C10, PP2CE26009C10 SS | 19.2d | 0d | MECHANICAL [1536 h]; Cost |  | CP2ME23022C0 | PP2CE23008C0 | PA | C | P2 | ER | ME | 230 | 08 | PC | S | BILL 2 | B02 | S2 | 2F | R00 | ACF04 | PC-1 | 230 |  | MEP |  | 2n |  | H |
| PP2CE27006C10 |  | PA-P2 ; 2nd Fix, Inst of ELV Equipment (Panels) (Elec RM)_PC-1 | 30d | 2012-07-03 | 2012-08-07 | PP2CE27001C10 | 187.2d | 119.12d | ELECTRICAL [122.4 h]; Cost |  | CP2ME27020C0 | PP2CE27006C0 | PA | C | P2 | ER | ME | 270 | 06 | PC | S | BILL 2 | B02 | S2 | 2F | R00 | ACF04 | PC-1 | 270 |  | MEP |  | 2n |  | E |
| PP2CE05501C10 |  | PA-P2 ; Handrails & balustrade (Elec RM)_PC-1 | 9.5d | 2012-07-28 | 2012-08-08 | PP2CE09902C10, PGLS703391C10, PGLS603391C10, PP1S103331C320, PP1S103331C310 | 55.7d | 47.5d | SECONDARY STEEL [291 h]; Cost |  | CP2ME05501C0 | PP2CE05501C0 | PA | C | P2 | ER | SW | 055 | 01 | PC | S | BILL 2 | B02 | S2 | 01 | R00 | ACF03 | PC-1 | a |  |  |  |  |  |  |
| PP2CE08103C10 |  | PA-P2 ; Metal Doors (Elec RM)_PC-1 | 11d | 2012-07-28 | 2012-08-09 | PP2CE08102C10, PGLS703391C10, PGLS603391C10, PP1S103331C320, PP1S103331C310 | 41.2d | 0d | METAL DOORS [80 h]; METAL DOORS [8 no]; Cost | 1375 | CP2ME08105C0 | PP2CE08103C0 | PA | C | P2 | ER | DO | 081 | 03 | PC | S | BILL 2 | B02 | S2 | DR | R00 | ACF06 | PC-1 | 081 | 317 |  |  |  | 08 |  |
| PP2CE09203C10 |  | PA-P2 ; Partitions Closing (Elec RM)_PC-1 | 18d | 2012-07-28 | 2012-08-18 | PAFOA09201C1 FF, PP2CE09202C10, PP2CE08102C10 FF, PGLS703391C10, PGLS603391C10, PP1S103331C320, PP1S103331C310 | 47.2d | 39d | PARTITIONS [8 m]; PARTITIONS [48 h]; Cost | 1540 | CP2ME09205C0 | PP2CE09203C0 | PA | C | P2 | ER | PT | 092 | 03 | PC | S | BILL 2 | B02 | S2 | FF | R00 | ACF06 | PC-1 | 092 |  | GP | P2F |  |  |  |
| PP2CE09502C10 |  | PA-P2 ; Ceiling closure (Elec RM)_PC-1 | 16d | 2012-07-28 | 2012-08-15 | PP2CE09501C10, PP2CE23006C10, PP2CE26007C10, PP2CE26008C10, PP2CE27001C10, PP2S3209500R02 FF, PGLS703391C10, PGLS603391C10, PP1S103331C320, PP1S103331C310 | 31.2d | 0d | ASSORTED CEILING FINISH [349.73 h]; CEILING GYPSUM [173.43 h]; ASSORTED CEILING FINISH [568.67 m2]; CEILING GYPSUM [528.67 m2]; Cost | 1409 | CP2ME09503C0 | PP2CE09502C0 | PA | C | P2 | ER | CE | 095 | 02 | PC | S | BILL 2 | B02 | S2 | 02 | R00 | ACF06 | PC-1 | 095 | 324 |  |  |  |  |  |
| PP2CE09901C10 |  | PA-P2 ; Wall - final Paint (Elec RM)_PC-1 | 7.5d | 2012-07-28 | 2012-08-06 | PP2CE09902C10, PGLS703391C10, PGLS603391C10, PP1S103331C320, PP1S103331C310 | 57.7d | 49.5d | WALL PAINT [512 h]; WALL PAINT [637.33 m2]; Cost | 1379 | CP2ME09903C0 | PP2CE09901C0 | PA | C | P2 | ER | PA | 099 | 01 | PC | S | BILL 2 | B02 | S2 | 02 | R00 | ACF06 | PC-1 | 099 | 329 |  |  |  |  |  |
| PP2CE09904C10 |  | PA-P2 ; Ceiling - final Paint (Elec RM)_PC-1 | 4d | 2012-07-28 | 2012-08-01 | PP2CE09903C10, PGLS703391C10, PGLS603391C10, PP1S103331C320, PP1S103331C310 | 61.2d | 53d | ASSORTED CEILING FINISH [4 h]; Cost | 1546 | CP2ME09907C0 | PP2CE09904C0 | PA | C | P2 | ER | PA | 099 | 04 | PC | S | BILL 2 | B02 | S2 | 02 | R00 | ACF06 | PC-1 | 099 |  |  |  |  |  |  |
| PP2CE26004C10 |  | PA-P2 ; Final Fix, Inst of Ceiling rose (Elec RM)_PC-1 | 18d | 2012-07-28 | 2012-08-18 | PP2CE09501C10, PGLS703391C10, PGLS603391C10, PP1S103331C320, PP1S103331C310 | 47.2d | 39d | ELECTRICAL [16.8 h]; Cost |  | CP2ME26032C0 | PP2CE26004C0 | PA | C | P2 | ER | ME | 260 | 04 | PC | S | BILL 2 | B02 | S2 | FF | R00 | ACF07 | PC-1 | 260 |  | MEP |  | FF |  |  |
| PP2CE27003C10 |  | PA-P2 ; Final Fix, BMS connection work to Equipment (Elec RM)_PC-1 | 18d | 2012-07-28 | 2012-08-18 | PP2CE26009C10, PGLS703391C10, PGLS603391C10, PP1S103331C320, PP1S103331C310 | 47.2d | 39d | ELECTRICAL [1556.4 h]; Cost |  | CP2ME27032C0 | PP2CE27003C0 | PA | C | P2 | ER | ME | 270 | 03 | PC | S | BILL 2 | B02 | S2 | FF | R00 | ACF07 | PC-1 | 270 |  | MEP |  | FF |  |  |
| PP2CE09601C10 |  | PA-P2 ; Flooring (Elec RM)_PC-1 | 19d | 2012-08-07 | 2012-09-01 | PP2CE09902C10, PP2CE09903C10, PP2CE23008C10, PGLS703391C10, PGLS603391C10, PP1S103331C320, PP1S103331C310 | 19.2d | 0d | ASSORTED FLOOR FINISH [4080 h]; ASSORTED FLOOR FINISH [2264.67 m2]; Cost | 1377 | CP2ME09601C0 | PP2CE09601C0 | PA | C | P2 | ER | FF | 096 | 01 | PC | S | BILL 2 | B02 | S2 | 01 | R00 | ACF06 | PC-1 | FF | 326 |  |  |  |  |  |
| PP2CE08701C10 |  | PA-P2 ; Ironmongery (Elec RM)_PC-1 | 13d | 2012-08-09 | 2012-08-27 | PP2CE08103C10, PGLS703391C10, PGLS603391C10, PP1S103331C320, PP1S103331C310 | 41.2d | 33d | IRONMONGERY [80 h]; IRONMONGERY [8 no]; Cost | 6230 | CP2ME08709C0 | PP2CE08701C0 | PA | C | P2 | ER | DO | 087 | 01 | PC | S | BILL 2 | B02 | S2 | IM | R00 | ACF06 | PC-1 | 087 | 322 |  |  |  | 08 |  |
| PP2CE21101C10 |  | PA-P2 ; Final Fix, Gaseous Fire Suppression Electrical Room (Elec RM)_PC-1 | 18d | 2012-08-15 | 2012-09-08 | PP2CE09502C10, PGLS703391C10, PGLS603391C10, PP1S103331C320, PP1S103331C310 | 31.2d | 23d | MECHANICAL [464.4 h]; Cost |  | CP2ME21109C0 | PP2CE21101C0 | PA | C | P2 | ER | ME | 211 | 01 | PC | S | BILL 2 | B02 | S2 | FF | R00 | ACF07 | PC-1 | 211 |  | MEP |  | FF |  |  |
| PP2CE21102C10 |  | PA-P2 ; Final Fix, Gaseous Fire Suppression Transformer room (Elec RM)_PC-1 | 18d | 2012-08-15 | 2012-09-08 | PP2CE09502C10, PGLS703391C10, PGLS603391C10, PP1S103331C320, PP1S103331C310 | 31.2d | 23d | MECHANICAL [464.4 h]; Cost |  | CP2ME21111C0 | PP2CE21102C0 | PA | C | P2 | ER | ME | 211 | 02 | PC | S | BILL 2 | B02 | S2 | FF | R00 | ACF07 | PC-1 | 211 |  | MEP |  | FF |  |  |
| PP2CE21103C10 |  | PA-P2 ; Final Fix, Gaseous Fire Suppression Telecom Room (Elec RM)_PC-1 | 18d | 2012-08-15 | 2012-09-08 | PP2CE09502C10, PGLS703391C10, PGLS603391C10, PP1S103331C320, PP1S103331C310 | 31.2d | 23d | MECHANICAL [464.4 h]; Cost |  | CP2ME21113C0 | PP2CE21103C0 | PA | C | P2 | ER | ME | 211 | 03 | PC | S | BILL 2 | B02 | S2 | FF | R00 | ACF07 | PC-1 | 211 |  | MEP |  | FF |  |  |
| PP2CE23005C10 |  | PA-P2 ; Final Fix, Inst of Grilles & Diffusers (Elec RM)_PC-1 | 18d | 2012-08-15 | 2012-09-08 | PP2CE09502C10, PGLS703391C10, PGLS603391C10, PP1S103331C320, PP1S103331C310 | 31.2d | 23d | MECHANICAL [330 h]; Cost |  | CP2ME23030C0 | PP2CE23005C0 | PA | C | P2 | ER | ME | 230 | 05 | PC | S | BILL 2 | B02 | S2 | FF | R00 | ACF07 | PC-1 | 230 |  | MEP |  | FF |  |  |
| PP2CE26003C10 |  | PA-P2 ; Final Fix, Termination & Gladding of Cables (Elec RM)_PC-1 | 18d | 2012-08-15 | 2012-09-08 | PP2CE09502C10, PGLS703391C10, PGLS603391C10, PP1S103331C320, PP1S103331C310 | 31.2d | 23d | ELECTRICAL [342 h]; Cost |  | CP2ME26030C0 | PP2CE26003C0 | PA | C | P2 | ER | ME | 260 | 03 | PC | S | BILL 2 | B02 | S2 | FF | R00 | ACF07 | PC-1 | 260 |  | MEP |  | FF |  |  |
| PP2CE26005C10 |  | PA-P2 ; Final Fix, Inst of Switch/Sockets (Elec RM)_PC-1 | 18d | 2012-08-15 | 2012-09-08 | PP2CE09502C10, PGLS703391C10, PGLS603391C10, PP1S103331C320, PP1S103331C310 | 31.2d | 23d | ELECTRICAL [82.8 h]; Cost |  | CP2ME26034C0 | PP2CE26005C0 | PA | C | P2 | ER | ME | 260 | 05 | PC | S | BILL 2 | B02 | S2 | FF | R00 | ACF07 | PC-1 | 260 |  | MEP |  | FF |  |  |
| PP2CE26006C10 |  | PA-P2 ; Final Fix, Inst of Light fittings (Elec RM)_PC-1 | 18d | 2012-08-15 | 2012-09-08 | PP2CE09502C10, PGLS703391C10, PGLS603391C10, PP1S103331C320, PP1S103331C310 | 31.2d | 23d | ELECTRICAL [2083.2 h]; Cost |  | CP2ME26039C0 | PP2CE26006C0 | PA | C | P2 | ER | ME | 260 | 06 | PC | S | BILL 2 | B02 | S2 | FF | R00 | ACF07 | PC-1 | 260 |  | MEP |  | FF |  |  |
| PP2CE27004C10 |  | PA-P2 ; Final Fix, Inst of ELV device (Detector/Speaker) (Elec RM)_PC-1 | 18d | 2012-08-15 | 2012-09-08 | PP2CE09502C10, PGLS703391C10, PGLS603391C10, PP1S103331C320, PP1S103331C310 | 31.2d | 23d | ELECTRICAL [51.6 h]; Cost |  | CP2ME27030C0 | PP2CE27004C0 | PA | C | P2 | ER | ME | 270 | 04 | PC | S | BILL 2 | B02 | S2 | FF | R00 | ACF07 | PC-1 | 270 |  | MEP |  | FF |  |  |
| PP2CE22001C10 |  | PA-P2 ; Final Fix, Inst of All drain (Elec RM)_PC-1 | 18d | 2012-09-01 | 2012-09-22 | PP2CE09601C10, PGLS703391C10, PGLS603391C10, PP1S103331C320, PP1S103331C310 | 19.2d | 11d | PLUMBING [1437.6 h]; Cost |  | CP2ME22037C0 | PP2CE22001C0 | PA | C | P2 | ER | ME | 220 | 01 | PC | S | BILL 2 | B02 | S2 | FF | R00 | ACF07 | PC-1 | 220 |  | MEP |  | FF |  |  |

| ID | WBS | Activity | Duration | Start | Finish | Predecessors | Complete | Remaining | Planned start | Planned finish | Total float | Free float | Resources | Cost | Actual cost | change id | IDDD | P_811 | P_711 | CCAD BUILDING(SET) | CCAD PHASE(SET) | CCAD FLOOR(SET) | CCAD ZONE(SET) | CCAD WORK(SET) | CCAD SECTION(SET) | CCAD SERIAL No.(SET) | CCAD Carpark code(SET) | CCAD Carpark district code(set) | CCAD CBS(SET) | CCAD BILL(SET) | CCAD HANDOVER(SET) | CCAD TAG(SET) | CCAD REV(SET) | CCADACF (SET) | FSP CODE | CCAD SSCF | NEW ACTIVITY ID | CCAD SUB ZONE MEP(SET) | CCAD CSA | Act Selector % | Change Order # | CCAD DIVISION(SET) | CCAD MEQ |
| --- | --- | --- | --- | --- | --- | --- | --- | --- | --- | --- | --- | --- | --- | --- | --- | --- | --- | --- | --- | --- | --- | --- | --- | --- | --- | --- | --- | --- | --- | --- | --- | --- | --- | --- | --- | --- | --- | --- | --- | --- | --- | --- | --- |
|  | CE2 | **ELECTRICAL ROOMS (2 NOS.) : Zone PC-2** |  | 2011-08-10 | 2012-08-30 |  |  |  |  |  |  |  |  |  |  |  |  |  |  |  |  |  |  |  |  |  |  |  |  |  |  |  |  |  |  |  |  |  |  |  |  |  |  |
| PP2CE04001C0 |  | PA-P2 ; Block Wall Works (Elec RM)_PC-2 | 4.88d | 2011-08-10 A | 2011-10-01 | PP2CE09903C0 | 95% | 0.24d | 2011-07-31 | 2011-08-04 | 232.87d | 0d | BLOCKWORKS [603 h]; BLOCKWORKS [172.33 m2]; Cost |  |  | AP2ER04001C0 | PP2CE04001C0 | 95 | 0 | PA | C | P2 | ER | BL | 040 | 01 | PC | S | BILL 2 | B02 | S2 | BL | R00 | ACF06 | PC-2 | 040 |  |  |  |  |  |  |  |
| PP2CE09903C0 |  | PA-P2 ; Ceiling Prime & 1st coat (Elec RM)_PC-2 | 5d | 2011-08-10 A | 2011-08-30 A | PGLS703392C0 FS+12d | 100% |  | 2012-11-18 | 2012-11-24 |  |  | ASSORTED CEILING FINISH [4 h]; Cost |  |  | CP2ME09905C0 | PP2CE09903C0 | 100 | 0 | PA | C | P2 | ER | PA | 099 | 03 | PC | S | BILL 2 | B02 | S2 | 01 | R00 | ACF06 | PC-2 | 099 | 1544 |  |  |  |  |  |  |
| PP2CE21104C0 |  | PA-P2 ; 2nd Fix, Inst of Sprinkler droppers (Elec RM)_PC-2 | 24d | 2011-09-05 A | 2011-11-27 | PP2CE09501C0 | 75% | 6d | 2012-11-14 | 2012-12-15 | 401.87d | 333.8d | MECHANICAL [1174.8 h]; Cost [58155.2 AED] | 58,155.24 | 43,616.43 | CP2ME21120C0 | PP2CE21104C0 |  |  | PA | C | P2 | ER | ME | 211 | 04 | PC | S | BILL 2 | B02 | S2 | 2F | R00 | ACF07 | PC-2 | 211 |  | 2n | MEP |  |  |  |  |
| PP2CE23001C0 |  | PA-P2 ; 1st Fix, Inst. of Supports for MEP (Elec RM)_PC-2 | 4.64d | 2011-09-05 A | 2011-09-29 A | PP2CE04001C0 | 100% |  | 2011-09-01 | 2011-09-06 |  |  | MECHANICAL [208.8 h]; Cost [11751.1 AED] | 11,751.07 | 11,751.07 | CP2ME23010C0 | PP2CE23001C0 |  |  | PA | C | P2 | ER | ME | 230 | 01 | PC | S | BILL 2 | B02 | S2 | 1F | R00 | ACF04 | PC-2 | 230 |  | 1S | MEP | M1F |  |  |  |
| PP2CE23002C0 |  | PA-P2 ; 1st Fix, Inst of CHW pipe (Elec RM)_PC-2 | 6.73d | 2011-09-05 A | 2011-09-29 A | PP2CE23001C0 SS, PP2CE27002C0 SS, PP2CE04001C0 | 100% |  | 2012-10-07 | 2012-10-14 |  |  | MECHANICAL [1032 h]; Cost [56382.8 AED] | 56,382.77 | 56,382.77 | CP2ME23012C0 | PP2CE23002C0 |  |  | PA | C | P2 | ER | ME | 230 | 02 | PC | S | BILL 2 | B02 | S2 | 1F | R00 | ACF04 | PC-2 | 230 |  | 1S | MEP | M1F |  |  |  |
| PP2CE26001C0 |  | PA-P2 ; 1st Fix, Inst of Trunking/Conduiting (Elec RM)_PC-2 | 7d | 2011-09-05 A | 2011-10-02 | PP2CE04001C0 | 86% | 0.97d | 2012-08-26 | 2012-09-03 | 262.78d | 0d | ELECTRICAL [63.6 h]; Cost [3749.69 AED] | 3,749.69 | 3,187.24 | CP2ME26010C0 | PP2CE26001C0 |  |  | PA | C | P2 | ER | ME | 260 | 01 | PC | S | BILL 2 | B02 | S2 | 1F | R00 | ACF04 | PC-2 | 260 |  | 1S | MEP | M1F |  |  |  |
| PP2CE26002C0 |  | PA-P2 ; 1st Fix, Inst of Cable Tray (Elec RM)_PC-2 | 7d | 2011-09-05 A | 2011-10-02 | PP2CE04001C0 | 85% | 1.05d | 2012-09-06 | 2012-09-15 | 262.71d | 2.45d | ELECTRICAL [21.6 h]; Cost [1543.99 AED] | 1,543.99 | 1,312.39 | CP2ME26012C0 | PP2CE26002C0 |  |  | PA | C | P2 | ER | ME | 260 | 02 | PC | S | BILL 2 | B02 | S2 | 1F | R00 | ACF04 | PC-2 | 260 |  | 1S | MEP | M1F |  |  |  |
| PP2CE27001C0 |  | PA-P2 ; 1st Fix, Wiring/ Cabling work (Elec RM)_PC-2 | 7d | 2011-09-05 A | 2011-10-04 | PP2CE27002C0 SS, PP2CE04001C0 | 50% | 3.5d | 2012-09-29 | 2012-10-07 | 262.26d | 0d | ELECTRICAL [25.2 h]; Cost [1424.03 AED] | 1,424.03 | 712.02 | CP2ME27012C0 | PP2CE27001C0 |  |  | PA | C | P2 | ER | ME | 270 | 01 | PC | S | BILL 2 | B02 | S2 | 1F | R00 | ACF04 | PC-2 | 270 |  | 1S | MEP | M1F |  |  |  |
| PP2CE27002C0 |  | PA-P2 ; 1st Fix, Inst of Trunking for ELV system (Elec RM)_PC-2 | 7d | 2011-09-05 A | 2011-10-02 | PP2CE04001C0 | 85% | 1.05d | 2012-09-20 | 2012-09-29 | 232.87d | 0d | ELECTRICAL [178.8 h]; Cost [9859.61 AED] | 9,859.61 | 8,380.67 | CP2ME27010C0 | PP2CE27002C0 |  |  | PA | C | P2 | ER | ME | 270 | 02 | PC | S | BILL 2 | B02 | S2 | 1F | R00 | ACF04 | PC-2 | 270 |  | 1S | MEP | M1F |  |  |  |
| PP2CE08102C0 |  | PA-P2 ; Metal Door Frames (Elec RM)_PC-2 | 5d | 2011-10-01 | 2011-10-06 | GNHE08101C0, PP2CE04001C0 |  |  |  |  | 298.76d | 245.56d | METAL DOORS [45 h]; Cost |  |  | CP2ME08101C0 | PP2CE08102C0 |  |  | PA | C | P2 | ER | DO | 081 | 02 | PC | S | BILL 2 | B02 | S2 | DF | R00 | ACF06 | PC-2 | 081 | 1374 |  |  |  | 316 | 08 |  |
| PP2CE09902C0 |  | PA-P2 ; Wall Prime & 1st coat (Elec RM)_PC-2 | 18d | 2011-10-01 | 2011-10-22 | PAFOA09201C1, PP2CE04001C0 |  |  |  |  | 251.88d | 0d | WALL PAINT [475 h]; WALL PAINT [591.67 m2]; Cost |  |  | CP2ME09901C0 | PP2CE09902C0 |  |  | PA | C | P2 | ER | PA | 099 | 02 | PC | S | BILL 2 | B02 | S2 | 01 | R00 | ACF06 | PC-2 | 099 | 1378 |  |  |  | 328 |  |  |
| PP2CE23003C0 |  | PA-P2 ; 1st Fix, Inst of Ducting (Elec RM)_PC-2 | 6.88d | 2011-10-01 | 2011-10-09 | PP2CE23001C0 SS, PP2CE23002C0 SS, PP2CE04001C0 |  |  |  |  | 232.87d | 0d | MECHANICAL [1316.4 h]; Cost |  |  | CP2ME23014C0 | PP2CE23003C0 |  |  | PA | C | P2 | ER | ME | 230 | 03 | PC | S | BILL 2 | B02 | S2 | 1F | R00 | ACF04 | PC-2 | 230 |  | 1S | MEP | M1F |  |  |  |
| PP2CE23004C0 |  | PA-P2 ; 1st Fix, Inst of VCD's/FD's (Elec RM)_PC-2 | 6.62d | 2011-10-01 | 2011-10-08 | PP2CE23003C0 SS, PP2CE04001C0 |  |  |  |  | 257.14d | 24.26d | MECHANICAL [390 h]; Cost |  |  | CP2ME23016C0 | PP2CE23004C0 |  |  | PA | C | P2 | ER | ME | 230 | 04 | PC | S | BILL 2 | B02 | S2 | 1F | R00 | ACF04 | PC-2 | 230 |  | 1S | MEP | M1F |  |  |  |
| PP2CE23007C0 |  | PA-P2 ; 2nd Fix, Inst of VAV'S CHW connection (Elec RM)_PC-2 | 24d | 2011-10-01 | 2011-10-29 | PP2CE23001C0 |  |  |  |  | 239.76d | 6.88d | MECHANICAL [16.8 h]; Cost |  |  | CP2ME23020C0 | PP2CE23007C0 |  |  | PA | C | P2 | ER | ME | 230 | 07 | PC | S | BILL 2 | B02 | S2 | 2F | R00 | ACF07 | PC-2 | 230 |  | 2n | MEP |  |  |  |  |
| PP2CE23010C0 |  | PA-P2 ; 2nd Fix, Insulation of CHW pipe & Duct (Elec RM)_PC-2 | 24d | 2011-10-01 | 2011-10-29 | PP2CE23001C0 |  |  |  |  | 239.76d | 6.88d | MECHANICAL [1233.6 h]; Cost |  |  | CP2ME23026C0 | PP2CE23010C0 |  |  | PA | C | P2 | ER | ME | 230 | 10 | PC | S | BILL 2 | B02 | S2 | 2F | R00 | ACF07 | PC-2 | 230 |  | 2n | MEP |  |  |  |  |
| PP2CE26007C0 |  | PA-P2 ; 2nd Fix, Wiring for Power/Lighting/Emergency (Elec RM)_PC-2 | 24d | 2011-10-02 | 2011-10-30 | PP2CE26001C0 |  |  |  |  | 264.78d | 225.58d | ELECTRICAL [528 h]; Cost |  |  | CP2ME26020C0 | PP2CE26007C0 |  |  | PA | C | P2 | ER | ME | 260 | 07 | PC | S | BILL 2 | B02 | S2 | 2F | R00 | ACF07 | PC-2 | 260 |  | 2n | MEP |  |  |  |  |
| PP2CE26008C0 |  | PA-P2 ; 2nd Fix, Cable Pulling (Elec RM)_PC-2 | 24d | 2011-10-04 | 2011-11-01 | PP2CE26002C0, PP2CE27001C0 |  |  |  |  | 262.26d | 223.06d | ELECTRICAL [1365.6 h]; Cost |  |  | CP2ME26022C0 | PP2CE26008C0 |  |  | PA | C | P2 | ER | ME | 260 | 08 | PC | S | BILL 2 | B02 | S2 | 2F | R00 | ACF07 | PC-2 | 260 |  | 2n | MEP |  |  |  |  |
| PP2CE23009C0 |  | PA-P2 ; 2nd Fix, Inst of VCD's/FD's (Elec RM)_PC-2 | 24d | 2011-10-09 | 2011-11-09 | PP2CE23003C0 |  |  |  |  | 232.87d | 0d | MECHANICAL [390 h]; Cost |  |  | CP2ME23024C0 | PP2CE23009C0 |  |  | PA | C | P2 | ER | ME | 230 | 09 | PC | S | BILL 2 | B02 | S2 | 2F | R00 | ACF07 | PC-2 | 230 |  | 2n | MEP |  |  |  |  |
| PP2CE23008C0 |  | PA-P2 ; 2nd Fix, Inst of Equipment (FCU,FAN,PUMP) (Elec RM)_PC-2 | 24d | 2011-10-15 | 2011-11-15 | PAFOA09201C1, PP2CE04001C0 FS+12d |  |  |  |  | 252.76d | 214.56d | MECHANICAL [768 h]; Cost |  |  | CP2ME23022C0 | PP2CE23008C0 |  |  | PA | C | P2 | ER | ME | 230 | 08 | PC | S | BILL 2 | B02 | S2 | 2F | R00 | ACF04 | PC-2 | 230 |  | 2n | MEP |  |  |  | H |
| PP2CE08109C0 |  | PA-P2 ; Access Floor (Elec RM)_PC-2 | 3.88d | 2011-10-22 | 2011-10-26 | PP2CE09902C0 |  |  |  |  | 251.88d | 0d | ASSORTED FLOOR FINISH [144 h]; ASSORTED FLOOR FINISH [78.67 m2]; Cost |  |  | CP2ER08105C0 |  |  |  | PA | C | P2 | ER | FF | 096 | 09 | PC | S | BILL 2 | B02 | S2 | 04 | R00 | ACF06 | PC-2 | AF | 1375 |  |  |  | 317 | 08 |  |
| PP2CE26009C0 |  | PA-P2 ; 2nd Fix, Inst of Equipment (DB, TR, SG) (Elec RM)_PC-2 | 24d | 2011-10-26 | 2011-11-28 | PP2CE08109C0, PAFOA09201C1, PP2CE04001C0 FS+12d |  |  |  |  | 251.88d | 204.68d | ELECTRICAL [397.2 h]; Cost |  |  | CP2ME26024C0 | PP2CE26009C0 |  |  | PA | C | P2 | ER | ME | 260 | 09 | PC | S | BILL 2 | B02 | S2 | 2F | R00 | ACF04 | PC-2 | 260 |  | 2n | MEP |  |  |  | E |
| PP2CE09501C0 |  | PA-P2 ; Ceiling Grid and Service Tile (Elec RM)_PC-2 | 8d | 2011-11-09 | 2011-11-19 | PP2CE23002C0, PP2CE23003C0, PP2CE23004C0, PP2CE23007C0, PP2CE23009C0, PP2CE23010C0, PP2CE26001C0, PP2CE26002C0, PAFOA09201C1 FS+15d, PP2CE04001C0 FS+27d |  |  |  |  | 232.87d | 0d | CEILING GRID FOR GYPSUM [3092.45 h]; CEILING GRID FOR GYPSUM [264.33 m2]; Cost |  |  | CP2ME09501C0 | PP2CE09501C0 |  |  | PA | C | P2 | ER | CE | 095 | 01 | PC | S | BILL 2 | B02 | S2 | 01 | R00 | ACF06 | PC-2 | 095 | 1408 |  |  |  | 323 |  |  |
| PP2CE21105C0 |  | PA-P2 ; 2nd Fix, Inst of Zone Control Valve (Elec RM)_PC-2 | 24d | 2011-11-19 | 2011-12-19 | PP2CE09501C0 |  |  |  |  | 383.87d | 315.8d | MECHANICAL [354 h]; Cost |  |  | CP2ME21124C0 | PP2CE21105C0 |  |  | PA | C | P2 | ER | ME | 211 | 05 | PC | S | BILL 2 | B02 | S2 | 2F | R00 | ACF07 | PC-2 | 211 |  | 2n | MEP |  |  |  |  |
| PP2CE23006C0 |  | PA-P2 ; 2nd Fix, Inst of Flexible Duct & Plenum boxes (Elec RM)_PC-2 | 18d | 2011-11-19 | 2011-12-12 | PP2CE09501C0 |  |  |  |  | 232.87d | 193.67d | MECHANICAL [10.8 h]; Cost |  |  | CP2ME23032C0 | PP2CE23006C0 |  |  | PA | C | P2 | ER | ME | 230 | 06 | PC | S | BILL 2 | B02 | S2 | FF | R00 | ACF07 | PC-2 | 230 |  | FF | MEP |  |  |  |  |
| PP2CE27005C0 |  | PA-P2 ; 2nd Fix, Wiring Droppers (Elec RM)_PC-2 | 24d | 2011-11-19 | 2011-12-19 | PP2CE09501C0 |  |  |  |  | 383.87d | 315.8d | ELECTRICAL [25.2 h]; Cost |  |  | CP2ME27022C0 | PP2CE27005C0 |  |  | PA | C | P2 | ER | ME | 270 | 05 | PC | S | BILL 2 | B02 | S2 | 2F | R00 | ACF07 | PC-2 | 270 |  | 2n | MEP |  |  |  |  |
| PP2CE27006C0 |  | PA-P2 ; 2nd Fix, Inst of ELV Equipment (Panels) (Elec RM)_PC-2 | 24d | 2011-11-19 | 2011-12-19 | PAFOA09201C1, PP2CE04001C0 FS+12d, PP2CE09501C0 |  |  |  |  | 383.87d | 315.8d | ELECTRICAL [61.2 h]; Cost |  |  | CP2ME27020C0 | PP2CE27006C0 |  |  | PA | C | P2 | ER | ME | 270 | 06 | PC | S | BILL 2 | B02 | S2 | 2F | R00 | ACF04 | PC-2 | 270 |  | 2n | MEP |  |  |  | E |
| PP2CE05501C0 |  | PA-P2 ; Handrails & balustrade (Elec RM)_PC-2 | 6d | 2012-07-28 | 2012-08-04 | PP2CE09902C0, PGLS703391C10, PGLS603391C10, PP1S103331C320, PP1S103331C310 |  |  |  |  | 59.2d | 51d | SECONDARY STEEL [146 h]; Cost |  |  | CP2ME05501C0 | PP2CE05501C0 |  |  | PA | C | P2 | ER | SW | 055 | 01 | PC | S | BILL 2 | B02 | S2 | 01 | R00 | ACF03 | PC-2 | a |  |  |  |  |  |  |  |
| PP2CE08103C0 |  | PA-P2 ; Metal Doors (Elec RM)_PC-2 | 5d | 2012-07-28 | 2012-08-02 | PP2CE08102C0, PGLS703391C10, PGLS603391C10, PP1S103331C320, PP1S103331C310 |  |  |  |  | 53.2d | 0d | METAL DOORS [40 h]; METAL DOORS [4 no]; Cost |  |  | CP2ME08105C0 | PP2CE08103C0 |  |  | PA | C | P2 | ER | DO | 081 | 03 | PC | S | BILL 2 | B02 | S2 | DR | R00 | ACF06 | PC-2 | 081 | 1375 |  |  |  | 317 | 08 |  |
| PP2CE09502C0 |  | PA-P2 ; Ceiling closure (Elec RM)_PC-2 | 8d | 2012-07-28 | 2012-08-06 | PP2CE09501C0, PP2CE23006C0, PP2CE26007C0, PP2CE26008C0, PP2CE27001C0, PGLS703391C10, PGLS603391C10, PP1S103331C320, PP1S103331C310 |  |  |  |  | 39.2d | 0d | ASSORTED CEILING FINISH [174.87 h]; CEILING GYPSUM [86.72 h]; ASSORTED CEILING FINISH [284.33 m2]; CEILING GYPSUM [264.33 m2]; Cost |  |  | CP2ME09503C0 | PP2CE09502C0 |  |  | PA | C | P2 | ER | CE | 095 | 02 | PC | S | BILL 2 | B02 | S2 | 02 | R00 | ACF06 | PC-2 | 095 | 1409 |  |  |  | 324 |  |  |
| PP2CE09601C0 |  | PA-P2 ; Flooring (Elec RM)_PC-2 | 9d | 2012-07-28 | 2012-08-07 | PP2CE09902C0, PP2CE09903C0, PP2CE23008C0, PGLS703391C10, PGLS603391C10, PP1S103331C320, PP1S103331C310 |  |  |  |  | 38.2d | 0d | ASSORTED FLOOR FINISH [2040 h]; ASSORTED FLOOR FINISH [1132.33 m2]; Cost |  |  | CP2ME09601C0 | PP2CE09601C0 |  |  | PA | C | P2 | ER | FF | 096 | 01 | PC | S | BILL 2 | B02 | S2 | 01 | R00 | ACF06 | PC-2 | FF | 1377 |  |  |  | 326 |  |  |
| PP2CE09901C0 |  | PA-P2 ; Wall - final Paint (Elec RM)_PC-2 | 5d | 2012-07-28 | 2012-08-02 | PP2CE09902C0, PGLS703391C10, PGLS603391C10, PP1S103331C320, PP1S103331C310 |  |  |  |  | 60.2d | 52d | WALL PAINT [255 h]; WALL PAINT [318.67 m2]; Cost |  |  | CP2ME09903C0 | PP2CE09901C0 |  |  | PA | C | P2 | ER | PA | 099 | 01 | PC | S | BILL 2 | B02 | S2 | 02 | R00 | ACF06 | PC-2 | 099 | 1379 |  |  |  | 329 |  |  |
| PP2CE09904C0 |  | PA-P2 ; Ceiling - final Paint (Elec RM)_PC-2 | 2d | 2012-07-28 | 2012-07-30 | PP2CE09903C0, PGLS703391C10, PGLS603391C10, PP1S103331C320, PP1S103331C310 |  |  |  |  | 63.2d | 55d | ASSORTED CEILING FINISH [2 h]; Cost |  |  | CP2ME09907C0 | PP2CE09904C0 |  |  | PA | C | P2 | ER | PA | 099 | 04 | PC | S | BILL 2 | B02 | S2 | 02 | R00 | ACF06 | PC-2 | 099 | 1546 |  |  |  |  |  |  |
| PP2CE26004C0 |  | PA-P2 ; Final Fix, Inst of Ceiling rose (Elec RM)_PC-2 | 18d | 2012-07-28 | 2012-08-18 | PP2CE09501C0, PGLS703391C10, PGLS603391C10, PP1S103331C320, PP1S103331C310 |  |  |  |  | 47.2d | 39d | ELECTRICAL [8.4 h]; Cost |  |  | CP2ME26032C0 | PP2CE26004C0 |  |  | PA | C | P2 | ER | ME | 260 | 04 | PC | S | BILL 2 | B02 | S2 | FF | R00 | ACF07 | PC-2 | 260 |  | FF | MEP |  |  |  |  |
| PP2CE27003C0 |  | PA-P2 ; Final Fix, BMS connection work to Equipment (Elec RM)_PC-2 | 18d | 2012-07-28 | 2012-08-18 | PP2CE26009C0, PGLS703391C10, PGLS603391C10, PP1S103331C320, PP1S103331C310 |  |  |  |  | 47.2d | 39d | ELECTRICAL [778.8 h]; Cost |  |  | CP2ME27032C0 | PP2CE27003C0 |  |  | PA | C | P2 | ER | ME | 270 | 03 | PC | S | BILL 2 | B02 | S2 | FF | R00 | ACF07 | PC-2 | 270 |  | FF | MEP |  |  |  |  |
| PP2CE08701C0 |  | PA-P2 ; Ironmongery (Elec RM)_PC-2 | 7d | 2012-08-02 | 2012-08-11 | PP2CE08103C0, PGLS703391C10, PGLS603391C10, PP1S103331C320, PP1S103331C310 |  |  |  |  | 53.2d | 45d | IRONMONGERY [40 h]; IRONMONGERY [4 no]; Cost |  |  | CP2ME08709C0 | PP2CE08701C0 |  |  | PA | C | P2 | ER | DO | 087 | 01 | PC | S | BILL 2 | B02 | S2 | IM | R00 | ACF06 | PC-2 | 087 | 6230 |  |  |  | 322 | 08 |  |
| PP2CE21101C0 |  | PA-P2 ; Final Fix, Gaseous Fire Suppression Electrical Room (Elec RM)_PC-2 | 18d | 2012-08-06 | 2012-08-29 | PP2CE09502C0, PGLS703391C10, PGLS603391C10, PP1S103331C320, PP1S103331C310 |  |  |  |  | 39.2d | 31d | MECHANICAL [232.8 h]; Cost |  |  | CP2ME21109C0 | PP2CE21101C0 |  |  | PA | C | P2 | ER | ME | 211 | 01 | PC | S | BILL 2 | B02 | S2 | FF | R00 | ACF07 | PC-2 | 211 |  | FF | MEP |  |  |  |  |
| PP2CE21102C0 |  | PA-P2 ; Final Fix, Gaseous Fire Suppression Transformer room (Elec RM)_PC-2 | 18d | 2012-08-06 | 2012-08-29 | PP2CE09502C0, PGLS703391C10, PGLS603391C10, PP1S103331C320, PP1S103331C310 |  |  |  |  | 39.2d | 31d | MECHANICAL [232.8 h]; Cost |  |  | CP2ME21111C0 | PP2CE21102C0 |  |  | PA | C | P2 | ER | ME | 211 | 02 | PC | S | BILL 2 | B02 | S2 | FF | R00 | ACF07 | PC-2 | 211 |  | FF | MEP |  |  |  |  |
| PP2CE21103C0 |  | PA-P2 ; Final Fix, Gaseous Fire Suppression Telecom Room (Elec RM)_PC-2 | 18d | 2012-08-06 | 2012-08-29 | PP2CE09502C0, PGLS703391C10, PGLS603391C10, PP1S103331C320, PP1S103331C310 |  |  |  |  | 39.2d | 31d | MECHANICAL [232.8 h]; Cost |  |  | CP2ME21113C0 | PP2CE21103C0 |  |  | PA | C | P2 | ER | ME | 211 | 03 | PC | S | BILL 2 | B02 | S2 | FF | R00 | ACF07 | PC-2 | 211 |  | FF | MEP |  |  |  |  |
| PP2CE23005C0 |  | PA-P2 ; Final Fix, Inst of Grilles & Diffusers (Elec RM)_PC-2 | 18d | 2012-08-06 | 2012-08-29 | PP2CE09502C0, PGLS703391C10, PGLS603391C10, PP1S103331C320, PP1S103331C310 |  |  |  |  | 39.2d | 31d | MECHANICAL [165.6 h]; Cost |  |  | CP2ME23030C0 | PP2CE23005C0 |  |  | PA | C | P2 | ER | ME | 230 | 05 | PC | S | BILL 2 | B02 | S2 | FF | R00 | ACF07 | PC-2 | 230 |  | FF | MEP |  |  |  |  |
| PP2CE26003C0 |  | PA-P2 ; Final Fix, Termination & Gladding of Cables (Elec RM)_PC-2 | 18d | 2012-08-06 | 2012-08-29 | PP2CE09502C0, PGLS703391C10, PGLS603391C10, PP1S103331C320, PP1S103331C310 |  |  |  |  | 39.2d | 31d | ELECTRICAL [170.4 h]; Cost |  |  | CP2ME26030C0 | PP2CE26003C0 |  |  | PA | C | P2 | ER | ME | 260 | 03 | PC | S | BILL 2 | B02 | S2 | FF | R00 | ACF07 | PC-2 | 260 |  | FF | MEP |  |  |  |  |
| PP2CE26005C0 |  | PA-P2 ; Final Fix, Inst of Switch/Sockets (Elec RM)_PC-2 | 18d | 2012-08-06 | 2012-08-29 | PP2CE09502C0, PGLS703391C10, PGLS603391C10, PP1S103331C320, PP1S103331C310 |  |  |  |  | 39.2d | 31d | ELECTRICAL [42 h]; Cost |  |  | CP2ME26034C0 | PP2CE26005C0 |  |  | PA | C | P2 | ER | ME | 260 | 05 | PC | S | BILL 2 | B02 | S2 | FF | R00 | ACF07 | PC-2 | 260 |  | FF | MEP |  |  |  |  |
| PP2CE26006C0 |  | PA-P2 ; Final Fix, Inst of Light fittings (Elec RM)_PC-2 | 18d | 2012-08-06 | 2012-08-29 | PP2CE09502C0, PGLS703391C10, PGLS603391C10, PP1S103331C320, PP1S103331C310 |  |  |  |  | 39.2d | 31d | ELECTRICAL [1041.6 h]; Cost |  |  | CP2ME26039C0 | PP2CE26006C0 |  |  | PA | C | P2 | ER | ME | 260 | 06 | PC | S | BILL 2 | B02 | S2 | FF | R00 | ACF07 | PC-2 | 260 |  | FF | MEP |  |  |  |  |
| PP2CE27004C0 |  | PA-P2 ; Final Fix, Inst of ELV device (Detector/Speaker) (Elec RM)_PC-2 | 18d | 2012-08-06 | 2012-08-29 | PP2CE09502C0, PGLS703391C10, PGLS603391C10, PP1S103331C320, PP1S103331C310 |  |  |  |  | 39.2d | 31d | ELECTRICAL [26.4 h]; Cost |  |  | CP2ME27030C0 | PP2CE27004C0 |  |  | PA | C | P2 | ER | ME | 270 | 04 | PC | S | BILL 2 | B02 | S2 | FF | R00 | ACF07 | PC-2 | 270 |  | FF | MEP |  |  |  |  |
| PP2CE22001C0 |  | PA-P2 ; Final Fix, Inst of All drain (Elec RM)_PC-2 | 18d | 2012-08-07 | 2012-08-30 | PP2CE09601C0, PGLS703391C10, PGLS603391C10, PP1S103331C320, PP1S103331C310 |  |  |  |  | 38.2d | 30d | PLUMBING [718.8 h]; Cost |  |  | CP2ME22037C0 | PP2CE22001C0 |  |  | PA | C | P2 | ER | ME | 220 | 01 | PC | S | BILL 2 | B02 | S2 | FF | R00 | ACF07 | PC-2 | 220 |  | FF | MEP |  |  |  |  |

| ID | WBS | Activity | Duration | Start | Finish | Predecessors | Total float | Free float | Resources | Change Order # | NEW ACTIVITY ID | change id | IDDD | CCAD BUILDING(SET) | CCAD PHASE(SET) | CCAD FLOOR(SET) | CCAD ZONE(SET) | CCAD WORK(SET) | CCAD SECTION(SET) | CCAD SERIAL No.(SET) | CCAD Carpark code(SET) | CCAD Carpark district code(set) | CCAD CBS(SET) | CCAD BILL(SET) | CCAD HANDOVER(SET) | CCAD TAG(SET) | CCAD REV(SET) | CCADACF (SET) | FSP CODE | CCAD SSCF | CCAD SUB ZONE MEP(SET) | CCAD CSA | Act Selector % |
| --- | --- | --- | --- | --- | --- | --- | --- | --- | --- | --- | --- | --- | --- | --- | --- | --- | --- | --- | --- | --- | --- | --- | --- | --- | --- | --- | --- | --- | --- | --- | --- | --- | --- |
|  | DP1 | **PARKING AREA : Zone PD-1** |  | 2011-10-22 | 2012-09-18 |  |  |  |  |  |  |  |  |  |  |  |  |  |  |  |  |  |  |  |  |  |  |  |  |  |  |  |  |
| PP2DP09901C10 |  | PA-P2 ; Prime & 1st coat (Wall & Ceiling) (Parking Area)_PD-1 | 18d | 2011-10-22 | 2011-11-14 | PGLS403391C0, PP3DP09901C10 | 23d | 0d | CEILING PAINT [1297 h]; WALL PAINT [281 h]; CEILING PAINT [1617.75 m2]; WALL PAINT [349.5 m2]; Cost | 328 | 956 | CP3PA09901C0 | PP2DP09901C0 | PA | C | P2 | PK | PA | 099 | 01 | PD | S | BILL 2 | B02 | S2 | 01 | R00 | ACF06 | PD-1 | 099 |  |  |  |
| PP2DP21114C10 |  | PA-P2 ; 1st Fix, Fire Fighting system (Parking Area)_PD-1 | 33d | 2011-12-05 | 2012-01-12 | PGLS403391C0 FS+26d, PP2DP09901C10, PP3DP21114C10 | 8d | 0d | MECHANICAL [201.6 h]; Cost |  |  | CP3PA21109C0 | PP2DP21114C0 | PA | C | P2 | PK | ME | 211 | 14 | PD | S | BILL 2 | B02 | S2 | 1F | R00 | ACF04 | PD-1 | 211 | 1S | MEP | M1F |
| PP2DP21124C10 |  | PA-P2 ; 2nd Fix, Fire Fighting system (Parking Area)_PD-1 | 33d | 2012-01-14 | 2012-02-21 | PP2DP21114C10 | 131d | 78.12d | MECHANICAL [283.2 h]; Cost |  |  | CP3PA21115C0 | PP2DP21124C0 | PA | C | P2 | PK | ME | 211 | 24 | PD | S | BILL 2 | B02 | S2 | 2F | R00 | ACF07 | PD-1 | 211 | 2n | MEP |  |
| PP2DP22015C10 |  | PA-P2 ; 1st Fix, Plumbing / Drainage System (Parking Area)_PD-1 | 33d | 2012-01-14 | 2012-02-21 | PP2DP09901C10, PP2DP21114C10 | 47d | 0d | PLUMBING [538.8 h]; Cost |  |  | CP3PA22001C0 | PP2DP22015C0 | PA | C | P2 | PK | ME | 220 | 15 | PD | S | BILL 2 | B02 | S2 | 1F | R00 | ACF04 | PD-1 | 220 | 1S | MEP | M1F |
| PP2DP22025C10 |  | PA-P2 ; 2nd Fix, Plumbing / Drainage System (Parking Area)_PD-1 | 33d | 2012-02-22 | 2012-03-31 | PP2DP22015C10 | 110d | 57.12d | PLUMBING [666 h]; Cost |  |  | CP3PA22011C0 | PP2DP22025C0 | PA | C | P2 | PK | ME | 220 | 25 | PD | S | BILL 2 | B02 | S2 | 2F | R00 | ACF07 | PD-1 | 220 | 2n | MEP |  |
| PP2DP23011C10 |  | PA-P2 ; 1st Fix, CHW / HVAC System (Parking Area)_PD-1 | 33d | 2012-02-22 | 2012-03-31 | PP2DP09901C10, PP2DP22015C10 | 47d | 0d | MECHANICAL [1394.4 h]; Cost |  |  | CP3PA23001C0 | PP2DP23011C0 | PA | C | P2 | PK | ME | 230 | 11 | PD | S | BILL 2 | B02 | S2 | 1F | R00 | ACF04 | PD-1 | 230 | 1S | MEP | M1F |
| PP2DP23021C10 |  | PA-P2 ; 2nd Fix, CHW / HVAC System (Parking Area)_PD-1 | 33d | 2012-04-01 | 2012-05-08 | PP2DP23011C10 | 89d | 36.12d | MECHANICAL [1653.6 h]; Cost |  |  | CP3PA23011C0 | PP2DP23021C0 | PA | C | P2 | PK | ME | 230 | 21 | PD | S | BILL 2 | B02 | S2 | 2F | R00 | ACF07 | PD-1 | 230 | 2n | MEP |  |
| PP2DP26012C10 |  | PA-P2 ; 1st Fix, Electrical System (Parking Area)_PD-1 | 33d | 2012-04-01 | 2012-05-08 | PP2DP09901C10, PP2DP23011C10 | 47d | 0d | ELECTRICAL [1297.2 h]; Cost |  |  | CP3PA26001C0 | PP2DP26012C0 | PA | C | P2 | PK | ME | 260 | 12 | PD | S | BILL 2 | B02 | S2 | 1F | R00 | ACF04 | PD-1 | 260 | 1S | MEP | M1F |
| PP2DP09902C10 |  | PA-P2 ; 2nd coat (Wall & Ceiling) (Parking Area)_PD-1 | 13d | 2012-05-08 | 2012-05-23 | PP2DP09901C10, PP1DP09902C10 SS, PP3DP23021C10 | 52.88d | 0d | CEILING PAINT [699 h]; WALL PAINT [151 h]; CEILING PAINT [871 m2]; WALL PAINT [188.25 m2]; Cost | 329 | 957 | CP3PA09903C0 | PP2DP09902C0 | PA | C | P2 | PK | PA | 099 | 02 | PD | S | BILL 2 | B02 | S2 | 02 | R00 | ACF06 | PD-1 | 099 |  |  |  |
| PP2DP26022C10 |  | PA-P2 ; 2nd Fix, Electrical System (Parking Area)_PD-1 | 33d | 2012-05-09 | 2012-06-17 | PP2DP26012C10 | 68d | 15.12d | ELECTRICAL [1297.2 h]; Cost |  |  | CP3PA26005C0 | PP2DP26022C0 | PA | C | P2 | PK | ME | 260 | 22 | PD | S | BILL 2 | B02 | S2 | 2F | R00 | ACF07 | PD-1 | 260 | 2n | MEP |  |
| PP2DP27013C10 |  | PA-P2 ; 1st Fix, ELV system (Parking Area)_PD-1 | 33d | 2012-05-09 | 2012-06-17 | PP2DP09901C10, PP2DP26012C10 | 47d | 0d | ELECTRICAL [211.2 h]; Cost |  |  | CP3PA27010C0 | PP2DP27013C0 | PA | C | P2 | PK | ME | 270 | 13 | PD | S | BILL 2 | B02 | S2 | 1F | R00 | ACF04 | PD-1 | 270 | 1S | MEP | M1F |
| PP2DP21113C10 |  | PA-P2 ; Final Fix, Fire Fighting system (Parking Area)_PD-1 | 12d | 2012-05-23 | 2012-06-06 | PP2DP09902C10, PP2DP21124C10, PP1S103331C290, PP3DP23021C10 | 52.88d | 0d | MECHANICAL [201.6 h]; Cost |  |  | CP3PA21113C0 | PP2DP21113C0 | PA | C | P2 | PK | ME | 211 | 13 | PD | S | BILL 2 | B02 | S2 | FF | R00 | ACF07 | PD-1 | 211 | FF | MEP |  |
| PP2DP22011C10 |  | PA-P2 ; Final Fix, Drainage System (Parking Area)_PD-1 | 12d | 2012-06-06 | 2012-06-21 | PP2DP09902C10, PP2DP22025C10, PP1S103331C290, PP3DP23021C10, PP2DP21113C10 | 52.88d | 0d | PLUMBING [538.8 h]; Cost |  |  | CP3PA22011C0 | PP2DP22011C0 | PA | C | P2 | PK | ME | 220 | 11 | PD | S | BILL 2 | B02 | S2 | FF | R00 | ACF07 | PD-1 | 220 | FF | MEP |  |
| PP2DP27023C10 |  | PA-P2 ; 2nd Fix, ELV system (Parking Area)_PD-1 | 33d | 2012-06-18 | 2012-07-25 | PP2DP27013C10 | 47d | 0d | ELECTRICAL [211.2 h]; Cost |  |  | CP3PA27020C0 | PP2DP27023C0 | PA | C | P2 | PK | ME | 270 | 23 | PD | S | BILL 2 | B02 | S2 | 2F | R00 | ACF07 | PD-1 | 270 | 2n | MEP |  |
| PP2DP23019C10 |  | PA-P2 ; Final Fix, CHW / HVAC System (Parking Area)_PD-1 | 12d | 2012-06-21 | 2012-07-05 | PP2DP09902C10, PP2DP23021C10, PP1S103331C290, PP3DP23021C10, PP2DP22011C10 | 52.88d | 0d | MECHANICAL [1394.4 h]; Cost |  |  | CP3PA23019C0 | PP2DP23019C0 | PA | C | P2 | PK | ME | 230 | 19 | PD | S | BILL 2 | B02 | S2 | FF | R00 | ACF07 | PD-1 | 230 | FF | MEP |  |
| PP2DP26017C10 |  | PA-P2 ; Final Fix, Electrical System (Parking Area)_PD-1 | 12d | 2012-07-05 | 2012-07-19 | PP2DP09902C10, PP2DP26022C10, PP1S103331C290, PP3DP23021C10, PP2DP23019C10 | 52.88d | 5.88d | ELECTRICAL [1297.2 h]; Cost |  |  | CP3PA26017C0 | PP2DP26017C0 | PA | C | P2 | PK | ME | 260 | 17 | PD | S | BILL 2 | B02 | S2 | FF | R00 | ACF07 | PD-1 | 260 | FF | MEP |  |
| PP2DP27030C10 |  | PA-P2 ; Final Fix, ELV system (Parking Area)_PD-1 | 12d | 2012-07-26 | 2012-08-08 | PP2DP09902C10, PP2DP27023C10, PP2DP27023C10 FF, PP1S103331C290, PP3DP23021C10, PP2DP26017C10 | 47d | 0d | ELECTRICAL [211.2 h]; Cost |  |  | CP3PA27030C0 | PP2DP27030C0 | PA | C | P2 | PK | ME | 270 | 30 | PD | S | BILL 2 | B02 | S2 | FF | R00 | ACF07 | PD-1 | 270 | FF | MEP |  |
| PP2DP09903C10 |  | PA-P2 ; Concrete Sealer (Floor) (Parking Area)_PD-1 | 10d | 2012-08-09 | 2012-08-22 | PP2DP21113C10, PP2DP22011C10, PP2DP23019C10, PP2DP26017C10, PP2DP27030C10, PP1S103331C290, PP3DP23021C10 | 47d | 0d | ASSORTED FLOOR FINISH [2184 h]; ASSORTED FLOOR FINISH [1209.25 m2]; Cost |  |  | AP2PK09903C0 | PP2DP09903C0 | PA | C | P2 | PK | FF | 096 | 03 | PD | S | BILL 2 | B02 | S2 | 05 | R00 | ACF06 | PD-1 | CS |  |  |  |
| PP2DP05509C10 |  | PA-P2 ; Grill & Louvers (Parking Area)_PD-1 | 5d | 2012-08-23 | 2012-08-28 | PP2DP09903C10, PP1S103331C290, PP3DP23021C10 | 65d | 57d | SECONDARY STEEL [168 h]; Cost | 328 | 956 | CP3PA09901C0 | PP3AP09901C0 | PA | C | P2 | PK | SW | 055 | 01 | PD | S | BILL 2 | B02 | S2 | 02 | R00 | ACF03 | PD-1 | 056 |  |  |  |
| PP2DP11006C10 |  | PA-P2 ; Wall Protection (WP, CG, WG, FCG) (Parking Area)_PD-1 | 8d | 2012-08-23 | 2012-09-01 | PP2DP09903C10, PP1S103331C290, PP3DP23021C10 | 47d | 0d | FF&E [42 h]; Cost | 326 | 1001 | CP3PA11001C0 | PP2DP11006C0 | PA | C | P2 | PK | WF | 097 | 06 | PD | S | BILL 2 | B02 | S2 | 03 | R00 | ACF08 | PD-1 | 097 |  |  |  |
| PP2DP11004C10 |  | PA-P2 ; Floor Marking & Signage (Parking Area)_PD-1 | 7d | 2012-09-02 | 2012-09-09 | PP2DP09903C10, PP2DP11006C10, PP1S103331C290, PP3DP23021C10 | 47d | 0d | SIGNAGES [504 h]; SIGNAGES [70 no]; Cost |  |  | AP2PK11004C0 | PP2DP11004C0 | PA | C | P2 | PK | SA | 110 | 04 | PD | S | BILL 2 | B02 | S2 | 09 | R00 | ACF08 | PD-1 | c |  |  |  |
| PP2DP11009C10 |  | PA-P2 ; FF&E (Parking Area)_PD-1 | 8d | 2012-09-10 | 2012-09-18 | PP2DP11004C10, PP1S103331C290, PP3DP23021C10 | 47d | 39d | FF&E [17 h]; Cost |  |  | AP3PK11004C0 | PP3BP11004C0 | PA | C | P2 | PK | SA | 110 | 04 | PD | S | BILL 2 | B02 | S2 | 01 | R00 | ACF08 | PD-1 | a |  |  |  |
|  | DP2 | **PARKING AREA : Zone PD-2** |  | 2012-05-26 | 2012-12-25 |  |  |  |  |  |  |  |  |  |  |  |  |  |  |  |  |  |  |  |  |  |  |  |  |  |  |  |  |
| PP2DP09901C20 |  | PA-P2 ; Prime & 1st coat (Wall & Ceiling) (Parking Area)_PD-2 | 18d | 2012-05-26 | 2012-06-17 | PGLS403392C0 SS, PGLS503391C0 SS, PGLS503392C0 SS | 17.2d | 0d | CEILING PAINT [3889 h]; WALL PAINT [840 h]; CEILING PAINT [4853.25 m2]; WALL PAINT [1048.5 m2]; Cost | 328 | 956 | CP3PA09901C0 | PP2DP09901C0 | PA | C | P2 | PK | PA | 099 | 01 | PD | S | BILL 2 | B02 | S2 | 01 | R00 | ACF06 | PD-2 | 099 |  |  |  |
| PP2DP21114C20 |  | PA-P2 ; 1st Fix, Fire Fighting system (Parking Area)_PD-2 | 18d | 2012-06-17 | 2012-07-08 | PP2DP09901C20 | 17.2d | 0d | MECHANICAL [603.6 h]; Cost |  |  | CP3PA21109C0 | PP2DP21114C0 | PA | C | P2 | PK | ME | 211 | 14 | PD | S | BILL 2 | B02 | S2 | 1F | R00 | ACF04 | PD-2 | 211 | 1S | MEP | M1F |
| PP2DP21124C20 |  | PA-P2 ; 2nd Fix, Fire Fighting system (Parking Area)_PD-2 | 30d | 2012-07-08 | 2012-08-12 | PP2DP21114C20 | 35.2d | 17d | MECHANICAL [848.4 h]; Cost |  |  | CP3PA21115C0 | PP2DP21124C0 | PA | C | P2 | PK | ME | 211 | 24 | PD | S | BILL 2 | B02 | S2 | 2F | R00 | ACF07 | PD-2 | 211 | 2n | MEP |  |
| PP2DP22015C20 |  | PA-P2 ; 1st Fix, Plumbing / Drainage System (Parking Area)_PD-2 | 18d | 2012-07-08 | 2012-07-29 | PP2DP09901C20, PP2DP21114C20 | 17.2d | 0d | PLUMBING [1617.6 h]; Cost |  |  | CP3PA22001C0 | PP2DP22015C0 | PA | C | P2 | PK | ME | 220 | 15 | PD | S | BILL 2 | B02 | S2 | 1F | R00 | ACF04 | PD-2 | 220 | 1S | MEP | M1F |
| PP2DP22025C20 |  | PA-P2 ; 2nd Fix, Plumbing / Drainage System (Parking Area)_PD-2 | 30d | 2012-07-29 | 2012-09-04 | PP2DP22015C20 | 29.2d | 11d | PLUMBING [1996.8 h]; Cost |  |  | CP3PA22011C0 | PP2DP22025C0 | PA | C | P2 | PK | ME | 220 | 25 | PD | S | BILL 2 | B02 | S2 | 2F | R00 | ACF07 | PD-2 | 220 | 2n | MEP |  |
| PP2DP23011C20 |  | PA-P2 ; 1st Fix, CHW / HVAC System (Parking Area)_PD-2 | 18d | 2012-07-29 | 2012-08-21 | PP2DP09901C20, PP2DP22015C20 | 17.2d | 0d | MECHANICAL [4182 h]; Cost |  |  | CP3PA23001C0 | PP2DP23011C0 | PA | C | P2 | PK | ME | 230 | 11 | PD | S | BILL 2 | B02 | S2 | 1F | R00 | ACF04 | PD-2 | 230 | 1S | MEP | M1F |
| PP2DP09902C20 |  | PA-P2 ; 2nd coat (Wall & Ceiling) (Parking Area)_PD-2 | 29d | 2012-08-12 | 2012-09-17 | PP2DP09901C20, PGLS103331C290, PGLS103331C300, PGLS403392C20, PGLS503392C10, PP3DP21113C20 SS | 18.2d | 0d | CEILING PAINT [2094 h]; WALL PAINT [454 h]; CEILING PAINT [2613 m2]; WALL PAINT [564.75 m2]; Cost | 329 | 957 | CP3PA09903C0 | PP2DP09902C0 | PA | C | P2 | PK | PA | 099 | 02 | PD | S | BILL 2 | B02 | S2 | 02 | R00 | ACF06 | PD-2 | 099 |  |  |  |
| PP2DP23021C20 |  | PA-P2 ; 2nd Fix, CHW / HVAC System (Parking Area)_PD-2 | 30d | 2012-08-21 | 2012-09-25 | PP2DP23011C20 | 23.2d | 5d | MECHANICAL [4960.8 h]; Cost |  |  | CP3PA23011C0 | PP2DP23021C0 | PA | C | P2 | PK | ME | 230 | 21 | PD | S | BILL 2 | B02 | S2 | 2F | R00 | ACF07 | PD-2 | 230 | 2n | MEP |  |
| PP2DP26012C20 |  | PA-P2 ; 1st Fix, Electrical System (Parking Area)_PD-2 | 18d | 2012-08-21 | 2012-09-11 | PP2DP09901C20, PP2DP23011C20 | 17.2d | 0d | ELECTRICAL [3890.4 h]; Cost |  |  | CP3PA26001C0 | PP2DP26012C0 | PA | C | P2 | PK | ME | 260 | 12 | PD | S | BILL 2 | B02 | S2 | 1F | R00 | ACF04 | PD-2 | 260 | 1S | MEP | M1F |
| PP2DP21113C20 |  | PA-P2 ; Final Fix, Fire Fighting system (Parking Area)_PD-2 | 12d | 2012-09-03 | 2012-09-17 | PP2DP09902C20 FF, PP2DP21124C20, PGLS103331C290, PGLS103331C300, PGLS403392C20, PGLS503392C10, PP3DP21113C20 SS | 18.2d | 0d | MECHANICAL [603.6 h]; Cost |  |  | CP3PA21113C0 | PP2DP21113C0 | PA | C | P2 | PK | ME | 211 | 13 | PD | S | BILL 2 | B02 | S2 | FF | R00 | ACF07 | PD-2 | 211 | FF | MEP |  |
| PP2DP26022C20 |  | PA-P2 ; 2nd Fix, Electrical System (Parking Area)_PD-2 | 30d | 2012-09-11 | 2012-10-16 | PP2DP26012C20 | 17.2d | 0d | ELECTRICAL [3890.4 h]; Cost |  |  | CP3PA26005C0 | PP2DP26022C0 | PA | C | P2 | PK | ME | 260 | 22 | PD | S | BILL 2 | B02 | S2 | 2F | R00 | ACF07 | PD-2 | 260 | 2n | MEP |  |
| PP2DP27013C20 |  | PA-P2 ; 1st Fix, ELV system (Parking Area)_PD-2 | 18d | 2012-09-11 | 2012-10-02 | PP2DP09901C20, PP2DP26012C20 | 17.2d | 0d | ELECTRICAL [632.4 h]; Cost |  |  | CP3PA27010C0 | PP2DP27013C0 | PA | C | P2 | PK | ME | 270 | 13 | PD | S | BILL 2 | B02 | S2 | 1F | R00 | ACF04 | PD-2 | 270 | 1S | MEP | M1F |
| PP2DP22011C20 |  | PA-P2 ; Final Fix, Drainage System (Parking Area)_PD-2 | 12d | 2012-09-17 | 2012-10-01 | PP2DP09902C20 FF, PP2DP22025C20, PGLS103331C290, PGLS103331C300, PGLS403392C20, PGLS503392C10, PP3DP21113C20 SS, PP2DP21113C20 | 18.2d | 0d | PLUMBING [1617.6 h]; Cost |  |  | CP3PA22011C0 | PP2DP22011C0 | PA | C | P2 | PK | ME | 220 | 11 | PD | S | BILL 2 | B02 | S2 | FF | R00 | ACF07 | PD-2 | 220 | FF | MEP |  |
| PP2DP23019C20 |  | PA-P2 ; Final Fix, CHW / HVAC System (Parking Area)_PD-2 | 12d | 2012-10-01 | 2012-10-15 | PP2DP09902C20 FF, PP2DP23021C20, PGLS103331C290, PGLS103331C300, PGLS403392C20, PGLS503392C10, PP3DP21113C20 SS, PP2DP22011C20 | 18.2d | 1d | MECHANICAL [4182 h]; Cost |  |  | CP3PA23019C0 | PP2DP23019C0 | PA | C | P2 | PK | ME | 230 | 19 | PD | S | BILL 2 | B02 | S2 | FF | R00 | ACF07 | PD-2 | 230 | FF | MEP |  |
| PP2DP27023C20 |  | PA-P2 ; 2nd Fix, ELV system (Parking Area)_PD-2 | 24d | 2012-10-02 | 2012-11-01 | PP2DP27013C20 | 17.2d | 0d | ELECTRICAL [632.4 h]; Cost |  |  | CP3PA27020C0 | PP2DP27023C0 | PA | C | P2 | PK | ME | 270 | 23 | PD | S | BILL 2 | B02 | S2 | 2F | R00 | ACF07 | PD-2 | 270 | 2n | MEP |  |
| PP2DP26017C20 |  | PA-P2 ; Final Fix, Electrical System (Parking Area)_PD-2 | 12d | 2012-10-16 | 2012-11-01 | PP2DP26022C20, PGLS103331C290, PGLS103331C300, PGLS403392C20, PGLS503392C10, PP3DP21113C20 SS, PP2DP23019C20 | 17.2d | 0d | ELECTRICAL [3890.4 h]; Cost |  |  | CP3PA26017C0 | PP2DP26017C0 | PA | C | P2 | PK | ME | 260 | 17 | PD | S | BILL 2 | B02 | S2 | FF | R00 | ACF07 | PD-2 | 260 | FF | MEP |  |
| PP2DP09903C20 |  | PA-P2 ; Concrete Sealer (Floor) (Parking Area)_PD-2 | 18d | 2012-11-01 | 2012-11-24 | PP2DP21113C20 SS, PP2DP22011C20 SS, PP2DP23019C20 SS, PP2DP26017C20 SS, PP2DP27030C20 SS, PGLS103331C290, PGLS103331C300, PGLS403392C20, PGLS503392C10, PP3DP21113C20 SS | 17.2d | 0d | ASSORTED FLOOR FINISH [6536 h]; ASSORTED FLOOR FINISH [3627.75 m2]; Cost |  |  | AP2PK09903C0 | PP2DP09903C0 | PA | C | P2 | PK | FF | 096 | 03 | PD | S | BILL 2 | B02 | S2 | 05 | R00 | ACF06 | PD-2 | CS |  |  |  |
| PP2DP27030C20 |  | PA-P2 ; Final Fix, ELV system (Parking Area)_PD-2 | 12d | 2012-11-01 | 2012-11-17 | PP2DP09902C20 FF, PP2DP27023C20, PP2DP27023C20 FF, PGLS103331C290, PGLS103331C300, PGLS403392C20, PGLS503392C10, PP3DP21113C20 SS, PP2DP26017C20 | 17.2d | 0d | ELECTRICAL [632.4 h]; Cost |  |  | CP3PA27030C0 | PP2DP27030C0 | PA | C | P2 | PK | ME | 270 | 30 | PD | S | BILL 2 | B02 | S2 | FF | R00 | ACF07 | PD-2 | 270 | FF | MEP |  |
| PP2DP05509C20 |  | PA-P2 ; Grill & Louvers (Parking Area)_PD-2 | 12d | 2012-11-24 | 2012-12-09 | PP2DP09903C20, PGLS103331C290, PGLS103331C300, PGLS403392C20, PGLS503392C10, PP3DP21113C20 SS | 31.2d | 19.12d | SECONDARY STEEL [503 h]; Cost | 328 | 956 | CP3PA09901C0 | PP3AP09901C0 | PA | C | P2 | PK | SW | 055 | 01 | PD | S | BILL 2 | B02 | S2 | 02 | R00 | ACF03 | PD-2 | 056 |  |  |  |
| PP2DP11006C20 |  | PA-P2 ; Wall Protection (WP, CG, WG, FCG) (Parking Area)_PD-2 | 6d | 2012-11-24 | 2012-12-01 | PP2DP09903C20, PGLS103331C290, PGLS103331C300, PGLS403392C20, PGLS503392C10, PP3DP21113C20 SS | 17.2d | 0d | FF&E [126 h]; Cost | 326 | 1001 | CP3PA11001C0 | PP2DP11006C0 | PA | C | P2 | PK | WF | 097 | 06 | PD | S | BILL 2 | B02 | S2 | 03 | R00 | ACF08 | PD-2 | 097 |  |  |  |
| PP2DP11004C20 |  | PA-P2 ; Floor Marking & Signage (Parking Area)_PD-2 | 14.88d | 2012-12-01 | 2012-12-19 | PP2DP09903C20, PP2DP11006C20, PGLS103331C290, PGLS103331C300, PGLS403392C20, PGLS503392C10, PP3DP21113C20 SS | 17.2d | 0d | SIGNAGES [1511 h]; SIGNAGES [210 no]; Cost |  |  | AP2PK11004C0 | PP2DP11004C0 | PA | C | P2 | PK | SA | 110 | 04 | PD | S | BILL 2 | B02 | S2 | 09 | R00 | ACF08 | PD-2 | c |  |  |  |
| PP2DP11009C20 |  | PA-P2 ; FF&E (Parking Area)_PD-2 | 5.12d | 2012-12-19 | 2012-12-25 | PP2DP11004C20, PGLS103331C290, PGLS103331C300, PGLS403392C20, PGLS503392C10, PP3DP21113C20 SS | 17.2d | 5.12d | FF&E [50 h]; Cost |  |  | AP3PK11004C0 | PP3BP11004C0 | PA | C | P2 | PK | SA | 110 | 04 | PD | S | BILL 2 | B02 | S2 | 01 | R00 | ACF08 | PD-2 | a |  |  |  |

| ID | WBS | Activity | Duration | Start | Finish | Predecessors | Complete | Remaining | Planned start | Planned finish | Total float | Free float | Resources | Cost | Actual cost | change id | IDDD | July2011 Target% Complete | Claimed This Month | P_811 | P_711 | CCAD BUILDING(SET) | CCAD PHASE(SET) | CCAD FLOOR(SET) | CCAD ZONE(SET) | CCAD WORK(SET) | CCAD SECTION(SET) | CCAD SERIAL No.(SET) | CCAD SUB ZONE MEP(SET) | CCAD Carpark code(SET) | CCAD Carpark district code(set) | CCAD CBS(SET) | CCAD BILL(SET) | CCAD HANDOVER(SET) | CCAD TAG(SET) | CCAD REV(SET) | CCADACF (SET) | FSP CODE | CCAD CSA | CCAD SSCF | Act Selector % | user_number8 | user_integer1 | user_integer2 | user_number7 | Change Order # | NEW ACTIVITY ID |
| --- | --- | --- | --- | --- | --- | --- | --- | --- | --- | --- | --- | --- | --- | --- | --- | --- | --- | --- | --- | --- | --- | --- | --- | --- | --- | --- | --- | --- | --- | --- | --- | --- | --- | --- | --- | --- | --- | --- | --- | --- | --- | --- | --- | --- | --- | --- | --- |
|  | EP1 | **PARKING AREA : Zone PE-1** |  | 2011-06-14 | 2012-09-05 |  |  |  |  |  |  |  |  |  |  |  |  |  |  |  |  |  |  |  |  |  |  |  |  |  |  |  |  |  |  |  |  |  |  |  |  |  |  |  |  |  |  |
| PP2EP26012C10 |  | PA-P2 ; 1st Fix, Electrical System (Parking Area)_PE-1 | 16.6d | 2011-06-14 A | 2011-08-30 A | PP2EP21114C10 SS+6d, PP2EP09901C10 | 100% |  | 2011-07-14 | 2011-08-02 |  |  | ELECTRICAL [2008.8 h]; Cost [92758.2 AED] | 92,758.18 | 92,758.18 | CP3PA26001C0 | PP2EP26012C0 | 40 | 44852.1 | 100 | 40 | PA | C | P2 | PK | ME | 260 | 12 | 1S | PE | S | BILL 2 | B02 | S2 | 1F | R00 | ACF04 | PE-1 | MEP | 260 | M1F |  |  |  |  |  |  |
| PP2EP23011C10 |  | PA-P2 ; 1st Fix, CHW / HVAC System (Parking Area)_PE-1 | 9d | 2011-06-18 A | 2011-08-31 A | PP2EP22015C10 SS+14d, PP2EP09901C10 | 100% |  | 2011-08-18 | 2011-08-29 |  |  | MECHANICAL [1672.8 h]; Cost [101523 AED] | 101,522.74 | 101,522.74 | CP3PA23001C0 | PP2EP23011C0 | 50 | 10596.87 | 90 | 30 | PA | C | P2 | PK | ME | 230 | 11 | 1S | PE | S | BILL 2 | B02 | S2 | 1F | R00 | ACF04 | PE-1 | MEP | 230 | M1F |  |  |  |  |  |  |
| PP2EP21114C10 |  | PA-P2 ; 1st Fix, Fire Fighting system (Parking Area)_PE-1 | 12d | 2011-06-20 A | 2011-08-30 A | PGLS103391C30, PP2EP09901C10 | 100% |  | 2011-07-07 | 2011-07-20 |  |  | MECHANICAL [241.2 h]; Cost [14636.1 AED] | 14,636.14 | 14,636.14 | CP3PA21109C0 | PP2EP21114C0 | 80 | 5348.05 | 100 | 35 | PA | C | P2 | PK | ME | 211 | 14 | 1S | PE | S | BILL 2 | B02 | S2 | 1F | R00 | ACF04 | PE-1 | MEP | 211 | M1F |  |  |  |  |  |  |
| PP2EP22025C10 |  | PA-P2 ; 2nd Fix, Plumbing / Drainage System (Parking Area)_PE-1 | 13d | 2011-06-22 A | 2011-09-29 A | PP2EP22015C10 | 100% |  | 2011-08-11 | 2011-08-27 |  |  | PLUMBING [799.2 h]; Cost [39247.8 AED] | 39,247.83 | 39,247.83 | CP3PA22011C0 | PP2EP22025C0 | 55 | 10184.62 | 90 | 20 | PA | C | P2 | PK | ME | 220 | 25 | 2n | PE | S | BILL 2 | B02 | S2 | 2F | R00 | ACF07 | PE-1 | MEP | 220 |  |  |  |  |  |  |  |
| PP2EP21124C10 |  | PA-P2 ; 2nd Fix, Fire Fighting system (Parking Area)_PE-1 | 8d | 2011-06-25 A | 2011-09-29 A | PP2EP21114C10 | 100% |  | 2011-07-21 | 2011-07-30 |  |  | MECHANICAL [339.6 h]; Cost [14636.1 AED] | 14,636.14 | 14,636.14 | CP3PA21115C0 | PP2EP21124C0 | 80 | 7588.31 | 90 | 80 | PA | C | P2 | PK | ME | 211 | 24 | 2n | PE | S | BILL 2 | B02 | S2 | 2F | R00 | ACF07 | PE-1 | MEP | 211 |  |  |  |  |  |  |  |
| PP2EP26022C10 |  | PA-P2 ; 2nd Fix, Electrical System (Parking Area)_PE-1 | 9d | 2011-06-26 A | 2011-10-02 | PP2EP26012C10 | 90% | 0.89d | 2011-08-02 | 2011-08-13 | 288.21d | 229.54d | ELECTRICAL [2008.8 h]; Cost [92758.2 AED] | 92,758.18 | 83,482.36 | CP3PA26005C0 | PP2EP26022C0 | 40 | 32030.85 | 90 | 35 | PA | C | P2 | PK | ME | 260 | 22 | 2n | PE | S | BILL 2 | B02 | S2 | 2F | R00 | ACF07 | PE-1 | MEP | 260 |  |  |  |  |  |  |  |
| PP2EP22015C10 |  | PA-P2 ; 1st Fix, Plumbing / Drainage System (Parking Area)_PE-1 | 8d | 2011-06-27 A | 2011-08-30 A | PP2EP21114C10 SS+14d, PP2EP26012C10, PP2EP09901C10 | 100% |  | 2011-08-02 | 2011-08-11 |  |  | PLUMBING [646.8 h]; Cost [39247.8 AED] | 39,247.83 | 39,247.83 | CP3PA22001C0 | PP2EP22015C0 | 55 | 8194.43 | 100 | 20 | PA | C | P2 | PK | ME | 220 | 15 | 1S | PE | S | BILL 2 | B02 | S2 | 1F | R00 | ACF04 | PE-1 | MEP | 220 | M1F |  |  |  |  |  |  |
| PP2EP23021C10 |  | PA-P2 ; 2nd Fix, CHW / HVAC System (Parking Area)_PE-1 | 6d | 2011-06-29 A | 2011-10-02 | PP2EP23011C10 | 80% | 1.19d | 2011-08-29 | 2011-09-07 | 275.91d | 217.24d | MECHANICAL [1672.8 h]; Cost [101523 AED] | 101,522.74 | 81,218.2 | CP3PA23011C0 | PP2EP23021C0 | 50 | 10593.15 | 60 | 10 | PA | C | P2 | PK | ME | 230 | 21 | 2n | PE | S | BILL 2 | B02 | S2 | 2F | R00 | ACF07 | PE-1 | MEP | 230 |  | 0 | 0 | 0 | 0 |  |  |
| PP2EP09901C10 |  | PA-P2 ; Prime & 1st coat (Wall & Ceiling) (Parking Area)_PE-1 | 14d | 2011-08-10 A | 2011-08-30 A | PGLS103391C40 FS+12d, PGLS103391C10 FS+12d | 100% |  | 2011-09-05 | 2011-09-21 |  |  | CEILING PAINT [2852 h]; WALL PAINT [616 h]; CEILING PAINT [3559.2 m2]; WALL PAINT [768.6 m2]; Cost |  |  | CP3PA09901C0 | PP2EP09901C0 |  |  | 100 | 0 | PA | C | P2 | PK | PA | 099 | 01 |  | PE | S | BILL 2 | B02 | S2 | 01 | R00 | ACF06 | PE-1 |  | 099 |  |  |  |  |  | 328 | 956 |
| PP2EP11006C10 |  | PA-P2 ; Wall Protection (WP, CG, WG, FCG) (Parking Area)_PE-1 | 4.12d | 2011-08-10 A | 2012-08-22 | PP2EP09903C10, PP1S103331C250, PP3DP23021C10 | 95% | 0.21d | 2011-10-27 | 2011-11-01 | 58.67d | 0d | FF&E [93 h]; Cost |  |  | CP3PA11001C0 | PP2EP11006C0 |  |  | 85 | 0 | PA | C | P2 | PK | WF | 097 | 06 |  | PE | S | BILL 2 | B02 | S2 | 03 | R00 | ACF08 | PE-1 |  | 097 |  | 0 | 0 | 0 | 0 | 326 | 1001 |
| PP2EP27013C10 |  | PA-P2 ; 1st Fix, ELV system (Parking Area)_PE-1 | 12d | 2011-08-10 A | 2011-08-30 A | PP2EP26012C10 SS+6d, PP2EP09901C10 | 100% |  | 2011-07-31 | 2011-08-13 |  |  | ELECTRICAL [321.6 h]; Cost [14034.6 AED] | 14,034.62 | 14,034.62 | CP3PA27010C0 | PP2EP27013C0 |  |  | 100 | 0 | PA | C | P2 | PK | ME | 270 | 13 | 1S | PE | S | BILL 2 | B02 | S2 | 1F | R00 | ACF04 | PE-1 | MEP | 270 | M1F |  |  |  |  |  |  |
| PP2EP27023C10 |  | PA-P2 ; 2nd Fix, ELV system (Parking Area)_PE-1 | 9d | 2011-08-10 A | 2011-10-03 | PP2EP27013C10 | 85% | 1.35d | 2011-08-14 | 2011-08-23 | 299.74d | 241.07d | ELECTRICAL [321.6 h]; Cost [14034.6 AED] | 14,034.62 | 11,929.43 | CP3PA27020C0 | PP2EP27023C0 |  |  | 60 | 0 | PA | C | P2 | PK | ME | 270 | 23 | 2n | PE | S | BILL 2 | B02 | S2 | 2F | R00 | ACF07 | PE-1 | MEP | 270 |  | 0 | 0 | 0 | 0 |  |  |
| PP2EP09902C10 |  | PA-P2 ; 2nd coat (Wall & Ceiling) (Parking Area)_PE-1 | 13d | 2012-05-08 | 2012-05-23 | PP2EP09901C10, PP1DP09902C10 SS, PP3DP23021C10 |  |  |  |  | 58.67d | 0d | CEILING PAINT [1535 h]; WALL PAINT [332 h]; CEILING PAINT [1916.4 m2]; WALL PAINT [414 m2]; Cost |  |  | CP3PA09903C0 | PP2EP09902C0 |  |  |  |  | PA | C | P2 | PK | PA | 099 | 02 |  | PE | S | BILL 2 | B02 | S2 | 02 | R00 | ACF06 | PE-1 |  | 099 |  |  |  |  |  | 329 | 957 |
| PP2EP21113C10 |  | PA-P2 ; Final Fix, Fire Fighting system (Parking Area)_PE-1 | 12d | 2012-05-23 | 2012-06-06 | PP2EP09902C10, PP2EP21124C10, PP1S103331C250, PP3DP23021C10 |  |  |  |  | 58.67d | 0d | MECHANICAL [241.2 h]; Cost |  |  | CP3PA21113C0 | PP2EP21113C0 |  |  |  |  | PA | C | P2 | PK | ME | 211 | 13 | FF | PE | S | BILL 2 | B02 | S2 | FF | R00 | ACF07 | PE-1 | MEP | 211 |  |  |  |  |  |  |  |
| PP2EP22011C10 |  | PA-P2 ; Final Fix, Drainage System (Parking Area)_PE-1 | 12d | 2012-06-06 | 2012-06-21 | PP2EP09902C10, PP2EP22025C10, PP1S103331C250, PP3DP23021C10, PP2EP21113C10 |  |  |  |  | 58.67d | 0d | PLUMBING [646.8 h]; Cost |  |  | CP3PA22011C0 | PP2EP22011C0 |  |  |  |  | PA | C | P2 | PK | ME | 220 | 11 | FF | PE | S | BILL 2 | B02 | S2 | FF | R00 | ACF07 | PE-1 | MEP | 220 |  |  |  |  |  |  |  |
| PP2EP23019C10 |  | PA-P2 ; Final Fix, CHW / HVAC System (Parking Area)_PE-1 | 12d | 2012-06-21 | 2012-07-05 | PP2EP09902C10, PP2EP23021C10, PP1S103331C250, PP3DP23021C10, PP2EP22011C10 |  |  |  |  | 58.67d | 0d | MECHANICAL [1672.8 h]; Cost |  |  | CP3PA23019C0 | PP2EP23019C0 |  |  |  |  | PA | C | P2 | PK | ME | 230 | 19 | FF | PE | S | BILL 2 | B02 | S2 | FF | R00 | ACF07 | PE-1 | MEP | 230 |  |  |  |  |  |  |  |
| PP2EP26017C10 |  | PA-P2 ; Final Fix, Electrical System (Parking Area)_PE-1 | 12d | 2012-07-05 | 2012-07-19 | PP2EP09902C10, PP2EP26022C10, PP1S103331C250, PP3DP23021C10, PP2EP23019C10 |  |  |  |  | 58.67d | 0d | ELECTRICAL [1556.4 h]; Cost |  |  | CP3PA26017C0 | PP2EP26017C0 |  |  |  |  | PA | C | P2 | PK | ME | 260 | 17 | FF | PE | S | BILL 2 | B02 | S2 | FF | R00 | ACF07 | PE-1 | MEP | 260 |  |  |  |  |  |  |  |
| PP2EP27030C10 |  | PA-P2 ; Final Fix, ELV system (Parking Area)_PE-1 | 12d | 2012-07-19 | 2012-08-02 | PP2EP09902C10, PP2EP27023C10, PP2EP27023C10 FF, PP1S103331C250, PP3DP23021C10, PP2EP26017C10 |  |  |  |  | 58.67d | 0d | ELECTRICAL [253.2 h]; Cost |  |  | CP3PA27030C0 | PP2EP27030C0 |  |  |  |  | PA | C | P2 | PK | ME | 270 | 30 | FF | PE | S | BILL 2 | B02 | S2 | FF | R00 | ACF07 | PE-1 | MEP | 270 |  |  |  |  |  |  |  |
| PP2EP09903C10 |  | PA-P2 ; Concrete Sealer (Floor) (Parking Area)_PE-1 | 15d | 2012-08-02 | 2012-08-22 | PP2EP21113C10, PP2EP22011C10, PP2EP23019C10, PP2EP26017C10, PP2EP27030C10, PP1S103331C250, PP3DP23021C10 |  |  |  |  | 58.67d | 0d | ASSORTED FLOOR FINISH [4792 h]; ASSORTED FLOOR FINISH [2660.4 m2]; Cost |  |  | AP2PK09903C0 | PP2EP09903C0 |  |  |  |  | PA | C | P2 | PK | FF | 096 | 03 |  | PE | S | BILL 2 | B02 | S2 | 05 | R00 | ACF06 | PE-1 |  | CS |  |  |  |  |  |  |  |
| PP2EP05509C10 |  | PA-P2 ; Grill & Louvers (Parking Area)_PE-1 | 8d | 2012-08-22 | 2012-09-01 | PP2EP09903C10, PP1S103331C250, PP3DP23021C10 |  |  |  |  | 62.88d | 54.88d | SECONDARY STEEL [369 h]; Cost |  |  | CP3PA09901C0 | PP3AP09901C0 |  |  |  |  | PA | C | P2 | PK | SW | 055 | 01 |  | PE | S | BILL 2 | B02 | S2 | 02 | R00 | ACF03 | PE-1 |  | 056 |  |  |  |  |  | 328 | 956 |
| PP2EP11004C10 |  | PA-P2 ; Floor Marking & Signage (Parking Area)_PE-1 | 12d | 2012-08-22 | 2012-09-05 | PP2EP09903C10, PP2EP11006C10, PP1S103331C250, PP3DP23021C10 |  |  |  |  | 58.67d | 50.67d | SIGNAGES [1108 h]; SIGNAGES [154.2 no]; Cost |  |  | AP2PK11004C0 | PP2EP11004C0 |  |  |  |  | PA | C | P2 | PK | SA | 110 | 04 |  | PE | S | BILL 2 | B02 | S2 | 09 | R00 | ACF08 | PE-1 |  | c |  |  |  |  |  |  |  |
|  | EP2 | **PARKING AREA : Zone PE-2** |  | 2011-09-05 | 2012-11-11 |  |  |  |  |  |  |  |  |  |  |  |  |  |  |  |  |  |  |  |  |  |  |  |  |  |  |  |  |  |  |  |  |  |  |  |  |  |  |  |  |  |  |
| PP2EP11006C20 |  | PA-P2 ; Wall Protection (WP, CG, WG, FCG) (Parking Area)_PE-2 | 5d | 2011-09-05 A | 2012-11-01 | PP2EP09903C20, PGLS103391C250, PGLS103331C270, PP1EM26008C0 SS | 5% | 4.75d | 2012-04-14 | 2012-04-19 | 109.59d | 0d | FF&E [108 h]; Cost |  |  | CP3PA11001C0 | PP2EP11006C0 |  |  |  |  | PA | C | P2 | PK | WF | 097 | 06 |  | PE | S | BILL 2 | B02 | S2 | 03 | R00 | ACF08 | PE-2 |  | 097 |  |  |  |  |  | 326 | 1001 |
| PP2EP09901C20 |  | PA-P2 ; Prime & 1st coat (Wall & Ceiling) (Parking Area)_PE-2 | 18d | 2011-10-01 | 2011-10-20 | PGLS203392C0 SS, PGLS103391C60 SS, PP3EP09901C20 SS |  |  |  |  | 185d | 0d | CEILING PAINT [3326 h]; WALL PAINT [718 h]; CEILING PAINT [4152.4 m2]; WALL PAINT [896.7 m2]; Cost |  |  | CP3PA09901C0 | PP2EP09901C0 |  |  |  |  | PA | C | P2 | PK | PA | 099 | 01 |  | PE | S | BILL 2 | B02 | S2 | 01 | R00 | ACF06 | PE-2 |  | 099 |  |  |  |  |  | 328 | 956 |
| PP2EP21114C20 |  | PA-P2 ; 1st Fix, Fire Fighting system (Parking Area)_PE-2 | 30d | 2011-11-30 | 2012-01-05 | PP2EP09901C20, PP3EP21114C20 |  |  |  |  | 155d | 0d | MECHANICAL [282 h]; Cost |  |  | CP3PA21109C0 | PP2EP21114C0 |  |  |  |  | PA | C | P2 | PK | ME | 211 | 14 | 1S | PE | S | BILL 2 | B02 | S2 | 1F | R00 | ACF04 | PE-2 | MEP | 211 | M1F |  |  |  |  |  |  |
| PP2EP21124C20 |  | PA-P2 ; 2nd Fix, Fire Fighting system (Parking Area)_PE-2 | 30d | 2012-01-07 | 2012-02-11 | PP2EP21114C20 |  |  |  |  | 254.25d | 144.66d | MECHANICAL [396 h]; Cost |  |  | CP3PA21115C0 | PP2EP21124C0 |  |  |  |  | PA | C | P2 | PK | ME | 211 | 24 | 2n | PE | S | BILL 2 | B02 | S2 | 2F | R00 | ACF07 | PE-2 | MEP | 211 |  |  |  |  |  |  |  |
| PP2EP22015C20 |  | PA-P2 ; 1st Fix, Plumbing / Drainage System (Parking Area)_PE-2 | 24d | 2012-01-07 | 2012-02-02 | PP2EP09901C20, PP2EP21114C20 |  |  |  |  | 206.25d | 0d | PLUMBING [754.8 h]; Cost |  |  | CP3PA22001C0 | PP2EP22015C0 |  |  |  |  | PA | C | P2 | PK | ME | 220 | 15 | 1S | PE | S | BILL 2 | B02 | S2 | 1F | R00 | ACF04 | PE-2 | MEP | 220 | M1F |  |  |  |  |  |  |
| PP2EP22025C20 |  | PA-P2 ; 2nd Fix, Plumbing / Drainage System (Parking Area)_PE-2 | 30d | 2012-02-05 | 2012-03-10 | PP2EP22015C20 |  |  |  |  | 242.25d | 132.66d | PLUMBING [932.4 h]; Cost |  |  | CP3PA22011C0 | PP2EP22025C0 |  |  |  |  | PA | C | P2 | PK | ME | 220 | 25 | 2n | PE | S | BILL 2 | B02 | S2 | 2F | R00 | ACF07 | PE-2 | MEP | 220 |  |  |  |  |  |  |  |
| PP2EP23011C20 |  | PA-P2 ; 1st Fix, CHW / HVAC System (Parking Area)_PE-2 | 24d | 2012-02-05 | 2012-03-03 | PP2EP09901C20, PP2EP22015C20 |  |  |  |  | 206.25d | 0d | MECHANICAL [1951.2 h]; Cost |  |  | CP3PA23001C0 | PP2EP23011C0 |  |  |  |  | PA | C | P2 | PK | ME | 230 | 11 | 1S | PE | S | BILL 2 | B02 | S2 | 1F | R00 | ACF04 | PE-2 | MEP | 230 | M1F |  |  |  |  |  |  |
| PP2EP23021C20 |  | PA-P2 ; 2nd Fix, CHW / HVAC System (Parking Area)_PE-2 | 30d | 2012-03-04 | 2012-04-07 | PP2EP23011C20 |  |  |  |  | 230.25d | 120.66d | MECHANICAL [1951.2 h]; Cost |  |  | CP3PA23011C0 | PP2EP23021C0 |  |  |  |  | PA | C | P2 | PK | ME | 230 | 21 | 2n | PE | S | BILL 2 | B02 | S2 | 2F | R00 | ACF07 | PE-2 | MEP | 230 |  |  |  |  |  |  |  |
| PP2EP26012C20 |  | PA-P2 ; 1st Fix, Electrical System (Parking Area)_PE-2 | 24d | 2012-03-04 | 2012-03-31 | PP2EP09901C20, PP2EP23011C20 |  |  |  |  | 206.25d | 0d | ELECTRICAL [2343.6 h]; Cost |  |  | CP3PA26001C0 | PP2EP26012C0 |  |  |  |  | PA | C | P2 | PK | ME | 260 | 12 | 1S | PE | S | BILL 2 | B02 | S2 | 1F | R00 | ACF04 | PE-2 | MEP | 260 | M1F |  |  |  |  |  |  |
| PP2EP26022C20 |  | PA-P2 ; 2nd Fix, Electrical System (Parking Area)_PE-2 | 30d | 2012-04-01 | 2012-05-05 | PP2EP26012C20 |  |  |  |  | 218.25d | 108.66d | ELECTRICAL [2343.6 h]; Cost |  |  | CP3PA26005C0 | PP2EP26022C0 |  |  |  |  | PA | C | P2 | PK | ME | 260 | 22 | 2n | PE | S | BILL 2 | B02 | S2 | 2F | R00 | ACF07 | PE-2 | MEP | 260 |  |  |  |  |  |  |  |
| PP2EP27013C20 |  | PA-P2 ; 1st Fix, ELV system (Parking Area)_PE-2 | 24d | 2012-04-01 | 2012-04-28 | PP2EP09901C20, PP2EP26012C20 |  |  |  |  | 206.25d | 0d | ELECTRICAL [375.6 h]; Cost |  |  | CP3PA27010C0 | PP2EP27013C0 |  |  |  |  | PA | C | P2 | PK | ME | 270 | 13 | 1S | PE | S | BILL 2 | B02 | S2 | 1F | R00 | ACF04 | PE-2 | MEP | 270 | M1F |  |  |  |  |  |  |
| PP2EP27023C20 |  | PA-P2 ; 2nd Fix, ELV system (Parking Area)_PE-2 | 30d | 2012-04-29 | 2012-06-02 | PP2EP27013C20 |  |  |  |  | 206.25d | 96.66d | ELECTRICAL [375.6 h]; Cost |  |  | CP3PA27020C0 | PP2EP27023C0 |  |  |  |  | PA | C | P2 | PK | ME | 270 | 23 | 2n | PE | S | BILL 2 | B02 | S2 | 2F | R00 | ACF07 | PE-2 | MEP | 270 |  |  |  |  |  |  |  |
| PP2EP09902C20 |  | PA-P2 ; 2nd coat (Wall & Ceiling) (Parking Area)_PE-2 | 12d | 2012-07-16 | 2012-07-30 | PP2EP09901C20, PGLS103391C250, PGLS103331C270, PP1EM26008C0 SS |  |  |  |  | 109.59d | 0d | CEILING PAINT [1792 h]; WALL PAINT [388 h]; CEILING PAINT [2235.8 m2]; WALL PAINT [483 m2]; Cost |  |  | CP3PA09903C0 | PP2EP09902C0 |  |  |  |  | PA | C | P2 | PK | PA | 099 | 02 |  | PE | S | BILL 2 | B02 | S2 | 02 | R00 | ACF06 | PE-2 |  | 099 |  |  |  |  |  | 329 | 957 |
| PP2EP21113C20 |  | PA-P2 ; Final Fix, Fire Fighting system (Parking Area)_PE-2 | 12d | 2012-07-30 | 2012-08-13 | PP2EP09902C20, PP2EP21124C20, PGLS103391C250, PGLS103331C270, PP1EM26008C0 SS |  |  |  |  | 109.59d | 0d | MECHANICAL [282 h]; Cost |  |  | CP3PA21113C0 | PP2EP21113C0 |  |  |  |  | PA | C | P2 | PK | ME | 211 | 13 | FF | PE | S | BILL 2 | B02 | S2 | FF | R00 | ACF07 | PE-2 | MEP | 211 |  |  |  |  |  |  |  |
| PP2EP22011C20 |  | PA-P2 ; Final Fix, Drainage System (Parking Area)_PE-2 | 12d | 2012-08-13 | 2012-08-29 | PP2EP09902C20, PP2EP22025C20, PGLS103391C250, PGLS103331C270, PP1EM26008C0 SS, PP2EP21113C20 |  |  |  |  | 109.59d | 0d | PLUMBING [754.8 h]; Cost |  |  | CP3PA22011C0 | PP2EP22011C0 |  |  |  |  | PA | C | P2 | PK | ME | 220 | 11 | FF | PE | S | BILL 2 | B02 | S2 | FF | R00 | ACF07 | PE-2 | MEP | 220 |  |  |  |  |  |  |  |
| PP2EP23019C20 |  | PA-P2 ; Final Fix, CHW / HVAC System (Parking Area)_PE-2 | 12d | 2012-08-29 | 2012-09-12 | PP2EP09902C20, PP2EP23021C20, PGLS103391C250, PGLS103331C270, PP1EM26008C0 SS, PP2EP22011C20 |  |  |  |  | 109.59d | 0d | MECHANICAL [1951.2 h]; Cost |  |  | CP3PA23019C0 | PP2EP23019C0 |  |  |  |  | PA | C | P2 | PK | ME | 230 | 19 | FF | PE | S | BILL 2 | B02 | S2 | FF | R00 | ACF07 | PE-2 | MEP | 230 |  |  |  |  |  |  |  |
| PP2EP26017C20 |  | PA-P2 ; Final Fix, Electrical System (Parking Area)_PE-2 | 12d | 2012-09-12 | 2012-09-26 | PP2EP09902C20, PP2EP26022C20, PGLS103391C250, PGLS103331C270, PP1EM26008C0 SS, PP2EP23019C20 |  |  |  |  | 109.59d | 0d | ELECTRICAL [1815.6 h]; Cost |  |  | CP3PA26017C0 | PP2EP26017C0 |  |  |  |  | PA | C | P2 | PK | ME | 260 | 17 | FF | PE | S | BILL 2 | B02 | S2 | FF | R00 | ACF07 | PE-2 | MEP | 260 |  |  |  |  |  |  |  |
| PP2EP27030C20 |  | PA-P2 ; Final Fix, ELV system (Parking Area)_PE-2 | 12d | 2012-09-26 | 2012-10-10 | PP2EP09902C20, PP2EP27023C20, PP2EP27023C20 FF, PGLS103391C250, PGLS103331C270, PP1EM26008C0 SS, PP2EP26017C20 |  |  |  |  | 109.59d | 0d | ELECTRICAL [295.2 h]; Cost |  |  | CP3PA27030C0 | PP2EP27030C0 |  |  |  |  | PA | C | P2 | PK | ME | 270 | 30 | FF | PE | S | BILL 2 | B02 | S2 | FF | R00 | ACF07 | PE-2 | MEP | 270 |  |  |  |  |  |  |  |
| PP2EP09903C20 |  | PA-P2 ; Concrete Sealer (Floor) (Parking Area)_PE-2 | 12d | 2012-10-10 | 2012-10-24 | PP2EP21113C20, PP2EP22011C20, PP2EP23019C20, PP2EP26017C20, PP2EP27030C20, PGLS103391C250, PGLS103331C270, PP1EM26008C0 SS |  |  |  |  | 109.59d | 0d | ASSORTED FLOOR FINISH [5592 h]; ASSORTED FLOOR FINISH [3103.8 m2]; Cost |  |  | AP2PK09903C0 | PP2EP09903C0 |  |  |  |  | PA | C | P2 | PK | FF | 096 | 03 |  | PE | S | BILL 2 | B02 | S2 | 05 | R00 | ACF06 | PE-2 |  | CS |  |  |  |  |  |  |  |
| PP2EP05509C20 |  | PA-P2 ; Grill & Louvers (Parking Area)_PE-2 | 5.78d | 2012-10-24 | 2012-11-03 | PP2EP09903C20, PGLS103391C250, PGLS103331C270, PP1EM26008C0 SS |  |  |  |  | 116.57d | 48.49d | SECONDARY STEEL [430 h]; Cost |  |  | CP3PA09901C0 | PP3AP09901C0 |  |  |  |  | PA | C | P2 | PK | SW | 055 | 01 |  | PE | S | BILL 2 | B02 | S2 | 02 | R00 | ACF03 | PE-2 |  | 056 |  |  |  |  |  | 328 | 956 |
| PP2EP11004C20 |  | PA-P2 ; Floor Marking & Signage (Parking Area)_PE-2 | 8d | 2012-11-01 | 2012-11-11 | PP2EP09903C20, PP2EP11006C20, PGLS103391C250, PGLS103331C270, PP1EM26008C0 SS |  |  |  |  | 109.59d | 41.52d | SIGNAGES [1293 h]; SIGNAGES [179.9 no]; Cost |  |  | AP2PK11004C0 | PP2EP11004C0 |  |  |  |  | PA | C | P2 | PK | SA | 110 | 04 |  | PE | S | BILL 2 | B02 | S2 | 09 | R00 | ACF08 | PE-2 |  | c |  |  |  |  |  |  |  |

| ID | WBS | Activity | Duration | Start | Finish | Predecessors | Complete | Remaining | Planned start | Planned finish | Total float | Free float | Resources | Cost | Actual cost | Change Order # | NEW ACTIVITY ID | change id | IDDD | CCAD BUILDING(SET) | CCAD PHASE(SET) | CCAD FLOOR(SET) | CCAD ZONE(SET) | CCAD WORK(SET) | CCAD SECTION(SET) | CCAD SERIAL No.(SET) | CCAD Carpark code(SET) | CCAD Carpark district code(set) | CCAD CBS(SET) | CCAD BILL(SET) | CCAD HANDOVER(SET) | CCAD TAG(SET) | CCAD REV(SET) | CCADACF (SET) | FSP CODE | CCAD SSCF | CCAD SUB ZONE MEP(SET) | CCAD CSA | Act Selector % | P_811 | P_711 | CCAD MEQ | July2011 Target% Complete | CCAD DIVISION(SET) |
| --- | --- | --- | --- | --- | --- | --- | --- | --- | --- | --- | --- | --- | --- | --- | --- | --- | --- | --- | --- | --- | --- | --- | --- | --- | --- | --- | --- | --- | --- | --- | --- | --- | --- | --- | --- | --- | --- | --- | --- | --- | --- | --- | --- | --- |
|  | EP3 | **PARKING AREA : Zone PE-3** |  | 2011-09-05 | 2012-11-25 |  |  |  |  |  |  |  |  |  |  |  |  |  |  |  |  |  |  |  |  |  |  |  |  |  |  |  |  |  |  |  |  |  |  |  |  |  |  |  |
| PP2EP11006C30 |  | PA-P2 ; Wall Protection (WP, CG, WG, FCG) (Parking Area)_PE-3 | 5d | 2011-09-05 A | 2012-11-14 | PP2EP09903C30 | 10% | 4.5d | 2012-04-15 | 2012-04-21 | 42.7d | 0d | FF&E [108 h]; Cost |  |  | 326 | 1001 | CP3PA11001C0 | PP2EP11006C0 | PA | C | P2 | PK | WF | 097 | 06 | PE | S | BILL 2 | B02 | S2 | 03 | R00 | ACF08 | PE-3 | 097 |  |  |  |  |  |  |  |  |
| PP2EP21114C30 |  | PA-P2 ; 1st Fix, Fire Fighting system (Parking Area)_PE-3 | 18d | 2011-09-05 A | 2011-11-12 | PP2EP09901C30 | 20% | 14.4d | 2011-12-07 | 2011-12-28 | 255.4d | 0d | MECHANICAL [282 h]; Cost [14636.1 AED] | 14,636.14 | 2,927.23 |  |  | CP3PA21109C0 | PP2EP21114C0 | PA | C | P2 | PK | ME | 211 | 14 | PE | S | BILL 2 | B02 | S2 | 1F | R00 | ACF04 | PE-3 | 211 | 1S | MEP | M1F |  |  |  |  |  |
| PP2EP22015C30 |  | PA-P2 ; 1st Fix, Plumbing / Drainage System (Parking Area)_PE-3 | 18d | 2011-09-05 A | 2011-11-12 | PP2EP09901C30 | 20% | 14.4d | 2012-01-07 | 2012-01-28 | 267.4d | 0d | PLUMBING [754.8 h]; Cost [39247.8 AED] | 39,247.83 | 7,849.57 |  |  | CP3PA22001C0 | PP2EP22015C0 | PA | C | P2 | PK | ME | 220 | 15 | PE | S | BILL 2 | B02 | S2 | 1F | R00 | ACF04 | PE-3 | 220 | 1S | MEP | M1F |  |  |  |  |  |
| PP2EP23011C30 |  | PA-P2 ; 1st Fix, CHW / HVAC System (Parking Area)_PE-3 | 18d | 2011-09-05 A | 2011-11-12 | PP2EP09901C30 | 20% | 14.4d | 2012-01-23 | 2012-02-14 | 279.4d | 0d | MECHANICAL [1951.2 h]; Cost [101523 AED] | 101,522.74 | 20,304.55 |  |  | CP3PA23001C0 | PP2EP23011C0 | PA | C | P2 | PK | ME | 230 | 11 | PE | S | BILL 2 | B02 | S2 | 1F | R00 | ACF04 | PE-3 | 230 | 1S | MEP | M1F |  |  |  |  |  |
| PP2EP26012C30 |  | PA-P2 ; 1st Fix, Electrical System (Parking Area)_PE-3 | 18d | 2011-09-05 A | 2011-11-12 | PP2EP09901C30 | 20% | 14.4d | 2011-12-14 | 2012-01-05 | 291.4d | 0d | ELECTRICAL [2343.6 h]; Cost [92758.2 AED] | 92,758.18 | 18,551.64 |  |  | CP3PA26001C0 | PP2EP26012C0 | PA | C | P2 | PK | ME | 260 | 12 | PE | S | BILL 2 | B02 | S2 | 1F | R00 | ACF04 | PE-3 | 260 | 1S | MEP | M1F |  |  |  |  |  |
| PP2EP27013C30 |  | PA-P2 ; 1st Fix, ELV system (Parking Area)_PE-3 | 18d | 2011-09-05 A | 2011-11-12 | PP2EP09901C30 | 20% | 14.4d | 2011-12-21 | 2012-01-12 | 303.4d | 0d | ELECTRICAL [375.6 h]; Cost [14034.6 AED] | 14,034.62 | 2,806.92 |  |  | CP3PA27010C0 | PP2EP27013C0 | PA | C | P2 | PK | ME | 270 | 13 | PE | S | BILL 2 | B02 | S2 | 1F | R00 | ACF04 | PE-3 | 270 | 1S | MEP | M1F |  |  |  |  |  |
| PP2EP09901C30 |  | PA-P2 ; Prime & 1st coat (Wall & Ceiling) (Parking Area)_PE-3 | 18d | 2011-10-01 | 2011-10-22 | PGLS103393C0 SS, PGLS103391C80 SS |  |  |  |  | 255.4d | 0d | CEILING PAINT [3326 h]; WALL PAINT [718 h]; CEILING PAINT [4152.4 m2]; WALL PAINT [896.7 m2]; Cost |  |  | 328 | 956 | CP3PA09901C0 | PP2EP09901C0 | PA | C | P2 | PK | PA | 099 | 01 | PE | S | BILL 2 | B02 | S2 | 01 | R00 | ACF06 | PE-3 | 099 |  |  |  |  |  |  |  |  |
| PP2EP21124C30 |  | PA-P2 ; 2nd Fix, Fire Fighting system (Parking Area)_PE-3 | 18d | 2011-11-12 | 2011-12-05 | PP2EP21114C30 |  |  |  |  | 255.4d | 212.7d | MECHANICAL [396 h]; Cost |  |  |  |  | CP3PA21115C0 | PP2EP21124C0 | PA | C | P2 | PK | ME | 211 | 24 | PE | S | BILL 2 | B02 | S2 | 2F | R00 | ACF07 | PE-3 | 211 | 2n | MEP |  |  |  |  |  |  |
| PP2EP22025C30 |  | PA-P2 ; 2nd Fix, Plumbing / Drainage System (Parking Area)_PE-3 | 18d | 2011-11-12 | 2011-12-05 | PP2EP22015C30 |  |  |  |  | 267.4d | 224.7d | PLUMBING [932.4 h]; Cost |  |  |  |  | CP3PA22011C0 | PP2EP22025C0 | PA | C | P2 | PK | ME | 220 | 25 | PE | S | BILL 2 | B02 | S2 | 2F | R00 | ACF07 | PE-3 | 220 | 2n | MEP |  |  |  |  |  |  |
| PP2EP23021C30 |  | PA-P2 ; 2nd Fix, CHW / HVAC System (Parking Area)_PE-3 | 18d | 2011-11-12 | 2011-12-05 | PP2EP23011C30 |  |  |  |  | 279.4d | 236.7d | MECHANICAL [1951.2 h]; Cost |  |  |  |  | CP3PA23011C0 | PP2EP23021C0 | PA | C | P2 | PK | ME | 230 | 21 | PE | S | BILL 2 | B02 | S2 | 2F | R00 | ACF07 | PE-3 | 230 | 2n | MEP |  |  |  |  |  |  |
| PP2EP26022C30 |  | PA-P2 ; 2nd Fix, Electrical System (Parking Area)_PE-3 | 18d | 2011-11-12 | 2011-12-05 | PP2EP26012C30 |  |  |  |  | 291.4d | 248.7d | ELECTRICAL [2343.6 h]; Cost |  |  |  |  | CP3PA26005C0 | PP2EP26022C0 | PA | C | P2 | PK | ME | 260 | 22 | PE | S | BILL 2 | B02 | S2 | 2F | R00 | ACF07 | PE-3 | 260 | 2n | MEP |  |  |  |  |  |  |
| PP2EP27023C30 |  | PA-P2 ; 2nd Fix, ELV system (Parking Area)_PE-3 | 18d | 2011-11-12 | 2011-12-05 | PP2EP27013C30 |  |  |  |  | 303.4d | 260.7d | ELECTRICAL [375.6 h]; Cost |  |  |  |  | CP3PA27020C0 | PP2EP27023C0 | PA | C | P2 | PK | ME | 270 | 23 | PE | S | BILL 2 | B02 | S2 | 2F | R00 | ACF07 | PE-3 | 270 | 2n | MEP |  |  |  |  |  |  |
| PP2EP09902C30 |  | PA-P2 ; 2nd coat (Wall & Ceiling) (Parking Area)_PE-3 | 12d | 2012-08-12 | 2012-08-28 | PP2EP09901C30, PP3DP21113C20 SS |  |  |  |  | 42.7d | 0d | CEILING PAINT [1792 h]; WALL PAINT [388 h]; CEILING PAINT [2235.8 m2]; WALL PAINT [483 m2]; Cost |  |  | 329 | 957 | CP3PA09903C0 | PP2EP09902C0 | PA | C | P2 | PK | PA | 099 | 02 | PE | S | BILL 2 | B02 | S2 | 02 | R00 | ACF06 | PE-3 | 099 |  |  |  |  |  |  |  |  |
| PP2EP21113C30 |  | PA-P2 ; Final Fix, Fire Fighting system (Parking Area)_PE-3 | 12d | 2012-08-12 | 2012-08-28 | PP2EP09902C30 FF, PP2EP21124C30, PP3DP21113C20 SS |  |  |  |  | 42.7d | 0d | MECHANICAL [282 h]; Cost |  |  |  |  | CP3PA21113C0 | PP2EP21113C0 | PA | C | P2 | PK | ME | 211 | 13 | PE | S | BILL 2 | B02 | S2 | FF | R00 | ACF07 | PE-3 | 211 | FF | MEP |  |  |  |  |  |  |
| PP2EP22011C30 |  | PA-P2 ; Final Fix, Drainage System (Parking Area)_PE-3 | 12d | 2012-08-28 | 2012-09-11 | PP2EP09902C30 FF, PP2EP22025C30, PP3DP21113C20 SS, PP2EP21113C30 |  |  |  |  | 42.7d | 0d | PLUMBING [754.8 h]; Cost |  |  |  |  | CP3PA22011C0 | PP2EP22011C0 | PA | C | P2 | PK | ME | 220 | 11 | PE | S | BILL 2 | B02 | S2 | FF | R00 | ACF07 | PE-3 | 220 | FF | MEP |  |  |  |  |  |  |
| PP2EP23019C30 |  | PA-P2 ; Final Fix, CHW / HVAC System (Parking Area)_PE-3 | 12d | 2012-09-11 | 2012-09-25 | PP2EP09902C30 FF, PP2EP23021C30, PP3DP21113C20 SS, PP2EP22011C30 |  |  |  |  | 42.7d | 0d | MECHANICAL [1951.2 h]; Cost |  |  |  |  | CP3PA23019C0 | PP2EP23019C0 | PA | C | P2 | PK | ME | 230 | 19 | PE | S | BILL 2 | B02 | S2 | FF | R00 | ACF07 | PE-3 | 230 | FF | MEP |  |  |  |  |  |  |
| PP2EP26017C30 |  | PA-P2 ; Final Fix, Electrical System (Parking Area)_PE-3 | 12d | 2012-09-25 | 2012-10-09 | PP2EP26022C30, PP3DP21113C20 SS, PP2EP23019C30 |  |  |  |  | 42.7d | 0d | ELECTRICAL [1815.6 h]; Cost |  |  |  |  | CP3PA26017C0 | PP2EP26017C0 | PA | C | P2 | PK | ME | 260 | 17 | PE | S | BILL 2 | B02 | S2 | FF | R00 | ACF07 | PE-3 | 260 | FF | MEP |  |  |  |  |  |  |
| PP2EP27030C30 |  | PA-P2 ; Final Fix, ELV system (Parking Area)_PE-3 | 12d | 2012-10-09 | 2012-10-23 | PP2EP09902C30 FF, PP2EP27023C30, PP2EP27023C30 FF, PP3DP21113C20 SS, PP2EP26017C30 |  |  |  |  | 42.7d | 0d | ELECTRICAL [295.2 h]; Cost |  |  |  |  | CP3PA27030C0 | PP2EP27030C0 | PA | C | P2 | PK | ME | 270 | 30 | PE | S | BILL 2 | B02 | S2 | FF | R00 | ACF07 | PE-3 | 270 | FF | MEP |  |  |  |  |  |  |
| PP2EP09903C30 |  | PA-P2 ; Concrete Sealer (Floor) (Parking Area)_PE-3 | 12d | 2012-10-23 | 2012-11-08 | PP2EP21113C30, PP2EP22011C30, PP2EP23019C30, PP2EP26017C30, PP2EP27030C30, PP3DP21113C20 SS |  |  |  |  | 42.7d | 0d | ASSORTED FLOOR FINISH [5592 h]; ASSORTED FLOOR FINISH [3103.8 m2]; Cost |  |  |  |  | AP2PK09903C0 | PP2EP09903C0 | PA | C | P2 | PK | FF | 096 | 03 | PE | S | BILL 2 | B02 | S2 | 05 | R00 | ACF06 | PE-3 | CS |  |  |  |  |  |  |  |  |
| PP2EP05509C30 |  | PA-P2 ; Grill & Louvers (Parking Area)_PE-3 | 5.78d | 2012-11-08 | 2012-11-17 | PP2EP09903C30, PP3DP21113C20 SS |  |  |  |  | 49.42d | 37.35d | SECONDARY STEEL [430 h]; Cost |  |  | 328 | 956 | CP3PA09901C0 | PP3AP09901C0 | PA | C | P2 | PK | SW | 055 | 01 | PE | S | BILL 2 | B02 | S2 | 02 | R00 | ACF03 | PE-3 | 056 |  |  |  |  |  |  |  |  |
| PP2EP11004C30 |  | PA-P2 ; Floor Marking & Signage (Parking Area)_PE-3 | 8d | 2012-11-14 | 2012-11-25 | PP2EP09903C30, PP2EP11006C30, PP3DP21113C20 SS |  |  |  |  | 42.7d | 30.62d | SIGNAGES [1293 h]; SIGNAGES [179.9 no]; Cost |  |  |  |  | AP2PK11004C0 | PP2EP11004C0 | PA | C | P2 | PK | SA | 110 | 04 | PE | S | BILL 2 | B02 | S2 | 09 | R00 | ACF08 | PE-3 | c |  |  |  |  |  |  |  |  |
|  | EE1 | **ELECTRICAL ROOMS (6 NOS.) : Zone PE-1** |  | 2011-06-28 | 2012-01-04 |  |  |  |  |  |  |  |  |  |  |  |  |  |  |  |  |  |  |  |  |  |  |  |  |  |  |  |  |  |  |  |  |  |  |  |  |  |  |  |
| PP2EE04001C10 |  | PA-P2 ; Block Wall Works (Elec RM)_PE-1 | 21d | 2011-06-28 A | 2011-07-31 A | PGLS103391C30, PP2EE09903C10 | 100% |  | 2011-06-30 | 2011-07-24 |  |  | BLOCKWORKS [1736 h]; BLOCKWORKS [495.75 m2]; Cost |  |  |  |  | AP2ER04001C0 | PP2EE04001C0 | PA | C | P2 | ER | BL | 040 | 01 | PE | S | BILL 2 | B02 | S2 | BL | R00 | ACF06 | PE-1 | 040 |  |  |  |  |  |  |  |  |
| PP2EE26009C10 |  | PA-P2 ; 2nd Fix, Inst of Equipment (DB, TR, SG) (Elec RM)_PE-1 | 44.88d | 2011-06-28 A | 2011-10-13 | PP2EE08111C10, PAFOA09201C1 | 85% | 6.73d | 2011-12-05 | 2012-01-26 | 135.13d | 0d | ELECTRICAL [895.2 h]; Cost [205745 AED] | 205,744.62 | 174,882.93 |  |  | CP2ME26024C0 | PP2EE26009C0 | PA | C | P2 | ER | ME | 260 | 09 | PE | S | BILL 2 | B02 | S2 | 2F | R00 | ACF04 | PE-1 | 260 | 2n | MEP |  | 85 | 10 | E |  |  |
| PP2EE09601C10 |  | PA-P2 ; Flooring (Elec RM)_PE-1 | 24d | 2011-08-10 A | 2011-09-29 A | PP2EE09902C10, PP2EE23008C10, PP1S103331C250 | 100% |  | 2012-06-04 | 2012-07-02 |  |  | ASSORTED FLOOR FINISH [5864 h]; ASSORTED FLOOR FINISH [3255 m2]; Cost |  |  | 326 | 1377 | CP2ME09601C0 | PP2EE09601C0 | PA | C | P2 | ER | FF | 096 | 01 | PE | S | BILL 2 | B02 | S2 | 01 | R00 | ACF06 | PE-1 | FF |  |  |  | 20 | 0 |  |  |  |
| PP2EE09902C10 |  | PA-P2 ; Wall Prime & 1st coat (Elec RM)_PE-1 | 23d | 2011-08-10 A | 2011-09-29 A | PAFOA09201C1, PP2EE04001C10 FS+12d | 100% |  | 2011-10-22 | 2011-11-20 |  |  | WALL PAINT [1364 h]; WALL PAINT [1701 m2]; Cost |  |  | 328 | 1378 | CP2ME09901C0 | PP2EE09902C0 | PA | C | P2 | ER | PA | 099 | 02 | PE | S | BILL 2 | B02 | S2 | 01 | R00 | ACF06 | PE-1 | 099 |  |  |  | 50 | 0 |  |  |  |
| PP2EE09903C10 |  | PA-P2 ; Ceiling Prime & 1st coat (Elec RM)_PE-1 | 23d | 2011-08-10 A | 2011-08-30 A | PGLS103391C40 FS+12d, PGLS103391C10 FS+12d | 100% |  | 2012-05-08 | 2012-06-03 |  |  | ASSORTED CEILING FINISH [20 h]; Cost |  |  |  | 1544 | CP2ME09905C0 | PP2EE09903C0 | PA | C | P2 | ER | PA | 099 | 03 | PE | S | BILL 2 | B02 | S2 | 01 | R00 | ACF06 | PE-1 | 099 |  |  |  | 100 | 0 |  |  |  |
| PP2EE23002C10 |  | PA-P2 ; 1st Fix, Inst of CHW pipe (Elec RM)_PE-1 | 29d | 2011-08-10 A | 2011-09-29 A | PP2EE23001C10 SS, PP2EE04001C10 | 100% |  | 2011-08-27 | 2011-10-01 |  |  | MECHANICAL [2323.2 h]; Cost [126861 AED] | 126,861.24 | 126,861.24 |  |  | CP2ME23012C0 | PP2EE23002C0 | PA | C | P2 | ER | ME | 230 | 02 | PE | S | BILL 2 | B02 | S2 | 1F | R00 | ACF04 | PE-1 | 230 | 1S | MEP | M1F | 50 | 0 |  |  |  |
| PP2EE21104C10 |  | PA-P2 ; 2nd Fix, Inst of Sprinkler droppers (Elec RM)_PE-1 | 14d | 2011-09-05 A | 2011-09-29 A | PP2EE09501C10 | 100% |  | 2012-01-09 | 2012-01-25 |  |  | MECHANICAL [2644.8 h]; Cost [130849 AED] | 130,849.29 | 130,849.29 |  |  | CP2ME21120C0 | PP2EE21104C0 | PA | C | P2 | ER | ME | 211 | 04 | PE | S | BILL 2 | B02 | S2 | 2F | R00 | ACF07 | PE-1 | 211 | 2n | MEP |  |  |  |  |  |  |
| PP2EE23001C10 |  | PA-P2 ; 1st Fix, Inst. of Supports for MEP (Elec RM)_PE-1 | 22.88d | 2011-09-05 A | 2011-09-29 A | PP2EE04001C10 | 100% |  | 2011-09-01 | 2011-09-27 |  |  | MECHANICAL [469.2 h]; Cost [26439.9 AED] | 26,439.91 | 26,439.91 |  |  | CP2ME23010C0 | PP2EE23001C0 | PA | C | P2 | ER | ME | 230 | 01 | PE | S | BILL 2 | B02 | S2 | 1F | R00 | ACF04 | PE-1 | 230 | 1S | MEP | M1F |  |  |  |  |  |
| PP2EE23003C10 |  | PA-P2 ; 1st Fix, Inst of Ducting (Elec RM)_PE-1 | 29d | 2011-09-05 A | 2011-09-29 A | PP2EE23001C10 SS, PP2EE23002C10 SS, PP2EE04001C10 | 100% |  | 2011-09-27 | 2011-10-31 |  |  | MECHANICAL [2961.6 h]; Cost [161795 AED] | 161,795.25 | 161,795.25 |  |  | CP2ME23014C0 | PP2EE23003C0 | PA | C | P2 | ER | ME | 230 | 03 | PE | S | BILL 2 | B02 | S2 | 1F | R00 | ACF04 | PE-1 | 230 | 1S | MEP | M1F |  |  |  |  |  |
| PP2EE23010C10 |  | PA-P2 ; 2nd Fix, Insulation of CHW pipe & Duct (Elec RM)_PE-1 | 14d | 2011-09-05 A | 2011-09-29 A | PP2EE23001C10 | 100% |  | 2011-09-27 | 2011-10-13 |  |  | MECHANICAL [3555.6 h]; Cost [151659 AED] | 151,659.48 | 151,659.48 |  |  | CP2ME23026C0 | PP2EE23010C0 | PA | C | P2 | ER | ME | 230 | 10 | PE | S | BILL 2 | B02 | S2 | 2F | R00 | ACF07 | PE-1 | 230 | 2n | MEP |  |  |  |  | 45 |  |
| PP2EE26001C10 |  | PA-P2 ; 1st Fix, Inst of Trunking/Conduiting (Elec RM)_PE-1 | 29d | 2011-09-05 A | 2011-10-04 | PP2EE04001C10 | 90% | 2.9d | 2011-10-03 | 2011-11-09 | 96.4d | 0d | ELECTRICAL [144 h]; Cost [8436.8 AED] | 8,436.8 | 7,593.12 |  |  | CP2ME26010C0 | PP2EE26001C0 | PA | C | P2 | ER | ME | 260 | 01 | PE | S | BILL 2 | B02 | S2 | 1F | R00 | ACF04 | PE-1 | 260 | 1S | MEP | M1F |  |  |  |  |  |
| PP2EE26002C10 |  | PA-P2 ; 1st Fix, Inst of Cable Tray (Elec RM)_PE-1 | 29d | 2011-09-05 A | 2011-10-05 | PP3EE26002C0 SS, PP2EE04001C10 | 90% | 2.9d | 2011-11-12 | 2011-12-18 | 95.46d | 0d | ELECTRICAL [48 h]; Cost [3473.98 AED] | 3,473.98 | 3,126.58 |  |  | CP2ME26012C0 | PP2EE26002C0 | PA | C | P2 | ER | ME | 260 | 02 | PE | S | BILL 2 | B02 | S2 | 1F | R00 | ACF04 | PE-1 | 260 | 1S | MEP | M1F |  |  |  |  |  |
| PP2EE27001C10 |  | PA-P2 ; 1st Fix, Wiring/ Cabling work (Elec RM)_PE-1 | 29d | 2011-09-05 A | 2011-10-04 | PP2EE27002C10 SS, PP2EE04001C10 | 90% | 2.9d | 2011-10-31 | 2011-12-10 | 123.4d | 18.94d | ELECTRICAL [230.4 h]; Cost [3204.07 AED] | 3,204.07 | 2,883.66 |  |  | CP2ME27012C0 | PP2EE27001C0 | PA | C | P2 | ER | ME | 270 | 01 | PE | S | BILL 2 | B02 | S2 | 1F | R00 | ACF04 | PE-1 | 270 | 1S | MEP | M1F |  |  |  |  |  |
| PP2EE27002C10 |  | PA-P2 ; 1st Fix, Inst of Trunking for ELV system (Elec RM)_PE-1 | 29d | 2011-09-05 A | 2011-10-06 | PP2EE23001C10 SS, PP2EE04001C10 | 85% | 4.35d | 2011-09-27 | 2011-10-31 | 123.4d | 0d | ELECTRICAL [402 h]; Cost [22184.1 AED] | 22,184.12 | 18,856.5 |  |  | CP2ME27010C0 | PP2EE27002C0 | PA | C | P2 | ER | ME | 270 | 02 | PE | S | BILL 2 | B02 | S2 | 1F | R00 | ACF04 | PE-1 | 270 | 1S | MEP | M1F |  |  |  |  |  |
| PP2EE08111C10 |  | PA-P2 ; Access Floor (Elec RM)_PE-1 | 9d | 2011-09-10 A | 2011-10-06 | PP2EE04001C10 | 51% | 4.44d | 2011-09-14 | 2011-09-25 | 135.13d | 0d | ASSORTED FLOOR FINISH [408 h]; ASSORTED FLOOR FINISH [225.75 m2]; Cost |  |  | 317 | 1375 | CP2ER08105C0 |  | PA | C | P2 | ER | FF | 096 | 11 | PE | S | BILL 2 | B02 | S2 | 04 | R00 | ACF06 | PE-1 | AF |  |  |  |  |  |  |  | 08 |
| PP2EE23008C10 |  | PA-P2 ; 2nd Fix, Inst of Equipment (FCU,FAN,PUMP) (Elec RM)_PE-1 | 18d | 2011-10-01 | 2011-10-20 | PAFOA09201C1 |  |  |  |  | 129d | 0d | MECHANICAL [1912.8 h]; Cost |  |  |  |  | CP2ME23022C0 | PP2EE23008C0 | PA | C | P2 | ER | ME | 230 | 08 | PE | S | BILL 2 | B02 | S2 | 2F | R00 | ACF04 | PE-1 | 230 | 2n | MEP |  |  |  | H |  |  |
| PP2EE05501C10 |  | PA-P2 ; Handrails & balustrade (Elec RM)_PE-1 | 27d | 2011-10-01 | 2011-11-01 | PP2EE09902C10, PP1S103331C250 |  |  |  |  | 419.3d | 351.23d | SECONDARY STEEL [419 h]; Cost |  |  |  |  | CP2ME05501C0 | PP2EE05501C0 | PA | C | P2 | ER | SW | 055 | 01 | PE | S | BILL 2 | B02 | S2 | 01 | R00 | ACF03 | PE-1 | a |  |  |  |  |  |  |  |  |
| PP2EE08102C10 |  | PA-P2 ; Metal Door Frames (Elec RM)_PE-1 | 11.88d | 2011-10-01 | 2011-10-15 | GNHE08101C0, PP2EE04001C10, PP1S103331C250 |  |  |  |  | 122.55d | 0d | METAL DOORS [131 h]; Cost |  |  | 316 | 1374 | CP2ME08101C0 | PP2EE08102C0 | PA | C | P2 | ER | DO | 081 | 02 | PE | S | BILL 2 | B02 | S2 | DF | R00 | ACF06 | PE-1 | 081 |  |  |  |  |  |  |  | 08 |
| PP2EE09901C10 |  | PA-P2 ; Wall - final Paint (Elec RM)_PE-1 | 13.88d | 2011-10-01 | 2011-10-17 | PP2EE09902C10, PP1S103331C250 |  |  |  |  | 326.43d | 318.43d | WALL PAINT [734 h]; WALL PAINT [915.75 m2]; Cost |  |  | 329 | 1379 | CP2ME09903C0 | PP2EE09901C0 | PA | C | P2 | ER | PA | 099 | 01 | PE | S | BILL 2 | B02 | S2 | 02 | R00 | ACF06 | PE-1 | 099 |  |  |  |  |  |  |  |  |
| PP2EE09904C10 |  | PA-P2 ; Ceiling - final Paint (Elec RM)_PE-1 | 9d | 2011-10-01 | 2011-10-11 | PP2EE09903C10, PP1S103331C250 |  |  |  |  | 331.3d | 323.3d | ASSORTED CEILING FINISH [12 h]; Cost |  |  |  | 1546 | CP2ME09907C0 | PP2EE09904C0 | PA | C | P2 | ER | PA | 099 | 04 | PE | S | BILL 2 | B02 | S2 | 02 | R00 | ACF06 | PE-1 | 099 |  |  |  |  |  |  |  |  |
| PP2EE23004C10 |  | PA-P2 ; 1st Fix, Inst of VCD's/FD's (Elec RM)_PE-1 | 29d | 2011-10-01 | 2011-11-03 | PP2EE23003C10 SS, PP2EE04001C10 |  |  |  |  | 70.3d | 0d | MECHANICAL [877.2 h]; Cost |  |  |  |  | CP2ME23016C0 | PP2EE23004C0 | PA | C | P2 | ER | ME | 230 | 04 | PE | S | BILL 2 | B02 | S2 | 1F | R00 | ACF04 | PE-1 | 230 | 1S | MEP | M1F |  |  |  |  |  |
| PP2EE23007C10 |  | PA-P2 ; 2nd Fix, Inst of VAV'S CHW connection (Elec RM)_PE-1 | 18d | 2011-10-01 | 2011-10-22 | PP2EE23001C10 |  |  |  |  | 81.3d | 11d | MECHANICAL [816 h]; Cost |  |  |  |  | CP2ME23020C0 | PP2EE23007C0 | PA | C | P2 | ER | ME | 230 | 07 | PE | S | BILL 2 | B02 | S2 | 2F | R00 | ACF07 | PE-1 | 230 | 2n | MEP |  |  |  |  |  |  |
| PP2EE23009C10 |  | PA-P2 ; 2nd Fix, Inst of VCD's/FD's (Elec RM)_PE-1 | 18d | 2011-10-01 | 2011-10-22 | PP2EE23003C10 |  |  |  |  | 81.3d | 11d | MECHANICAL [1654.8 h]; Cost |  |  |  |  | CP2ME23024C0 | PP2EE23009C0 | PA | C | P2 | ER | ME | 230 | 09 | PE | S | BILL 2 | B02 | S2 | 2F | R00 | ACF07 | PE-1 | 230 | 2n | MEP |  |  |  |  |  |  |
| PP2EE26007C10 |  | PA-P2 ; 2nd Fix, Wiring for Power/Lighting/Emergency (Elec RM)_PE-1 | 18d | 2011-10-04 | 2011-10-25 | PP2EE26001C10 |  |  |  |  | 105.4d | 35.1d | ELECTRICAL [1189.2 h]; Cost |  |  |  |  | CP2ME26020C0 | PP2EE26007C0 | PA | C | P2 | ER | ME | 260 | 07 | PE | S | BILL 2 | B02 | S2 | 2F | R00 | ACF07 | PE-1 | 260 | 2n | MEP |  |  |  |  |  |  |
| PP2EE26008C10 |  | PA-P2 ; 2nd Fix, Cable Pulling (Elec RM)_PE-1 | 18d | 2011-10-05 | 2011-10-26 | PP2EE26002C10 |  |  |  |  | 104.46d | 0d | ELECTRICAL [3073.2 h]; Cost |  |  |  |  | CP2ME26022C0 | PP2EE26008C0 | PA | C | P2 | ER | ME | 260 | 08 | PE | S | BILL 2 | B02 | S2 | 2F | R00 | ACF07 | PE-1 | 260 | 2n | MEP |  |  |  |  |  |  |
| PP2EE27003C10 |  | PA-P2 ; Final Fix, BMS connection work to Equipment (Elec RM)_PE-1 | 8.7d | 2011-10-13 | 2011-10-24 | PP2EE26009C10, PP1S103331C250 |  |  |  |  | 320.44d | 312.44d | ELECTRICAL [1855.2 h]; Cost |  |  |  |  | CP2ME27032C0 | PP2EE27003C0 | PA | C | P2 | ER | ME | 270 | 03 | PE | S | BILL 2 | B02 | S2 | FF | R00 | ACF07 | PE-1 | 270 | FF | MEP |  |  |  |  |  |  |
| PP2EE08103C10 |  | PA-P2 ; Metal Doors (Elec RM)_PE-1 | 11.88d | 2011-10-15 | 2011-10-29 | PP2EE08102C10, PP1S103331C250 |  |  |  |  | 122.55d | 0d | METAL DOORS [113 h]; METAL DOORS [11.25 no]; Cost |  |  | 317 | 1375 | CP2ME08105C0 | PP2EE08103C0 | PA | C | P2 | ER | DO | 081 | 03 | PE | S | BILL 2 | B02 | S2 | DR | R00 | ACF06 | PE-1 | 081 |  |  |  |  |  |  |  | 08 |
| PP2EE22001C10 |  | PA-P2 ; Final Fix, Inst of All drain (Elec RM)_PE-1 | 8.65d | 2011-10-22 | 2011-10-31 | PP2EE09601C10, PP1S103331C250 |  |  |  |  | 314.35d | 306.35d | PLUMBING [1617.6 h]; Cost |  |  |  |  | CP2ME22037C0 | PP2EE22001C0 | PA | C | P2 | ER | ME | 220 | 01 | PE | S | BILL 2 | B02 | S2 | FF | R00 | ACF07 | PE-1 | 220 | FF | MEP |  |  |  |  |  |  |
| PP2EE26003C10 |  | PA-P2 ; Final Fix, Termination & Gladding of Cables (Elec RM)_PE-1 | 18d | 2011-10-26 | 2011-11-20 | PP2EE26002C10, PP2EE26008C10, PP2EE27001C10, PP1S103331C250 |  |  |  |  | 106.46d | 94.06d | ELECTRICAL [384 h]; Cost |  |  |  |  | CP2ME26030C0 | PP2EE26003C0 | PA | C | P2 | ER | ME | 260 | 03 | PE | S | BILL 2 | B02 | S2 | FF | R00 | ACF07 | PE-1 | 260 | FF | MEP |  |  |  |  |  |  |
| PP2EE08701C10 |  | PA-P2 ; Ironmongery (Elec RM)_PE-1 | 15d | 2011-10-29 | 2011-11-19 | PP2EE08103C10, PP1S103331C250 |  |  |  |  | 407.55d | 339.48d | IRONMONGERY [120 h]; IRONMONGERY [12 no]; Cost |  |  | 322 | 6230 | CP2ME08709C0 | PP2EE08701C0 | PA | C | P2 | ER | DO | 087 | 01 | PE | S | BILL 2 | B02 | S2 | IM | R00 | ACF06 | PE-1 | 087 |  |  |  |  |  |  |  | 08 |
| PP2EE09501C10 |  | PA-P2 ; Ceiling Grid and Service Tile (Elec RM)_PE-1 | 18d | 2011-11-03 | 2011-11-29 | PP2EE23002C10, PP2EE23003C10, PP2EE23004C10, PP2EE23007C10, PP2EE23009C10, PP2EE23010C10, PP2EE26001C10, PP2EE26002C10, PAFOA09201C1 FS+15d, PP2EE04001C10 FS+27d |  |  |  |  | 70.3d | 0d | CEILING GRID FOR GYPSUM [8887.75 h]; CEILING GRID FOR GYPSUM [760.5 m2]; Cost |  |  | 323 | 1408 | CP2ME09501C0 | PP2EE09501C0 | PA | C | P2 | ER | CE | 095 | 01 | PE | S | BILL 2 | B02 | S2 | 01 | R00 | ACF06 | PE-1 | 095 |  |  |  |  |  |  |  |  |
| PP2EE21101C10 |  | PA-P2 ; Final Fix, Gaseous Fire Suppression Electrical Room (Elec RM)_PE-1 | 23d | 2011-11-29 | 2011-12-27 | PP2EE09501C10, PP1S103331C250 |  |  |  |  | 76.3d | 63.9d | MECHANICAL [523.2 h]; Cost |  |  |  |  | CP2ME21109C0 | PP2EE21101C0 | PA | C | P2 | ER | ME | 211 | 01 | PE | S | BILL 2 | B02 | S2 | FF | R00 | ACF07 | PE-1 | 211 | FF | MEP |  |  |  |  |  |  |
| PP2EE21102C10 |  | PA-P2 ; Final Fix, Gaseous Fire Suppression Transformer room (Elec RM)_PE-1 | 23d | 2011-11-29 | 2011-12-27 | PP2EE09501C10, PP1S103331C250 |  |  |  |  | 76.3d | 63.9d | MECHANICAL [523.2 h]; Cost |  |  |  |  | CP2ME21111C0 | PP2EE21102C0 | PA | C | P2 | ER | ME | 211 | 02 | PE | S | BILL 2 | B02 | S2 | FF | R00 | ACF07 | PE-1 | 211 | FF | MEP |  |  |  |  |  |  |
| PP2EE21103C10 |  | PA-P2 ; Final Fix, Gaseous Fire Suppression Telecom Room (Elec RM)_PE-1 | 23d | 2011-11-29 | 2011-12-27 | PP2EE09501C10, PP1S103331C250 |  |  |  |  | 270.3d | 262.3d | MECHANICAL [523.2 h]; Cost |  |  |  |  | CP2ME21113C0 | PP2EE21103C0 | PA | C | P2 | ER | ME | 211 | 03 | PE | S | BILL 2 | B02 | S2 | FF | R00 | ACF07 | PE-1 | 211 | FF | MEP |  |  |  |  |  |  |
| PP2EE21105C10 |  | PA-P2 ; 2nd Fix, Inst of Zone Control Valve (Elec RM)_PE-1 | 18d | 2011-11-29 | 2011-12-21 | PP2EE09501C10 |  |  |  |  | 381.3d | 313.23d | MECHANICAL [796.8 h]; Cost |  |  |  |  | CP2ME21124C0 | PP2EE21105C0 | PA | C | P2 | ER | ME | 211 | 05 | PE | S | BILL 2 | B02 | S2 | 2F | R00 | ACF07 | PE-1 | 211 | 2n | MEP |  |  |  |  |  |  |
| PP2EE23005C10 |  | PA-P2 ; Final Fix, Inst of Grilles & Diffusers (Elec RM)_PE-1 | 8.88d | 2011-11-29 | 2011-12-11 | PP2EE09501C10, PP1S103331C250 |  |  |  |  | 90.42d | 78.03d | MECHANICAL [372 h]; Cost |  |  |  |  | CP2ME23030C0 | PP2EE23005C0 | PA | C | P2 | ER | ME | 230 | 05 | PE | S | BILL 2 | B02 | S2 | FF | R00 | ACF07 | PE-1 | 230 | FF | MEP |  |  |  |  |  |  |
| PP2EE23006C10 |  | PA-P2 ; 2nd Fix, Inst of Flexible Duct & Plenum boxes (Elec RM)_PE-1 | 9d | 2011-11-29 | 2011-12-11 | PP2EE09501C10, PP1S103331C250 |  |  |  |  | 70.3d | 0d | MECHANICAL [25.2 h]; Cost |  |  |  |  | CP2ME23032C0 | PP2EE23006C0 | PA | C | P2 | ER | ME | 230 | 06 | PE | S | BILL 2 | B02 | S2 | FF | R00 | ACF07 | PE-1 | 230 | FF | MEP |  |  |  |  |  |  |
| PP2EE26004C10 |  | PA-P2 ; Final Fix, Inst of Ceiling rose (Elec RM)_PE-1 | 18d | 2011-11-29 | 2011-12-21 | PP2EE09501C10, PP1S103331C250 |  |  |  |  | 275.3d | 267.3d | ELECTRICAL [19.2 h]; Cost |  |  |  |  | CP2ME26032C0 | PP2EE26004C0 | PA | C | P2 | ER | ME | 260 | 04 | PE | S | BILL 2 | B02 | S2 | FF | R00 | ACF07 | PE-1 | 260 | FF | MEP |  |  |  |  |  |  |
| PP2EE26005C10 |  | PA-P2 ; Final Fix, Inst of Switch/Sockets (Elec RM)_PE-1 | 18d | 2011-11-29 | 2011-12-21 | PP2EE09501C10, PP1S103331C250 |  |  |  |  | 275.3d | 267.3d | ELECTRICAL [93.6 h]; Cost |  |  |  |  | CP2ME26034C0 | PP2EE26005C0 | PA | C | P2 | ER | ME | 260 | 05 | PE | S | BILL 2 | B02 | S2 | FF | R00 | ACF07 | PE-1 | 260 | FF | MEP |  |  |  |  |  |  |
| PP2EE26006C10 |  | PA-P2 ; Final Fix, Inst of Light fittings (Elec RM)_PE-1 | 18d | 2011-11-29 | 2011-12-21 | PP2EE09501C10, PP1S103331C250 |  |  |  |  | 275.3d | 267.3d | ELECTRICAL [2343.6 h]; Cost |  |  |  |  | CP2ME26039C0 | PP2EE26006C0 | PA | C | P2 | ER | ME | 260 | 06 | PE | S | BILL 2 | B02 | S2 | FF | R00 | ACF07 | PE-1 | 260 | FF | MEP |  |  |  |  |  |  |
| PP2EE27004C10 |  | PA-P2 ; Final Fix, Inst of ELV device (Detector/Speaker) (Elec RM)_PE-1 | 8.88d | 2011-11-29 | 2011-12-11 | PP2EE09501C10, PP1S103331C250 |  |  |  |  | 284.43d | 276.43d | ELECTRICAL [58.8 h]; Cost |  |  |  |  | CP2ME27030C0 | PP2EE27004C0 | PA | C | P2 | ER | ME | 270 | 04 | PE | S | BILL 2 | B02 | S2 | FF | R00 | ACF07 | PE-1 | 270 | FF | MEP |  |  |  |  |  |  |
| PP2EE27005C10 |  | PA-P2 ; 2nd Fix, Wiring Droppers (Elec RM)_PE-1 | 18d | 2011-11-29 | 2011-12-21 | PP2EE09501C10 |  |  |  |  | 381.3d | 313.23d | ELECTRICAL [230.4 h]; Cost |  |  |  |  | CP2ME27022C0 | PP2EE27005C0 | PA | C | P2 | ER | ME | 270 | 05 | PE | S | BILL 2 | B02 | S2 | 2F | R00 | ACF07 | PE-1 | 270 | 2n | MEP |  |  |  |  |  |  |
| PP2EE27006C10 |  | PA-P2 ; 2nd Fix, Inst of ELV Equipment (Panels) (Elec RM)_PE-1 | 18d | 2011-11-29 | 2011-12-21 | PAFOA09201C1, PP2EE09501C10 |  |  |  |  | 381.3d | 313.23d | ELECTRICAL [138 h]; Cost |  |  |  |  | CP2ME27020C0 | PP2EE27006C0 | PA | C | P2 | ER | ME | 270 | 06 | PE | S | BILL 2 | B02 | S2 | 2F | R00 | ACF04 | PE-1 | 270 | 2n | MEP |  |  |  | E |  |  |
| PP2EE09503C10 |  | PA-P2 ; Ceiling closure (Elec RM)_PE-1 | 20d | 2011-12-11 | 2012-01-04 | PP2EE09501C10, PP2EE23006C10, PP2EE26007C10, PP2EE26008C10, PP2EE27001C10, PP1S103331C250 |  |  |  |  | 70.3d | 57.9d | ASSORTED CEILING FINISH [502.87 h]; CEILING GYPSUM [249.49 h]; ASSORTED CEILING FINISH [817.5 m2]; CEILING GYPSUM [760.5 m2]; Cost |  |  | 324 | 1409 | CP2ME09503C0 | PP2EE09502C0 | PA | C | P2 | ER | CE | 095 | 02 | PE | S | BILL 2 | B02 | S2 | 02 | R00 | ACF06 | PE-1 | 095 |  |  |  |  |  |  |  |  |

| ID | WBS | Activity | Duration | Start | Finish | Predecessors | Total float | Free float | Resources | NEW ACTIVITY ID | change id | IDDD | CCAD BUILDING(SET) | CCAD PHASE(SET) | CCAD FLOOR(SET) | CCAD ZONE(SET) | CCAD WORK(SET) | CCAD SECTION(SET) | CCAD SERIAL No.(SET) | CCAD Carpark code(SET) | CCAD Carpark district code(set) | CCAD CBS(SET) | CCAD BILL(SET) | CCAD HANDOVER(SET) | CCAD TAG(SET) | CCAD REV(SET) | CCADACF (SET) | FSP CODE | CCAD SSCF | Change Order # | CCAD DIVISION(SET) | CCAD SUB ZONE MEP(SET) | CCAD CSA | Act Selector % | CCAD MEQ |
| --- | --- | --- | --- | --- | --- | --- | --- | --- | --- | --- | --- | --- | --- | --- | --- | --- | --- | --- | --- | --- | --- | --- | --- | --- | --- | --- | --- | --- | --- | --- | --- | --- | --- | --- | --- |
|  | EE2 | **ELECTRICAL ROOMS (2 NOS.) : Zone PE-2** |  | 2011-12-12 | 2012-08-14 |  |  |  |  |  |  |  |  |  |  |  |  |  |  |  |  |  |  |  |  |  |  |  |  |  |  |  |  |  |  |
| PP2EE09903C0 |  | PA-P2 ; Ceiling Prime & 1st coat (Elec RM)_PE-2 | 18d | 2011-12-12 | 2012-01-03 | PGLS203392C0, PGLS103391C60, PP3EE09903C10 | 120.72d | 0d | ASSORTED CEILING FINISH [7 h]; Cost | 1544 | CP2ME09905C0 | PP2EE09903C0 | PA | C | P2 | ER | PA | 099 | 03 | PE | S | BILL 2 | B02 | S2 | 01 | R00 | ACF06 | PE-2 | 099 |  |  |  |  |  |  |
| PP2EE04001C0 |  | PA-P2 ; Block Wall Works (Elec RM)_PE-2 | 30d | 2012-01-03 | 2012-02-08 | PP2EE09903C0 | 214.47d | 0d | BLOCKWORKS [579 h]; BLOCKWORKS [165.25 m2]; Cost |  | AP2ER04001C0 | PP2EE04001C0 | PA | C | P2 | ER | BL | 040 | 01 | PE | S | BILL 2 | B02 | S2 | BL | R00 | ACF06 | PE-2 | 040 |  |  |  |  |  |  |
| PP2EE08102C0 |  | PA-P2 ; Metal Door Frames (Elec RM)_PE-2 | 4d | 2012-02-08 | 2012-02-13 | GNHE08101C0, PP2EE04001C0 | 333.34d | 135d | METAL DOORS [44 h]; Cost | 1374 | CP2ME08101C0 | PP2EE08102C0 | PA | C | P2 | ER | DO | 081 | 02 | PE | S | BILL 2 | B02 | S2 | DF | R00 | ACF06 | PE-2 | 081 | 316 | 08 |  |  |  |  |
| PP2EE23001C0 |  | PA-P2 ; 1st Fix, Inst. of Supports for MEP (Elec RM)_PE-2 | 12d | 2012-02-08 | 2012-02-22 | PP2EE04001C0 | 214.47d | 0d | MECHANICAL [156 h]; Cost |  | CP2ME23010C0 | PP2EE23001C0 | PA | C | P2 | ER | ME | 230 | 01 | PE | S | BILL 2 | B02 | S2 | 1F | R00 | ACF04 | PE-2 | 230 |  |  | 1S | MEP | M1F |  |
| PP2EE09902C0 |  | PA-P2 ; Wall Prime & 1st coat (Elec RM)_PE-2 | 18d | 2012-02-22 | 2012-03-14 | PAFOA09201C1, PP2EE04001C0 FS+12d | 278.34d | 0d | WALL PAINT [455 h]; WALL PAINT [567 m2]; Cost | 1378 | CP2ME09901C0 | PP2EE09902C0 | PA | C | P2 | ER | PA | 099 | 02 | PE | S | BILL 2 | B02 | S2 | 01 | R00 | ACF06 | PE-2 | 099 | 328 |  |  |  |  |  |
| PP2EE23002C0 |  | PA-P2 ; 1st Fix, Inst of CHW pipe (Elec RM)_PE-2 | 30d | 2012-02-22 | 2012-03-28 | PP2EE23001C0, PP2EE04001C0 | 250.47d | 30d | MECHANICAL [774 h]; Cost |  | CP2ME23012C0 | PP2EE23002C0 | PA | C | P2 | ER | ME | 230 | 02 | PE | S | BILL 2 | B02 | S2 | 1F | R00 | ACF04 | PE-2 | 230 |  |  | 1S | MEP | M1F |  |
| PP2EE23003C0 |  | PA-P2 ; 1st Fix, Inst of Ducting (Elec RM)_PE-2 | 30d | 2012-02-22 | 2012-03-28 | PP2EE23001C0, PP2EE04001C0 | 214.47d | 0d | MECHANICAL [987.6 h]; Cost |  | CP2ME23014C0 | PP2EE23003C0 | PA | C | P2 | ER | ME | 230 | 03 | PE | S | BILL 2 | B02 | S2 | 1F | R00 | ACF04 | PE-2 | 230 |  |  | 1S | MEP | M1F |  |
| PP2EE23007C0 |  | PA-P2 ; 2nd Fix, Inst of VAV'S CHW connection (Elec RM)_PE-2 | 30d | 2012-02-22 | 2012-03-28 | PP2EE23001C0 | 250.47d | 30d | MECHANICAL [272.4 h]; Cost |  | CP2ME23020C0 | PP2EE23007C0 | PA | C | P2 | ER | ME | 230 | 07 | PE | S | BILL 2 | B02 | S2 | 2F | R00 | ACF07 | PE-2 | 230 |  |  | 2n | MEP |  |  |
| PP2EE23008C0 |  | PA-P2 ; 2nd Fix, Inst of Equipment (FCU,FAN,PUMP) (Elec RM)_PE-2 | 30d | 2012-02-22 | 2012-03-28 | PAFOA09201C1, PP2EE04001C0 FS+12d | 291.34d | 93d | MECHANICAL [637.2 h]; Cost |  | CP2ME23022C0 | PP2EE23008C0 | PA | C | P2 | ER | ME | 230 | 08 | PE | S | BILL 2 | B02 | S2 | 2F | R00 | ACF04 | PE-2 | 230 |  |  | 2n | MEP |  | H |
| PP2EE23010C0 |  | PA-P2 ; 2nd Fix, Insulation of CHW pipe & Duct (Elec RM)_PE-2 | 30d | 2012-02-22 | 2012-03-28 | PP2EE23001C0 | 250.47d | 30d | MECHANICAL [1185.6 h]; Cost |  | CP2ME23026C0 | PP2EE23010C0 | PA | C | P2 | ER | ME | 230 | 10 | PE | S | BILL 2 | B02 | S2 | 2F | R00 | ACF07 | PE-2 | 230 |  |  | 2n | MEP |  |  |
| PP2EE26009C0 |  | PA-P2 ; 2nd Fix, Inst of Equipment (DB, TR, SG) (Elec RM)_PE-2 | 30d | 2012-02-22 | 2012-03-28 | PAFOA09201C1, PP2EE04001C0 FS+12d | 281.34d | 99.88d | ELECTRICAL [298.8 h]; Cost |  | CP2ME26024C0 | PP2EE26009C0 | PA | C | P2 | ER | ME | 260 | 09 | PE | S | BILL 2 | B02 | S2 | 2F | R00 | ACF04 | PE-2 | 260 |  |  | 2n | MEP |  | E |
| PP2EE08111C0 |  | PA-P2 ; Access Floor (Elec RM)_PE-2 | 3d | 2012-03-14 | 2012-03-18 | PP2EE09902C0 | 278.34d | 45d | ASSORTED FLOOR FINISH [144 h]; ASSORTED FLOOR FINISH [75.25 m2]; Cost | 1375 | CP2ER08105C0 |  | PA | C | P2 | ER | FF | 096 | 11 | PE | S | BILL 2 | B02 | S2 | 04 | R00 | ACF06 | PE-2 | AF | 317 | 08 |  |  |  |  |
| PP2EE23004C0 |  | PA-P2 ; 1st Fix, Inst of VCD's/FD's (Elec RM)_PE-2 | 30d | 2012-03-28 | 2012-05-02 | PP2EE23003C0, PP2EE04001C0 | 220.47d | 0d | MECHANICAL [292.8 h]; Cost |  | CP2ME23016C0 | PP2EE23004C0 | PA | C | P2 | ER | ME | 230 | 04 | PE | S | BILL 2 | B02 | S2 | 1F | R00 | ACF04 | PE-2 | 230 |  |  | 1S | MEP | M1F |  |
| PP2EE23009C0 |  | PA-P2 ; 2nd Fix, Inst of VCD's/FD's (Elec RM)_PE-2 | 30d | 2012-03-28 | 2012-05-02 | PP2EE23003C0 | 220.47d | 0d | MECHANICAL [552 h]; Cost |  | CP2ME23024C0 | PP2EE23009C0 | PA | C | P2 | ER | ME | 230 | 09 | PE | S | BILL 2 | B02 | S2 | 2F | R00 | ACF07 | PE-2 | 230 |  |  | 2n | MEP |  |  |
| PP2EE26001C0 |  | PA-P2 ; 1st Fix, Inst of Trunking/Conduiting (Elec RM)_PE-2 | 30d | 2012-03-28 | 2012-05-02 | PP2EE04001C0, PP2EE23003C0 | 214.47d | 0d | ELECTRICAL [48 h]; Cost |  | CP2ME26010C0 | PP2EE26001C0 | PA | C | P2 | ER | ME | 260 | 01 | PE | S | BILL 2 | B02 | S2 | 1F | R00 | ACF04 | PE-2 | 260 |  |  | 1S | MEP | M1F |  |
| PP2EE26002C0 |  | PA-P2 ; 1st Fix, Inst of Cable Tray (Elec RM)_PE-2 | 30d | 2012-03-28 | 2012-05-02 | PP2EE04001C0, PP2EE23003C0 | 214.47d | 0d | ELECTRICAL [15.6 h]; Cost |  | CP2ME26012C0 | PP2EE26002C0 | PA | C | P2 | ER | ME | 260 | 02 | PE | S | BILL 2 | B02 | S2 | 1F | R00 | ACF04 | PE-2 | 260 |  |  | 1S | MEP | M1F |  |
| PP2EE27002C0 |  | PA-P2 ; 1st Fix, Inst of Trunking for ELV system (Elec RM)_PE-2 | 30d | 2012-03-28 | 2012-05-02 | PP2EE23001C0, PP2EE04001C0, PP2EE23003C0 | 244.47d | 30d | ELECTRICAL [134.4 h]; Cost |  | CP2ME27010C0 | PP2EE27002C0 | PA | C | P2 | ER | ME | 270 | 02 | PE | S | BILL 2 | B02 | S2 | 1F | R00 | ACF04 | PE-2 | 270 |  |  | 1S | MEP | M1F |  |
| PP2EE09501C0 |  | PA-P2 ; Ceiling Grid and Service Tile (Elec RM)_PE-2 | 6d | 2012-05-02 | 2012-05-09 | PP2EE23002C0, PP2EE23003C0, PP2EE23004C0, PP2EE23007C0, PP2EE23009C0, PP2EE23010C0, PP2EE26001C0, PP2EE26002C0, PAFOA09201C1 FS+15d, PP2EE04001C0 FS+27d | 220.47d | 0d | CEILING GRID FOR GYPSUM [2960.96 h]; CEILING GRID FOR GYPSUM [253.5 m2]; Cost | 1408 | CP2ME09501C0 | PP2EE09501C0 | PA | C | P2 | ER | CE | 095 | 01 | PE | S | BILL 2 | B02 | S2 | 01 | R00 | ACF06 | PE-2 | 095 | 323 |  |  |  |  |  |
| PP2EE26007C0 |  | PA-P2 ; 2nd Fix, Wiring for Power/Lighting/Emergency (Elec RM)_PE-2 | 30d | 2012-05-02 | 2012-06-06 | PP2EE26001C0 | 214.47d | 33d | ELECTRICAL [396 h]; Cost |  | CP2ME26020C0 | PP2EE26007C0 | PA | C | P2 | ER | ME | 260 | 07 | PE | S | BILL 2 | B02 | S2 | 2F | R00 | ACF07 | PE-2 | 260 |  |  | 2n | MEP |  |  |
| PP2EE26008C0 |  | PA-P2 ; 2nd Fix, Cable Pulling (Elec RM)_PE-2 | 30d | 2012-05-02 | 2012-06-06 | PP2EE26002C0 | 214.47d | 33d | ELECTRICAL [1024.8 h]; Cost |  | CP2ME26022C0 | PP2EE26008C0 | PA | C | P2 | ER | ME | 260 | 08 | PE | S | BILL 2 | B02 | S2 | 2F | R00 | ACF07 | PE-2 | 260 |  |  | 2n | MEP |  |  |
| PP2EE27001C0 |  | PA-P2 ; 1st Fix, Wiring/ Cabling work (Elec RM)_PE-2 | 30d | 2012-05-02 | 2012-06-06 | PP2EE27002C0 SS, PP2EE04001C0, PP2EE26002C0 | 214.47d | 33d | ELECTRICAL [76.8 h]; Cost |  | CP2ME27012C0 | PP2EE27001C0 | PA | C | P2 | ER | ME | 270 | 01 | PE | S | BILL 2 | B02 | S2 | 1F | R00 | ACF04 | PE-2 | 270 |  |  | 1S | MEP | M1F |  |
| PP2EE21104C0 |  | PA-P2 ; 2nd Fix, Inst of Sprinkler droppers (Elec RM)_PE-2 | 30d | 2012-05-09 | 2012-06-13 | PP2EE09501C0 | 233.34d | 165.27d | MECHANICAL [882 h]; Cost |  | CP2ME21120C0 | PP2EE21104C0 | PA | C | P2 | ER | ME | 211 | 04 | PE | S | BILL 2 | B02 | S2 | 2F | R00 | ACF07 | PE-2 | 211 |  |  | 2n | MEP |  |  |
| PP2EE21105C0 |  | PA-P2 ; 2nd Fix, Inst of Zone Control Valve (Elec RM)_PE-2 | 30d | 2012-05-09 | 2012-06-13 | PP2EE09501C0 | 233.34d | 165.27d | MECHANICAL [265.2 h]; Cost |  | CP2ME21124C0 | PP2EE21105C0 | PA | C | P2 | ER | ME | 211 | 05 | PE | S | BILL 2 | B02 | S2 | 2F | R00 | ACF07 | PE-2 | 211 |  |  | 2n | MEP |  |  |
| PP2EE23006C0 |  | PA-P2 ; 2nd Fix, Inst of Flexible Duct & Plenum boxes (Elec RM)_PE-2 | 18d | 2012-05-09 | 2012-05-30 | PP2EE09501C0 | 220.47d | 39d | MECHANICAL [8.4 h]; Cost |  | CP2ME23032C0 | PP2EE23006C0 | PA | C | P2 | ER | ME | 230 | 06 | PE | S | BILL 2 | B02 | S2 | FF | R00 | ACF07 | PE-2 | 230 |  |  | FF | MEP |  |  |
| PP2EE27005C0 |  | PA-P2 ; 2nd Fix, Wiring Droppers (Elec RM)_PE-2 | 30d | 2012-05-09 | 2012-06-13 | PP2EE09501C0 | 233.34d | 165.27d | ELECTRICAL [76.8 h]; Cost |  | CP2ME27022C0 | PP2EE27005C0 | PA | C | P2 | ER | ME | 270 | 05 | PE | S | BILL 2 | B02 | S2 | 2F | R00 | ACF07 | PE-2 | 270 |  |  | 2n | MEP |  |  |
| PP2EE27006C0 |  | PA-P2 ; 2nd Fix, Inst of ELV Equipment (Panels) (Elec RM)_PE-2 | 30d | 2012-05-09 | 2012-06-13 | PAFOA09201C1, PP2EE04001C0 FS+12d, PP2EE09501C0, PP2EE08111C0 | 233.34d | 165.27d | ELECTRICAL [45.6 h]; Cost |  | CP2ME27020C0 | PP2EE27006C0 | PA | C | P2 | ER | ME | 270 | 06 | PE | S | BILL 2 | B02 | S2 | 2F | R00 | ACF04 | PE-2 | 270 |  |  | 2n | MEP |  | E |
| PP2EE05501C0 |  | PA-P2 ; Handrails & balustrade (Elec RM)_PE-2 | 9d | 2012-07-16 | 2012-07-26 | PGLS103391C250, PGLS103331C270, PP2EE08103C0 FF, PP1EM26008C0 SS | 197.34d | 129.27d | SECONDARY STEEL [140 h]; Cost |  | CP2ME05501C0 | PP2EE05501C0 | PA | C | P2 | ER | SW | 055 | 01 | PE | S | BILL 2 | B02 | S2 | 01 | R00 | ACF03 | PE-2 | a |  |  |  |  |  |  |
| PP2EE09503C0 |  | PA-P2 ; Ceiling closure (Elec RM)_PE-2 | 6.88d | 2012-07-16 | 2012-07-24 | PP2EE09501C0, PP2EE23006C0, PP2EE26007C0, PP2EE26008C0, PP2EE27001C0, PGLS103391C250, PGLS103331C270, PP1EM26008C0 SS | 181.47d | 0d | ASSORTED CEILING FINISH [167.69 h]; CEILING GYPSUM [83.23 h]; ASSORTED CEILING FINISH [272.5 m2]; CEILING GYPSUM [253.5 m2]; Cost | 1409 | CP2ME09503C0 | PP2EE09502C0 | PA | C | P2 | ER | CE | 095 | 02 | PE | S | BILL 2 | B02 | S2 | 02 | R00 | ACF06 | PE-2 | 095 | 324 |  |  |  |  |  |
| PP2EE09601C0 |  | PA-P2 ; Flooring (Elec RM)_PE-2 | 8d | 2012-07-16 | 2012-07-25 | PP2EE09902C0, PP2EE23008C0, PGLS103391C250, PGLS103331C270, PP2EE09901C0 FF, PP1EM26008C0 SS | 198.34d | 0d | ASSORTED FLOOR FINISH [1960 h]; ASSORTED FLOOR FINISH [1085 m2]; Cost | 1377 | CP2ME09601C0 | PP2EE09601C0 | PA | C | P2 | ER | FF | 096 | 01 | PE | S | BILL 2 | B02 | S2 | 01 | R00 | ACF06 | PE-2 | FF | 326 |  |  |  |  |  |
| PP2EE22001C0 |  | PA-P2 ; Final Fix, Inst of All drain (Elec RM)_PE-2 | 18d | 2012-07-16 | 2012-08-06 | PGLS103391C250, PGLS103331C270, PP2EE09601C0 FF, PP1EM26008C0 SS | 188.34d | 120.27d | PLUMBING [538.8 h]; Cost |  | CP2ME22037C0 | PP2EE22001C0 | PA | C | P2 | ER | ME | 220 | 01 | PE | S | BILL 2 | B02 | S2 | FF | R00 | ACF07 | PE-2 | 220 |  |  | FF | MEP |  |  |
| PP2EE26004C0 |  | PA-P2 ; Final Fix, Inst of Ceiling rose (Elec RM)_PE-2 | 18d | 2012-07-16 | 2012-08-06 | PP2EE09501C0, PGLS103391C250, PGLS103331C270, PP2EE09503C0 FF, PP1EM26008C0 SS | 188.34d | 120.27d | ELECTRICAL [6 h]; Cost |  | CP2ME26032C0 | PP2EE26004C0 | PA | C | P2 | ER | ME | 260 | 04 | PE | S | BILL 2 | B02 | S2 | FF | R00 | ACF07 | PE-2 | 260 |  |  | FF | MEP |  |  |
| PP2EE09901C0 |  | PA-P2 ; Wall - final Paint (Elec RM)_PE-2 | 5d | 2012-07-18 | 2012-07-24 | PP2EE09902C0, PGLS103391C250, PGLS103331C270, PP2EE09904C0 FF, PP1EM26008C0 SS | 199.47d | 1.12d | WALL PAINT [246 h]; WALL PAINT [305.25 m2]; Cost | 1379 | CP2ME09903C0 | PP2EE09901C0 | PA | C | P2 | ER | PA | 099 | 01 | PE | S | BILL 2 | B02 | S2 | 02 | R00 | ACF06 | PE-2 | 099 | 329 |  |  |  |  |  |
| PP2EE08701C0 |  | PA-P2 ; Ironmongery (Elec RM)_PE-2 | 4.88d | 2012-07-19 | 2012-07-25 | PP2EE08103C0 FF, PGLS103391C250, PGLS103331C270, PP1EM26008C0 SS | 198.34d | 130.27d | IRONMONGERY [40 h]; IRONMONGERY [4 no]; Cost | 6230 | CP2ME08709C0 | PP2EE08701C0 | PA | C | P2 | ER | DO | 087 | 01 | PE | S | BILL 2 | B02 | S2 | IM | R00 | ACF06 | PE-2 | 087 | 322 | 08 |  |  |  |  |
| PP2EE09904C0 |  | PA-P2 ; Ceiling - final Paint (Elec RM)_PE-2 | 3d | 2012-07-21 | 2012-07-24 | PP2EE09903C0, PGLS103391C250, PGLS103331C270, PP2EE09503C0 FF, PP1EM26008C0 SS | 199.47d | 0d | ASSORTED CEILING FINISH [4 h]; Cost | 1546 | CP2ME09907C0 | PP2EE09904C0 | PA | C | P2 | ER | PA | 099 | 04 | PE | S | BILL 2 | B02 | S2 | 02 | R00 | ACF06 | PE-2 | 099 |  |  |  |  |  |  |
| PP2EE08103C0 |  | PA-P2 ; Metal Doors (Elec RM)_PE-2 | 4d | 2012-07-21 | 2012-07-25 | PP2EE08102C0, PGLS103391C250, PGLS103331C270, PP2EE09601C0 FF, PP1EM26008C0 SS | 198.34d | 0d | METAL DOORS [38 h]; METAL DOORS [3.75 no]; Cost | 1375 | CP2ME08105C0 | PP2EE08103C0 | PA | C | P2 | ER | DO | 081 | 03 | PE | S | BILL 2 | B02 | S2 | DR | R00 | ACF06 | PE-2 | 081 | 317 | 08 |  |  |  |  |
| PP2EE21101C0 |  | PA-P2 ; Final Fix, Gaseous Fire Suppression Electrical Room (Elec RM)_PE-2 | 18d | 2012-07-24 | 2012-08-14 | PP2EE09503C0, PGLS103391C250, PGLS103331C270, PP1EM26008C0 SS | 181.47d | 113.39d | MECHANICAL [174 h]; Cost |  | CP2ME21109C0 | PP2EE21101C0 | PA | C | P2 | ER | ME | 211 | 01 | PE | S | BILL 2 | B02 | S2 | FF | R00 | ACF07 | PE-2 | 211 |  |  | FF | MEP |  |  |
| PP2EE21102C0 |  | PA-P2 ; Final Fix, Gaseous Fire Suppression Transformer room (Elec RM)_PE-2 | 18d | 2012-07-24 | 2012-08-14 | PP2EE09503C0, PGLS103391C250, PGLS103331C270, PP1EM26008C0 SS | 181.47d | 113.39d | MECHANICAL [174 h]; Cost |  | CP2ME21111C0 | PP2EE21102C0 | PA | C | P2 | ER | ME | 211 | 02 | PE | S | BILL 2 | B02 | S2 | FF | R00 | ACF07 | PE-2 | 211 |  |  | FF | MEP |  |  |
| PP2EE21103C0 |  | PA-P2 ; Final Fix, Gaseous Fire Suppression Telecom Room (Elec RM)_PE-2 | 18d | 2012-07-24 | 2012-08-14 | PP2EE09503C0, PGLS103391C250, PGLS103331C270, PP1EM26008C0 SS | 181.47d | 113.39d | MECHANICAL [174 h]; Cost |  | CP2ME21113C0 | PP2EE21103C0 | PA | C | P2 | ER | ME | 211 | 03 | PE | S | BILL 2 | B02 | S2 | FF | R00 | ACF07 | PE-2 | 211 |  |  | FF | MEP |  |  |
| PP2EE23005C0 |  | PA-P2 ; Final Fix, Inst of Grilles & Diffusers (Elec RM)_PE-2 | 18d | 2012-07-24 | 2012-08-14 | PP2EE09503C0, PGLS103391C250, PGLS103331C270, PP1EM26008C0 SS | 181.47d | 113.39d | MECHANICAL [123.6 h]; Cost |  | CP2ME23030C0 | PP2EE23005C0 | PA | C | P2 | ER | ME | 230 | 05 | PE | S | BILL 2 | B02 | S2 | FF | R00 | ACF07 | PE-2 | 230 |  |  | FF | MEP |  |  |
| PP2EE26003C0 |  | PA-P2 ; Final Fix, Termination & Gladding of Cables (Elec RM)_PE-2 | 18d | 2012-07-24 | 2012-08-14 | PP2EE09503C0, PGLS103391C250, PGLS103331C270, PP1EM26008C0 SS | 181.47d | 0d | ELECTRICAL [128.4 h]; Cost |  | CP2ME26030C0 | PP2EE26003C0 | PA | C | P2 | ER | ME | 260 | 03 | PE | S | BILL 2 | B02 | S2 | FF | R00 | ACF07 | PE-2 | 260 |  |  | FF | MEP |  |  |
| PP2EE26005C0 |  | PA-P2 ; Final Fix, Inst of Switch/Sockets (Elec RM)_PE-2 | 18d | 2012-07-24 | 2012-08-14 | PP2EE09503C0, PGLS103391C250, PGLS103331C270, PP1EM26008C0 SS | 181.47d | 113.39d | ELECTRICAL [31.2 h]; Cost |  | CP2ME26034C0 | PP2EE26005C0 | PA | C | P2 | ER | ME | 260 | 05 | PE | S | BILL 2 | B02 | S2 | FF | R00 | ACF07 | PE-2 | 260 |  |  | FF | MEP |  |  |
| PP2EE26006C0 |  | PA-P2 ; Final Fix, Inst of Light fittings (Elec RM)_PE-2 | 18d | 2012-07-24 | 2012-08-14 | PP2EE09503C0, PGLS103391C250, PGLS103331C270, PP1EM26008C0 SS | 181.47d | 113.39d | ELECTRICAL [781.2 h]; Cost |  | CP2ME26039C0 | PP2EE26006C0 | PA | C | P2 | ER | ME | 260 | 06 | PE | S | BILL 2 | B02 | S2 | FF | R00 | ACF07 | PE-2 | 260 |  |  | FF | MEP |  |  |
| PP2EE27003C0 |  | PA-P2 ; Final Fix, BMS connection work to Equipment (Elec RM)_PE-2 | 18d | 2012-07-24 | 2012-08-14 | PP2EE26009C0, PGLS103391C250, PGLS103331C270, PP2EE26003C0 FF, PP1EM26008C0 SS | 181.47d | 113.39d | ELECTRICAL [618 h]; Cost |  | CP2ME27032C0 | PP2EE27003C0 | PA | C | P2 | ER | ME | 270 | 03 | PE | S | BILL 2 | B02 | S2 | FF | R00 | ACF07 | PE-2 | 270 |  |  | FF | MEP |  |  |
| PP2EE27004C0 |  | PA-P2 ; Final Fix, Inst of ELV device (Detector/Speaker) (Elec RM)_PE-2 | 18d | 2012-07-24 | 2012-08-14 | PP2EE09503C0, PGLS103391C250, PGLS103331C270, PP1EM26008C0 SS | 181.47d | 113.39d | ELECTRICAL [19.2 h]; Cost |  | CP2ME27030C0 | PP2EE27004C0 | PA | C | P2 | ER | ME | 270 | 04 | PE | S | BILL 2 | B02 | S2 | FF | R00 | ACF07 | PE-2 | 270 |  |  | FF | MEP |  |  |

| ID | WBS | Activity | Duration | Start | Finish | Predecessors | Total float | Free float | Resources | Change Order # | NEW ACTIVITY ID | change id | IDDD | CCAD BUILDING(SET) | CCAD PHASE(SET) | CCAD FLOOR(SET) | CCAD ZONE(SET) | CCAD WORK(SET) | CCAD SECTION(SET) | CCAD SERIAL No.(SET) | CCAD Carpark code(SET) | CCAD Carpark district code(set) | CCAD CBS(SET) | CCAD BILL(SET) | CCAD HANDOVER(SET) | CCAD TAG(SET) | CCAD REV(SET) | CCADACF (SET) | FSP CODE | CCAD SSCF | July2011 Target% Complete | CCAD SUB ZONE MEP(SET) | CCAD CSA | Act Selector % | CCAD MEQ | CCAD DIVISION(SET) |
| --- | --- | --- | --- | --- | --- | --- | --- | --- | --- | --- | --- | --- | --- | --- | --- | --- | --- | --- | --- | --- | --- | --- | --- | --- | --- | --- | --- | --- | --- | --- | --- | --- | --- | --- | --- | --- |
|  | EM3 | **MECHANICAL ROOMS (3 NOS.) : Zone PE-3** |  | 2011-10-01 | 2012-10-31 |  |  |  |  |  |  |  |  |  |  |  |  |  |  |  |  |  |  |  |  |  |  |  |  |  |  |  |  |  |  |  |
| PP2EM09902C0 |  | PA-P2 ; Wall Prime & 1st coat (Mech RM)_PE-3 | 18d | 2011-10-01 | 2011-10-22 | PGLS103393C0, PGLS103391C80 SS | 88.8d | 0d | WALL PAINT [1739 h]; WALL PAINT [2169 m2]; Cost | 328 | 1469 | C04ME09901C0 | PP2EM09902C0 | PA | C | P2 | M1 | PA | 099 | 02 | PE | S | BILL 2 | B02 | S2 | 01 | R00 | ACF06 | PE-3 | 099 |  |  |  |  |  |  |
| PP2EM04001C0 |  | PA-P2 ; Block Wall Works (Mech RM)_PE-3 | 30d | 2011-10-22 | 2011-11-30 | PP2EM09902C0 | 88.8d | 0d | BLOCKWORKS [2212 h]; BLOCKWORKS [632 m2]; Cost |  |  | AP2M104001C0 | PP2EM04001C0 | PA | C | P2 | M1 | BL | 040 | 01 | PE | S | BILL 2 | B02 | S2 | BL | R00 | ACF06 | PE-3 | 040 |  |  |  |  |  |  |
| PP2EM23003C0 |  | PA-P2 ; 1st Fix, Inst. of Supports for MEP (Mech RM)_PE-3 | 18d | 2011-11-30 | 2011-12-22 | PP2EM04001C0 | 88.8d | 0d | MECHANICAL [625.2 h]; Cost |  |  | C04ME23001C0 | PP2EM23003C0 | PA | C | P2 | M1 | ME | 230 | 03 | PE | S | BILL 2 | B02 | S2 | 1F | R00 | ACF04 | PE-3 | 230 | 35 | 1S | MEP | M1F |  |  |
| PP2EM21102C0 |  | PA-P2 ; 1st Fix, Inst of Sprinkler main pipe (Mech RM)_PE-3 | 32d | 2011-12-22 | 2012-01-30 | PP2EM22003C0 SS, PP2EM23003C0, PP2EM04001C0 | 88.8d | 0d | MECHANICAL [9823.2 h]; Cost |  |  | C04ME21111C0 | PP2EM21102C0 | PA | C | P2 | M1 | ME | 211 | 02 | PE | S | BILL 2 | B02 | S2 | 1F | R00 | ACF04 | PE-3 | 211 |  | 1S | MEP | M1F |  |  |
| PP2EM22001C0 |  | PA-P2 ; 1st Fix, Inst of Drainage pipe (Mech RM)_PE-3 | 32d | 2011-12-22 | 2012-01-30 | PP2EM23003C0, PP2EM04001C0 | 182.8d | 94d | PLUMBING [2156.4 h]; Cost |  |  | C04ME22011C0 | PP2EM22001C0 | PA | C | P2 | M1 | ME | 220 | 01 | PE | S | BILL 2 | B02 | S2 | 1F | R00 | ACF04 | PE-3 | 220 |  | 1S | MEP | M1F |  |  |
| PP2EM22003C0 |  | PA-P2 ; 1st Fix, Inst of Water supply pipe (Mech RM)_PE-3 | 32d | 2011-12-22 | 2012-01-30 | PP2EM23003C0, PP2EM04001C0 | 88.8d | 0d | PLUMBING [6082.8 h]; Cost |  |  | C04ME22006C0 | PP2EM22003C0 | PA | C | P2 | M1 | ME | 220 | 03 | PE | S | BILL 2 | B02 | S2 | 1F | R00 | ACF04 | PE-3 | 220 |  | 1S | MEP | M1F |  |  |
| PP2EM23001C0 |  | PA-P2 ; 1st Fix, Inst of CHW pipe (Mech RM)_PE-3 | 32d | 2011-12-22 | 2012-01-30 | PP2EM23003C0, PP2EM04001C0 | 213.05d | 32d | MECHANICAL [3097.2 h]; Cost |  |  | C04ME23019C0 | PP2EM23001C0 | PA | C | P2 | M1 | ME | 230 | 01 | PE | S | BILL 2 | B02 | S2 | 1F | R00 | ACF04 | PE-3 | 230 |  | 1S | MEP | M1F |  |  |
| PP2EM21101C0 |  | PA-P2 ; 1st Fix, Inst of Sprinkler branch pipe (Mech RM)_PE-3 | 32d | 2012-01-30 | 2012-03-08 | PP2EM04001C0, PP2EM21102C0 | 206.3d | 0d | MECHANICAL [8076 h]; Cost |  |  | C04ME21119C0 | PP2EM21101C0 | PA | C | P2 | M1 | ME | 211 | 01 | PE | S | BILL 2 | B02 | S2 | 1F | R00 | ACF04 | PE-3 | 211 |  | 1S | MEP | M1F |  |  |
| PP2EM23002C0 |  | PA-P2 ; 1st Fix, Inst of Ducting (Mech RM)_PE-3 | 32d | 2012-01-30 | 2012-03-08 | PP2EM23003C0, PP2EM04001C0, PP2EM21102C0 | 88.8d | 0d | MECHANICAL [3948 h]; Cost |  |  | C04ME23005C0 | PP2EM23002C0 | PA | C | P2 | M1 | ME | 230 | 02 | PE | S | BILL 2 | B02 | S2 | 1F | R00 | ACF04 | PE-3 | 230 |  | 1S | MEP | M1F |  |  |
| PP2EM21104C0 |  | PA-P2 ; 2nd Fix, Inst of Sprinkler droppers (Mech RM)_PE-3 | 30d | 2012-03-08 | 2012-04-12 | PP2EM21101C0 | 206.3d | 103.1d | MECHANICAL [3525.6 h]; Cost |  |  | C04ME21115C0 | PP2EM21104C0 | PA | C | P2 | M1 | ME | 211 | 04 | PE | S | BILL 2 | B02 | S2 | 2F | R00 | ACF07 | PE-3 | 211 |  | 2n | MEP |  |  |  |
| PP2EM23007C0 |  | PA-P2 ; 2nd Fix, Inst of VCD's/FD's (Mech RM)_PE-3 | 30d | 2012-03-08 | 2012-04-12 | PP2EM23002C0 | 181.05d | 0d | MECHANICAL [1168.8 h]; Cost |  |  | C04ME23015C0 | PP2EM23007C0 | PA | C | P2 | M1 | ME | 230 | 07 | PE | S | BILL 2 | B02 | S2 | 2F | R00 | ACF07 | PE-3 | 230 |  | 2n | MEP |  |  |  |
| PP2EM23008C0 |  | PA-P2 ; 2nd Fix, Insulation of CHW pipe & Duct (Mech RM)_PE-3 | 30d | 2012-03-08 | 2012-04-12 | PP2EM23001C0, PP2EM23002C0 | 181.05d | 0d | MECHANICAL [3702 h]; Cost |  |  | C04ME23017C0 | PP2EM23008C0 | PA | C | P2 | M1 | ME | 230 | 08 | PE | S | BILL 2 | B02 | S2 | 2F | R00 | ACF07 | PE-3 | 230 |  | 2n | MEP |  |  |  |
| PP2EM26001C0 |  | PA-P2 ; 1st Fix, Inst of Cable Tray (Mech RM)_PE-3 | 32d | 2012-03-08 | 2012-04-15 | PP2EM04001C0, PP2EM23002C0 | 88.8d | 0d | ELECTRICAL [1572 h]; Cost |  |  | C04ME26011C0 | PP2EM26001C0 | PA | C | P2 | M1 | ME | 260 | 01 | PE | S | BILL 2 | B02 | S2 | 1F | R00 | ACF04 | PE-3 | 260 |  | 1S | MEP | M1F |  |  |
| PP2EM26002C0 |  | PA-P2 ; 1st Fix, Inst of Trunking/Conduiting (Mech RM)_PE-3 | 32d | 2012-03-08 | 2012-04-15 | PP2EM23003C0, PP2EM04001C0, PP2EM23002C0 | 180.3d | 32d | ELECTRICAL [1699.2 h]; Cost |  |  | C04ME26001C0 | PP2EM26002C0 | PA | C | P2 | M1 | ME | 260 | 02 | PE | S | BILL 2 | B02 | S2 | 1F | R00 | ACF04 | PE-3 | 260 | 15 | 1S | MEP | M1F |  |  |
| PP2EM27001C0 |  | PA-P2 ; 1st Fix, Inst of Trunking for ELV system (Mech RM)_PE-3 | 32d | 2012-03-08 | 2012-04-15 | PP2EM23002C0 SS, PP2EM04001C0, PP2EM23002C0 | 148.3d | 0d | ELECTRICAL [535.2 h]; Cost |  |  | C04ME27010C0 | PP2EM27001C0 | PA | C | P2 | M1 | ME | 270 | 01 | PE | S | BILL 2 | B02 | S2 | 1F | R00 | ACF04 | PE-3 | 270 |  | 1S | MEP | M1F |  |  |
| PP2EM23009C0 |  | PA-P2 ; 2nd Fix, Inst of Flexible Duct & Plenum boxes (Mech RM)_PE-3 | 25.25d | 2012-04-12 | 2012-05-12 | PP2EM23007C0, PP2EM23008C0 | 181.05d | 77.85d | MECHANICAL [33.6 h]; Cost |  |  | C04ME23023C0 | PP2EM23009C0 | PA | C | P2 | M1 | ME | 230 | 09 | PE | S | BILL 2 | B02 | S2 | FF | R00 | ACF07 | PE-3 | 230 |  | FF | MEP |  |  |  |
| PP2EM23000C0 |  | PA-P2 ; 2nd Fix, Inst of Equipment (Mech RM)_PE-3 | 30d | 2012-04-15 | 2012-05-20 | PP2EM22001C0 FF, PP2EM22003C0 FF, PP2EM26003C0 FF | 88.8d | 0d | Labor General [1.2 h]; Cost |  |  | C04ME23013C0 | PP2EM23000C0 | PA | C | P2 | M1 | ME | 230 | 13 | PE | S | BILL 2 | B02 | S2 | 2F | R00 | ACF04 | PE-3 | 230 |  | 2n | MEP |  | M |  |
| PP2EM26003C0 |  | PA-P2 ; 2nd Fix, Cable Pulling (Mech RM)_PE-3 | 30d | 2012-04-15 | 2012-05-20 | PP2EM26001C0 | 88.8d | 0d | ELECTRICAL [4096.8 h]; Cost |  |  | C04ME26007C0 | PP2EM26003C0 | PA | C | P2 | M1 | ME | 260 | 03 | PE | S | BILL 2 | B02 | S2 | 2F | R00 | ACF07 | PE-3 | 260 |  | 2n | MEP |  |  |  |
| PP2EM27002C0 |  | PA-P2 ; 1st Fix, Wiring/ Cabling work (Mech RM)_PE-3 | 32d | 2012-04-15 | 2012-05-22 | PP2EM26001C0 SS, PP2EM26002C0 SS, PP2EM27001C0 SS, PP2EM04001C0, PP2EM27001C0 | 148.3d | 0d | ELECTRICAL [76.8 h]; Cost |  |  | C04ME27001C0 | PP2EM27002C0 | PA | C | P2 | M1 | ME | 270 | 02 | PE | S | BILL 2 | B02 | S2 | 1F | R00 | ACF04 | PE-3 | 270 |  | 1S | MEP | M1F |  |  |
| PP2EM09201C0 |  | PA-P2 ; Metal Studs (Mech RM)_PE-3 | 20d | 2012-05-20 | 2012-06-12 | PP2EM04001C0 SS+14d, PP2EM04001C0, PP2EM23000C0 | 88.8d | 0d | PARTITIONS [87 h]; PARTITIONS [12 m]; Cost |  |  | C04ME09201C0 | PP2EM09201C0 | PA | C | P2 | M1 | PT | 092 | 01 | PE | S | BILL 2 | B02 | S2 | 1F | R00 | ACF06 | PE-3 | 092 |  |  | GP | PMS |  |  |
| PP2EM21105C0 |  | PA-P2 ; 2nd Fix, Inst of Zone Control Valve (Mech RM)_PE-3 | 30d | 2012-05-20 | 2012-06-25 | PP2EM23000C0, PP2EM23001C0 | 144.3d | 77.1d | MECHANICAL [1062 h]; Cost |  |  | C04ME21117C0 | PP2EM21105C0 | PA | C | P2 | M1 | ME | 211 | 05 | PE | S | BILL 2 | B02 | S2 | 2F | R00 | ACF07 | PE-3 | 211 |  | 2n | MEP |  |  |  |
| PP2EM23005C0 |  | PA-P2 ; 2nd Fix, Inst of Equipment (FCU,FAN,PUMP) (Mech RM)_PE-3 | 30d | 2012-05-20 | 2012-06-25 | PP2EM23000C0 | 120.3d | 0d | MECHANICAL [2550 h]; Cost |  |  | C04ME23011C0 | PP2EM23005C0 | PA | C | P2 | M1 | ME | 230 | 05 | PE | S | BILL 2 | B02 | S2 | 2F | R00 | ACF04 | PE-3 | 230 |  | 2n | MEP |  | H |  |
| PP2EM26004C0 |  | PA-P2 ; 2nd Fix, Inst of Equipment (DB, TR, SG) (Mech RM)_PE-3 | 30d | 2012-05-20 | 2012-06-25 | PP2EM23000C0 | 144.3d | 77.1d | ELECTRICAL [1192.8 h]; Cost |  |  | C04ME26009C0 | PP2EM26004C0 | PA | C | P2 | M1 | ME | 260 | 04 | PE | S | BILL 2 | B02 | S2 | 2F | R00 | ACF04 | PE-3 | 260 |  | 2n | MEP |  | E |  |
| PP2EM27003C0 |  | PA-P2 ; 2nd Fix, Inst of ELV Equipment (Panels) (Mech RM)_PE-3 | 30d | 2012-05-20 | 2012-06-25 | PP2EM23000C0 | 144.3d | 41.1d | ELECTRICAL [237.6 h]; Cost |  |  | C04ME27020C0 | PP2EM27003C0 | PA | C | P2 | M1 | ME | 270 | 03 | PE | S | BILL 2 | B02 | S2 | 2F | R00 | ACF04 | PE-3 | 270 |  | 2n | MEP |  | E |  |
| PP2EM26005C0 |  | PA-P2 ; 2nd Fix, Wiring for Power/Lighting/Emergency (Mech RM)_PE-3 | 30d | 2012-05-22 | 2012-06-27 | PP2EM26001C0, PP2EM26002C0, PP2EM26003C0, PP2EM27001C0, PP2EM27002C0 | 148.3d | 81.1d | ELECTRICAL [76.8 h]; Cost |  |  | C04ME26005C0 | PP2EM26005C0 | PA | C | P2 | M1 | ME | 260 | 05 | PE | S | BILL 2 | B02 | S2 | 2F | R00 | ACF07 | PE-3 | 260 |  | 2n | MEP |  |  |  |
| PP2EM09202C0 |  | PA-P2 ; Partitions 1st face (Mech RM)_PE-3 | 33d | 2012-06-03 | 2012-07-12 | PP2EM09201C0 SS+12d | 88.8d | 26.1d | PARTITIONS [12 m]; PARTITIONS [81 h]; Cost | 314 | 1463 | C04ME09203C0 | PP2EM09202C0 | PA | C | P2 | M1 | PT | 092 | 02 | PE | S | BILL 2 | B02 | S2 | 2F | R00 | ACF06 | PE-3 | 092 |  |  | GP | P1F |  |  |
| PP2EM08102C0 |  | PA-P2 ; Metal Door Frames (Mech RM)_PE-3 | 16d | 2012-06-12 | 2012-07-02 | PP2EM09201C0, GNHE08101C0 | 107.55d | 35.1d | METAL DOORS [166 h]; Cost | 316 | 1465 | C04ME08101C0 | PP2EM08102C0 | PA | C | P2 | M1 | DO | 081 | 02 | PE | S | BILL 2 | B02 | S2 | DF | R00 | ACF06 | PE-3 | 081 |  |  |  |  |  | 08 |
| PP2EM23006C0 |  | PA-P2 ; 2nd Fix, Inst of VAV'S CHW connection (Mech RM)_PE-3 | 30d | 2012-06-25 | 2012-07-30 | PP2EM23005C0 | 120.3d | 11.1d | MECHANICAL [50.4 h]; Cost |  |  | C04ME23009C0 | PP2EM23006C0 | PA | C | P2 | M1 | ME | 230 | 06 | PE | S | BILL 2 | B02 | S2 | 2F | R00 | ACF07 | PE-3 | 230 |  | 2n | MEP |  |  |  |
| PP2EM08103C0 |  | PA-P2 ; Metal Doors (Mech RM)_PE-3 | 16d | 2012-08-12 | 2012-09-02 | PP2EM08102C0, PP3DP21113C20 SS | 72.45d | 0d | METAL DOORS [150 h]; METAL DOORS [15 no]; Cost | 317 | 1466 | C04ME08105C0 | PP2EM08103C0 | PA | C | P2 | M1 | DO | 081 | 03 | PE | S | BILL 2 | B02 | S2 | DR | R00 | ACF06 | PE-3 | 081 |  |  |  |  |  | 08 |
| PP2EM09203C0 |  | PA-P2 ; Partitions Closing (Mech RM)_PE-3 | 42d | 2012-08-12 | 2012-10-02 | PAFOA09201C1 FF, PP2EM09202C0, PP2EM22001C0, PP2EM22003C0, PP2EM08102C0 FF, PP3DP21113C20 SS | 62.7d | 0d | PARTITIONS [12 m]; PARTITIONS [90 h]; Cost | 315 | 1464 | C04ME09205C0 | PP2EM09203C0 | PA | C | P2 | M1 | PT | 092 | 03 | PE | S | BILL 2 | B02 | S2 | FF | R00 | ACF06 | PE-3 | 092 |  |  | GP | P2F |  |  |
| PP2EM21107C0 |  | PA-P2 ; Final Fix, Inst of Sprinklers head (Mech RM)_PE-3 | 24d | 2012-08-12 | 2012-09-11 | PP2EM21104C0, PP2EM23010C0 FF, PP3DP21113C20 SS | 103.2d | 91.12d | MECHANICAL [1396.8 h]; Cost |  |  | C04ME21121C0 | PP2EM21107C0 | PA | C | P2 | M1 | ME | 211 | 07 | PE | S | BILL 2 | B02 | S2 | FF | R00 | ACF07 | PE-3 | 211 |  | FF | MEP |  |  |  |
| PP2EM23010C0 |  | PA-P2 ; Final Fix, Inst of Grilles & Diffusers (Mech RM)_PE-3 | 24d | 2012-08-12 | 2012-09-11 | PP2EM23009C0, PP3DP21113C20 SS | 103.2d | 0d | MECHANICAL [495.6 h]; Cost |  |  | C04ME23021C0 | PP2EM23010C0 | PA | C | P2 | M1 | ME | 230 | 10 | PE | S | BILL 2 | B02 | S2 | FF | R00 | ACF07 | PE-3 | 230 |  | FF | MEP |  |  |  |
| PP2EM27005C0 |  | PA-P2 ; Final Fix, Inst of ELV device (Detector/Speaker) (Mech RM)_PE-3 | 18d | 2012-08-12 | 2012-09-04 | PP2EM09902C0, PP2EM23006C0, PP2EM27003C0, PP3DP21113C20 SS | 109.2d | 97.12d | ELECTRICAL [307.2 h]; Cost |  |  | C04ME27030C0 | PP2EM27005C0 | PA | C | P2 | M1 | ME | 270 | 05 | PE | S | BILL 2 | B02 | S2 | FF | R00 | ACF07 | PE-3 | 270 |  | FF | MEP |  |  |  |
| PP2EM08101C0 |  | PA-P2 ; Al / Glass doors (Mech RM)_PE-3 | 19d | 2012-09-02 | 2012-09-24 | PP2EM08103C0, PP3DP21113C20 SS | 72.45d | 0d | ASSORTED DOORS [250 h]; ASSORTED DOORS [25 no]; Cost |  |  | C04ME08109C0 | PP2EM08101C0 | PA | C | P2 | M1 | DO | 081 | 01 | PE | S | BILL 2 | B02 | S2 | 03 | R00 | ACF06 | PE-3 | 081 |  |  |  |  |  |  |
| PP2EM08701C0 |  | PA-P2 ; Ironmongery (Mech RM)_PE-3 | 19.75d | 2012-09-24 | 2012-10-17 | PP2EM08101C0, PP2EM08103C0, PP3DP21113C20 SS, PV10AF08106R2 FF | 72.45d | 60.38d | IRONMONGERY [150 h]; IRONMONGERY [15 no]; Cost | 322 | 1467 | C04ME08709C0 | PP2EM08701C0 | PA | C | P2 | M1 | DO | 087 | 01 | PE | S | BILL 2 | B02 | S2 | IM | R00 | ACF06 | PE-3 | 087 |  |  |  |  |  | 08 |
| PP2EM27004C0 |  | PA-P2 ; Final Fix, BMS connection work to Equipment (Mech RM)_PE-3 | 24d | 2012-09-25 | 2012-10-23 | PP2EM21105C0, PP2EM23000C0, PP2EM23005C0, PP2EM23007C0, PP2EM26004C0, PP2EM27002C0, PP2EM27003C0, PP2EM26009C0 FF, PP3DP21113C20 SS | 67.2d | 55.12d | ELECTRICAL [2335.2 h]; Cost |  |  | C04ME27003C0 | PP2EM27004C0 | PA | C | P2 | M1 | ME | 270 | 04 | PE | S | BILL 2 | B02 | S2 | FF | R00 | ACF07 | PE-3 | 270 |  | FF | MEP |  |  |  |
| PP2EM26007C0 |  | PA-P2 ; Final Fix, Inst of Light fittings (Mech RM)_PE-3 | 24d | 2012-09-27 | 2012-10-25 | PP2EM09902C0, PP2EM26006C0 FF, PP3DP21113C20 SS | 65.7d | 53.62d | ELECTRICAL [3124.8 h]; Cost |  |  | C04ME26019C0 | PP2EM26007C0 | PA | C | P2 | M1 | ME | 260 | 07 | PE | S | BILL 2 | B02 | S2 | FF | R00 | ACF07 | PE-3 | 260 |  | FF | MEP |  |  |  |
| PP2EM09601C0 |  | PA-P2 ; Floor Finishes (Mech RM)_PE-3 | 22.5d | 2012-10-02 | 2012-10-31 | PP2EM09203C0, PP3DP21113C20 SS | 62.7d | 0d | ASSORTED FLOOR FINISH [7480 h]; ASSORTED FLOOR FINISH [4152 m2]; Cost | 326 | 1501 | C04ME09601C0 | PP2EM09601C0 | PA | C | P2 | M1 | FF | 096 | 01 | PE | S | BILL 2 | B02 | S2 | 01 | R00 | ACF06 | PE-3 | FF |  |  |  |  |  |  |
| PP2EM21106C0 |  | PA-P2 ; Final Fix, Inst of Fire Extinguishers/FHC (Mech RM)_PE-3 | 10.5d | 2012-10-02 | 2012-10-15 | PP2EM09203C0, PP3DP21113C20 SS | 74.7d | 62.62d | MECHANICAL [2016 h]; Cost |  |  | C04ME21123C0 | PP2EM21106C0 | PA | C | P2 | M1 | ME | 211 | 06 | PE | S | BILL 2 | B02 | S2 | FF | R00 | ACF07 | PE-3 | 211 |  | FF | MEP |  |  |  |
| PP2EM26006C0 |  | PA-P2 ; Final Fix, Inst of Ceiling rose (Mech RM)_PE-3 | 19.5d | 2012-10-02 | 2012-10-25 | PP2EM09203C0, PP3DP21113C20 SS | 65.7d | 0d | ELECTRICAL [1533.6 h]; Cost |  |  | C04ME26015C0 | PP2EM26006C0 | PA | C | P2 | M1 | ME | 260 | 06 | PE | S | BILL 2 | B02 | S2 | FF | R00 | ACF07 | PE-3 | 260 |  | FF | MEP |  |  |  |
| PP2EM26009C0 |  | PA-P2 ; Final Fix, Termination & Gladding of Cables (Mech RM)_PE-3 | 18d | 2012-10-02 | 2012-10-23 | PP2EM09203C0, PP2EM26005C0, PP3DP21113C20 SS | 67.2d | 0d | ELECTRICAL [512.4 h]; Cost |  |  | C04ME26013C0 | PP2EM26009C0 | PA | C | P2 | M1 | ME | 260 | 09 | PE | S | BILL 2 | B02 | S2 | FF | R00 | ACF07 | PE-3 | 260 |  | FF | MEP |  |  |  |
| PP2EM09901C0 |  | PA-P2 ; Wall - final Paint (Mech RM)_PE-3 | 18d | 2012-10-04 | 2012-10-25 | PP2EM09902C0, PP2EM26006C0 FF, PP3DP21113C20 SS | 65.7d | 53.62d | WALL PAINT [936 h]; WALL PAINT [1168 m2]; Cost | 329 | 1470 | C04ME09903C0 | PP2EM09901C0 | PA | C | P2 | M1 | PA | 099 | 01 | PE | S | BILL 2 | B02 | S2 | 02 | R00 | ACF06 | PE-3 | 099 |  |  |  |  |  |  |
| PP2EM26008C0 |  | PA-P2 ; Final Fix, Inst of Switch/Sockets (Mech RM)_PE-3 | 18d | 2012-10-04 | 2012-10-25 | PP2EM09902C0, PP2EM26006C0 FF, PP3DP21113C20 SS | 65.7d | 53.62d | ELECTRICAL [1633.2 h]; Cost |  |  | C04ME26017C0 | PP2EM26008C0 | PA | C | P2 | M1 | ME | 260 | 08 | PE | S | BILL 2 | B02 | S2 | FF | R00 | ACF07 | PE-3 | 260 |  | FF | MEP |  |  |  |
| PP2EM22004C0 |  | PA-P2 ; Final Fix, Inst of All drain (Mech RM)_PE-3 | 18d | 2012-10-08 | 2012-10-31 | PP2EM09601C0 FF, PP3DP21113C20 SS, PZ9GZ22060R2 FF | 62.7d | 50.62d | PLUMBING [2156.4 h]; Cost |  |  | C04ME22003C0 | PP2EM22004C0 | PA | C | P2 | M1 | ME | 220 | 04 | PE | S | BILL 2 | B02 | S2 | FF | R00 | ACF07 | PE-3 | 220 |  | FF | MEP |  |  |  |

| ID | WBS | Activity | Duration | Start | Finish | Predecessors | Complete | Remaining | Planned start | Planned finish | Total float | Free float | Resources | change id | IDDD | CCAD BUILDING(SET) | CCAD PHASE(SET) | CCAD FLOOR(SET) | CCAD ZONE(SET) | CCAD WORK(SET) | CCAD SECTION(SET) | CCAD SERIAL No.(SET) | CCAD Carpark code(SET) | CCAD Carpark district code(set) | CCAD CBS(SET) | CCAD BILL(SET) | CCAD HANDOVER(SET) | CCAD TAG(SET) | CCAD REV(SET) | CCADACF (SET) | FSP CODE | CCAD SSCF | NEW ACTIVITY ID | Change Order # | CCAD CSA | Act Selector % | CCAD SUB ZONE MEP(SET) | CCAD DIVISION(SET) | CCAD MEQ |
| --- | --- | --- | --- | --- | --- | --- | --- | --- | --- | --- | --- | --- | --- | --- | --- | --- | --- | --- | --- | --- | --- | --- | --- | --- | --- | --- | --- | --- | --- | --- | --- | --- | --- | --- | --- | --- | --- | --- | --- |
|  | P1 | **P1 LEVEL - MEP & Finishes** |  | 2011-06-14 | 2013-02-21 |  |  |  |  |  |  |  |  |  |  |  |  |  |  |  |  |  |  |  |  |  |  |  |  |  |  |  |  |  |  |  |  |  |  |
|  | BE1 | **ELECTRICAL ROOMS (3 NOS.) :Zone PB-1** |  | 2011-09-05 | 2012-10-16 |  |  |  |  |  |  |  |  |  |  |  |  |  |  |  |  |  |  |  |  |  |  |  |  |  |  |  |  |  |  |  |  |  |  |
| PP1BE04001C10 |  | PA-P1 ; Block Wall Works (Elec RM)_PB-1 | 22d | 2011-09-05 A | 2012-04-16 | PP1BE09903C10 | 50% | 11d | 2011-09-04 | 2011-09-29 | 129.62d | 0d | BLOCKWORKS [2245 h]; BLOCKWORKS [641.4 m2]; Cost | AP1ER04001C0 | PP1BE04001C0 | PA | C | P1 | ER | BL | 040 | 01 | PB | N | BILL 2 | B02 | S1 | BL | R00 | ACF06 | PB-1 | 040 |  |  |  |  |  |  |  |
| PP1BE09903C10 |  | PA-P1 ; Ceiling Prime & 1st coat (Elec RM)_PB-1 | 18d | 2012-03-13 | 2012-04-03 | PGLS103391C100, PGLS103391C110, PP2BE09903C0 |  |  |  |  | 129.62d | 0d | ASSORTED CEILING FINISH [7 h]; Cost | CP2ME09905C0 | PP1BE09903C0 | PA | C | P1 | ER | PA | 099 | 03 | PB | N | BILL 2 | B02 | S1 | 01 | R00 | ACF06 | PB-1 | 099 | 1544 |  |  |  |  |  |  |
| PP1BE09201C10 |  | PA-P1 ; Metal Studs (Elec RM)_PB-1 | 6d | 2012-04-16 | 2012-04-23 | PP1BE04001C10 |  |  |  |  | 219.75d | 0d | PARTITIONS [35 h]; PARTITIONS [3 m]; Cost | CP2ME09201C0 | PP1BE09201C0 | PA | C | P1 | ER | PT | 092 | 01 | PB | N | BILL 2 | B02 | S1 | 1F | R00 | ACF06 | PB-1 | 092 | 1372 | 313 | GP | PMS |  |  |  |
| PP1BE23001C10 |  | PA-P1 ; 1st Fix, Inst. of Supports for MEP (Elec RM)_PB-1 | 12d | 2012-04-16 | 2012-04-30 | PP1BE04001C10 |  |  |  |  | 129.62d | 0d | MECHANICAL [375.6 h]; Cost | CP2ME23010C0 | PP1BE23001C0 | PA | C | P1 | ER | ME | 230 | 01 | PB | N | BILL 2 | B02 | S1 | 1F | R00 | ACF04 | PB-1 | 230 |  |  | MEP | M1F | 1S |  |  |
| PP1BE08102C10 |  | PA-P1 ; Metal Door Frames (Elec RM)_PB-1 | 7d | 2012-04-23 | 2012-05-01 | PP1BE09201C10, GNHE08101C0 |  |  |  |  | 245.62d | 116d | METAL DOORS [46 h]; Cost | CP2ME08101C0 | PP1BE08102C0 | PA | C | P1 | ER | DO | 081 | 02 | PB | N | BILL 2 | B02 | S1 | DF | R00 | ACF06 | PB-1 | 081 | 1374 | 316 |  |  |  | 08 |  |
| PP1BE09202C10 |  | PA-P1 ; Partitions 1st face (Elec RM)_PB-1 | 10.88d | 2012-04-30 | 2012-05-13 | PP1BE09201C10 SS+12d |  |  |  |  | 219.75d | 90.12d | PARTITIONS [4.8 m]; PARTITIONS [19 h]; Cost | CP2ME09203C0 | PP1BE09202C0 | PA | C | P1 | ER | PT | 092 | 02 | PB | N | BILL 2 | B02 | S1 | 2F | R00 | ACF06 | PB-1 | 092 | 1373 | 314 | GP | P1F |  |  |  |
| PP1BE23002C10 |  | PA-P1 ; 1st Fix, Inst of CHW pipe (Elec RM)_PB-1 | 30d | 2012-04-30 | 2012-06-04 | PP1BE23001C10, PP1BE04001C10 |  |  |  |  | 159.62d | 30d | MECHANICAL [1858.8 h]; Cost | CP2ME23012C0 | PP1BE23002C0 | PA | C | P1 | ER | ME | 230 | 02 | PB | N | BILL 2 | B02 | S1 | 1F | R00 | ACF04 | PB-1 | 230 |  |  | MEP | M1F | 1S |  |  |
| PP1BE23003C10 |  | PA-P1 ; 1st Fix, Inst of Ducting (Elec RM)_PB-1 | 30d | 2012-04-30 | 2012-06-04 | PP1BE23001C10, PP1BE04001C10 |  |  |  |  | 129.62d | 0d | MECHANICAL [2368.8 h]; Cost | CP2ME23014C0 | PP1BE23003C0 | PA | C | P1 | ER | ME | 230 | 03 | PB | N | BILL 2 | B02 | S1 | 1F | R00 | ACF04 | PB-1 | 230 |  |  | MEP | M1F | 1S |  |  |
| PP1BE23007C10 |  | PA-P1 ; 2nd Fix, Inst of VAV'S CHW connection (Elec RM)_PB-1 | 30d | 2012-04-30 | 2012-06-04 | PP1BE23001C10 |  |  |  |  | 159.62d | 30d | MECHANICAL [30 h]; Cost | CP2ME23020C0 | PP1BE23007C0 | PA | C | P1 | ER | ME | 230 | 07 | PB | N | BILL 2 | B02 | S1 | 2F | R00 | ACF07 | PB-1 | 230 |  |  | MEP |  | 2n |  |  |
| PP1BE23010C10 |  | PA-P1 ; 2nd Fix, Insulation of CHW pipe & Duct (Elec RM)_PB-1 | 30d | 2012-04-30 | 2012-06-04 | PP1BE23001C10 |  |  |  |  | 159.62d | 30d | MECHANICAL [2221.2 h]; Cost | CP2ME23026C0 | PP1BE23010C0 | PA | C | P1 | ER | ME | 230 | 10 | PB | N | BILL 2 | B02 | S1 | 2F | R00 | ACF07 | PB-1 | 230 |  |  | MEP |  | 2n |  |  |
| PP1BE09902C10 |  | PA-P1 ; Wall Prime & 1st coat (Elec RM)_PB-1 | 18d | 2012-05-03 | 2012-05-24 | PP1BE04001C10 FS+15d |  |  |  |  | 195.62d | 0d | WALL PAINT [483 h]; WALL PAINT [600.6 m2]; Cost | CP2ME09901C0 | PP1BE09902C0 | PA | C | P1 | ER | PA | 099 | 02 | PB | N | BILL 2 | B02 | S1 | 01 | R00 | ACF06 | PB-1 | 099 | 1378 | 328 |  |  |  |  |  |
| PP1BE08106C10 |  | PA-P1 ; Access Floor (Elec RM)_PB-1 | 7d | 2012-05-24 | 2012-06-02 | PP1BE09902C10 |  |  |  |  | 195.62d | 0d | ASSORTED FLOOR FINISH [144 h]; ASSORTED FLOOR FINISH [78 m2]; Cost | CP2ER08105C0 |  | PA | C | P1 | ER | FF | 096 | 06 | PB | N | BILL 2 | B02 | S1 | 04 | R00 | ACF06 | PB-1 | AF | 1375 | 317 |  |  |  | 08 |  |
| PP1BE26009C10 |  | PA-P1 ; 2nd Fix, Inst of Equipment (DB, TR, SG) (Elec RM)_PB-1 | 30d | 2012-06-02 | 2012-07-08 | PP1BE08106C10 |  |  |  |  | 195.62d | 62d | ELECTRICAL [715.2 h]; Cost | CP2ME26024C0 | PP1BE26009C0 | PA | C | P1 | ER | ME | 260 | 09 | PB | N | BILL 2 | B02 | S1 | 2F | R00 | ACF04 | PB-1 | 260 |  |  | MEP |  | 2n |  | E |
| PP1BE23004C10 |  | PA-P1 ; 1st Fix, Inst of VCD's/FD's (Elec RM)_PB-1 | 30d | 2012-06-04 | 2012-07-10 | PP1BE23003C10, PP1BE04001C10 |  |  |  |  | 129.62d | 0d | MECHANICAL [700.8 h]; Cost | CP2ME23016C0 | PP1BE23004C0 | PA | C | P1 | ER | ME | 230 | 04 | PB | N | BILL 2 | B02 | S1 | 1F | R00 | ACF04 | PB-1 | 230 |  |  | MEP | M1F | 1S |  |  |
| PP1BE23009C10 |  | PA-P1 ; 2nd Fix, Inst of VCD's/FD's (Elec RM)_PB-1 | 30d | 2012-06-04 | 2012-07-10 | PP1BE23003C10 |  |  |  |  | 129.62d | 0d | MECHANICAL [700.8 h]; Cost | CP2ME23024C0 | PP1BE23009C0 | PA | C | P1 | ER | ME | 230 | 09 | PB | N | BILL 2 | B02 | S1 | 2F | R00 | ACF07 | PB-1 | 230 |  |  | MEP |  | 2n |  |  |
| PP1BE26001C10 |  | PA-P1 ; 1st Fix, Inst of Trunking/Conduiting (Elec RM)_PB-1 | 30d | 2012-06-04 | 2012-07-10 | PP1BE23001C10, PP1BE04001C10, PP1BE23003C10 |  |  |  |  | 129.62d | 0d | ELECTRICAL [115.2 h]; Cost | CP2ME26010C0 | PP1BE26001C0 | PA | C | P1 | ER | ME | 260 | 01 | PB | N | BILL 2 | B02 | S1 | 1F | R00 | ACF04 | PB-1 | 260 |  |  | MEP | M1F | 1S |  |  |
| PP1BE26002C10 |  | PA-P1 ; 1st Fix, Inst of Cable Tray (Elec RM)_PB-1 | 30d | 2012-06-04 | 2012-07-10 | PP1BE04001C10, PP1BE23003C10 |  |  |  |  | 129.62d | 0d | ELECTRICAL [38.4 h]; Cost | CP2ME26012C0 | PP1BE26002C0 | PA | C | P1 | ER | ME | 260 | 02 | PB | N | BILL 2 | B02 | S1 | 1F | R00 | ACF04 | PB-1 | 260 |  |  | MEP | M1F | 1S |  |  |
| PP1BE27002C10 |  | PA-P1 ; 1st Fix, Inst of Trunking for ELV system (Elec RM)_PB-1 | 30d | 2012-06-04 | 2012-07-10 | PP1BE23001C10, PP1BE04001C10, PP1BE23003C10 |  |  |  |  | 163.62d | 30d | ELECTRICAL [321.6 h]; Cost | CP2ME27010C0 | PP1BE27002C0 | PA | C | P1 | ER | ME | 270 | 02 | PB | N | BILL 2 | B02 | S1 | 1F | R00 | ACF04 | PB-1 | 270 |  |  | MEP | M1F | 1S |  |  |
| PP1BE09501C10 |  | PA-P1 ; Ceiling Grid and Service Tile (Elec RM)_PB-1 | 11d | 2012-07-10 | 2012-07-23 | PP1BE23002C10, PP1BE23003C10, PP1BE23004C10, PP1BE23007C10, PP1BE23009C10, PP1BE23010C10, PP1BE26001C10, PP1BE26002C10 |  |  |  |  | 129.62d | 0d | CEILING GRID FOR GYPSUM [3058.36 h]; CEILING GRID FOR GYPSUM [261.6 m2]; Cost | CP2ME09501C0 | PP1BE09501C0 | PA | C | P1 | ER | CE | 095 | 01 | PB | N | BILL 2 | B02 | S1 | 01 | R00 | ACF06 | PB-1 | 095 | 1408 | 323 |  |  |  |  |  |
| PP1BE26007C10 |  | PA-P1 ; 2nd Fix, Wiring for Power/Lighting/Emergency (Elec RM)_PB-1 | 30d | 2012-07-10 | 2012-08-14 | PP1BE26001C10 |  |  |  |  | 154.75d | 0d | ELECTRICAL [45.6 h]; Cost | CP2ME26020C0 | PP1BE26007C0 | PA | C | P1 | ER | ME | 260 | 07 | PB | N | BILL 2 | B02 | S1 | 2F | R00 | ACF07 | PB-1 | 260 |  |  | MEP |  | 2n |  |  |
| PP1BE26008C10 |  | PA-P1 ; 2nd Fix, Cable Pulling (Elec RM)_PB-1 | 30d | 2012-07-10 | 2012-08-14 | PP1BE26002C10 |  |  |  |  | 154.75d | 0d | ELECTRICAL [2457.6 h]; Cost | CP2ME26022C0 | PP1BE26008C0 | PA | C | P1 | ER | ME | 260 | 08 | PB | N | BILL 2 | B02 | S1 | 2F | R00 | ACF07 | PB-1 | 260 |  |  | MEP |  | 2n |  |  |
| PP1BE27001C10 |  | PA-P1 ; 1st Fix, Wiring/ Cabling work (Elec RM)_PB-1 | 30d | 2012-07-10 | 2012-08-14 | PP1BE27002C10 SS, PP1BE04001C10, PP1BE26002C10 |  |  |  |  | 133.62d | 0d | ELECTRICAL [45.6 h]; Cost | CP2ME27012C0 | PP1BE27001C0 | PA | C | P1 | ER | ME | 270 | 01 | PB | N | BILL 2 | B02 | S1 | 1F | R00 | ACF04 | PB-1 | 270 |  |  | MEP | M1F | 1S |  |  |
| PP1BE21104C10 |  | PA-P1 ; 2nd Fix, Inst of Sprinkler droppers (Elec RM)_PB-1 | 30d | 2012-07-23 | 2012-08-29 | PP1BE09501C10 |  |  |  |  | 170.62d | 151.39d | MECHANICAL [1920 h]; Cost | CP2ME21120C0 | PP1BE21104C0 | PA | C | P1 | ER | ME | 211 | 04 | PB | N | BILL 2 | B02 | S1 | 2F | R00 | ACF07 | PB-1 | 211 |  |  | MEP |  | 2n |  |  |
| PP1BE21105C10 |  | PA-P1 ; 2nd Fix, Inst of Zone Control Valve (Elec RM)_PB-1 | 30d | 2012-07-23 | 2012-08-29 | PP1BE09501C10 |  |  |  |  | 170.62d | 151.39d | MECHANICAL [441.6 h]; Cost | CP2ME21124C0 | PP1BE21105C0 | PA | C | P1 | ER | ME | 211 | 05 | PB | N | BILL 2 | B02 | S1 | 2F | R00 | ACF07 | PB-1 | 211 |  |  | MEP |  | 2n |  |  |
| PP1BE23006C10 |  | PA-P1 ; 2nd Fix, Inst of Flexible Duct & Plenum boxes (Elec RM)_PB-1 | 18d | 2012-07-23 | 2012-08-13 | PP1BE09501C10 |  |  |  |  | 155.75d | 0d | MECHANICAL [20.4 h]; Cost | CP2ME23032C0 | PP1BE23006C0 | PA | C | P1 | ER | ME | 230 | 06 | PB | N | BILL 2 | B02 | S1 | FF | R00 | ACF07 | PB-1 | 230 |  |  | MEP |  | FF |  |  |
| PP1BE27005C10 |  | PA-P1 ; 2nd Fix, Wiring Droppers (Elec RM)_PB-1 | 30d | 2012-07-23 | 2012-08-29 | PP1BE09501C10 |  |  |  |  | 170.62d | 151.39d | ELECTRICAL [45.6 h]; Cost | CP2ME27022C0 | PP1BE27005C0 | PA | C | P1 | ER | ME | 270 | 05 | PB | N | BILL 2 | B02 | S1 | 2F | R00 | ACF07 | PB-1 | 270 |  |  | MEP |  | 2n |  |  |
| PP1BE27006C10 |  | PA-P1 ; 2nd Fix, Inst of ELV Equipment (Panels) (Elec RM)_PB-1 | 30d | 2012-07-23 | 2012-08-29 | PP1BE09501C10 |  |  |  |  | 129.62d | 0d | ELECTRICAL [110.4 h]; Cost | CP2ME27020C0 | PP1BE27006C0 | PA | C | P1 | ER | ME | 270 | 06 | PB | N | BILL 2 | B02 | S1 | 2F | R00 | ACF04 | PB-1 | 270 |  |  | MEP |  | 2n |  | E |
| PP1BE26004C10 |  | PA-P1 ; Final Fix, Inst of Ceiling rose (Elec RM)_PB-1 | 18d | 2012-08-13 | 2012-09-05 | PP1BE09501C10, PGLS103331C360, PGLS103331C370, PGLS103331C350, PGLS103331C340, PGLS103331C330, PGLS103391C220, PP1BE23006C10, PP2BE09502C0 SS |  |  |  |  | 164.62d | 145.39d | ELECTRICAL [15.6 h]; Cost | CP2ME26032C0 | PP1BE26004C0 | PA | C | P1 | ER | ME | 260 | 04 | PB | N | BILL 2 | B02 | S1 | FF | R00 | ACF07 | PB-1 | 260 |  |  | MEP |  | FF |  |  |
| PP1BE09502C10 |  | PA-P1 ; Ceiling closure (Elec RM)_PB-1 | 8.88d | 2012-08-14 | 2012-08-27 | PAFOA09500C1 FF, PP1BE09501C10, PP1BE23006C10, PP1BE26007C10, PP1BE26008C10, PP1BE27001C10, PGLS103331C360, PGLS103331C370, PGLS103331C350, PGLS103331C340, PGLS103331C330, PGLS103391C220, PP2BE09502C0 SS |  |  |  |  | 154.75d | 0d | ASSORTED CEILING FINISH [173.02 h]; CEILING GYPSUM [85.89 h]; ASSORTED CEILING FINISH [281.4 m2]; CEILING GYPSUM [261.6 m2]; Cost | CP2ME09503C0 | PP1BE09502C0 | PA | C | P1 | ER | CE | 095 | 02 | PB | N | BILL 2 | B02 | S1 | 02 | R00 | ACF06 | PB-1 | 095 | 1409 | 324 |  |  |  |  |  |
| PP1BE23008C10 |  | PA-P1 ; 2nd Fix, Inst of Equipment (FCU,FAN,PUMP) (Elec RM)_PB-1 | 30d | 2012-08-14 | 2012-09-20 | PP1BE27001C10, PP1BE26009C10 SS |  |  |  |  | 133.62d | 0d | MECHANICAL [1310.4 h]; Cost | CP2ME23022C0 | PP1BE23008C0 | PA | C | P1 | ER | ME | 230 | 08 | PB | N | BILL 2 | B02 | S1 | 2F | R00 | ACF04 | PB-1 | 230 |  |  | MEP |  | 2n |  | H |
| PP1BE21101C10 |  | PA-P1 ; Final Fix, Gaseous Fire Suppression Electrical Room (Elec RM)_PB-1 | 18d | 2012-08-27 | 2012-09-17 | PP1BE09502C10, PGLS103331C360, PGLS103331C370, PGLS103331C350, PGLS103331C340, PGLS103331C330, PGLS103391C220, PP2BE09502C0 SS |  |  |  |  | 154.75d | 135.51d | MECHANICAL [418.8 h]; Cost | CP2ME21109C0 | PP1BE21101C0 | PA | C | P1 | ER | ME | 211 | 01 | PB | N | BILL 2 | B02 | S1 | FF | R00 | ACF07 | PB-1 | 211 |  |  | MEP |  | FF |  |  |
| PP1BE21102C10 |  | PA-P1 ; Final Fix, Gaseous Fire Suppression Transformer room (Elec RM)_PB-1 | 18d | 2012-08-27 | 2012-09-17 | PP1BE09502C10, PGLS103331C360, PGLS103331C370, PGLS103331C350, PGLS103331C340, PGLS103331C330, PGLS103391C220, PP2BE09502C0 SS |  |  |  |  | 154.75d | 135.51d | MECHANICAL [418.8 h]; Cost | CP2ME21111C0 | PP1BE21102C0 | PA | C | P1 | ER | ME | 211 | 02 | PB | N | BILL 2 | B02 | S1 | FF | R00 | ACF07 | PB-1 | 211 |  |  | MEP |  | FF |  |  |
| PP1BE21103C10 |  | PA-P1 ; Final Fix, Gaseous Fire Suppression Telecom Room (Elec RM)_PB-1 | 18d | 2012-08-27 | 2012-09-17 | PP1BE09502C10, PGLS103331C360, PGLS103331C370, PGLS103331C350, PGLS103331C340, PGLS103331C330, PGLS103391C220, PP2BE09502C0 SS |  |  |  |  | 154.75d | 135.51d | MECHANICAL [418.8 h]; Cost | CP2ME21113C0 | PP1BE21103C0 | PA | C | P1 | ER | ME | 211 | 03 | PB | N | BILL 2 | B02 | S1 | FF | R00 | ACF07 | PB-1 | 211 |  |  | MEP |  | FF |  |  |
| PP1BE23005C10 |  | PA-P1 ; Final Fix, Inst of Grilles & Diffusers (Elec RM)_PB-1 | 18d | 2012-08-27 | 2012-09-17 | PP1BE09502C10, PGLS103331C360, PGLS103331C370, PGLS103331C350, PGLS103331C340, PGLS103331C330, PGLS103391C220, PP2BE09502C0 SS |  |  |  |  | 154.75d | 135.51d | MECHANICAL [297.6 h]; Cost | CP2ME23030C0 | PP1BE23005C0 | PA | C | P1 | ER | ME | 230 | 05 | PB | N | BILL 2 | B02 | S1 | FF | R00 | ACF07 | PB-1 | 230 |  |  | MEP |  | FF |  |  |
| PP1BE26003C10 |  | PA-P1 ; Final Fix, Termination & Gladding of Cables (Elec RM)_PB-1 | 18d | 2012-08-27 | 2012-09-17 | PP1BE09502C10, PGLS103331C360, PGLS103331C370, PGLS103331C350, PGLS103331C340, PGLS103331C330, PGLS103391C220, PP2BE09502C0 SS |  |  |  |  | 154.75d | 21.12d | ELECTRICAL [307.2 h]; Cost | CP2ME26030C0 | PP1BE26003C0 | PA | C | P1 | ER | ME | 260 | 03 | PB | N | BILL 2 | B02 | S1 | FF | R00 | ACF07 | PB-1 | 260 |  |  | MEP |  | FF |  |  |
| PP1BE26005C10 |  | PA-P1 ; Final Fix, Inst of Switch/Sockets (Elec RM)_PB-1 | 18d | 2012-08-27 | 2012-09-17 | PP1BE09502C10, PGLS103331C360, PGLS103331C370, PGLS103331C350, PGLS103331C340, PGLS103331C330, PGLS103391C220, PP2BE09502C0 SS |  |  |  |  | 154.75d | 135.51d | ELECTRICAL [74.4 h]; Cost | CP2ME26034C0 | PP1BE26005C0 | PA | C | P1 | ER | ME | 260 | 05 | PB | N | BILL 2 | B02 | S1 | FF | R00 | ACF07 | PB-1 | 260 |  |  | MEP |  | FF |  |  |
| PP1BE26006C10 |  | PA-P1 ; Final Fix, Inst of Light fittings (Elec RM)_PB-1 | 18d | 2012-08-27 | 2012-09-17 | PP1BE09502C10, PGLS103331C360, PGLS103331C370, PGLS103331C350, PGLS103331C340, PGLS103331C330, PGLS103391C220, PP2BE09502C0 SS |  |  |  |  | 154.75d | 135.51d | ELECTRICAL [1874.4 h]; Cost | CP2ME26039C0 | PP1BE26006C0 | PA | C | P1 | ER | ME | 260 | 06 | PB | N | BILL 2 | B02 | S1 | FF | R00 | ACF07 | PB-1 | 260 |  |  | MEP |  | FF |  |  |
| PP1BE27004C10 |  | PA-P1 ; Final Fix, Inst of ELV device (Detector/Speaker) (Elec RM)_PB-1 | 18d | 2012-08-27 | 2012-09-17 | PP1BE09502C10, PGLS103331C360, PGLS103331C370, PGLS103331C350, PGLS103331C340, PGLS103331C330, PGLS103391C220, PP2BE09502C0 SS |  |  |  |  | 154.75d | 135.51d | ELECTRICAL [46.8 h]; Cost | CP2ME27030C0 | PP1BE27004C0 | PA | C | P1 | ER | ME | 270 | 04 | PB | N | BILL 2 | B02 | S1 | FF | R00 | ACF07 | PB-1 | 270 |  |  | MEP |  | FF |  |  |
| PP1BE09203C10 |  | PA-P1 ; Partitions Closing (Elec RM)_PB-1 | 16d | 2012-08-29 | 2012-09-17 | PAFOA09201C1 FF, PP1BE09202C10, PP1BE08102C10 FF, PGLS103331C360, PGLS103331C370, PGLS103331C350, PGLS103331C340, PGLS103331C330, PGLS103391C220, PP1BE27006C10, PP2BE09502C0 SS |  |  |  |  | 129.62d | 0d | PARTITIONS [4.8 m]; PARTITIONS [32 h]; Cost | CP2ME09205C0 | PP1BE09203C0 | PA | C | P1 | ER | PT | 092 | 03 | PB | N | BILL 2 | B02 | S1 | FF | R00 | ACF06 | PB-1 | 092 | 1540 |  | GP | P2F |  |  |  |
| PP1BE09901C10 |  | PA-P1 ; Wall - final Paint (Elec RM)_PB-1 | 8d | 2012-08-29 | 2012-09-08 | PP1BE09902C10, PGLS103331C360, PGLS103331C370, PGLS103331C350, PGLS103331C340, PGLS103331C330, PGLS103391C220, PP1BE27006C10, PP2BE09502C0 SS |  |  |  |  | 162.62d | 143.39d | WALL PAINT [260 h]; WALL PAINT [323.4 m2]; Cost | CP2ME09903C0 | PP1BE09901C0 | PA | C | P1 | ER | PA | 099 | 01 | PB | N | BILL 2 | B02 | S1 | 02 | R00 | ACF06 | PB-1 | 099 | 1379 | 329 |  |  |  |  |  |
| PP1BE09904C10 |  | PA-P1 ; Ceiling - final Paint (Elec RM)_PB-1 | 4d | 2012-08-29 | 2012-09-03 | PP1BE09903C10, PGLS103331C360, PGLS103331C370, PGLS103331C350, PGLS103331C340, PGLS103331C330, PGLS103391C220, PP1BE27006C10, PP2BE09502C0 SS |  |  |  |  | 166.62d | 147.39d | ASSORTED CEILING FINISH [4 h]; Cost | CP2ME09907C0 | PP1BE09904C0 | PA | C | P1 | ER | PA | 099 | 04 | PB | N | BILL 2 | B02 | S1 | 02 | R00 | ACF06 | PB-1 | 099 | 1546 |  |  |  |  |  |  |
| PP1BE09601C10 |  | PA-P1 ; Flooring (Elec RM)_PB-1 | 7d | 2012-09-17 | 2012-09-25 | PP1BE09902C10, PP1BE09903C10, PGLS103331C360, PGLS103331C370, PGLS103331C350, PGLS103331C340, PGLS103331C330, PGLS103391C220, PP1BE27006C10, PP2BE09502C0 SS, PP1BE09203C10 |  |  |  |  | 129.62d | 0d | ASSORTED FLOOR FINISH [2072 h]; ASSORTED FLOOR FINISH [1149.6 m2]; Cost | CP2ME09601C0 | PP1BE09601C0 | PA | C | P1 | ER | FF | 096 | 01 | PB | N | BILL 2 | B02 | S1 | 01 | R00 | ACF06 | PB-1 | FF | 1377 | 326 |  |  |  |  |  |
| PP1BE27003C10 |  | PA-P1 ; Final Fix, BMS connection work to Equipment (Elec RM)_PB-1 | 18d | 2012-09-20 | 2012-10-11 | PP1BE26009C10, PGLS103331C360, PGLS103331C370, PGLS103331C350, PGLS103331C340, PGLS103331C330, PGLS103391C220, PP1BE26003C10 FF, PP2BE09502C0 SS, PP1BE23008C10 |  |  |  |  | 133.62d | 114.39d | ELECTRICAL [1484.4 h]; Cost | CP2ME27032C0 | PP1BE27003C0 | PA | C | P1 | ER | ME | 270 | 03 | PB | N | BILL 2 | B02 | S1 | FF | R00 | ACF07 | PB-1 | 270 |  |  | MEP |  | FF |  |  |
| PP1BE08103C10 |  | PA-P1 ; Metal Doors (Elec RM)_PB-1 | 6.88d | 2012-09-25 | 2012-10-03 | PP1BE08102C10, PGLS103331C360, PGLS103331C370, PGLS103331C350, PGLS103331C340, PGLS103331C330, PGLS103391C220, PP1BE09601C10, PP2BE09502C0 SS |  |  |  |  | 129.75d | 0d | METAL DOORS [42 h]; METAL DOORS [4.2 no]; Cost | CP2ME08105C0 | PP1BE08103C0 | PA | C | P1 | ER | DO | 081 | 03 | PB | N | BILL 2 | B02 | S1 | DR | R00 | ACF06 | PB-1 | 081 | 1375 | 317 |  |  |  | 08 |  |
| PP1BE22001C10 |  | PA-P1 ; Final Fix, Inst of All drain (Elec RM)_PB-1 | 18d | 2012-09-25 | 2012-10-16 | PP1BE09601C10, PGLS103331C360, PGLS103331C370, PGLS103331C350, PGLS103331C340, PGLS103331C330, PGLS103391C220, PP2BE09502C0 SS |  |  |  |  | 129.62d | 110.39d | PLUMBING [1293.6 h]; Cost | CP2ME22037C0 | PP1BE22001C0 | PA | C | P1 | ER | ME | 220 | 01 | PB | N | BILL 2 | B02 | S1 | FF | R00 | ACF07 | PB-1 | 220 |  |  | MEP |  | FF |  |  |
| PP1BE05501C10 |  | PA-P1 ; Handrails & balustrade (Elec RM)_PB-1 | 11d | 2012-10-03 | 2012-10-16 | PP1BE09902C10, PGLS103331C360, PGLS103331C370, PGLS103331C350, PGLS103331C340, PGLS103331C330, PGLS103391C220, PP1BE08103C10, PP2BE09502C0 SS |  |  |  |  | 129.75d | 110.51d | SECONDARY STEEL [328 h]; Cost | CP2ME05501C0 | PP1BE05501C0 | PA | C | P1 | ER | SW | 055 | 01 | PB | N | BILL 2 | B02 | S1 | 01 | R00 | ACF03 | PB-1 | a |  |  |  |  |  |  |  |
| PP1BE08701C10 |  | PA-P1 ; Ironmongery (Elec RM)_PB-1 | 10d | 2012-10-03 | 2012-10-15 | PP1BE08103C10, PGLS103331C360, PGLS103331C370, PGLS103331C350, PGLS103331C340, PGLS103331C330, PGLS103391C220, PP2BE09502C0 SS |  |  |  |  | 130.75d | 111.51d | IRONMONGERY [42 h]; IRONMONGERY [4.2 no]; Cost | CP2ME08709C0 | PP1BE08701C0 | PA | C | P1 | ER | DO | 087 | 01 | PB | N | BILL 2 | B02 | S1 | IM | R00 | ACF06 | PB-1 | 087 | 6230 | 322 |  |  |  | 08 |  |

| ID | WBS | Activity | Duration | Start | Finish | Predecessors | Total float | Free float | Resources | NEW ACTIVITY ID | change id | IDDD | CCAD BUILDING(SET) | CCAD PHASE(SET) | CCAD FLOOR(SET) | CCAD ZONE(SET) | CCAD WORK(SET) | CCAD SECTION(SET) | CCAD SERIAL No.(SET) | CCAD Carpark code(SET) | CCAD Carpark district code(set) | CCAD CBS(SET) | CCAD BILL(SET) | CCAD HANDOVER(SET) | CCAD TAG(SET) | CCAD REV(SET) | CCADACF (SET) | FSP CODE | CCAD SSCF | Change Order # | CCAD CSA | Act Selector % | CCAD SUB ZONE MEP(SET) | CCAD DIVISION(SET) | CCAD MEQ |
| --- | --- | --- | --- | --- | --- | --- | --- | --- | --- | --- | --- | --- | --- | --- | --- | --- | --- | --- | --- | --- | --- | --- | --- | --- | --- | --- | --- | --- | --- | --- | --- | --- | --- | --- | --- |
|  | BE3 | **ELECTRICAL ROOMS (2 NOS.) :Zone PB-3** |  | 2012-01-19 | 2012-09-08 |  |  |  |  |  |  |  |  |  |  |  |  |  |  |  |  |  |  |  |  |  |  |  |  |  |  |  |  |  |  |
| PP1BE09903C0 |  | PA-P1 ; Ceiling Prime & 1st coat (Elec RM)_PB-3 | 18d | 2012-01-19 | 2012-02-11 | PGLS103391C180, PGLS103391C200 | 162.88d | 0d | ASSORTED CEILING FINISH [5 h]; Cost | 1544 | CP2ME09905C0 | PP1BE09903C0 | PA | C | P1 | ER | PA | 099 | 03 | PB | N | BILL 2 | B02 | S1 | 01 | R00 | ACF06 | PB-3 | 099 |  |  |  |  |  |  |
| PP1BE04001C0 |  | PA-P1 ; Block Wall Works (Elec RM)_PB-3 | 30d | 2012-02-11 | 2012-03-17 | PP1BE09903C0 | 162.88d | 0d | BLOCKWORKS [1497 h]; BLOCKWORKS [427.6 m2]; Cost |  | AP1ER04001C0 | PP1BE04001C0 | PA | C | P1 | ER | BL | 040 | 01 | PB | N | BILL 2 | B02 | S1 | BL | R00 | ACF06 | PB-3 | 040 |  |  |  |  |  |  |
| PP1BE09201C0 |  | PA-P1 ; Metal Studs (Elec RM)_PB-3 | 7.5d | 2012-03-17 | 2012-03-25 | PP1BE04001C0 | 248.12d | 0d | PARTITIONS [23 h]; PARTITIONS [3.2 m]; Cost | 1372 | CP2ME09201C0 | PP1BE09201C0 | PA | C | P1 | ER | PT | 092 | 01 | PB | N | BILL 2 | B02 | S1 | 1F | R00 | ACF06 | PB-3 | 092 | 313 | GP | PMS |  |  |  |
| PP1BE23001C0 |  | PA-P1 ; 1st Fix, Inst. of Supports for MEP (Elec RM)_PB-3 | 12d | 2012-03-17 | 2012-03-31 | PP1BE04001C0 | 162.88d | 0d | MECHANICAL [249.6 h]; Cost |  | CP2ME23010C0 | PP1BE23001C0 | PA | C | P1 | ER | ME | 230 | 01 | PB | N | BILL 2 | B02 | S1 | 1F | R00 | ACF04 | PB-3 | 230 |  | MEP | M1F | 1S |  |  |
| PP1BE26002C0 |  | PA-P1 ; 1st Fix, Inst of Cable Tray (Elec RM)_PB-3 | 30d | 2012-03-17 | 2012-04-21 | PP1BE04001C0 | 201.88d | 0d | ELECTRICAL [25.2 h]; Cost |  | CP2ME26012C0 | PP1BE26002C0 | PA | C | P1 | ER | ME | 260 | 02 | PB | N | BILL 2 | B02 | S1 | 1F | R00 | ACF04 | PB-3 | 260 |  | MEP | M1F | 1S |  |  |
| PP1BE08102C0 |  | PA-P1 ; Metal Door Frames (Elec RM)_PB-3 | 4.25d | 2012-03-25 | 2012-03-29 | PP1BE09201C0, GNHE08101C0 | 275.12d | 112.25d | METAL DOORS [31 h]; Cost | 1374 | CP2ME08101C0 | PP1BE08102C0 | PA | C | P1 | ER | DO | 081 | 02 | PB | N | BILL 2 | B02 | S1 | DF | R00 | ACF06 | PB-3 | 081 | 316 |  |  |  | 08 |  |
| PP1BE09202C0 |  | PA-P1 ; Partitions 1st face (Elec RM)_PB-3 | 11.75d | 2012-03-31 | 2012-04-12 | PP1BE09201C0 SS+12d | 248.12d | 85.25d | PARTITIONS [3.2 m]; PARTITIONS [13 h]; Cost | 1373 | CP2ME09203C0 | PP1BE09202C0 | PA | C | P1 | ER | PT | 092 | 02 | PB | N | BILL 2 | B02 | S1 | 2F | R00 | ACF06 | PB-3 | 092 | 314 | GP | P1F |  |  |  |
| PP1BE23002C0 |  | PA-P1 ; 1st Fix, Inst of CHW pipe (Elec RM)_PB-3 | 30d | 2012-03-31 | 2012-05-05 | PP1BE23001C0, PP1BE04001C0 | 192.88d | 30d | MECHANICAL [1238.4 h]; Cost |  | CP2ME23012C0 | PP1BE23002C0 | PA | C | P1 | ER | ME | 230 | 02 | PB | N | BILL 2 | B02 | S1 | 1F | R00 | ACF04 | PB-3 | 230 |  | MEP | M1F | 1S |  |  |
| PP1BE23003C0 |  | PA-P1 ; 1st Fix, Inst of Ducting (Elec RM)_PB-3 | 30d | 2012-03-31 | 2012-05-05 | PP1BE23001C0, PP1BE04001C0 | 162.88d | 0d | MECHANICAL [1579.2 h]; Cost |  | CP2ME23014C0 | PP1BE23003C0 | PA | C | P1 | ER | ME | 230 | 03 | PB | N | BILL 2 | B02 | S1 | 1F | R00 | ACF04 | PB-3 | 230 |  | MEP | M1F | 1S |  |  |
| PP1BE23007C0 |  | PA-P1 ; 2nd Fix, Inst of VAV'S CHW connection (Elec RM)_PB-3 | 30d | 2012-03-31 | 2012-05-05 | PP1BE23001C0 | 192.88d | 30d | MECHANICAL [20.4 h]; Cost |  | CP2ME23020C0 | PP1BE23007C0 | PA | C | P1 | ER | ME | 230 | 07 | PB | N | BILL 2 | B02 | S1 | 2F | R00 | ACF07 | PB-3 | 230 |  | MEP |  | 2n |  |  |
| PP1BE23010C0 |  | PA-P1 ; 2nd Fix, Insulation of CHW pipe & Duct (Elec RM)_PB-3 | 30d | 2012-03-31 | 2012-05-05 | PP1BE23001C0 | 192.88d | 30d | MECHANICAL [1480.8 h]; Cost |  | CP2ME23026C0 | PP1BE23010C0 | PA | C | P1 | ER | ME | 230 | 10 | PB | N | BILL 2 | B02 | S1 | 2F | R00 | ACF07 | PB-3 | 230 |  | MEP |  | 2n |  |  |
| PP1BE09902C0 |  | PA-P1 ; Wall Prime & 1st coat (Elec RM)_PB-3 | 18d | 2012-04-03 | 2012-04-24 | PP1BE04001C0 FS+15d | 223.88d | 0d | WALL PAINT [321 h]; WALL PAINT [400.4 m2]; Cost | 1378 | CP2ME09901C0 | PP1BE09902C0 | PA | C | P1 | ER | PA | 099 | 02 | PB | N | BILL 2 | B02 | S1 | 01 | R00 | ACF06 | PB-3 | 099 | 328 |  |  |  |  |  |
| PP1BE26008C0 |  | PA-P1 ; 2nd Fix, Cable Pulling (Elec RM)_PB-3 | 30d | 2012-04-21 | 2012-05-26 | PP1BE26002C0 | 225.88d | 42d | ELECTRICAL [1639.2 h]; Cost |  | CP2ME26022C0 | PP1BE26008C0 | PA | C | P1 | ER | ME | 260 | 08 | PB | N | BILL 2 | B02 | S1 | 2F | R00 | ACF07 | PB-3 | 260 |  | MEP |  | 2n |  |  |
| PP1BE08106C0 |  | PA-P1 ; Access Floor (Elec RM)_PB-3 | 5d | 2012-04-24 | 2012-04-30 | PP1BE09902C0 | 223.88d | 0d | ASSORTED FLOOR FINISH [96 h]; ASSORTED FLOOR FINISH [52 m2]; Cost | 1375 | CP2ER08105C0 |  | PA | C | P1 | ER | FF | 096 | 06 | PB | N | BILL 2 | B02 | S1 | 04 | R00 | ACF06 | PB-3 | AF | 317 |  |  |  | 08 |  |
| PP1BE26009C0 |  | PA-P1 ; 2nd Fix, Inst of Equipment (DB, TR, SG) (Elec RM)_PB-3 | 30d | 2012-04-30 | 2012-06-04 | PP1BE08106C0 | 223.88d | 34d | ELECTRICAL [477.6 h]; Cost |  | CP2ME26024C0 | PP1BE26009C0 | PA | C | P1 | ER | ME | 260 | 09 | PB | N | BILL 2 | B02 | S1 | 2F | R00 | ACF04 | PB-3 | 260 |  | MEP |  | 2n |  | E |
| PP1BE23004C0 |  | PA-P1 ; 1st Fix, Inst of VCD's/FD's (Elec RM)_PB-3 | 30d | 2012-05-05 | 2012-06-09 | PP1BE23003C0, PP1BE04001C0 | 162.88d | 0d | MECHANICAL [468 h]; Cost |  | CP2ME23016C0 | PP1BE23004C0 | PA | C | P1 | ER | ME | 230 | 04 | PB | N | BILL 2 | B02 | S1 | 1F | R00 | ACF04 | PB-3 | 230 |  | MEP | M1F | 1S |  |  |
| PP1BE23009C0 |  | PA-P1 ; 2nd Fix, Inst of VCD's/FD's (Elec RM)_PB-3 | 30d | 2012-05-05 | 2012-06-09 | PP1BE23003C0 | 162.88d | 0d | MECHANICAL [468 h]; Cost |  | CP2ME23024C0 | PP1BE23009C0 | PA | C | P1 | ER | ME | 230 | 09 | PB | N | BILL 2 | B02 | S1 | 2F | R00 | ACF07 | PB-3 | 230 |  | MEP |  | 2n |  |  |
| PP1BE26001C0 |  | PA-P1 ; 1st Fix, Inst of Trunking/Conduiting (Elec RM)_PB-3 | 30d | 2012-05-05 | 2012-06-09 | PP1BE23001C0, PP1BE04001C0, PP1BE23003C0 | 162.88d | 0d | ELECTRICAL [76.8 h]; Cost |  | CP2ME26010C0 | PP1BE26001C0 | PA | C | P1 | ER | ME | 260 | 01 | PB | N | BILL 2 | B02 | S1 | 1F | R00 | ACF04 | PB-3 | 260 |  | MEP | M1F | 1S |  |  |
| PP1BE27001C0 |  | PA-P1 ; 1st Fix, Wiring/ Cabling work (Elec RM)_PB-3 | 30d | 2012-05-05 | 2012-06-09 | PP1BE27002C0 SS, PP1BE04001C0, PP1BE26002C0 | 189.88d | 0d | ELECTRICAL [31.2 h]; Cost |  | CP2ME27012C0 | PP1BE27001C0 | PA | C | P1 | ER | ME | 270 | 01 | PB | N | BILL 2 | B02 | S1 | 1F | R00 | ACF04 | PB-3 | 270 |  | MEP | M1F | 1S |  |  |
| PP1BE27002C0 |  | PA-P1 ; 1st Fix, Inst of Trunking for ELV system (Elec RM)_PB-3 | 30d | 2012-05-05 | 2012-06-09 | PP1BE23001C0, PP1BE04001C0, PP1BE23003C0 | 189.88d | 0d | ELECTRICAL [213.6 h]; Cost |  | CP2ME27010C0 | PP1BE27002C0 | PA | C | P1 | ER | ME | 270 | 02 | PB | N | BILL 2 | B02 | S1 | 1F | R00 | ACF04 | PB-3 | 270 |  | MEP | M1F | 1S |  |  |
| PP1BE09501C0 |  | PA-P1 ; Ceiling Grid and Service Tile (Elec RM)_PB-3 | 7d | 2012-06-09 | 2012-06-18 | PP1BE23002C0, PP1BE23003C0, PP1BE23004C0, PP1BE23007C0, PP1BE23009C0, PP1BE23010C0, PP1BE26001C0, PP1BE26002C0 | 162.88d | 0d | CEILING GRID FOR GYPSUM [2040.53 h]; CEILING GRID FOR GYPSUM [174.4 m2]; Cost | 1408 | CP2ME09501C0 | PP1BE09501C0 | PA | C | P1 | ER | CE | 095 | 01 | PB | N | BILL 2 | B02 | S1 | 01 | R00 | ACF06 | PB-3 | 095 | 323 |  |  |  |  |  |
| PP1BE23008C0 |  | PA-P1 ; 2nd Fix, Inst of Equipment (FCU,FAN,PUMP) (Elec RM)_PB-3 | 30d | 2012-06-09 | 2012-07-15 | PP1BE27001C0, PP1BE26009C0 SS | 189.88d | 7d | MECHANICAL [873.6 h]; Cost |  | CP2ME23022C0 | PP1BE23008C0 | PA | C | P1 | ER | ME | 230 | 08 | PB | N | BILL 2 | B02 | S1 | 2F | R00 | ACF04 | PB-3 | 230 |  | MEP |  | 2n |  | H |
| PP1BE26007C0 |  | PA-P1 ; 2nd Fix, Wiring for Power/Lighting/Emergency (Elec RM)_PB-3 | 30d | 2012-06-09 | 2012-07-15 | PP1BE26001C0 | 183.88d | 0d | ELECTRICAL [31.2 h]; Cost |  | CP2ME26020C0 | PP1BE26007C0 | PA | C | P1 | ER | ME | 260 | 07 | PB | N | BILL 2 | B02 | S1 | 2F | R00 | ACF07 | PB-3 | 260 |  | MEP |  | 2n |  |  |
| PP1BE21104C0 |  | PA-P1 ; 2nd Fix, Inst of Sprinkler droppers (Elec RM)_PB-3 | 30d | 2012-06-18 | 2012-07-23 | PP1BE09501C0 | 200.88d | 181.64d | MECHANICAL [1279.2 h]; Cost |  | CP2ME21120C0 | PP1BE21104C0 | PA | C | P1 | ER | ME | 211 | 04 | PB | N | BILL 2 | B02 | S1 | 2F | R00 | ACF07 | PB-3 | 211 |  | MEP |  | 2n |  |  |
| PP1BE21105C0 |  | PA-P1 ; 2nd Fix, Inst of Zone Control Valve (Elec RM)_PB-3 | 30d | 2012-06-18 | 2012-07-23 | PP1BE09501C0 | 200.88d | 181.64d | MECHANICAL [294 h]; Cost |  | CP2ME21124C0 | PP1BE21105C0 | PA | C | P1 | ER | ME | 211 | 05 | PB | N | BILL 2 | B02 | S1 | 2F | R00 | ACF07 | PB-3 | 211 |  | MEP |  | 2n |  |  |
| PP1BE23006C0 |  | PA-P1 ; 2nd Fix, Inst of Flexible Duct & Plenum boxes (Elec RM)_PB-3 | 18d | 2012-06-18 | 2012-07-09 | PP1BE09501C0 | 188.88d | 5d | MECHANICAL [13.2 h]; Cost |  | CP2ME23032C0 | PP1BE23006C0 | PA | C | P1 | ER | ME | 230 | 06 | PB | N | BILL 2 | B02 | S1 | FF | R00 | ACF07 | PB-3 | 230 |  | MEP |  | FF |  |  |
| PP1BE27005C0 |  | PA-P1 ; 2nd Fix, Wiring Droppers (Elec RM)_PB-3 | 30d | 2012-06-18 | 2012-07-23 | PP1BE09501C0 | 200.88d | 181.64d | ELECTRICAL [31.2 h]; Cost |  | CP2ME27022C0 | PP1BE27005C0 | PA | C | P1 | ER | ME | 270 | 05 | PB | N | BILL 2 | B02 | S1 | 2F | R00 | ACF07 | PB-3 | 270 |  | MEP |  | 2n |  |  |
| PP1BE27006C0 |  | PA-P1 ; 2nd Fix, Inst of ELV Equipment (Panels) (Elec RM)_PB-3 | 30d | 2012-06-18 | 2012-07-23 | PP1BE09501C0 | 162.88d | 0d | ELECTRICAL [73.2 h]; Cost |  | CP2ME27020C0 | PP1BE27006C0 | PA | C | P1 | ER | ME | 270 | 06 | PB | N | BILL 2 | B02 | S1 | 2F | R00 | ACF04 | PB-3 | 270 |  | MEP |  | 2n |  | E |
| PP1BE26004C0 |  | PA-P1 ; Final Fix, Inst of Ceiling rose (Elec RM)_PB-3 | 18d | 2012-07-10 | 2012-07-31 | PP1BE09501C0, PGLS103331C360, PGLS103331C370, PGLS103331C350, PGLS103331C340, PGLS103331C330, PGLS103391C220, PP1BE09502C0 FF, PP2BE09502C0 SS | 193.22d | 173.99d | ELECTRICAL [9.6 h]; Cost |  | CP2ME26032C0 | PP1BE26004C0 | PA | C | P1 | ER | ME | 260 | 04 | PB | N | BILL 2 | B02 | S1 | FF | R00 | ACF07 | PB-3 | 260 |  | MEP |  | FF |  |  |
| PP1BE09502C0 |  | PA-P1 ; Ceiling closure (Elec RM)_PB-3 | 6d | 2012-07-15 | 2012-07-22 | PAFOA09500C1 FF, PP1BE09501C0, PP1BE23006C0, PP1BE26007C0, PP1BE26008C0, PP1BE27001C0, PGLS103331C360, PGLS103331C370, PGLS103331C350, PGLS103331C340, PGLS103331C330, PGLS103391C220, PP2BE09502C0 SS | 183.88d | 0d | ASSORTED CEILING FINISH [115.42 h]; CEILING GYPSUM [57.2 h]; ASSORTED CEILING FINISH [187.6 m2]; CEILING GYPSUM [174.4 m2]; Cost | 1409 | CP2ME09503C0 | PP1BE09502C0 | PA | C | P1 | ER | CE | 095 | 02 | PB | N | BILL 2 | B02 | S1 | 02 | R00 | ACF06 | PB-3 | 095 | 324 |  |  |  |  |  |
| PP1BE09901C0 |  | PA-P1 ; Wall - final Paint (Elec RM)_PB-3 | 5d | 2012-07-22 | 2012-07-28 | PP1BE09902C0, PGLS103331C360, PGLS103331C370, PGLS103331C350, PGLS103331C340, PGLS103331C330, PGLS103391C220, PP1BE09502C0, PP2BE09502C0 SS | 196.88d | 177.64d | WALL PAINT [174 h]; WALL PAINT [215.6 m2]; Cost | 1379 | CP2ME09903C0 | PP1BE09901C0 | PA | C | P1 | ER | PA | 099 | 01 | PB | N | BILL 2 | B02 | S1 | 02 | R00 | ACF06 | PB-3 | 099 | 329 |  |  |  |  |  |
| PP1BE21101C0 |  | PA-P1 ; Final Fix, Gaseous Fire Suppression Electrical Room (Elec RM)_PB-3 | 18d | 2012-07-22 | 2012-08-12 | PP1BE09502C0, PGLS103331C360, PGLS103331C370, PGLS103331C350, PGLS103331C340, PGLS103331C330, PGLS103391C220, PP2BE09502C0 SS | 183.88d | 164.64d | MECHANICAL [278.4 h]; Cost |  | CP2ME21109C0 | PP1BE21101C0 | PA | C | P1 | ER | ME | 211 | 01 | PB | N | BILL 2 | B02 | S1 | FF | R00 | ACF07 | PB-3 | 211 |  | MEP |  | FF |  |  |
| PP1BE21102C0 |  | PA-P1 ; Final Fix, Gaseous Fire Suppression Transformer room (Elec RM)_PB-3 | 18d | 2012-07-22 | 2012-08-12 | PP1BE09502C0, PGLS103331C360, PGLS103331C370, PGLS103331C350, PGLS103331C340, PGLS103331C330, PGLS103391C220, PP2BE09502C0 SS | 183.88d | 164.64d | MECHANICAL [278.4 h]; Cost |  | CP2ME21111C0 | PP1BE21102C0 | PA | C | P1 | ER | ME | 211 | 02 | PB | N | BILL 2 | B02 | S1 | FF | R00 | ACF07 | PB-3 | 211 |  | MEP |  | FF |  |  |
| PP1BE21103C0 |  | PA-P1 ; Final Fix, Gaseous Fire Suppression Telecom Room (Elec RM)_PB-3 | 18d | 2012-07-22 | 2012-08-12 | PP1BE09502C0, PGLS103331C360, PGLS103331C370, PGLS103331C350, PGLS103331C340, PGLS103331C330, PGLS103391C220, PP2BE09502C0 SS | 183.88d | 164.64d | MECHANICAL [278.4 h]; Cost |  | CP2ME21113C0 | PP1BE21103C0 | PA | C | P1 | ER | ME | 211 | 03 | PB | N | BILL 2 | B02 | S1 | FF | R00 | ACF07 | PB-3 | 211 |  | MEP |  | FF |  |  |
| PP1BE23005C0 |  | PA-P1 ; Final Fix, Inst of Grilles & Diffusers (Elec RM)_PB-3 | 18d | 2012-07-22 | 2012-08-12 | PP1BE09502C0, PGLS103331C360, PGLS103331C370, PGLS103331C350, PGLS103331C340, PGLS103331C330, PGLS103391C220, PP2BE09502C0 SS | 183.88d | 164.64d | MECHANICAL [198 h]; Cost |  | CP2ME23030C0 | PP1BE23005C0 | PA | C | P1 | ER | ME | 230 | 05 | PB | N | BILL 2 | B02 | S1 | FF | R00 | ACF07 | PB-3 | 230 |  | MEP |  | FF |  |  |
| PP1BE26003C0 |  | PA-P1 ; Final Fix, Termination & Gladding of Cables (Elec RM)_PB-3 | 18d | 2012-07-22 | 2012-08-12 | PP1BE09502C0, PGLS103331C360, PGLS103331C370, PGLS103331C350, PGLS103331C340, PGLS103331C330, PGLS103391C220, PP2BE09502C0 SS | 183.88d | 164.64d | ELECTRICAL [205.2 h]; Cost |  | CP2ME26030C0 | PP1BE26003C0 | PA | C | P1 | ER | ME | 260 | 03 | PB | N | BILL 2 | B02 | S1 | FF | R00 | ACF07 | PB-3 | 260 |  | MEP |  | FF |  |  |
| PP1BE26005C0 |  | PA-P1 ; Final Fix, Inst of Switch/Sockets (Elec RM)_PB-3 | 18d | 2012-07-22 | 2012-08-12 | PP1BE09502C0, PGLS103331C360, PGLS103331C370, PGLS103331C350, PGLS103331C340, PGLS103331C330, PGLS103391C220, PP2BE09502C0 SS | 183.88d | 164.64d | ELECTRICAL [50.4 h]; Cost |  | CP2ME26034C0 | PP1BE26005C0 | PA | C | P1 | ER | ME | 260 | 05 | PB | N | BILL 2 | B02 | S1 | FF | R00 | ACF07 | PB-3 | 260 |  | MEP |  | FF |  |  |
| PP1BE26006C0 |  | PA-P1 ; Final Fix, Inst of Light fittings (Elec RM)_PB-3 | 18d | 2012-07-22 | 2012-08-12 | PP1BE09502C0, PGLS103331C360, PGLS103331C370, PGLS103331C350, PGLS103331C340, PGLS103331C330, PGLS103391C220, PP2BE09502C0 SS | 183.88d | 164.64d | ELECTRICAL [1250.4 h]; Cost |  | CP2ME26039C0 | PP1BE26006C0 | PA | C | P1 | ER | ME | 260 | 06 | PB | N | BILL 2 | B02 | S1 | FF | R00 | ACF07 | PB-3 | 260 |  | MEP |  | FF |  |  |
| PP1BE27004C0 |  | PA-P1 ; Final Fix, Inst of ELV device (Detector/Speaker) (Elec RM)_PB-3 | 18d | 2012-07-22 | 2012-08-12 | PP1BE09502C0, PGLS103331C360, PGLS103331C370, PGLS103331C350, PGLS103331C340, PGLS103331C330, PGLS103391C220, PP2BE09502C0 SS | 183.88d | 164.64d | ELECTRICAL [31.2 h]; Cost |  | CP2ME27030C0 | PP1BE27004C0 | PA | C | P1 | ER | ME | 270 | 04 | PB | N | BILL 2 | B02 | S1 | FF | R00 | ACF07 | PB-3 | 270 |  | MEP |  | FF |  |  |
| PP1BE09203C0 |  | PA-P1 ; Partitions Closing (Elec RM)_PB-3 | 15d | 2012-07-23 | 2012-08-09 | PAFOA09201C1 FF, PP1BE09202C0, PP1BE08102C0 FF, PGLS103331C360, PGLS103331C370, PGLS103331C350, PGLS103331C340, PGLS103331C330, PGLS103391C220, PP1BE27006C0, PP2BE09502C0 SS | 162.88d | 0d | PARTITIONS [3.2 m]; PARTITIONS [22 h]; Cost | 1540 | CP2ME09205C0 | PP1BE09203C0 | PA | C | P1 | ER | PT | 092 | 03 | PB | N | BILL 2 | B02 | S1 | FF | R00 | ACF06 | PB-3 | 092 |  | GP | P2F |  |  |  |
| PP1BE09904C0 |  | PA-P1 ; Ceiling - final Paint (Elec RM)_PB-3 | 2d | 2012-07-23 | 2012-07-25 | PP1BE09903C0, PGLS103331C360, PGLS103331C370, PGLS103331C350, PGLS103331C340, PGLS103331C330, PGLS103391C220, PP1BE27006C0, PP2BE09502C0 SS | 198.88d | 179.64d | ASSORTED CEILING FINISH [4 h]; Cost | 1546 | CP2ME09907C0 | PP1BE09904C0 | PA | C | P1 | ER | PA | 099 | 04 | PB | N | BILL 2 | B02 | S1 | 02 | R00 | ACF06 | PB-3 | 099 |  |  |  |  |  |  |
| PP1BE27003C0 |  | PA-P1 ; Final Fix, BMS connection work to Equipment (Elec RM)_PB-3 | 18d | 2012-07-23 | 2012-08-13 | PP1BE26009C0, PGLS103331C360, PGLS103331C370, PGLS103331C350, PGLS103331C340, PGLS103331C330, PGLS103391C220, PP1BE27006C0, PP2BE09502C0 SS, PP1BE23008C0 | 182.88d | 163.64d | ELECTRICAL [988.8 h]; Cost |  | CP2ME27032C0 | PP1BE27003C0 | PA | C | P1 | ER | ME | 270 | 03 | PB | N | BILL 2 | B02 | S1 | FF | R00 | ACF07 | PB-3 | 270 |  | MEP |  | FF |  |  |
| PP1BE09601C0 |  | PA-P1 ; Flooring (Elec RM)_PB-3 | 5d | 2012-08-09 | 2012-08-15 | PP1BE09902C0, PP1BE09903C0, PGLS103331C360, PGLS103331C370, PGLS103331C350, PGLS103331C340, PGLS103331C330, PGLS103391C220, PP1BE27006C0, PP2BE09502C0 SS, PP1BE09203C0 | 162.88d | 0d | ASSORTED FLOOR FINISH [1384 h]; ASSORTED FLOOR FINISH [766.4 m2]; Cost | 1377 | CP2ME09601C0 | PP1BE09601C0 | PA | C | P1 | ER | FF | 096 | 01 | PB | N | BILL 2 | B02 | S1 | 01 | R00 | ACF06 | PB-3 | FF | 326 |  |  |  |  |  |
| PP1BE08103C0 |  | PA-P1 ; Metal Doors (Elec RM)_PB-3 | 5d | 2012-08-15 | 2012-08-23 | PP1BE08102C0, PGLS103331C360, PGLS103331C370, PGLS103331C350, PGLS103331C340, PGLS103331C330, PGLS103391C220, PP1BE09601C0, PP2BE09502C0 SS | 168.88d | 0d | METAL DOORS [28 h]; METAL DOORS [2.8 no]; Cost | 1375 | CP2ME08105C0 | PP1BE08103C0 | PA | C | P1 | ER | DO | 081 | 03 | PB | N | BILL 2 | B02 | S1 | DR | R00 | ACF06 | PB-3 | 081 | 317 |  |  |  | 08 |  |
| PP1BE22001C0 |  | PA-P1 ; Final Fix, Inst of All drain (Elec RM)_PB-3 | 18d | 2012-08-15 | 2012-09-08 | PP1BE09601C0, PGLS103331C360, PGLS103331C370, PGLS103331C350, PGLS103331C340, PGLS103331C330, PGLS103391C220, PP2BE09502C0 SS | 162.88d | 143.64d | PLUMBING [862.8 h]; Cost |  | CP2ME22037C0 | PP1BE22001C0 | PA | C | P1 | ER | ME | 220 | 01 | PB | N | BILL 2 | B02 | S1 | FF | R00 | ACF07 | PB-3 | 220 |  | MEP |  | FF |  |  |
| PP1BE05501C0 |  | PA-P1 ; Handrails & balustrade (Elec RM)_PB-3 | 7d | 2012-08-23 | 2012-09-01 | PP1BE09902C0, PGLS103331C360, PGLS103331C370, PGLS103331C350, PGLS103331C340, PGLS103331C330, PGLS103391C220, PP1BE08103C0, PP2BE09502C0 SS | 168.88d | 149.64d | SECONDARY STEEL [218 h]; Cost |  | CP2ME05501C0 | PP1BE05501C0 | PA | C | P1 | ER | SW | 055 | 01 | PB | N | BILL 2 | B02 | S1 | 01 | R00 | ACF03 | PB-3 | a |  |  |  |  |  |  |
| PP1BE08701C0 |  | PA-P1 ; Ironmongery (Elec RM)_PB-3 | 6d | 2012-08-23 | 2012-08-30 | PP1BE08103C0, PGLS103331C360, PGLS103331C370, PGLS103331C350, PGLS103331C340, PGLS103331C330, PGLS103391C220, PP2BE09502C0 SS | 169.88d | 150.64d | IRONMONGERY [28 h]; IRONMONGERY [2.8 no]; Cost | 6230 | CP2ME08709C0 | PP1BE08701C0 | PA | C | P1 | ER | DO | 087 | 01 | PB | N | BILL 2 | B02 | S1 | IM | R00 | ACF06 | PB-3 | 087 | 322 |  |  |  | 08 |  |

| ID | WBS | Activity | Duration | Start | Finish | Predecessors | Total float | Free float | Resources | Change Order # | NEW ACTIVITY ID | change id | IDDD | CCAD BUILDING(SET) | CCAD PHASE(SET) | CCAD FLOOR(SET) | CCAD ZONE(SET) | CCAD WORK(SET) | CCAD SECTION(SET) | CCAD SERIAL No.(SET) | CCAD Carpark code(SET) | CCAD Carpark district code(set) | CCAD CBS(SET) | CCAD BILL(SET) | CCAD HANDOVER(SET) | CCAD TAG(SET) | CCAD REV(SET) | CCADACF (SET) | FSP CODE | CCAD SSCF | CCAD SUB ZONE MEP(SET) | CCAD CSA | Act Selector % | CCAD MEQ | CCAD DIVISION(SET) |
| --- | --- | --- | --- | --- | --- | --- | --- | --- | --- | --- | --- | --- | --- | --- | --- | --- | --- | --- | --- | --- | --- | --- | --- | --- | --- | --- | --- | --- | --- | --- | --- | --- | --- | --- | --- |
|  | BM1 | **MECHANICAL ROOMS (2 NOS.) :Zone PB-1** |  | 2012-02-21 | 2012-11-20 |  |  |  |  |  |  |  |  |  |  |  |  |  |  |  |  |  |  |  |  |  |  |  |  |  |  |  |  |  |  |
| PP1BM09902C0 |  | PA-P1 ; Wall Prime & 1st coat (Mech RM)_PB-1 | 18d | 2012-02-21 | 2012-03-13 | PGLS103391C100, PGLS103391C110, PP3BM09902C0 | 102.62d | 0d | WALL PAINT [584 h]; WALL PAINT [728 m2]; Cost | 328 | 1469 | C04ME09901C0 | PP3BM09902C0 | PA | C | P1 | M1 | PA | 099 | 02 | PB | N | BILL 2 | B02 | S1 | 01 | R00 | ACF06 | PB-1 | 099 |  |  |  |  |  |
| PP1BM04001C0 |  | PA-P1 ; Block Wall Works (Mech RM)_PB-1 | 30d | 2012-03-13 | 2012-04-17 | PP1BM09902C0 | 102.62d | 0d | BLOCKWORKS [2720 h]; BLOCKWORKS [777 m2]; Cost |  |  | AP1M104001C0 | PP3BM04001C0 | PA | C | P1 | M1 | BL | 040 | 01 | PB | N | BILL 2 | B02 | S1 | BL | R00 | ACF06 | PB-1 | 040 |  |  |  |  |  |
| PP1BM23003C0 |  | PA-P1 ; 1st Fix, Inst. of Supports for MEP (Mech RM)_PB-1 | 12d | 2012-04-17 | 2012-05-01 | PP1BM04001C0 | 102.62d | 0d | MECHANICAL [625.2 h]; Cost |  |  | C04ME23001C0 | PP3BM23003C0 | PA | C | P1 | M1 | ME | 230 | 03 | PB | N | BILL 2 | B02 | S1 | 1F | R00 | ACF04 | PB-1 | 230 | 1S | MEP | M1F |  |  |
| PP1BM21102C0 |  | PA-P1 ; 1st Fix, Inst of Sprinkler main pipe (Mech RM)_PB-1 | 30d | 2012-05-01 | 2012-06-05 | PP1BM23003C0, PP1BM04001C0 | 102.62d | 0d | MECHANICAL [9823.2 h]; Cost |  |  | C04ME21111C0 | PP3BM21102C0 | PA | C | P1 | M1 | ME | 211 | 02 | PB | N | BILL 2 | B02 | S1 | 1F | R00 | ACF04 | PB-1 | 211 | 1S | MEP | M1F |  |  |
| PP1BM22001C0 |  | PA-P1 ; 1st Fix, Inst of Drainage pipe (Mech RM)_PB-1 | 30d | 2012-05-01 | 2012-06-05 | PP1BM23003C0, PP1BM04001C0 | 145.88d | 0d | PLUMBING [2156.4 h]; Cost |  |  | C04ME22011C0 | PP3BM22001C0 | PA | C | P1 | M1 | ME | 220 | 01 | PB | N | BILL 2 | B02 | S1 | 1F | R00 | ACF04 | PB-1 | 220 | 1S | MEP | M1F |  |  |
| PP1BM22003C0 |  | PA-P1 ; 1st Fix, Inst of Water supply pipe (Mech RM)_PB-1 | 30d | 2012-05-01 | 2012-06-05 | PP1BM23003C0, PP1BM04001C0 | 145.88d | 0d | PLUMBING [6082.8 h]; Cost |  |  | C04ME22006C0 | PP3BM22003C0 | PA | C | P1 | M1 | ME | 220 | 03 | PB | N | BILL 2 | B02 | S1 | 1F | R00 | ACF04 | PB-1 | 220 | 1S | MEP | M1F |  |  |
| PP1BM23001C0 |  | PA-P1 ; 1st Fix, Inst of CHW pipe (Mech RM)_PB-1 | 30d | 2012-05-01 | 2012-06-05 | PP1BM23003C0, PP1BM04001C0 | 150.62d | 0d | MECHANICAL [3097.2 h]; Cost |  |  | C04ME23019C0 | PP3BM23001C0 | PA | C | P1 | M1 | ME | 230 | 01 | PB | N | BILL 2 | B02 | S1 | 1F | R00 | ACF04 | PB-1 | 230 | 1S | MEP | M1F |  |  |
| PP1BM23004C0 |  | PA-P1 ; 2nd Fix, Inst of Equipment (AHU) (Mech RM)_PB-1 | 30d | 2012-05-01 | 2012-06-05 | PP1BM04001C0, PP1BM22001C0 FF, PP1BM22003C0 FF | 145.88d | 0d | MECHANICAL [528 h]; Cost |  |  | C04ME23013C0 | PP3BM23004C0 | PA | C | P1 | M1 | ME | 230 | 04 | PB | N | BILL 2 | B02 | S1 | 2F | R00 | ACF04 | PB-1 | 230 | 2n | MEP |  | H |  |
| PP1BM09201C0 |  | PA-P1 ; Metal Studs (Mech RM)_PB-1 | 10d | 2012-06-05 | 2012-06-18 | PP1BM04001C0 SS+10d, PP1BM23004C0 | 145.88d | 0d | PARTITIONS [29 h]; PARTITIONS [4 m]; Cost |  |  | C04ME09201C0 | PP3BM09201C0 | PA | C | P1 | M1 | PT | 092 | 01 | PB | N | BILL 2 | B02 | S1 | 1F | R00 | ACF06 | PB-1 | 092 |  | GP | PMS |  |  |
| PP1BM21101C0 |  | PA-P1 ; 1st Fix, Inst of Sprinkler branch pipe (Mech RM)_PB-1 | 30d | 2012-06-05 | 2012-07-11 | PP1BM04001C0, PP1BM21102C0 | 162.62d | 0d | MECHANICAL [8076 h]; Cost |  |  | C04ME21119C0 | PP3BM21101C0 | PA | C | P1 | M1 | ME | 211 | 01 | PB | N | BILL 2 | B02 | S1 | 1F | R00 | ACF04 | PB-1 | 211 | 1S | MEP | M1F |  |  |
| PP1BM21105C0 |  | PA-P1 ; 2nd Fix, Inst of Zone Control Valve (Mech RM)_PB-1 | 30d | 2012-06-05 | 2012-07-11 | PP1BM23001C0, PP1BM23004C0 | 192.62d | 60d | MECHANICAL [735.6 h]; Cost |  |  | C04ME21117C0 | PP3BM21105C0 | PA | C | P1 | M1 | ME | 211 | 05 | PB | N | BILL 2 | B02 | S1 | 2F | R00 | ACF07 | PB-1 | 211 | 2n | MEP |  |  |  |
| PP1BM23002C0 |  | PA-P1 ; 1st Fix, Inst of Ducting (Mech RM)_PB-1 | 30d | 2012-06-05 | 2012-07-11 | PP1BM23003C0, PP1BM04001C0, PP1BM21102C0 | 102.62d | 0d | MECHANICAL [3948 h]; Cost |  |  | C04ME23005C0 | PP3BM23002C0 | PA | C | P1 | M1 | ME | 230 | 02 | PB | N | BILL 2 | B02 | S1 | 1F | R00 | ACF04 | PB-1 | 230 | 1S | MEP | M1F |  |  |
| PP1BM23005C0 |  | PA-P1 ; 2nd Fix, Inst of Equipment (FCU,FAN,PUMP) (Mech RM)_PB-1 | 30d | 2012-06-05 | 2012-07-11 | PP1BM23004C0 | 192.62d | 60d | MECHANICAL [2184 h]; Cost |  |  | C04ME23011C0 | PP3BM23005C0 | PA | C | P1 | M1 | ME | 230 | 05 | PB | N | BILL 2 | B02 | S1 | 2F | R00 | ACF04 | PB-1 | 230 | 2n | MEP |  | H |  |
| PP1BM26004C0 |  | PA-P1 ; 2nd Fix, Inst of Equipment (DB, TR, SG) (Mech RM)_PB-1 | 30d | 2012-06-05 | 2012-07-11 | PP1BM23004C0 | 192.62d | 60d | ELECTRICAL [1192.8 h]; Cost |  |  | C04ME26009C0 | PP3BM26004C0 | PA | C | P1 | M1 | ME | 260 | 04 | PB | N | BILL 2 | B02 | S1 | 2F | R00 | ACF04 | PB-1 | 260 | 2n | MEP |  | E |  |
| PP1BM27003C0 |  | PA-P1 ; 2nd Fix, Inst of ELV Equipment (Panels) (Mech RM)_PB-1 | 30d | 2012-06-05 | 2012-07-11 | PP1BM23004C0 | 180.62d | 60d | ELECTRICAL [183.6 h]; Cost |  |  | C04ME27020C0 | PP3BM27003C0 | PA | C | P1 | M1 | ME | 270 | 03 | PB | N | BILL 2 | B02 | S1 | 2F | R00 | ACF04 | PB-1 | 270 | 2n | MEP |  | E |  |
| PP1BM08102C0 |  | PA-P1 ; Metal Door Frames (Mech RM)_PB-1 | 12d | 2012-06-18 | 2012-07-02 | PP1BM09201C0, GNHE08101C0 | 172.62d | 7.4d | METAL DOORS [56 h]; Cost | 316 | 1465 | C04ME08101C0 | PP3BM08102C0 | PA | C | P1 | M1 | DO | 081 | 02 | PB | N | BILL 2 | B02 | S1 | DF | R00 | ACF06 | PB-1 | 081 |  |  |  |  | 08 |
| PP1BM09202C0 |  | PA-P1 ; Partitions 1st face (Mech RM)_PB-1 | 17.88d | 2012-06-20 | 2012-07-11 | PP1BM09201C0 SS+12d | 145.88d | 0d | PARTITIONS [4 m]; PARTITIONS [32 h]; Cost | 314 | 1463 | C04ME09203C0 | PP3BM09202C0 | PA | C | P1 | M1 | PT | 092 | 02 | PB | N | BILL 2 | B02 | S1 | 2F | R00 | ACF06 | PB-1 | 092 |  | GP | P1F |  |  |
| PP1BM08103C0 |  | PA-P1 ; Metal Doors (Mech RM)_PB-1 | 12d | 2012-07-10 | 2012-07-24 | PP1BM08102C0, PGLS103331C360, PGLS103331C370, PGLS103331C350, PGLS103331C340, PGLS103331C330, PGLS103391C220, PP2BE09502C0 SS | 165.22d | 0d | METAL DOORS [50 h]; METAL DOORS [5 no]; Cost | 317 | 1466 | C04ME08105C0 | PP3BM08103C0 | PA | C | P1 | M1 | DO | 081 | 03 | PB | N | BILL 2 | B02 | S1 | DR | R00 | ACF06 | PB-1 | 081 |  |  |  |  | 08 |
| PP1BM09203C0 |  | PA-P1 ; Partitions Closing (Mech RM)_PB-1 | 27d | 2012-07-11 | 2012-08-12 | PAFOA09201C1 FF, PP1BM09202C0, PP1BM22001C0, PP1BM22003C0, PP1BM08102C0 FF, PGLS103331C360, PGLS103331C370, PGLS103331C350, PGLS103331C340, PGLS103331C330, PGLS103391C220, PP2BE09502C0 SS | 145.88d | 0d | PARTITIONS [4 m]; PARTITIONS [36 h]; Cost | 315 | 1464 | C04ME09205C0 | PP3BM09203C0 | PA | C | P1 | M1 | PT | 092 | 03 | PB | N | BILL 2 | B02 | S1 | FF | R00 | ACF06 | PB-1 | 092 |  | GP | P2F |  |  |
| PP1BM21104C0 |  | PA-P1 ; 2nd Fix, Inst of Sprinkler droppers (Mech RM)_PB-1 | 30d | 2012-07-11 | 2012-08-15 | PP1BM21101C0 | 162.62d | 18d | MECHANICAL [3199.2 h]; Cost |  |  | C04ME21115C0 | PP3BM21104C0 | PA | C | P1 | M1 | ME | 211 | 04 | PB | N | BILL 2 | B02 | S1 | 2F | R00 | ACF07 | PB-1 | 211 | 2n | MEP |  |  |  |
| PP1BM23007C0 |  | PA-P1 ; 2nd Fix, Inst of VCD's/FD's (Mech RM)_PB-1 | 30d | 2012-07-11 | 2012-08-15 | PP1BM23002C0 | 144.62d | 0d | MECHANICAL [1168.8 h]; Cost |  |  | C04ME23015C0 | PP3BM23007C0 | PA | C | P1 | M1 | ME | 230 | 07 | PB | N | BILL 2 | B02 | S1 | 2F | R00 | ACF07 | PB-1 | 230 | 2n | MEP |  |  |  |
| PP1BM23008C0 |  | PA-P1 ; 2nd Fix, Insulation of CHW pipe & Duct (Mech RM)_PB-1 | 30d | 2012-07-11 | 2012-08-15 | PP1BM23001C0, PP1BM23002C0 | 120.62d | 0d | MECHANICAL [3702 h]; Cost |  |  | C04ME23017C0 | PP3BM23008C0 | PA | C | P1 | M1 | ME | 230 | 08 | PB | N | BILL 2 | B02 | S1 | 2F | R00 | ACF07 | PB-1 | 230 | 2n | MEP |  |  |  |
| PP1BM26001C0 |  | PA-P1 ; 1st Fix, Inst of Cable Tray (Mech RM)_PB-1 | 30d | 2012-07-11 | 2012-08-15 | PP1BM04001C0, PP1BM23002C0 | 102.62d | 0d | ELECTRICAL [63.6 h]; Cost |  |  | C04ME26011C0 | PP3BM26001C0 | PA | C | P1 | M1 | ME | 260 | 01 | PB | N | BILL 2 | B02 | S1 | 1F | R00 | ACF04 | PB-1 | 260 | 1S | MEP | M1F |  |  |
| PP1BM26002C0 |  | PA-P1 ; 1st Fix, Inst of Trunking/Conduiting (Mech RM)_PB-1 | 30d | 2012-07-11 | 2012-08-15 | PP1BM23003C0, PP1BM04001C0, PP1BM23002C0 | 132.62d | 30d | ELECTRICAL [192 h]; Cost |  |  | C04ME26001C0 | PP3BM26002C0 | PA | C | P1 | M1 | ME | 260 | 02 | PB | N | BILL 2 | B02 | S1 | 1F | R00 | ACF04 | PB-1 | 260 | 1S | MEP | M1F |  |  |
| PP1BM27001C0 |  | PA-P1 ; 1st Fix, Inst of Trunking for ELV system (Mech RM)_PB-1 | 30d | 2012-07-11 | 2012-08-15 | PP1BM23002C0 SS, PP1BM04001C0, PP1BM23002C0 | 102.62d | 0d | ELECTRICAL [535.2 h]; Cost |  |  | C04ME27010C0 | PP3BM27001C0 | PA | C | P1 | M1 | ME | 270 | 01 | PB | N | BILL 2 | B02 | S1 | 1F | R00 | ACF04 | PB-1 | 270 | 1S | MEP | M1F |  |  |
| PP1BM08101C0 |  | PA-P1 ; Al / Glass doors (Mech RM)_PB-1 | 18d | 2012-07-24 | 2012-08-14 | PP1BM08103C0, PGLS103331C360, PGLS103331C370, PGLS103331C350, PGLS103331C340, PGLS103331C330, PGLS103391C220, PP2BE09502C0 SS | 165.22d | 0d | ASSORTED DOORS [80 h]; ASSORTED DOORS [8 no]; Cost |  |  | C04ME08109C0 | PP3BM08101C0 | PA | C | P1 | M1 | DO | 081 | 01 | PB | N | BILL 2 | B02 | S1 | 03 | R00 | ACF06 | PB-1 | 081 |  |  |  |  |  |
| PP1BM09601C0 |  | PA-P1 ; Floor Finishes (Mech RM)_PB-1 | 19.88d | 2012-08-12 | 2012-09-06 | PP1BM09203C0, PGLS103331C360, PGLS103331C370, PGLS103331C350, PGLS103331C340, PGLS103331C330, PGLS103391C220, PP2BE09502C0 SS | 145.88d | 0d | ASSORTED FLOOR FINISH [2512 h]; ASSORTED FLOOR FINISH [1394 m2]; Cost | 326 | 1501 | C04ME09601C0 | PP3BM09601C0 | PA | C | P1 | M1 | FF | 096 | 01 | PB | N | BILL 2 | B02 | S1 | 01 | R00 | ACF06 | PB-1 | FF |  |  |  |  |  |
| PP1BM21106C0 |  | PA-P1 ; Final Fix, Inst of Fire Extinguishers/FHC (Mech RM)_PB-1 | 18d | 2012-08-12 | 2012-09-04 | PP1BM09203C0, PGLS103331C360, PGLS103331C370, PGLS103331C350, PGLS103331C340, PGLS103331C330, PGLS103391C220, PP2BE09502C0 SS | 165.75d | 146.51d | MECHANICAL [2016 h]; Cost |  |  | C04ME21123C0 | PP3BM21106C0 | PA | C | P1 | M1 | ME | 211 | 06 | PB | N | BILL 2 | B02 | S1 | FF | R00 | ACF07 | PB-1 | 211 | FF | MEP |  |  |  |
| PP1BM26006C0 |  | PA-P1 ; Final Fix, Inst of Ceiling rose (Mech RM)_PB-1 | 18d | 2012-08-12 | 2012-09-04 | PP1BM09203C0, PGLS103331C360, PGLS103331C370, PGLS103331C350, PGLS103331C340, PGLS103331C330, PGLS103391C220, PP2BE09502C0 SS | 165.75d | 146.51d | ELECTRICAL [25.2 h]; Cost |  |  | C04ME26015C0 | PP3BM26006C0 | PA | C | P1 | M1 | ME | 260 | 06 | PB | N | BILL 2 | B02 | S1 | FF | R00 | ACF07 | PB-1 | 260 | FF | MEP |  |  |  |
| PP1BM08701C0 |  | PA-P1 ; Ironmongery (Mech RM)_PB-1 | 16d | 2012-08-14 | 2012-09-04 | PP1BM08101C0, PP1BM08103C0, PGLS103331C360, PGLS103331C370, PGLS103331C350, PGLS103331C340, PGLS103331C330, PGLS103391C220, PP2BE09502C0 SS | 165.22d | 145.99d | IRONMONGERY [50 h]; IRONMONGERY [5 no]; Cost | 322 | 1467 | C04ME08709C0 | PP3BM08701C0 | PA | C | P1 | M1 | DO | 087 | 01 | PB | N | BILL 2 | B02 | S1 | IM | R00 | ACF06 | PB-1 | 087 |  |  |  |  | 08 |
| PP1BM23006C0 |  | PA-P1 ; 2nd Fix, Inst of VAV'S CHW connection (Mech RM)_PB-1 | 30d | 2012-08-15 | 2012-09-22 | PP1BM23008C0 | 120.62d | 0d | MECHANICAL [50.4 h]; Cost |  |  | C04ME23009C0 | PP3BM23006C0 | PA | C | P1 | M1 | ME | 230 | 06 | PB | N | BILL 2 | B02 | S1 | 2F | R00 | ACF07 | PB-1 | 230 | 2n | MEP |  |  |  |
| PP1BM23009C0 |  | PA-P1 ; 2nd Fix, Inst of Flexible Duct & Plenum boxes (Mech RM)_PB-1 | 18d | 2012-08-15 | 2012-09-08 | PP1BM23007C0, PP1BM23008C0 | 144.62d | 0d | MECHANICAL [33.6 h]; Cost |  |  | C04ME23023C0 | PP3BM23009C0 | PA | C | P1 | M1 | ME | 230 | 09 | PB | N | BILL 2 | B02 | S1 | FF | R00 | ACF07 | PB-1 | 230 | FF | MEP |  |  |  |
| PP1BM26003C0 |  | PA-P1 ; 2nd Fix, Cable Pulling (Mech RM)_PB-1 | 30d | 2012-08-15 | 2012-09-22 | PP1BM26001C0 | 102.62d | 0d | ELECTRICAL [4096.8 h]; Cost |  |  | C04ME26007C0 | PP3BM26003C0 | PA | C | P1 | M1 | ME | 260 | 03 | PB | N | BILL 2 | B02 | S1 | 2F | R00 | ACF07 | PB-1 | 260 | 2n | MEP |  |  |  |
| PP1BM27002C0 |  | PA-P1 ; 1st Fix, Wiring/ Cabling work (Mech RM)_PB-1 | 30d | 2012-08-15 | 2012-09-22 | PP1BM26001C0 SS, PP1BM26002C0 SS, PP1BM27001C0 SS, PP1BM04001C0, PP1BM27001C0 | 102.62d | 0d | ELECTRICAL [76.8 h]; Cost |  |  | C04ME27001C0 | PP3BM27002C0 | PA | C | P1 | M1 | ME | 270 | 02 | PB | N | BILL 2 | B02 | S1 | 1F | R00 | ACF04 | PB-1 | 270 | 1S | MEP | M1F |  |  |
| PP1BM22004C0 |  | PA-P1 ; Final Fix, Inst of All drain (Mech RM)_PB-1 | 18d | 2012-09-06 | 2012-09-27 | PP1BM09601C0, PGLS103331C360, PGLS103331C370, PGLS103331C350, PGLS103331C340, PGLS103331C330, PGLS103391C220, PP2BE09502C0 SS | 145.88d | 126.64d | PLUMBING [2156.4 h]; Cost |  |  | C04ME22003C0 | PP3BM22004C0 | PA | C | P1 | M1 | ME | 220 | 04 | PB | N | BILL 2 | B02 | S1 | FF | R00 | ACF07 | PB-1 | 220 | FF | MEP |  |  |  |
| PP1BM21107C0 |  | PA-P1 ; Final Fix, Inst of Sprinklers head (Mech RM)_PB-1 | 18d | 2012-09-08 | 2012-09-29 | PP1BM21104C0, PGLS103331C360, PGLS103331C370, PGLS103331C350, PGLS103331C340, PGLS103331C330, PGLS103391C220, PP1BM23009C0, PP2BE09502C0 SS | 144.62d | 125.39d | MECHANICAL [1396.8 h]; Cost |  |  | C04ME21121C0 | PP3BM21107C0 | PA | C | P1 | M1 | ME | 211 | 07 | PB | N | BILL 2 | B02 | S1 | FF | R00 | ACF07 | PB-1 | 211 | FF | MEP |  |  |  |
| PP1BM23010C0 |  | PA-P1 ; Final Fix, Inst of Grilles & Diffusers (Mech RM)_PB-1 | 18d | 2012-09-08 | 2012-09-29 | PP1BM23009C0, PGLS103331C360, PGLS103331C370, PGLS103331C350, PGLS103331C340, PGLS103331C330, PGLS103391C220, PP2BE09502C0 SS | 144.62d | 125.39d | MECHANICAL [495.6 h]; Cost |  |  | C04ME23021C0 | PP3BM23010C0 | PA | C | P1 | M1 | ME | 230 | 10 | PB | N | BILL 2 | B02 | S1 | FF | R00 | ACF07 | PB-1 | 230 | FF | MEP |  |  |  |
| PP1BM26005C0 |  | PA-P1 ; 2nd Fix, Wiring for Power/Lighting/Emergency (Mech RM)_PB-1 | 30d | 2012-09-22 | 2012-10-29 | PP1BM26001C0, PP1BM26002C0, PP1BM26003C0, PP1BM27001C0, PP1BM27002C0 | 102.62d | 0d | ELECTRICAL [76.8 h]; Cost |  |  | C04ME26005C0 | PP3BM26005C0 | PA | C | P1 | M1 | ME | 260 | 05 | PB | N | BILL 2 | B02 | S1 | 2F | R00 | ACF07 | PB-1 | 260 | 2n | MEP |  |  |  |
| PP1BM27004C0 |  | PA-P1 ; Final Fix, BMS connection work to Equipment (Mech RM)_PB-1 | 18d | 2012-09-22 | 2012-10-13 | PP1BM21105C0, PP1BM23004C0, PP1BM23005C0, PP1BM23007C0, PP1BM26004C0, PP1BM27002C0, PP1BM27003C0, PGLS103331C360, PGLS103331C370, PGLS103331C350, PGLS103331C340, PGLS103331C330, PGLS103391C220, PP2BE09502C0 SS | 132.62d | 113.39d | ELECTRICAL [2473.2 h]; Cost |  |  | C04ME27003C0 | PP3BM27004C0 | PA | C | P1 | M1 | ME | 270 | 04 | PB | N | BILL 2 | B02 | S1 | FF | R00 | ACF07 | PB-1 | 270 | FF | MEP |  |  |  |
| PP1BM27005C0 |  | PA-P1 ; Final Fix, Inst of ELV device (Detector/Speaker) (Mech RM)_PB-1 | 18d | 2012-09-22 | 2012-10-13 | PP1BM09902C0, PP1BM23006C0, PP1BM27003C0, PGLS103331C360, PGLS103331C370, PGLS103331C350, PGLS103331C340, PGLS103331C330, PGLS103391C220, PP2BE09502C0 SS | 120.62d | 0d | ELECTRICAL [78 h]; Cost |  |  | C04ME27030C0 | PP3BM27005C0 | PA | C | P1 | M1 | ME | 270 | 05 | PB | N | BILL 2 | B02 | S1 | FF | R00 | ACF07 | PB-1 | 270 | FF | MEP |  |  |  |
| PP1BM09901C0 |  | PA-P1 ; Wall - final Paint (Mech RM)_PB-1 | 12d | 2012-10-13 | 2012-10-29 | PP1BM09902C0, PGLS103331C360, PGLS103331C370, PGLS103331C350, PGLS103331C340, PGLS103331C330, PGLS103391C220, PP1BM27005C0, PP2BE09502C0 SS | 120.62d | 101.39d | WALL PAINT [314 h]; WALL PAINT [392 m2]; Cost | 329 | 1470 | C04ME09903C0 | PP3BM09901C0 | PA | C | P1 | M1 | PA | 099 | 01 | PB | N | BILL 2 | B02 | S1 | 02 | R00 | ACF06 | PB-1 | 099 |  |  |  |  |  |
| PP1BM26007C0 |  | PA-P1 ; Final Fix, Inst of Light fittings (Mech RM)_PB-1 | 18d | 2012-10-29 | 2012-11-20 | PP1BM09902C0, PGLS103331C360, PGLS103331C370, PGLS103331C350, PGLS103331C340, PGLS103331C330, PGLS103391C220, PP1BM26005C0, PP2BE09502C0 SS | 102.62d | 83.39d | ELECTRICAL [3124.8 h]; Cost |  |  | C04ME26019C0 | PP3BM26007C0 | PA | C | P1 | M1 | ME | 260 | 07 | PB | N | BILL 2 | B02 | S1 | FF | R00 | ACF07 | PB-1 | 260 | FF | MEP |  |  |  |
| PP1BM26008C0 |  | PA-P1 ; Final Fix, Inst of Switch/Sockets (Mech RM)_PB-1 | 18d | 2012-10-29 | 2012-11-20 | PP1BM09902C0, PGLS103331C360, PGLS103331C370, PGLS103331C350, PGLS103331C340, PGLS103331C330, PGLS103391C220, PP1BM26005C0, PP2BE09502C0 SS | 102.62d | 83.39d | ELECTRICAL [124.8 h]; Cost |  |  | C04ME26017C0 | PP3BM26008C0 | PA | C | P1 | M1 | ME | 260 | 08 | PB | N | BILL 2 | B02 | S1 | FF | R00 | ACF07 | PB-1 | 260 | FF | MEP |  |  |  |
| PP1BM26009C0 |  | PA-P1 ; Final Fix, Termination & Gladding of Cables (Mech RM)_PB-1 | 18d | 2012-10-29 | 2012-11-20 | PP1BM09203C0, PP1BM26005C0, PGLS103331C360, PGLS103331C370, PGLS103331C350, PGLS103331C340, PGLS103331C330, PGLS103391C220, PP2BE09502C0 SS | 102.62d | 83.39d | ELECTRICAL [512.4 h]; Cost |  |  | C04ME26013C0 | PP3BM26009C0 | PA | C | P1 | M1 | ME | 260 | 09 | PB | N | BILL 2 | B02 | S1 | FF | R00 | ACF07 | PB-1 | 260 | FF | MEP |  |  |  |

| ID | WBS | Activity | Duration | Start | Finish | Predecessors | Total float | Free float | Resources | Change Order # | NEW ACTIVITY ID | change id | IDDD | CCAD BUILDING(SET) | CCAD PHASE(SET) | CCAD FLOOR(SET) | CCAD ZONE(SET) | CCAD WORK(SET) | CCAD SECTION(SET) | CCAD SERIAL No.(SET) | CCAD Carpark code(SET) | CCAD Carpark district code(set) | CCAD CBS(SET) | CCAD BILL(SET) | CCAD HANDOVER(SET) | CCAD TAG(SET) | CCAD REV(SET) | CCADACF (SET) | FSP CODE | CCAD SSCF | CCAD SUB ZONE MEP(SET) | CCAD CSA | Act Selector % |
| --- | --- | --- | --- | --- | --- | --- | --- | --- | --- | --- | --- | --- | --- | --- | --- | --- | --- | --- | --- | --- | --- | --- | --- | --- | --- | --- | --- | --- | --- | --- | --- | --- | --- |
|  | BP1 | **PARKING AREA :Zone PB-1** |  | 2012-02-26 | 2013-02-21 |  |  |  |  |  |  |  |  |  |  |  |  |  |  |  |  |  |  |  |  |  |  |  |  |  |  |  |  |
| PP1BP09901C10 |  | PA-P1 ; Prime & 1st coat (Wall & Ceiling) (Parking Area)_PB-1 | 18d | 2012-02-26 | 2012-03-18 | PGLS103391C100 SS, PGLS103391C110 SS, PP2BP09901C10 | 61.5d | 36d | CEILING PAINT [1719 h]; WALL PAINT [372 h]; CEILING PAINT [2146.5 m2]; WALL PAINT [463.5 m2]; Cost | 328 | 956 | CP3PA09901C0 | PP1BP09901C0 | PA | C | P1 | PK | PA | 099 | 01 | PB | N | BILL 2 | B02 | S1 | 01 | R00 | ACF06 | PB-1 | 099 |  |  |  |
| PP1BP21114C10 |  | PA-P1 ; 1st Fix, Fire Fighting system (Parking Area)_PB-1 | 36d | 2012-04-29 | 2012-06-10 | PP1BP09901C10, PP2BP21114C10 | 25.5d | 0d | MECHANICAL [201.6 h]; Cost |  |  | CP3PA21109C0 | PP1BP21114C0 | PA | C | P1 | PK | ME | 211 | 14 | PB | N | BILL 2 | B02 | S1 | 1F | R00 | ACF04 | PB-1 | 211 | 1S | MEP | M1F |
| PP1BP21124C10 |  | PA-P1 ; 2nd Fix, Fire Fighting system (Parking Area)_PB-1 | 36d | 2012-06-10 | 2012-07-23 | PP1BP21114C10 | 116.5d | 0d | MECHANICAL [201.6 h]; Cost |  |  | CP3PA21115C0 | PP1BP21124C0 | PA | C | P1 | PK | ME | 211 | 24 | PB | N | BILL 2 | B02 | S1 | 2F | R00 | ACF07 | PB-1 | 211 | 2n | MEP |  |
| PP1BP22015C10 |  | PA-P1 ; 1st Fix, Plumbing / Drainage System (Parking Area)_PB-1 | 36d | 2012-06-10 | 2012-07-23 | PP1BP09901C10, PP1BP21114C10 | 25.5d | 0d | PLUMBING [538.8 h]; Cost |  |  | CP3PA22001C0 | PP1BP22015C0 | PA | C | P1 | PK | ME | 220 | 15 | PB | N | BILL 2 | B02 | S1 | 1F | R00 | ACF04 | PB-1 | 220 | 1S | MEP | M1F |
| PP1BP09902C10 |  | PA-P1 ; 2nd coat (Wall & Ceiling) (Parking Area)_PB-1 | 5d | 2012-07-23 | 2012-07-29 | PP1BP09901C10, PGLS103331C360, PGLS103331C370, PGLS103331C350, PGLS103331C340, PGLS103331C330, PGLS103391C220, PP1BP21124C10 | 116.5d | 0d | CEILING PAINT [926 h]; WALL PAINT [201 h]; CEILING PAINT [1155.75 m2]; WALL PAINT [249.75 m2]; Cost | 329 | 957 | CP3PA09903C0 | PP1BP09902C0 | PA | C | P1 | PK | PA | 099 | 02 | PB | N | BILL 2 | B02 | S1 | 02 | R00 | ACF06 | PB-1 | 099 |  |  |  |
| PP1BP22025C10 |  | PA-P1 ; 2nd Fix, Plumbing / Drainage System (Parking Area)_PB-1 | 36d | 2012-07-23 | 2012-09-05 | PP1BP22015C10 | 97.5d | 0d | PLUMBING [661.2 h]; Cost |  |  | CP3PA22011C0 | PP1BP22025C0 | PA | C | P1 | PK | ME | 220 | 25 | PB | N | BILL 2 | B02 | S1 | 2F | R00 | ACF07 | PB-1 | 220 | 2n | MEP |  |
| PP1BP23011C10 |  | PA-P1 ; 1st Fix, CHW / HVAC System (Parking Area)_PB-1 | 36d | 2012-07-23 | 2012-09-05 | PP1BP09901C10, PP1BP22015C10 | 25.5d | 0d | MECHANICAL [1394.4 h]; Cost |  |  | CP3PA23001C0 | PP1BP23011C0 | PA | C | P1 | PK | ME | 230 | 11 | PB | N | BILL 2 | B02 | S1 | 1F | R00 | ACF04 | PB-1 | 230 | 1S | MEP | M1F |
| PP1BP21113C10 |  | PA-P1 ; Final Fix, Fire Fighting system (Parking Area)_PB-1 | 12d | 2012-07-29 | 2012-08-12 | PP1BP09902C10, PP1BP21124C10, PGLS103331C360, PGLS103331C370, PGLS103331C350, PGLS103331C340, PGLS103331C330, PGLS103391C220, PP2BE09502C0 SS | 116.5d | 19d | MECHANICAL [201.6 h]; Cost |  |  | CP3PA21113C0 | PP1BP21113C0 | PA | C | P1 | PK | ME | 211 | 13 | PB | N | BILL 2 | B02 | S1 | FF | R00 | ACF07 | PB-1 | 211 | FF | MEP |  |
| PP1BP22011C10 |  | PA-P1 ; Final Fix, Drainage System (Parking Area)_PB-1 | 12d | 2012-09-05 | 2012-09-19 | PP1BP09902C10, PP1BP22025C10, PGLS103331C360, PGLS103331C370, PGLS103331C350, PGLS103331C340, PGLS103331C330, PGLS103391C220, PP2BE09502C0 SS, PP1BP21113C10 | 97.5d | 24d | PLUMBING [538.8 h]; Cost |  |  | CP3PA22011C0 | PP1BP22011C0 | PA | C | P1 | PK | ME | 220 | 11 | PB | N | BILL 2 | B02 | S1 | FF | R00 | ACF07 | PB-1 | 220 | FF | MEP |  |
| PP1BP23021C10 |  | PA-P1 ; 2nd Fix, CHW / HVAC System (Parking Area)_PB-1 | 36d | 2012-09-05 | 2012-10-17 | PP1BP23011C10 | 73.5d | 0d | MECHANICAL [1394.4 h]; Cost |  |  | CP3PA23011C0 | PP1BP23021C0 | PA | C | P1 | PK | ME | 230 | 21 | PB | N | BILL 2 | B02 | S1 | 2F | R00 | ACF07 | PB-1 | 230 | 2n | MEP |  |
| PP1BP26012C10 |  | PA-P1 ; 1st Fix, Electrical System (Parking Area)_PB-1 | 36d | 2012-09-05 | 2012-10-17 | PP1BP09901C10, PP1BP23011C10 | 25.5d | 0d | ELECTRICAL [1297.2 h]; Cost |  |  | CP3PA26001C0 | PP1BP26012C0 | PA | C | P1 | PK | ME | 260 | 12 | PB | N | BILL 2 | B02 | S1 | 1F | R00 | ACF04 | PB-1 | 260 | 1S | MEP | M1F |
| PP1BP23019C10 |  | PA-P1 ; Final Fix, CHW / HVAC System (Parking Area)_PB-1 | 12d | 2012-10-17 | 2012-11-03 | PP1BP09902C10, PP1BP23021C10, PGLS103331C360, PGLS103331C370, PGLS103331C350, PGLS103331C340, PGLS103331C330, PGLS103391C220, PP2BE09502C0 SS, PP1BP22011C10 | 73.5d | 24d | MECHANICAL [1394.4 h]; Cost |  |  | CP3PA23019C0 | PP1BP23019C0 | PA | C | P1 | PK | ME | 230 | 19 | PB | N | BILL 2 | B02 | S1 | FF | R00 | ACF07 | PB-1 | 230 | FF | MEP |  |
| PP1BP26022C10 |  | PA-P1 ; 2nd Fix, Electrical System (Parking Area)_PB-1 | 36d | 2012-10-17 | 2012-12-02 | PP1BP26012C10 | 49.5d | 0d | ELECTRICAL [1297.2 h]; Cost |  |  | CP3PA26005C0 | PP1BP26022C0 | PA | C | P1 | PK | ME | 260 | 22 | PB | N | BILL 2 | B02 | S1 | 2F | R00 | ACF07 | PB-1 | 260 | 2n | MEP |  |
| PP1BP27013C10 |  | PA-P1 ; 1st Fix, ELV system (Parking Area)_PB-1 | 36d | 2012-10-17 | 2012-12-02 | PP1BP09901C10, PP1BP26012C10 | 25.5d | 0d | ELECTRICAL [211.2 h]; Cost |  |  | CP3PA27010C0 | PP1BP27013C0 | PA | C | P1 | PK | ME | 270 | 13 | PB | N | BILL 2 | B02 | S1 | 1F | R00 | ACF04 | PB-1 | 270 | 1S | MEP | M1F |
| PP1BP26017C10 |  | PA-P1 ; Final Fix, Electrical System (Parking Area)_PB-1 | 12d | 2012-12-02 | 2012-12-17 | PP1BP09902C10, PP1BP26022C10, PGLS103331C360, PGLS103331C370, PGLS103331C350, PGLS103331C340, PGLS103331C330, PGLS103391C220, PP2BE09502C0 SS, PP1BP23019C10 | 49.5d | 24d | ELECTRICAL [1297.2 h]; Cost |  |  | CP3PA26017C0 | PP1BP26017C0 | PA | C | P1 | PK | ME | 260 | 17 | PB | N | BILL 2 | B02 | S1 | FF | R00 | ACF07 | PB-1 | 260 | FF | MEP |  |
| PP1BP27023C10 |  | PA-P1 ; 2nd Fix, ELV system (Parking Area)_PB-1 | 36d | 2012-12-02 | 2013-01-15 | PP1BP27013C10 | 25.5d | 0d | ELECTRICAL [211.2 h]; Cost |  |  | CP3PA27020C0 | PP1BP27023C0 | PA | C | P1 | PK | ME | 270 | 23 | PB | N | BILL 2 | B02 | S1 | 2F | R00 | ACF07 | PB-1 | 270 | 2n | MEP |  |
| PP1BP27030C10 |  | PA-P1 ; Final Fix, ELV system (Parking Area)_PB-1 | 12d | 2013-01-15 | 2013-01-30 | PP1BP09902C10, PP1BP27023C10, PP1BP27023C10 FF, PGLS103331C360, PGLS103331C370, PGLS103331C350, PGLS103331C340, PGLS103331C330, PGLS103391C220, PP2BE09502C0 SS, PP1BP26017C10 | 25.5d | 0d | ELECTRICAL [211.2 h]; Cost |  |  | CP3PA27030C0 | PP1BP27030C0 | PA | C | P1 | PK | ME | 270 | 30 | PB | N | BILL 2 | B02 | S1 | FF | R00 | ACF07 | PB-1 | 270 | FF | MEP |  |
| PP1BP09903C10 |  | PA-P1 ; Concrete Sealer (Floor) (Parking Area)_PB-1 | 5.12d | 2013-01-30 | 2013-02-05 | PP1BP21113C10, PP1BP22011C10, PP1BP23019C10, PP1BP26017C10, PP1BP27030C10, PGLS103331C360, PGLS103331C370, PGLS103331C350, PGLS103331C340, PGLS103331C330, PGLS103391C220, PP2BE09502C0 SS, PV10P103306R2 | 25.5d | 0d | ASSORTED FLOOR FINISH [2888 h]; ASSORTED FLOOR FINISH [1604.5 m2]; Cost |  |  | AP1PK09903C0 | PP1BP09903C0 | PA | C | P1 | PK | FF | 096 | 03 | PB | N | BILL 2 | B02 | S1 | 05 | R00 | ACF06 | PB-1 | CS |  |  |  |
| PP1BP05509C10 |  | PA-P1 ; Grill & Louvers (Parking Area)_PB-1 | 3.86d | 2013-02-05 | 2013-02-10 | PP1BP09903C10, PGLS103331C360, PGLS103331C370, PGLS103331C350, PGLS103331C340, PGLS103331C330, PGLS103391C220, PP2BE09502C0 SS | 35.64d | 16.4d | SECONDARY STEEL [222 h]; Cost | 328 | 956 | CP3PA09901C0 | PP3AP09901C0 | PA | C | P1 | PK | SW | 055 | 01 | PB | N | BILL 2 | B02 | S1 | 02 | R00 | ACF03 | PB-1 | 056 |  |  |  |
| PP1BP11006C10 |  | PA-P1 ; Wall Protection (WP, CG, WG, FCG) (Parking Area)_PB-1 | 5.88d | 2013-02-05 | 2013-02-12 | PP1BP09903C10, PGLS103331C360, PGLS103331C370, PGLS103331C350, PGLS103331C340, PGLS103331C330, PGLS103391C220, PP2BE09502C0 SS, PZ9GZ06154R2 FF | 25.5d | 0d | FF&E [56 h]; Cost | 326 | 1001 | CP3PA11001C0 | PP1BP11006C0 | PA | C | P1 | PK | WF | 097 | 06 | PB | N | BILL 2 | B02 | S1 | 03 | R00 | ACF08 | PB-1 | 097 |  |  |  |
| PP1BP11004C10 |  | PA-P1 ; Floor Marking & Signage (Parking Area)_PB-1 | 3.12d | 2013-02-12 | 2013-02-16 | PP1BP09903C10, PP1BP11006C10, PGLS103331C360, PGLS103331C370, PGLS103331C350, PGLS103331C340, PGLS103331C330, PGLS103391C220, PP2BE09502C0 SS | 25.5d | 0d | SIGNAGES [668 h]; SIGNAGES [93 no]; Cost |  |  | AP1PK11004C0 | PP1BP11004C0 | PA | C | P1 | PK | SA | 110 | 04 | PB | N | BILL 2 | B02 | S1 | 09 | R00 | ACF08 | PB-1 | c |  |  |  |
| PP1BP11009C10 |  | PA-P1 ; FF&E (Parking Area)_PB-1 | 5d | 2013-02-16 | 2013-02-21 | PP1BP11004C10, PGLS103331C360, PGLS103331C370, PGLS103331C350, PGLS103331C340, PGLS103331C330, PGLS103391C220, PP2BE09502C0 SS | 25.5d | 6.26d | FF&E [258 h]; Cost |  |  | AP3PK11004C0 | PP3BP11004C0 | PA | C | P1 | PK | SA | 110 | 04 | PB | N | BILL 2 | B02 | S1 | 01 | R00 | ACF08 | PB-1 | a |  |  |  |
|  | BP2 | **PARKING AREA :Zone PB-2** |  | 2012-06-20 | 2013-01-17 |  |  |  |  |  |  |  |  |  |  |  |  |  |  |  |  |  |  |  |  |  |  |  |  |  |  |  |  |
| PP1BP09901C20 |  | PA-P1 ; Prime & 1st coat (Wall & Ceiling) (Parking Area)_PB-2 | 18d | 2012-06-20 | 2012-07-11 | PGLS103391C160 SS, PGLS703394R02 SS, PGLS703394C0 SS, PGLS103391C140 SS, PGLS103391C260 SS, PGLS103392R02 SS, PGLS103391C170 SS, PGLS103394R02 SS, PGLS103391C190 SS | 54.24d | 0d | CEILING PAINT [2751 h]; WALL PAINT [595 h]; CEILING PAINT [3434.4 m2]; WALL PAINT [741.6 m2]; Cost | 328 | 956 | CP3PA09901C0 | PP1BP09901C0 | PA | C | P1 | PK | PA | 099 | 01 | PB | N | BILL 2 | B02 | S1 | 01 | R00 | ACF06 | PB-2 | 099 |  |  |  |
| PP1BP21114C20 |  | PA-P1 ; 1st Fix, Fire Fighting system (Parking Area)_PB-2 | 18d | 2012-07-11 | 2012-08-01 | PP1BP09901C20 | 54.24d | 0d | MECHANICAL [321.6 h]; Cost |  |  | CP3PA21109C0 | PP1BP21114C0 | PA | C | P1 | PK | ME | 211 | 14 | PB | N | BILL 2 | B02 | S1 | 1F | R00 | ACF04 | PB-2 | 211 | 1S | MEP | M1F |
| PP1BP21124C20 |  | PA-P1 ; 2nd Fix, Fire Fighting system (Parking Area)_PB-2 | 30d | 2012-08-01 | 2012-09-08 | PP1BP21114C20 | 70.24d | 0d | MECHANICAL [321.6 h]; Cost |  |  | CP3PA21115C0 | PP1BP21124C0 | PA | C | P1 | PK | ME | 211 | 24 | PB | N | BILL 2 | B02 | S1 | 2F | R00 | ACF07 | PB-2 | 211 | 2n | MEP |  |
| PP1BP22015C20 |  | PA-P1 ; 1st Fix, Plumbing / Drainage System (Parking Area)_PB-2 | 18d | 2012-08-01 | 2012-08-25 | PP1BP09901C20, PP1BP21114C20 | 54.24d | 0d | PLUMBING [862.8 h]; Cost |  |  | CP3PA22001C0 | PP1BP22015C0 | PA | C | P1 | PK | ME | 220 | 15 | PB | N | BILL 2 | B02 | S1 | 1F | R00 | ACF04 | PB-2 | 220 | 1S | MEP | M1F |
| PP1BP22025C20 |  | PA-P1 ; 2nd Fix, Plumbing / Drainage System (Parking Area)_PB-2 | 30d | 2012-08-25 | 2012-09-29 | PP1BP22015C20 | 72.24d | 2d | PLUMBING [1057.2 h]; Cost |  |  | CP3PA22011C0 | PP1BP22025C0 | PA | C | P1 | PK | ME | 220 | 25 | PB | N | BILL 2 | B02 | S1 | 2F | R00 | ACF07 | PB-2 | 220 | 2n | MEP |  |
| PP1BP23011C20 |  | PA-P1 ; 1st Fix, CHW / HVAC System (Parking Area)_PB-2 | 18d | 2012-08-25 | 2012-09-15 | PP1BP09901C20, PP1BP22015C20 | 54.24d | 0d | MECHANICAL [2230.8 h]; Cost |  |  | CP3PA23001C0 | PP1BP23011C0 | PA | C | P1 | PK | ME | 230 | 11 | PB | N | BILL 2 | B02 | S1 | 1F | R00 | ACF04 | PB-2 | 230 | 1S | MEP | M1F |
| PP1BP09902C20 |  | PA-P1 ; 2nd coat (Wall & Ceiling) (Parking Area)_PB-2 | 8d | 2012-09-08 | 2012-09-17 | PP1BP09901C20, PGLS103331C410, PGLS103331C420, PGLS103331C380, PGLS103331C390, PGLS103331C400, PGLS703394C10, PGLS703394C20, PGLS103391C240, PGLS103391C230, PGLS103371C250, PGLS103391C210, PP1BP21124C20 | 70.24d | 0d | CEILING PAINT [1482 h]; WALL PAINT [321 h]; CEILING PAINT [1849.2 m2]; WALL PAINT [399.6 m2]; Cost | 329 | 957 | CP3PA09903C0 | PP1BP09902C0 | PA | C | P1 | PK | PA | 099 | 02 | PB | N | BILL 2 | B02 | S1 | 02 | R00 | ACF06 | PB-2 | 099 |  |  |  |
| PP1BP23021C20 |  | PA-P1 ; 2nd Fix, CHW / HVAC System (Parking Area)_PB-2 | 30d | 2012-09-15 | 2012-10-20 | PP1BP23011C20 | 66.24d | 0d | MECHANICAL [2230.8 h]; Cost |  |  | CP3PA23011C0 | PP1BP23021C0 | PA | C | P1 | PK | ME | 230 | 21 | PB | N | BILL 2 | B02 | S1 | 2F | R00 | ACF07 | PB-2 | 230 | 2n | MEP |  |
| PP1BP26012C20 |  | PA-P1 ; 1st Fix, Electrical System (Parking Area)_PB-2 | 18d | 2012-09-15 | 2012-10-06 | PP1BP09901C20, PP1BP23011C20 | 54.24d | 0d | ELECTRICAL [2074.8 h]; Cost |  |  | CP3PA26001C0 | PP1BP26012C0 | PA | C | P1 | PK | ME | 260 | 12 | PB | N | BILL 2 | B02 | S1 | 1F | R00 | ACF04 | PB-2 | 260 | 1S | MEP | M1F |
| PP1BP21113C20 |  | PA-P1 ; Final Fix, Fire Fighting system (Parking Area)_PB-2 | 12d | 2012-09-17 | 2012-10-01 | PP1BP09902C20, PP1BP21124C20, PGLS103371C250 FF, PGLS103331C410, PGLS103331C420, PGLS103331C380, PGLS103331C390, PGLS103331C400, PGLS703394C10, PGLS703394C20, PGLS103391C240, PGLS103391C230, PGLS103371C250, PGLS103391C210, PP1S103331C430 | 70.24d | 0d | MECHANICAL [321.6 h]; Cost |  |  | CP3PA21113C0 | PP1BP21113C0 | PA | C | P1 | PK | ME | 211 | 13 | PB | N | BILL 2 | B02 | S1 | FF | R00 | ACF07 | PB-2 | 211 | FF | MEP |  |
| PP1BP22011C20 |  | PA-P1 ; Final Fix, Drainage System (Parking Area)_PB-2 | 12d | 2012-10-01 | 2012-10-15 | PP1BP09902C20, PP1BP22025C20, PGLS103331C410, PGLS103331C420, PGLS103331C380, PGLS103331C390, PGLS103331C400, PGLS703394C10, PGLS703394C20, PGLS103391C240, PGLS103391C230, PGLS103371C250, PGLS103391C210, PP1BP21113C20 | 70.24d | 4d | PLUMBING [862.8 h]; Cost |  |  | CP3PA22011C0 | PP1BP22011C0 | PA | C | P1 | PK | ME | 220 | 11 | PB | N | BILL 2 | B02 | S1 | FF | R00 | ACF07 | PB-2 | 220 | FF | MEP |  |
| PP1BP26022C20 |  | PA-P1 ; 2nd Fix, Electrical System (Parking Area)_PB-2 | 30d | 2012-10-06 | 2012-11-12 | PP1BP26012C20 | 60.24d | 0d | ELECTRICAL [2074.8 h]; Cost |  |  | CP3PA26005C0 | PP1BP26022C0 | PA | C | P1 | PK | ME | 260 | 22 | PB | N | BILL 2 | B02 | S1 | 2F | R00 | ACF07 | PB-2 | 260 | 2n | MEP |  |
| PP1BP27013C20 |  | PA-P1 ; 1st Fix, ELV system (Parking Area)_PB-2 | 18d | 2012-10-06 | 2012-10-29 | PP1BP09901C20, PP1BP26012C20 | 54.24d | 0d | ELECTRICAL [337.2 h]; Cost |  |  | CP3PA27010C0 | PP1BP27013C0 | PA | C | P1 | PK | ME | 270 | 13 | PB | N | BILL 2 | B02 | S1 | 1F | R00 | ACF04 | PB-2 | 270 | 1S | MEP | M1F |
| PP1BP23019C20 |  | PA-P1 ; Final Fix, CHW / HVAC System (Parking Area)_PB-2 | 12d | 2012-10-20 | 2012-11-05 | PP1BP09902C20, PP1BP23021C20, PGLS103331C410, PGLS103331C420, PGLS103331C380, PGLS103331C390, PGLS103331C400, PGLS703394C10, PGLS703394C20, PGLS103391C240, PGLS103391C230, PGLS103371C250, PGLS103391C210, PP1BP22011C20 | 66.24d | 6d | MECHANICAL [2230.8 h]; Cost |  |  | CP3PA23019C0 | PP1BP23019C0 | PA | C | P1 | PK | ME | 230 | 19 | PB | N | BILL 2 | B02 | S1 | FF | R00 | ACF07 | PB-2 | 230 | FF | MEP |  |
| PP1BP27023C20 |  | PA-P1 ; 2nd Fix, ELV system (Parking Area)_PB-2 | 30d | 2012-10-29 | 2012-12-05 | PP1BP27013C20 | 54.24d | 0d | ELECTRICAL [337.2 h]; Cost |  |  | CP3PA27020C0 | PP1BP27023C0 | PA | C | P1 | PK | ME | 270 | 23 | PB | N | BILL 2 | B02 | S1 | 2F | R00 | ACF07 | PB-2 | 270 | 2n | MEP |  |
| PP1BP26017C20 |  | PA-P1 ; Final Fix, Electrical System (Parking Area)_PB-2 | 12d | 2012-11-12 | 2012-11-27 | PP1BP09902C20, PP1BP26022C20, LAFGN26001R02 FF, PGLS103331C410, PGLS103331C420, PGLS103331C380, PGLS103331C390, PGLS103331C400, PGLS703394C10, PGLS703394C20, PGLS103391C240, PGLS103391C230, PGLS103371C250, PGLS103391C210, PP1BP23019C20 | 60.24d | 6d | ELECTRICAL [2074.8 h]; Cost |  |  | CP3PA26017C0 | PP1BP26017C0 | PA | C | P1 | PK | ME | 260 | 17 | PB | N | BILL 2 | B02 | S1 | FF | R00 | ACF07 | PB-2 | 260 | FF | MEP |  |
| PP1BP27030C20 |  | PA-P1 ; Final Fix, ELV system (Parking Area)_PB-2 | 12d | 2012-12-05 | 2012-12-19 | PP1BP09902C20, PP1BP27023C20, PP1BP27023C20 FF, PGLS103331C410, PGLS103331C420, PGLS103331C380, PGLS103331C390, PGLS103331C400, PGLS703394C10, PGLS703394C20, PGLS103391C240, PGLS103391C230, PGLS103371C250, PGLS103391C210, PP1BP26017C20 | 54.24d | 0d | ELECTRICAL [337.2 h]; Cost |  |  | CP3PA27030C0 | PP1BP27030C0 | PA | C | P1 | PK | ME | 270 | 30 | PB | N | BILL 2 | B02 | S1 | FF | R00 | ACF07 | PB-2 | 270 | FF | MEP |  |
| PP1BP09903C20 |  | PA-P1 ; Concrete Sealer (Floor) (Parking Area)_PB-2 | 8d | 2012-12-19 | 2012-12-29 | PP1BP21113C20, PP1BP22011C20, PP1BP23019C20, PP1BP26017C20, PP1BP27030C20, PGLS103331C410, PGLS103331C420, PGLS103331C380, PGLS103331C390, PGLS103331C400, PGLS703394C10, PGLS703394C20, PGLS103391C240, PGLS103391C230, PGLS103371C250, PGLS103391C210 | 54.24d | 0d | ASSORTED FLOOR FINISH [4624 h]; ASSORTED FLOOR FINISH [2567.2 m2]; Cost |  |  | AP1PK09903C0 | PP1BP09903C0 | PA | C | P1 | PK | FF | 096 | 03 | PB | N | BILL 2 | B02 | S1 | 05 | R00 | ACF06 | PB-2 | CS |  |  |  |
| PP1BP05509C20 |  | PA-P1 ; Grill & Louvers (Parking Area)_PB-2 | 5.69d | 2012-12-29 | 2013-01-06 | PP1BP09903C20, PZ9GZ05153R2 FF, PGLS103331C410, PGLS103331C420, PGLS103331C380, PGLS103331C390, PGLS103331C400, PGLS703394C10, PGLS703394C20, PGLS103391C240, PGLS103391C230, PGLS103371C250, PGLS103391C210 | 64.55d | 45.31d | SECONDARY STEEL [356 h]; Cost | 328 | 956 | CP3PA09901C0 | PP3AP09901C0 | PA | C | P1 | PK | SW | 055 | 01 | PB | N | BILL 2 | B02 | S1 | 02 | R00 | ACF03 | PB-2 | 056 |  |  |  |
| PP1BP11006C20 |  | PA-P1 ; Wall Protection (WP, CG, WG, FCG) (Parking Area)_PB-2 | 6d | 2012-12-29 | 2013-01-06 | PP1BP09903C20, PGLS103331C410, PGLS103331C420, PGLS103331C380, PGLS103331C390, PGLS103331C400, PGLS703394C10, PGLS703394C20, PGLS103391C240, PGLS103391C230, PGLS103371C250, PGLS103391C210 | 54.24d | 0d | FF&E [89 h]; Cost | 326 | 1001 | CP3PA11001C0 | PP1BP11006C0 | PA | C | P1 | PK | WF | 097 | 06 | PB | N | BILL 2 | B02 | S1 | 03 | R00 | ACF08 | PB-2 | 097 |  |  |  |
| PP1BP11004C20 |  | PA-P1 ; Floor Marking & Signage (Parking Area)_PB-2 | 5d | 2013-01-06 | 2013-01-12 | PP1BP09903C20, PP1BP11006C20, PGLS103331C410, PGLS103331C420, PGLS103331C380, PGLS103331C390, PGLS103331C400, PGLS703394C10, PGLS703394C20, PGLS103391C240, PGLS103391C230, PGLS103371C250, PGLS103391C210 | 54.24d | 0d | SIGNAGES [1069 h]; SIGNAGES [148.8 no]; Cost |  |  | AP1PK11004C0 | PP1BP11004C0 | PA | C | P1 | PK | SA | 110 | 04 | PB | N | BILL 2 | B02 | S1 | 09 | R00 | ACF08 | PB-2 | c |  |  |  |
| PP1BP11009C20 |  | PA-P1 ; FF&E (Parking Area)_PB-2 | 5d | 2013-01-12 | 2013-01-17 | PP1BP11004C20, PGLS103331C410, PGLS103331C420, PGLS103331C380, PGLS103331C390, PGLS103331C400, PGLS703394C10, PGLS703394C20, PGLS103391C240, PGLS103391C230, PGLS103371C250, PGLS103391C210 | 54.24d | 35d | FF&E [412 h]; Cost |  |  | AP3PK11004C0 | PP3BP11004C0 | PA | C | P1 | PK | SA | 110 | 04 | PB | N | BILL 2 | B02 | S1 | 01 | R00 | ACF08 | PB-2 | a |  |  |  |

| ID | WBS | Activity | Duration | Start | Finish | Predecessors | Total float | Free float | Resources | Change Order # | NEW ACTIVITY ID | change id | IDDD | CCAD BUILDING(SET) | CCAD PHASE(SET) | CCAD FLOOR(SET) | CCAD ZONE(SET) | CCAD WORK(SET) | CCAD SECTION(SET) | CCAD SERIAL No.(SET) | CCAD Carpark code(SET) | CCAD Carpark district code(set) | CCAD CBS(SET) | CCAD BILL(SET) | CCAD HANDOVER(SET) | CCAD TAG(SET) | CCAD REV(SET) | CCADACF (SET) | FSP CODE | CCAD SSCF | CCAD SUB ZONE MEP(SET) | CCAD CSA | Act Selector % |
| --- | --- | --- | --- | --- | --- | --- | --- | --- | --- | --- | --- | --- | --- | --- | --- | --- | --- | --- | --- | --- | --- | --- | --- | --- | --- | --- | --- | --- | --- | --- | --- | --- | --- |
|  | BP3 | **PARKING AREA :Zone PB-3** |  | 2012-02-07 | 2013-02-07 |  |  |  |  |  |  |  |  |  |  |  |  |  |  |  |  |  |  |  |  |  |  |  |  |  |  |  |  |
| PP1BP09901C30 |  | PA-P1 ; Prime & 1st coat (Wall & Ceiling) (Parking Area)_PB-3 | 18d | 2012-02-07 | 2012-02-28 | PGLS103391C180 SS, PGLS103391C200 SS, PP2BP09901C30 | 73.88d | 36d | CEILING PAINT [2408 h]; WALL PAINT [520 h]; CEILING PAINT [3005.1 m2]; WALL PAINT [648.9 m2]; Cost | 328 | 956 | CP3PA09901C0 | PP1BP09901C0 | PA | C | P1 | PK | PA | 099 | 01 | PB | N | BILL 2 | B02 | S1 | 01 | R00 | ACF06 | PB-3 | 099 |  |  |  |
| PP1BP21114C30 |  | PA-P1 ; 1st Fix, Fire Fighting system (Parking Area)_PB-3 | 36d | 2012-04-10 | 2012-05-22 | PP1BP09901C30, PP2BP21114C30 | 37.88d | 0d | MECHANICAL [282 h]; Cost |  |  | CP3PA21109C0 | PP1BP21114C0 | PA | C | P1 | PK | ME | 211 | 14 | PB | N | BILL 2 | B02 | S1 | 1F | R00 | ACF04 | PB-3 | 211 | 1S | MEP | M1F |
| PP1BP21124C30 |  | PA-P1 ; 2nd Fix, Fire Fighting system (Parking Area)_PB-3 | 36d | 2012-05-22 | 2012-07-04 | PP1BP21114C30 | 126.88d | 0d | MECHANICAL [282 h]; Cost |  |  | CP3PA21115C0 | PP1BP21124C0 | PA | C | P1 | PK | ME | 211 | 24 | PB | N | BILL 2 | B02 | S1 | 2F | R00 | ACF07 | PB-3 | 211 | 2n | MEP |  |
| PP1BP22015C30 |  | PA-P1 ; 1st Fix, Plumbing / Drainage System (Parking Area)_PB-3 | 36d | 2012-05-22 | 2012-07-04 | PP1BP09901C30, PP1BP21114C30 | 37.88d | 0d | PLUMBING [754.8 h]; Cost |  |  | CP3PA22001C0 | PP1BP22015C0 | PA | C | P1 | PK | ME | 220 | 15 | PB | N | BILL 2 | B02 | S1 | 1F | R00 | ACF04 | PB-3 | 220 | 1S | MEP | M1F |
| PP1BP09902C30 |  | PA-P1 ; 2nd coat (Wall & Ceiling) (Parking Area)_PB-3 | 7d | 2012-07-04 | 2012-07-12 | PP1BP09901C30, PGLS103331C360, PGLS103331C370, PGLS103331C350, PGLS103331C340, PGLS103331C330, PGLS103391C220, PP1BP21124C30 | 126.88d | 0d | CEILING PAINT [1297 h]; WALL PAINT [281 h]; CEILING PAINT [1618.05 m2]; WALL PAINT [349.65 m2]; Cost | 329 | 957 | CP3PA09903C0 | PP1BP09902C0 | PA | C | P1 | PK | PA | 099 | 02 | PB | N | BILL 2 | B02 | S1 | 02 | R00 | ACF06 | PB-3 | 099 |  |  |  |
| PP1BP22025C30 |  | PA-P1 ; 2nd Fix, Plumbing / Drainage System (Parking Area)_PB-3 | 36d | 2012-07-04 | 2012-08-15 | PP1BP22015C30 | 109.88d | 0d | PLUMBING [925.2 h]; Cost |  |  | CP3PA22011C0 | PP1BP22025C0 | PA | C | P1 | PK | ME | 220 | 25 | PB | N | BILL 2 | B02 | S1 | 2F | R00 | ACF07 | PB-3 | 220 | 2n | MEP |  |
| PP1BP23011C30 |  | PA-P1 ; 1st Fix, CHW / HVAC System (Parking Area)_PB-3 | 36d | 2012-07-04 | 2012-08-15 | PP1BP09901C30, PP1BP22015C30 | 37.88d | 0d | MECHANICAL [1951.2 h]; Cost |  |  | CP3PA23001C0 | PP1BP23011C0 | PA | C | P1 | PK | ME | 230 | 11 | PB | N | BILL 2 | B02 | S1 | 1F | R00 | ACF04 | PB-3 | 230 | 1S | MEP | M1F |
| PP1BP21113C30 |  | PA-P1 ; Final Fix, Fire Fighting system (Parking Area)_PB-3 | 12d | 2012-07-12 | 2012-07-26 | PP1BP09902C30, PP1BP21124C30, PGLS103331C360, PGLS103331C370, PGLS103331C350, PGLS103331C340, PGLS103331C330, PGLS103391C220, PP2BE09502C0 SS | 126.88d | 17d | MECHANICAL [282 h]; Cost |  |  | CP3PA21113C0 | PP1BP21113C0 | PA | C | P1 | PK | ME | 211 | 13 | PB | N | BILL 2 | B02 | S1 | FF | R00 | ACF07 | PB-3 | 211 | FF | MEP |  |
| PP1BP22011C30 |  | PA-P1 ; Final Fix, Drainage System (Parking Area)_PB-3 | 12d | 2012-08-15 | 2012-09-01 | PP1BP09902C30, PP1BP22025C30, PGLS103331C360, PGLS103331C370, PGLS103331C350, PGLS103331C340, PGLS103331C330, PGLS103391C220, PP2BE09502C0 SS, PP1BP21113C30 | 109.88d | 24d | PLUMBING [754.8 h]; Cost |  |  | CP3PA22011C0 | PP1BP22011C0 | PA | C | P1 | PK | ME | 220 | 11 | PB | N | BILL 2 | B02 | S1 | FF | R00 | ACF07 | PB-3 | 220 | FF | MEP |  |
| PP1BP23021C30 |  | PA-P1 ; 2nd Fix, CHW / HVAC System (Parking Area)_PB-3 | 36d | 2012-08-15 | 2012-09-29 | PP1BP23011C30 | 85.88d | 0d | MECHANICAL [1951.2 h]; Cost |  |  | CP3PA23011C0 | PP1BP23021C0 | PA | C | P1 | PK | ME | 230 | 21 | PB | N | BILL 2 | B02 | S1 | 2F | R00 | ACF07 | PB-3 | 230 | 2n | MEP |  |
| PP1BP26012C30 |  | PA-P1 ; 1st Fix, Electrical System (Parking Area)_PB-3 | 36d | 2012-08-15 | 2012-09-29 | PP1BP09901C30, PP1BP23011C30 | 37.88d | 0d | ELECTRICAL [1815.6 h]; Cost |  |  | CP3PA26001C0 | PP1BP26012C0 | PA | C | P1 | PK | ME | 260 | 12 | PB | N | BILL 2 | B02 | S1 | 1F | R00 | ACF04 | PB-3 | 260 | 1S | MEP | M1F |
| PP1BP23019C30 |  | PA-P1 ; Final Fix, CHW / HVAC System (Parking Area)_PB-3 | 12d | 2012-09-29 | 2012-10-13 | PP1BP09902C30, PP1BP23021C30, PGLS103331C360, PGLS103331C370, PGLS103331C350, PGLS103331C340, PGLS103331C330, PGLS103391C220, PP2BE09502C0 SS, PP1BP22011C30 | 85.88d | 24d | MECHANICAL [1951.2 h]; Cost |  |  | CP3PA23019C0 | PP1BP23019C0 | PA | C | P1 | PK | ME | 230 | 19 | PB | N | BILL 2 | B02 | S1 | FF | R00 | ACF07 | PB-3 | 230 | FF | MEP |  |
| PP1BP26022C30 |  | PA-P1 ; 2nd Fix, Electrical System (Parking Area)_PB-3 | 36d | 2012-09-29 | 2012-11-12 | PP1BP26012C30 | 61.88d | 0d | ELECTRICAL [1815.6 h]; Cost |  |  | CP3PA26005C0 | PP1BP26022C0 | PA | C | P1 | PK | ME | 260 | 22 | PB | N | BILL 2 | B02 | S1 | 2F | R00 | ACF07 | PB-3 | 260 | 2n | MEP |  |
| PP1BP27013C30 |  | PA-P1 ; 1st Fix, ELV system (Parking Area)_PB-3 | 36d | 2012-09-29 | 2012-11-12 | PP1BP09901C30, PP1BP26012C30 | 37.88d | 0d | ELECTRICAL [295.2 h]; Cost |  |  | CP3PA27010C0 | PP1BP27013C0 | PA | C | P1 | PK | ME | 270 | 13 | PB | N | BILL 2 | B02 | S1 | 1F | R00 | ACF04 | PB-3 | 270 | 1S | MEP | M1F |
| PP1BP26017C30 |  | PA-P1 ; Final Fix, Electrical System (Parking Area)_PB-3 | 12d | 2012-11-12 | 2012-11-27 | PP1BP09902C30, PP1BP26022C30, PGLS103331C360, PGLS103331C370, PGLS103331C350, PGLS103331C340, PGLS103331C330, PGLS103391C220, PP2BE09502C0 SS, PP1BP23019C30 | 61.88d | 24d | ELECTRICAL [1815.6 h]; Cost |  |  | CP3PA26017C0 | PP1BP26017C0 | PA | C | P1 | PK | ME | 260 | 17 | PB | N | BILL 2 | B02 | S1 | FF | R00 | ACF07 | PB-3 | 260 | FF | MEP |  |
| PP1BP27023C30 |  | PA-P1 ; 2nd Fix, ELV system (Parking Area)_PB-3 | 36d | 2012-11-12 | 2012-12-26 | PP1BP27013C30 | 37.88d | 0d | ELECTRICAL [295.2 h]; Cost |  |  | CP3PA27020C0 | PP1BP27023C0 | PA | C | P1 | PK | ME | 270 | 23 | PB | N | BILL 2 | B02 | S1 | 2F | R00 | ACF07 | PB-3 | 270 | 2n | MEP |  |
| PP1BP27030C30 |  | PA-P1 ; Final Fix, ELV system (Parking Area)_PB-3 | 12d | 2012-12-26 | 2013-01-10 | PP1BP09902C30, PP1BP27023C30, PP1BP27023C30 FF, PGLS103331C360, PGLS103331C370, PGLS103331C350, PGLS103331C340, PGLS103331C330, PGLS103391C220, PP2BE09502C0 SS, PP1BP26017C30 | 37.88d | 0d | ELECTRICAL [295.2 h]; Cost |  |  | CP3PA27030C0 | PP1BP27030C0 | PA | C | P1 | PK | ME | 270 | 30 | PB | N | BILL 2 | B02 | S1 | FF | R00 | ACF07 | PB-3 | 270 | FF | MEP |  |
| PP1BP09903C30 |  | PA-P1 ; Concrete Sealer (Floor) (Parking Area)_PB-3 | 6.88d | 2013-01-10 | 2013-01-17 | PP1BP21113C30, PP1BP22011C30, PP1BP23019C30, PP1BP26017C30, PP1BP27030C30, PGLS103331C360, PGLS103331C370, PGLS103331C350, PGLS103331C340, PGLS103331C330, PGLS103391C220, PP2BE09502C0 SS | 37.88d | 0d | ASSORTED FLOOR FINISH [4048 h]; ASSORTED FLOOR FINISH [2246.3 m2]; Cost |  |  | AP1PK09903C0 | PP1BP09903C0 | PA | C | P1 | PK | FF | 096 | 03 | PB | N | BILL 2 | B02 | S1 | 05 | R00 | ACF06 | PB-3 | CS |  |  |  |
| PP1BP05509C30 |  | PA-P1 ; Grill & Louvers (Parking Area)_PB-3 | 5.82d | 2013-01-19 | 2013-01-26 | PP1BP09903C30, PGLS103331C360, PGLS103331C370, PGLS103331C350, PGLS103331C340, PGLS103331C330, PGLS103391C220, PP2BE09502C0 SS | 48.18d | 28.95d | SECONDARY STEEL [311 h]; Cost | 328 | 956 | CP3PA09901C0 | PP3AP09901C0 | PA | C | P1 | PK | SW | 055 | 01 | PB | N | BILL 2 | B02 | S1 | 02 | R00 | ACF03 | PB-3 | 056 |  |  |  |
| PP1BP11006C30 |  | PA-P1 ; Wall Protection (WP, CG, WG, FCG) (Parking Area)_PB-3 | 6d | 2013-01-19 | 2013-01-26 | PP1BP09903C30, PGLS103331C360, PGLS103331C370, PGLS103331C350, PGLS103331C340, PGLS103331C330, PGLS103391C220, PP2BE09502C0 SS | 37.88d | 0d | FF&E [79 h]; Cost | 326 | 1001 | CP3PA11001C0 | PP1BP11006C0 | PA | C | P1 | PK | WF | 097 | 06 | PB | N | BILL 2 | B02 | S1 | 03 | R00 | ACF08 | PB-3 | 097 |  |  |  |
| PP1BP11004C30 |  | PA-P1 ; Floor Marking & Signage (Parking Area)_PB-3 | 5d | 2013-01-27 | 2013-01-31 | PP1BP09903C30, PP1BP11006C30, PGLS103331C360, PGLS103331C370, PGLS103331C350, PGLS103331C340, PGLS103331C330, PGLS103391C220, PP2BE09502C0 SS | 37.88d | 0d | SIGNAGES [936 h]; SIGNAGES [130.2 no]; Cost |  |  | AP1PK11004C0 | PP1BP11004C0 | PA | C | P1 | PK | SA | 110 | 04 | PB | N | BILL 2 | B02 | S1 | 09 | R00 | ACF08 | PB-3 | c |  |  |  |
| PP1BP11009C30 |  | PA-P1 ; FF&E (Parking Area)_PB-3 | 5.12d | 2013-02-02 | 2013-02-07 | PP1BP11004C30, PGLS103331C360, PGLS103331C370, PGLS103331C350, PGLS103331C340, PGLS103331C330, PGLS103391C220, PP2BE09502C0 SS | 37.88d | 18.64d | FF&E [361 h]; Cost |  |  | AP3PK11004C0 | PP3BP11004C0 | PA | C | P1 | PK | SA | 110 | 04 | PB | N | BILL 2 | B02 | S1 | 01 | R00 | ACF08 | PB-3 | a |  |  |  |
|  | CP1 | **PARKING AREA :Zone PC-1** |  | 2012-01-04 | 2012-10-01 |  |  |  |  |  |  |  |  |  |  |  |  |  |  |  |  |  |  |  |  |  |  |  |  |  |  |  |  |
| PP1CP09901C10 |  | PA-P1 ; Prime & 1st coat (Wall & Ceiling) (Parking Area)_PC-1 | 18d | 2012-01-04 | 2012-01-25 | PGLS603391C0 SS, PGLS703391C0 SS, PP2CP09901C10 | 35.2d | 24d | CEILING PAINT [1769 h]; WALL PAINT [383 h]; CEILING PAINT [2208 m2]; WALL PAINT [477 m2]; Cost | 328 | 956 | CP3PA09901C0 | PP1CP09901C0 | PA | C | P1 | PK | PA | 099 | 01 | PC | S | BILL 2 | B02 | S2 | 01 | R00 | ACF06 | PC-1 | 099 |  |  |  |
| PP1CP21114C10 |  | PA-P1 ; 1st Fix, Fire Fighting system (Parking Area)_PC-1 | 30d | 2012-02-23 | 2012-03-29 | PP1CP09901C10, PP2CP21114C10 | 11.2d | 0d | MECHANICAL [544.8 h]; Cost |  |  | CP3PA21109C0 | PP1CP21114C0 | PA | C | P1 | PK | ME | 211 | 14 | PC | S | BILL 2 | B02 | S2 | 1F | R00 | ACF04 | PC-1 | 211 | 1S | MEP | M1F |
| PP1CP21124C10 |  | PA-P1 ; 2nd Fix, Fire Fighting system (Parking Area)_PC-1 | 30d | 2012-03-29 | 2012-05-03 | PP1CP21114C10 | 83.2d | 72d | MECHANICAL [482.4 h]; Cost |  |  | CP3PA21115C0 | PP1CP21124C0 | PA | C | P1 | PK | ME | 211 | 24 | PC | S | BILL 2 | B02 | S2 | 2F | R00 | ACF07 | PC-1 | 211 | 2n | MEP |  |
| PP1CP22015C10 |  | PA-P1 ; 1st Fix, Plumbing / Drainage System (Parking Area)_PC-1 | 30d | 2012-03-29 | 2012-05-03 | PP1CP09901C10, PP1CP21114C10 | 11.2d | 0d | PLUMBING [1293.6 h]; Cost |  |  | CP3PA22001C0 | PP1CP22015C0 | PA | C | P1 | PK | ME | 220 | 15 | PC | S | BILL 2 | B02 | S2 | 1F | R00 | ACF04 | PC-1 | 220 | 1S | MEP | M1F |
| PP1CP22025C10 |  | PA-P1 ; 2nd Fix, Plumbing / Drainage System (Parking Area)_PC-1 | 30d | 2012-05-03 | 2012-06-07 | PP1CP22015C10 | 62.2d | 51d | PLUMBING [1293.6 h]; Cost |  |  | CP3PA22011C0 | PP1CP22025C0 | PA | C | P1 | PK | ME | 220 | 25 | PC | S | BILL 2 | B02 | S2 | 2F | R00 | ACF07 | PC-1 | 220 | 2n | MEP |  |
| PP1CP23011C10 |  | PA-P1 ; 1st Fix, CHW / HVAC System (Parking Area)_PC-1 | 30d | 2012-05-03 | 2012-06-07 | PP1CP22015C10 SS, PP1CP09901C10, PP1CP22015C10 | 11.2d | 0d | MECHANICAL [3345.6 h]; Cost |  |  | CP3PA23001C0 | PP1CP23011C0 | PA | C | P1 | PK | ME | 230 | 11 | PC | S | BILL 2 | B02 | S2 | 1F | R00 | ACF04 | PC-1 | 230 | 1S | MEP | M1F |
| PP1CP23021C10 |  | PA-P1 ; 2nd Fix, CHW / HVAC System (Parking Area)_PC-1 | 30d | 2012-06-07 | 2012-07-14 | PP1CP23011C10 | 41.2d | 30d | MECHANICAL [3345.6 h]; Cost |  |  | CP3PA23011C0 | PP1CP23021C0 | PA | C | P1 | PK | ME | 230 | 21 | PC | S | BILL 2 | B02 | S2 | 2F | R00 | ACF07 | PC-1 | 230 | 2n | MEP |  |
| PP1CP26012C10 |  | PA-P1 ; 1st Fix, Electrical System (Parking Area)_PC-1 | 30d | 2012-06-07 | 2012-07-14 | PP1CP09901C10, PP1CP23011C10 | 11.2d | 0d | ELECTRICAL [3112.8 h]; Cost |  |  | CP3PA26001C0 | PP1CP26012C0 | PA | C | P1 | PK | ME | 260 | 12 | PC | S | BILL 2 | B02 | S2 | 1F | R00 | ACF04 | PC-1 | 260 | 1S | MEP | M1F |
| PP1CP26022C10 |  | PA-P1 ; 2nd Fix, Electrical System (Parking Area)_PC-1 | 30d | 2012-07-14 | 2012-08-18 | PP1CP26012C10 | 20.2d | 9d | ELECTRICAL [3112.8 h]; Cost |  |  | CP3PA26005C0 | PP1CP26022C0 | PA | C | P1 | PK | ME | 260 | 22 | PC | S | BILL 2 | B02 | S2 | 2F | R00 | ACF07 | PC-1 | 260 | 2n | MEP |  |
| PP1CP27013C10 |  | PA-P1 ; 1st Fix, ELV system (Parking Area)_PC-1 | 24d | 2012-07-14 | 2012-08-11 | PP1CP09901C10, PP1CP26012C10 | 11.2d | 0d | ELECTRICAL [506.4 h]; Cost |  |  | CP3PA27010C0 | PP1CP27013C0 | PA | C | P1 | PK | ME | 270 | 13 | PC | S | BILL 2 | B02 | S2 | 1F | R00 | ACF04 | PC-1 | 270 | 1S | MEP | M1F |
| PP1CP09902C10 |  | PA-P1 ; 2nd coat (Wall & Ceiling) (Parking Area)_PC-1 | 18d | 2012-07-28 | 2012-08-18 | PP1CP09901C10, PGLS703391C10, PGLS603391C10, PP1S103331C320, PP1S103331C310 | 47.2d | 39d | CEILING PAINT [954 h]; WALL PAINT [206 h]; CEILING PAINT [1188.6 m2]; WALL PAINT [256.8 m2]; Cost | 329 | 957 | CP3PA09903C0 | PP1CP09902C0 | PA | C | P1 | PK | PA | 099 | 02 | PC | S | BILL 2 | B02 | S2 | 02 | R00 | ACF06 | PC-1 | 099 |  |  |  |
| PP1CP21113C10 |  | PA-P1 ; Final Fix, Fire Fighting system (Parking Area)_PC-1 | 9d | 2012-07-28 | 2012-08-07 | PGLS703391C10 FF, PP1CP21124C10, PGLS703391C10, PGLS603391C10, PP1S103331C320, PP1S103331C310 | 11.2d | 0d | MECHANICAL [482.4 h]; Cost |  |  | CP3PA21113C0 | PP1CP21113C0 | PA | C | P1 | PK | ME | 211 | 13 | PC | S | BILL 2 | B02 | S2 | FF | R00 | ACF07 | PC-1 | 211 | FF | MEP |  |
| PP1CP22011C10 |  | PA-P1 ; Final Fix, Drainage System (Parking Area)_PC-1 | 9d | 2012-08-07 | 2012-08-18 | PP1CP22025C10, PGLS703391C10, PGLS603391C10, PP1S103331C320, PP1S103331C310, PP1CP21113C10 | 11.2d | 0d | PLUMBING [1293.6 h]; Cost |  |  | CP3PA22011C0 | PP1CP22011C0 | PA | C | P1 | PK | ME | 220 | 11 | PC | S | BILL 2 | B02 | S2 | FF | R00 | ACF07 | PC-1 | 220 | FF | MEP |  |
| PP1CP27023C10 |  | PA-P1 ; 2nd Fix, ELV system (Parking Area)_PC-1 | 24d | 2012-08-11 | 2012-09-10 | PP1CP27013C10 | 11.2d | 0d | ELECTRICAL [506.4 h]; Cost |  |  | CP3PA27020C0 | PP1CP27023C0 | PA | C | P1 | PK | ME | 270 | 23 | PC | S | BILL 2 | B02 | S2 | 2F | R00 | ACF07 | PC-1 | 270 | 2n | MEP |  |
| PP1CP23019C10 |  | PA-P1 ; Final Fix, CHW / HVAC System (Parking Area)_PC-1 | 9d | 2012-08-18 | 2012-08-30 | PP1CP23021C10, PGLS703391C10, PGLS603391C10, PP1S103331C320, PP1S103331C310, PP1CP22011C10 | 11.2d | 0d | MECHANICAL [3345.6 h]; Cost |  |  | CP3PA23019C0 | PP1CP23019C0 | PA | C | P1 | PK | ME | 230 | 19 | PC | S | BILL 2 | B02 | S2 | FF | R00 | ACF07 | PC-1 | 230 | FF | MEP |  |
| PP1CP26017C10 |  | PA-P1 ; Final Fix, Electrical System (Parking Area)_PC-1 | 9d | 2012-08-30 | 2012-09-10 | PP1CP26022C10, PGLS703391C10, PGLS603391C10, PP1S103331C320, PP1S103331C310, PP1CP23019C10 | 11.2d | 0d | ELECTRICAL [3112.8 h]; Cost |  |  | CP3PA26017C0 | PP1CP26017C0 | PA | C | P1 | PK | ME | 260 | 17 | PC | S | BILL 2 | B02 | S2 | FF | R00 | ACF07 | PC-1 | 260 | FF | MEP |  |
| PP1CP09903C10 |  | PA-P1 ; Concrete Sealer (Floor) (Parking Area)_PC-1 | 9d | 2012-09-10 | 2012-09-20 | PP1CP21113C10 FF, PP1CP22011C10 FF, PP1CP23019C10 FF, PP1CP26017C10 FF, PP1CP27030C10 FF, PGLS703391C10, PGLS603391C10, PP1S103331C320, PP1S103331C310 | 11.2d | 0d | ASSORTED FLOOR FINISH [2976 h]; ASSORTED FLOOR FINISH [1650.6 m2]; Cost |  |  | AP1PK09903C0 | PP1CP09903C0 | PA | C | P1 | PK | FF | 096 | 03 | PC | S | BILL 2 | B02 | S2 | 05 | R00 | ACF06 | PC-1 | CS |  |  |  |
| PP1CP27030C10 |  | PA-P1 ; Final Fix, ELV system (Parking Area)_PC-1 | 9d | 2012-09-10 | 2012-09-20 | PP1CP27023C10, PP1CP27023C10 FF, PGLS703391C10, PGLS603391C10, PP1S103331C320, PP1S103331C310, PP1CP26017C10 | 11.2d | 0d | ELECTRICAL [506.4 h]; Cost |  |  | CP3PA27030C0 | PP1CP27030C0 | PA | C | P1 | PK | ME | 270 | 30 | PC | S | BILL 2 | B02 | S2 | FF | R00 | ACF07 | PC-1 | 270 | FF | MEP |  |
| PP1CP05509C10 |  | PA-P1 ; Grill & Louvers (Parking Area)_PC-1 | 9d | 2012-09-20 | 2012-10-01 | PP1CP09903C10, PGLS703391C10, PGLS603391C10, PP1S103331C320, PP1S103331C310 | 11.2d | 3d | SECONDARY STEEL [229 h]; Cost | 328 | 956 | CP3PA09901C0 | PP3AP09901C0 | PA | C | P1 | PK | SW | 055 | 01 | PC | S | BILL 2 | B02 | S2 | 02 | R00 | ACF03 | PC-1 | 056 |  |  |  |
| PP1CP11004C10 |  | PA-P1 ; Floor Marking & Signage (Parking Area)_PC-1 | 9d | 2012-09-20 | 2012-10-01 | PP1CP09903C10, PP1CP11006C10 FF, PGLS703391C10, PGLS603391C10, PP1S103331C320, PP1S103331C310 | 11.2d | 3d | SIGNAGES [687 h]; SIGNAGES [95.4 no]; Cost |  |  | AP1PK11004C0 | PP1CP11004C0 | PA | C | P1 | PK | SA | 110 | 04 | PC | S | BILL 2 | B02 | S2 | 09 | R00 | ACF08 | PC-1 | c |  |  |  |
| PP1CP11006C10 |  | PA-P1 ; Wall Protection (WP, CG, WG, FCG) (Parking Area)_PC-1 | 6d | 2012-09-20 | 2012-09-27 | PP1CP09903C10, PGLS703391C10, PGLS603391C10, PP1S103331C320, PP1S103331C310 | 14.2d | 3d | FF&E [58 h]; Cost | 326 | 1001 | CP3PA11001C0 | PP1CP11006C0 | PA | C | P1 | PK | WF | 097 | 06 | PC | S | BILL 2 | B02 | S2 | 03 | R00 | ACF08 | PC-1 | 097 |  |  |  |

| ID | WBS | Activity | Duration | Start | Finish | Predecessors | Complete | Remaining | Planned start | Planned finish | Total float | Free float | Resources | Cost | Actual cost | Change Order # | NEW ACTIVITY ID | change id | IDDD | CCAD BUILDING(SET) | CCAD PHASE(SET) | CCAD FLOOR(SET) | CCAD ZONE(SET) | CCAD WORK(SET) | CCAD SECTION(SET) | CCAD SERIAL No.(SET) | CCAD Carpark code(SET) | CCAD Carpark district code(set) | CCAD CBS(SET) | CCAD BILL(SET) | CCAD HANDOVER(SET) | CCAD TAG(SET) | CCAD REV(SET) | CCADACF (SET) | FSP CODE | CCAD SSCF | CCAD SUB ZONE MEP(SET) | CCAD CSA | Act Selector % | CCAD DIVISION(SET) | CCAD MEQ |
| --- | --- | --- | --- | --- | --- | --- | --- | --- | --- | --- | --- | --- | --- | --- | --- | --- | --- | --- | --- | --- | --- | --- | --- | --- | --- | --- | --- | --- | --- | --- | --- | --- | --- | --- | --- | --- | --- | --- | --- | --- | --- |
|  | CP2 | **PARKING AREA :Zone PC-2** |  | 2011-09-05 | 2012-09-17 |  |  |  |  |  |  |  |  |  |  |  |  |  |  |  |  |  |  |  |  |  |  |  |  |  |  |  |  |  |  |  |  |  |  |  |  |
| PP1CP11006C20 |  | PA-P1 ; Wall Protection (WP, CG, WG, FCG) (Parking Area)_PC-2 | 6d | 2011-09-05 A | 2012-09-11 | PP1CP09903C20, PGLS703391C10, PGLS603391C10, PP1S103331C320, PP1S103331C310 | 95% | 0.3d | 2012-09-23 | 2012-09-30 | 28.9d | 5.7d | FF&E [39 h]; Cost |  |  | 326 | 1001 | CP3PA11001C0 | PP1CP11006C0 | PA | C | P1 | PK | WF | 097 | 06 | PC | S | BILL 2 | B02 | S2 | 03 | R00 | ACF08 | PC-2 | 097 |  |  |  |  |  |
| PP1CP21114C20 |  | PA-P1 ; 1st Fix, Fire Fighting system (Parking Area)_PC-2 | 9d | 2011-09-05 A | 2011-09-29 A | PP1CP09901C20 | 100% |  | 2012-05-23 | 2012-06-03 |  |  | MECHANICAL [321.6 h]; Cost [21954.2 AED] | 21,954.21 | 21,954.21 |  |  | CP3PA21109C0 | PP1CP21114C0 | PA | C | P1 | PK | ME | 211 | 14 | PC | S | BILL 2 | B02 | S2 | 1F | R00 | ACF04 | PC-2 | 211 | 1S | MEP | M1F |  |  |
| PP1CP21124C20 |  | PA-P1 ; 2nd Fix, Fire Fighting system (Parking Area)_PC-2 | 4.59d | 2011-09-05 A | 2011-09-29 A | PP1CP21114C20 | 100% |  | 2012-06-03 | 2012-06-07 |  |  | MECHANICAL [321.6 h]; Cost [21954.2 AED] | 21,954.21 | 21,954.21 |  |  | CP3PA21115C0 | PP1CP21124C0 | PA | C | P1 | PK | ME | 211 | 24 | PC | S | BILL 2 | B02 | S2 | 2F | R00 | ACF07 | PC-2 | 211 | 2n | MEP |  |  |  |
| PP1CP22015C20 |  | PA-P1 ; 1st Fix, Plumbing / Drainage System (Parking Area)_PC-2 | 4.89d | 2011-09-05 A | 2011-09-29 A | PP1CP21114C20 SS, PP1CP26012C20 SS, PP1CP09901C20 | 100% |  | 2012-06-23 | 2012-06-27 |  |  | PLUMBING [862.8 h]; Cost [58871.8 AED] | 58,871.75 | 58,871.75 |  |  | CP3PA22001C0 | PP1CP22015C0 | PA | C | P1 | PK | ME | 220 | 15 | PC | S | BILL 2 | B02 | S2 | 1F | R00 | ACF04 | PC-2 | 220 | 1S | MEP | M1F |  |  |
| PP1CP22025C20 |  | PA-P1 ; 2nd Fix, Plumbing / Drainage System (Parking Area)_PC-2 | 9d | 2011-09-05 A | 2011-10-22 | PP1CP22015C20 | 90% | 0.86d | 2012-06-27 | 2012-07-08 | 267.14d | 243.94d | PLUMBING [862.8 h]; Cost [58871.8 AED] | 58,871.75 | 52,984.57 |  |  | CP3PA22011C0 | PP1CP22025C0 | PA | C | P1 | PK | ME | 220 | 25 | PC | S | BILL 2 | B02 | S2 | 2F | R00 | ACF07 | PC-2 | 220 | 2n | MEP |  |  |  |
| PP1CP23011C20 |  | PA-P1 ; 1st Fix, CHW / HVAC System (Parking Area)_PC-2 | 4.69d | 2011-09-05 A | 2011-10-22 | PP1CP22015C20 SS, PP1CP09901C20 | 87% | 0.59d | 2012-07-09 | 2012-07-14 | 268.09d | 0d | MECHANICAL [2230.8 h]; Cost [152284 AED] | 152,284.12 | 137,055.71 |  |  | CP3PA23001C0 | PP1CP23011C0 | PA | C | P1 | PK | ME | 230 | 11 | PC | S | BILL 2 | B02 | S2 | 1F | R00 | ACF04 | PC-2 | 230 | 1S | MEP | M1F |  |  |
| PP1CP23021C20 |  | PA-P1 ; 2nd Fix, CHW / HVAC System (Parking Area)_PC-2 | 7.48d | 2011-09-05 A | 2011-10-27 | PP1CP23011C20 | 29% | 5.32d | 2012-07-16 | 2012-07-24 | 268.09d | 244.89d | MECHANICAL [2230.8 h]; Cost [152284 AED] | 152,284.12 | 60,913.65 |  |  | CP3PA23011C0 | PP1CP23021C0 | PA | C | P1 | PK | ME | 230 | 21 | PC | S | BILL 2 | B02 | S2 | 2F | R00 | ACF07 | PC-2 | 230 | 2n | MEP |  |  |  |
| PP1CP26012C20 |  | PA-P1 ; 1st Fix, Electrical System (Parking Area)_PC-2 | 12d | 2011-09-05 A | 2011-10-23 | PP1CP21114C20 SS, PP1CP09901C20 | 91% | 1.08d | 2012-06-09 | 2012-06-24 | 267.14d | 0d | ELECTRICAL [2074.8 h]; Cost [139137 AED] | 139,137.27 | 125,223.54 |  |  | CP3PA26001C0 | PP1CP26012C0 | PA | C | P1 | PK | ME | 260 | 12 | PC | S | BILL 2 | B02 | S2 | 1F | R00 | ACF04 | PC-2 | 260 | 1S | MEP | M1F |  |  |
| PP1CP26022C20 |  | PA-P1 ; 2nd Fix, Electrical System (Parking Area)_PC-2 | 5.81d | 2011-09-05 A | 2011-10-23 | PP1CP26012C20 | 90% | 0.58d | 2012-06-23 | 2012-06-28 | 278.34d | 255.14d | ELECTRICAL [2074.8 h]; Cost [139137 AED] | 139,137.27 | 125,223.54 |  |  | CP3PA26005C0 | PP1CP26022C0 | PA | C | P1 | PK | ME | 260 | 22 | PC | S | BILL 2 | B02 | S2 | 2F | R00 | ACF07 | PC-2 | 260 | 2n | MEP |  |  |  |
| PP1CP27013C20 |  | PA-P1 ; 1st Fix, ELV system (Parking Area)_PC-2 | 9d | 2011-09-05 A | 2011-10-23 | PP1CP26012C20 SS, PP1CP09901C20 | 80% | 1.8d | 2012-06-26 | 2012-07-07 | 283.36d | 0d | ELECTRICAL [337.2 h]; Cost [21051.9 AED] | 21,051.93 | 16,841.54 |  |  | CP3PA27010C0 | PP1CP27013C0 | PA | C | P1 | PK | ME | 270 | 13 | PC | S | BILL 2 | B02 | S2 | 1F | R00 | ACF04 | PC-2 | 270 | 1S | MEP | M1F |  |  |
| PP1CP27023C20 |  | PA-P1 ; 2nd Fix, ELV system (Parking Area)_PC-2 | 5d | 2011-09-05 A | 2011-10-24 | PP1CP27013C20 | 83% | 0.84d | 2012-07-07 | 2012-07-12 | 283.36d | 260.16d | ELECTRICAL [337.2 h]; Cost [21051.9 AED] | 21,051.93 | 17,894.14 |  |  | CP3PA27020C0 | PP1CP27023C0 | PA | C | P1 | PK | ME | 270 | 23 | PC | S | BILL 2 | B02 | S2 | 2F | R00 | ACF07 | PC-2 | 270 | 2n | MEP |  |  |  |
| PP1CP09901C20 |  | PA-P1 ; Prime & 1st coat (Wall & Ceiling) (Parking Area)_PC-2 | 18d | 2011-10-01 | 2011-10-20 | PGLS703392C0 |  |  |  |  | 256d | 0d | CEILING PAINT [1180 h]; WALL PAINT [255 h]; CEILING PAINT [1472 m2]; WALL PAINT [318 m2]; Cost |  |  | 328 | 956 | CP3PA09901C0 | PP1CP09901C0 | PA | C | P1 | PK | PA | 099 | 01 | PC | S | BILL 2 | B02 | S2 | 01 | R00 | ACF06 | PC-2 | 099 |  |  |  |  |  |
| PP1CP09902C20 |  | PA-P1 ; 2nd coat (Wall & Ceiling) (Parking Area)_PC-2 | 6d | 2012-07-28 | 2012-08-04 | PP1CP09901C20, PGLS703391C10, PGLS603391C10, PP1S103331C320, PP1S103331C310 |  |  |  |  | 23.2d | 0d | CEILING PAINT [635 h]; WALL PAINT [138 h]; CEILING PAINT [792.4 m2]; WALL PAINT [171.2 m2]; Cost |  |  | 329 | 957 | CP3PA09903C0 | PP1CP09902C0 | PA | C | P1 | PK | PA | 099 | 02 | PC | S | BILL 2 | B02 | S2 | 02 | R00 | ACF06 | PC-2 | 099 |  |  |  |  |  |
| PP1CP21113C20 |  | PA-P1 ; Final Fix, Fire Fighting system (Parking Area)_PC-2 | 6d | 2012-08-04 | 2012-08-11 | PGLS703391C10 FF, PP1CP09902C20, PP1CP21124C20, PGLS703391C10, PGLS603391C10, PP1S103331C320, PP1S103331C310 |  |  |  |  | 23.2d | 0d | MECHANICAL [321.6 h]; Cost |  |  |  |  | CP3PA21113C0 | PP1CP21113C0 | PA | C | P1 | PK | ME | 211 | 13 | PC | S | BILL 2 | B02 | S2 | FF | R00 | ACF07 | PC-2 | 211 | FF | MEP |  |  |  |
| PP1CP22011C20 |  | PA-P1 ; Final Fix, Drainage System (Parking Area)_PC-2 | 6d | 2012-08-11 | 2012-08-18 | PP1CP09902C20, PP1CP22025C20, PGLS703391C10, PGLS603391C10, PP1S103331C320, PP1S103331C310, PP1CP21113C20 |  |  |  |  | 23.2d | 0d | PLUMBING [862.8 h]; Cost |  |  |  |  | CP3PA22011C0 | PP1CP22011C0 | PA | C | P1 | PK | ME | 220 | 11 | PC | S | BILL 2 | B02 | S2 | FF | R00 | ACF07 | PC-2 | 220 | FF | MEP |  |  |  |
| PP1CP23019C20 |  | PA-P1 ; Final Fix, CHW / HVAC System (Parking Area)_PC-2 | 6d | 2012-08-18 | 2012-08-27 | PP1CP09902C20, PP1CP23021C20, PGLS703391C10, PGLS603391C10, PP1S103331C320, PP1S103331C310, PP1CP22011C20 |  |  |  |  | 23.2d | 0d | MECHANICAL [2230.8 h]; Cost |  |  |  |  | CP3PA23019C0 | PP1CP23019C0 | PA | C | P1 | PK | ME | 230 | 19 | PC | S | BILL 2 | B02 | S2 | FF | R00 | ACF07 | PC-2 | 230 | FF | MEP |  |  |  |
| PP1CP26017C20 |  | PA-P1 ; Final Fix, Electrical System (Parking Area)_PC-2 | 6d | 2012-08-27 | 2012-09-03 | PP1CP09902C20, PP1CP26022C20, PGLS703391C10, PGLS603391C10, PP1S103331C320, PP1S103331C310, PP1CP23019C20 |  |  |  |  | 23.2d | 0d | ELECTRICAL [2074.8 h]; Cost |  |  |  |  | CP3PA26017C0 | PP1CP26017C0 | PA | C | P1 | PK | ME | 260 | 17 | PC | S | BILL 2 | B02 | S2 | FF | R00 | ACF07 | PC-2 | 260 | FF | MEP |  |  |  |
| PP1CP09903C20 |  | PA-P1 ; Concrete Sealer (Floor) (Parking Area)_PC-2 | 6d | 2012-09-03 | 2012-09-10 | PP1CP21113C20 FF, PP1CP22011C20 FF, PP1CP23019C20 FF, PP1CP26017C20 FF, PP1CP27030C20 FF, PGLS703391C10, PGLS603391C10, PP1S103331C320, PP1S103331C310 |  |  |  |  | 23.2d | 0d | ASSORTED FLOOR FINISH [1984 h]; ASSORTED FLOOR FINISH [1100.4 m2]; Cost |  |  |  |  | AP1PK09903C0 | PP1CP09903C0 | PA | C | P1 | PK | FF | 096 | 03 | PC | S | BILL 2 | B02 | S2 | 05 | R00 | ACF06 | PC-2 | CS |  |  |  |  |  |
| PP1CP27030C20 |  | PA-P1 ; Final Fix, ELV system (Parking Area)_PC-2 | 6d | 2012-09-03 | 2012-09-10 | PP1CP09902C20, PP1CP27023C20, PP1CP27023C20 FF, PGLS703391C10, PGLS603391C10, PP1S103331C320, PP1S103331C310, PP1CP26017C20 |  |  |  |  | 23.2d | 0d | ELECTRICAL [337.2 h]; Cost |  |  |  |  | CP3PA27030C0 | PP1CP27030C0 | PA | C | P1 | PK | ME | 270 | 30 | PC | S | BILL 2 | B02 | S2 | FF | R00 | ACF07 | PC-2 | 270 | FF | MEP |  |  |  |
| PP1CP05509C20 |  | PA-P1 ; Grill & Louvers (Parking Area)_PC-2 | 6d | 2012-09-10 | 2012-09-17 | PP1CP09903C20, PGLS703391C10, PGLS603391C10, PP1S103331C320, PP1S103331C310 |  |  |  |  | 23.2d | 15d | SECONDARY STEEL [152 h]; Cost |  |  | 328 | 956 | CP3PA09901C0 | PP3AP09901C0 | PA | C | P1 | PK | SW | 055 | 01 | PC | S | BILL 2 | B02 | S2 | 02 | R00 | ACF03 | PC-2 | 056 |  |  |  |  |  |
| PP1CP11004C20 |  | PA-P1 ; Floor Marking & Signage (Parking Area)_PC-2 | 6d | 2012-09-10 | 2012-09-17 | PP1CP09903C20, PP1CP11006C20 FF, PGLS703391C10, PGLS603391C10, PP1S103331C320, PP1S103331C310 |  |  |  |  | 23.2d | 15d | SIGNAGES [458 h]; SIGNAGES [63.6 no]; Cost |  |  |  |  | AP1PK11004C0 | PP1CP11004C0 | PA | C | P1 | PK | SA | 110 | 04 | PC | S | BILL 2 | B02 | S2 | 09 | R00 | ACF08 | PC-2 | c |  |  |  |  |  |
|  | CE1 | **ELECTRICAL ROOMS (2 NOS.) :Zone PC-1** |  | 2012-01-29 | 2012-09-06 |  |  |  |  |  |  |  |  |  |  |  |  |  |  |  |  |  |  |  |  |  |  |  |  |  |  |  |  |  |  |  |  |  |  |  |  |
| PP1CE09903C10 |  | PA-P1 ; Ceiling Prime & 1st coat (Elec RM)_PC-1 | 18d | 2012-01-29 | 2012-02-20 | PGLS603391C0, PGLS703391C0, PP2CE09903C10 |  |  |  |  | 32.2d | 0d | ASSORTED CEILING FINISH [9 h]; Cost |  |  |  | 1544 | CP2ME09905C0 | PP1CE09903C0 | PA | C | P1 | ER | PA | 099 | 03 | PC | S | BILL 2 | B02 | S2 | 01 | R00 | ACF06 | PC-1 | 099 |  |  |  |  |  |
| PP1CE04001C10 |  | PA-P1 ; Block Wall Works (Elec RM)_PC-1 | 30d | 2012-02-20 | 2012-03-26 | PP1CE09903C10 |  |  |  |  | 32.2d | 0d | BLOCKWORKS [1587 h]; BLOCKWORKS [453.33 m2]; Cost |  |  |  |  | AP1ER04001C0 | PP1CE04001C0 | PA | C | P1 | ER | BL | 040 | 01 | PC | S | BILL 2 | B02 | S2 | BL | R00 | ACF06 | PC-1 | 040 |  |  |  |  |  |
| PP1CE09201C10 |  | PA-P1 ; Metal Studs (Elec RM)_PC-1 | 7d | 2012-03-26 | 2012-04-03 | PP1CE04001C10 |  |  |  |  | 128.2d | 0d | PARTITIONS [19 h]; PARTITIONS [2.67 m]; Cost |  |  | 313 | 1372 | CP2ME09201C0 | PP1CE09201C0 | PA | C | P1 | ER | PT | 092 | 01 | PC | S | BILL 2 | B02 | S2 | 1F | R00 | ACF06 | PC-1 | 092 |  | GP | PMS |  |  |
| PP1CE23001C10 |  | PA-P1 ; 1st Fix, Inst. of Supports for MEP (Elec RM)_PC-1 | 12d | 2012-03-26 | 2012-04-09 | PP1CE04001C10 |  |  |  |  | 32.2d | 0d | MECHANICAL [416.4 h]; Cost |  |  |  |  | CP2ME23010C0 | PP1CE23001C0 | PA | C | P1 | ER | ME | 230 | 01 | PC | S | BILL 2 | B02 | S2 | 1F | R00 | ACF04 | PC-1 | 230 | 1S | MEP | M1F |  |  |
| PP1CE08102C10 |  | PA-P1 ; Metal Door Frames (Elec RM)_PC-1 | 8d | 2012-04-03 | 2012-04-12 | PP1CE09201C10, GNHE08101C0 |  |  |  |  | 138.2d | 90d | METAL DOORS [33 h]; Cost |  |  | 316 | 1374 | CP2ME08101C0 | PP1CE08102C0 | PA | C | P1 | ER | DO | 081 | 02 | PC | S | BILL 2 | B02 | S2 | DF | R00 | ACF06 | PC-1 | 081 |  |  |  | 08 |  |
| PP1CE09202C10 |  | PA-P1 ; Partitions 1st face (Elec RM)_PC-1 | 12d | 2012-04-09 | 2012-04-23 | PP1CE09201C10 SS+12d |  |  |  |  | 128.2d | 81d | PARTITIONS [2.67 m]; PARTITIONS [11 h]; Cost |  |  | 314 | 1373 | CP2ME09203C0 | PP1CE09202C0 | PA | C | P1 | ER | PT | 092 | 02 | PC | S | BILL 2 | B02 | S2 | 2F | R00 | ACF06 | PC-1 | 092 |  | GP | P1F |  |  |
| PP1CE23002C10 |  | PA-P1 ; 1st Fix, Inst of CHW pipe (Elec RM)_PC-1 | 30d | 2012-04-09 | 2012-05-14 | PP1CE23001C10, PP1CE04001C10 |  |  |  |  | 62.2d | 30d | MECHANICAL [2065.2 h]; Cost |  |  |  |  | CP2ME23012C0 | PP1CE23002C0 | PA | C | P1 | ER | ME | 230 | 02 | PC | S | BILL 2 | B02 | S2 | 1F | R00 | ACF04 | PC-1 | 230 | 1S | MEP | M1F |  |  |
| PP1CE23003C10 |  | PA-P1 ; 1st Fix, Inst of Ducting (Elec RM)_PC-1 | 30d | 2012-04-09 | 2012-05-14 | PP1CE23001C10, PP1CE04001C10 |  |  |  |  | 32.2d | 0d | MECHANICAL [2631.6 h]; Cost |  |  |  |  | CP2ME23014C0 | PP1CE23003C0 | PA | C | P1 | ER | ME | 230 | 03 | PC | S | BILL 2 | B02 | S2 | 1F | R00 | ACF04 | PC-1 | 230 | 1S | MEP | M1F |  |  |
| PP1CE23007C10 |  | PA-P1 ; 2nd Fix, Inst of VAV'S CHW connection (Elec RM)_PC-1 | 30d | 2012-04-09 | 2012-05-14 | PP1CE23001C10 |  |  |  |  | 62.2d | 30d | MECHANICAL [33.6 h]; Cost |  |  |  |  | CP2ME23020C0 | PP1CE23007C0 | PA | C | P1 | ER | ME | 230 | 07 | PC | S | BILL 2 | B02 | S2 | 2F | R00 | ACF07 | PC-1 | 230 | 2n | MEP |  |  |  |
| PP1CE23010C10 |  | PA-P1 ; 2nd Fix, Insulation of CHW pipe & Duct (Elec RM)_PC-1 | 30d | 2012-04-09 | 2012-05-14 | PP1CE23001C10 |  |  |  |  | 62.2d | 30d | MECHANICAL [2468.4 h]; Cost |  |  |  |  | CP2ME23026C0 | PP1CE23010C0 | PA | C | P1 | ER | ME | 230 | 10 | PC | S | BILL 2 | B02 | S2 | 2F | R00 | ACF07 | PC-1 | 230 | 2n | MEP |  |  |  |
| PP1CE26001C10 |  | PA-P1 ; 1st Fix, Inst of Trunking/Conduiting (Elec RM)_PC-1 | 30d | 2012-04-09 | 2012-05-14 | PP1CE23001C10, PP1CE04001C10 |  |  |  |  | 62.2d | 0d | ELECTRICAL [128.4 h]; Cost |  |  |  |  | CP2ME26010C0 | PP1CE26001C0 | PA | C | P1 | ER | ME | 260 | 01 | PC | S | BILL 2 | B02 | S2 | 1F | R00 | ACF04 | PC-1 | 260 | 1S | MEP | M1F |  |  |
| PP1CE09902C10 |  | PA-P1 ; Wall Prime & 1st coat (Elec RM)_PC-1 | 18d | 2012-04-12 | 2012-05-03 | PP1CE04001C10 FS+15d |  |  |  |  | 67.45d | 0d | WALL PAINT [342 h]; WALL PAINT [424.67 m2]; Cost |  |  | 328 | 1378 | CP2ME09901C0 | PP1CE09902C0 | PA | C | P1 | ER | PA | 099 | 02 | PC | S | BILL 2 | B02 | S2 | 01 | R00 | ACF06 | PC-1 | 099 |  |  |  |  |  |
| PP1CE08107C10 |  | PA-P1 ; Access Floor (Elec RM)_PC-1 | 9.75d | 2012-05-03 | 2012-05-15 | PP1CE09902C10 |  |  |  |  | 67.45d | 0d | ASSORTED DOORS [5 h]; Cost |  |  | 317 | 1375 | CP2ER08105C0 |  | PA | C | P1 | ER | FF | 096 | 07 | PC | S | BILL 2 | B02 | S2 | 04 | R00 | ACF06 | PC-1 | AF |  |  |  | 08 |  |
| PP1CE23004C10 |  | PA-P1 ; 1st Fix, Inst of VCD's/FD's (Elec RM)_PC-1 | 30d | 2012-05-14 | 2012-06-19 | PP1CE23003C10, PP1CE04001C10 |  |  |  |  | 32.2d | 0d | MECHANICAL [778.8 h]; Cost |  |  |  |  | CP2ME23016C0 | PP1CE23004C0 | PA | C | P1 | ER | ME | 230 | 04 | PC | S | BILL 2 | B02 | S2 | 1F | R00 | ACF04 | PC-1 | 230 | 1S | MEP | M1F |  |  |
| PP1CE23009C10 |  | PA-P1 ; 2nd Fix, Inst of VCD's/FD's (Elec RM)_PC-1 | 30d | 2012-05-14 | 2012-06-19 | PP1CE23003C10 |  |  |  |  | 32.2d | 0d | MECHANICAL [778.8 h]; Cost |  |  |  |  | CP2ME23024C0 | PP1CE23009C0 | PA | C | P1 | ER | ME | 230 | 09 | PC | S | BILL 2 | B02 | S2 | 2F | R00 | ACF07 | PC-1 | 230 | 2n | MEP |  |  |  |
| PP1CE26002C10 |  | PA-P1 ; 1st Fix, Inst of Cable Tray (Elec RM)_PC-1 | 30d | 2012-05-14 | 2012-06-19 | PP1CE27002C10 SS, PP1CE04001C10, PP1CE23003C10 |  |  |  |  | 32.2d | 0d | ELECTRICAL [42 h]; Cost |  |  |  |  | CP2ME26012C0 | PP1CE26002C0 | PA | C | P1 | ER | ME | 260 | 02 | PC | S | BILL 2 | B02 | S2 | 1F | R00 | ACF04 | PC-1 | 260 | 1S | MEP | M1F |  |  |
| PP1CE26007C10 |  | PA-P1 ; 2nd Fix, Wiring for Power/Lighting/Emergency (Elec RM)_PC-1 | 30d | 2012-05-14 | 2012-06-19 | PP1CE26001C10 |  |  |  |  | 65.2d | 33d | ELECTRICAL [51.6 h]; Cost |  |  |  |  | CP2ME26020C0 | PP1CE26007C0 | PA | C | P1 | ER | ME | 260 | 07 | PC | S | BILL 2 | B02 | S2 | 2F | R00 | ACF07 | PC-1 | 260 | 2n | MEP |  |  |  |
| PP1CE27002C10 |  | PA-P1 ; 1st Fix, Inst of Trunking for ELV system (Elec RM)_PC-1 | 30d | 2012-05-14 | 2012-06-19 | PP1CE04001C10, PP1CE23003C10 |  |  |  |  | 32.2d | 0d | ELECTRICAL [356.4 h]; Cost |  |  |  |  | CP2ME27010C0 | PP1CE27002C0 | PA | C | P1 | ER | ME | 270 | 02 | PC | S | BILL 2 | B02 | S2 | 1F | R00 | ACF04 | PC-1 | 270 | 1S | MEP | M1F |  |  |
| PP1CE23008C10 |  | PA-P1 ; 2nd Fix, Inst of Equipment (FCU,FAN,PUMP) (Elec RM)_PC-1 | 30d | 2012-05-15 | 2012-06-20 | PP1CE26009C10 SS |  |  |  |  | 67.45d | 32.25d | MECHANICAL [1455.6 h]; Cost |  |  |  |  | CP2ME23022C0 | PP1CE23008C0 | PA | C | P1 | ER | ME | 230 | 08 | PC | S | BILL 2 | B02 | S2 | 2F | R00 | ACF04 | PC-1 | 230 | 2n | MEP |  |  | H |
| PP1CE26009C10 |  | PA-P1 ; 2nd Fix, Inst of Equipment (DB, TR, SG) (Elec RM)_PC-1 | 30d | 2012-05-15 | 2012-06-20 | PP1CE08107C10 |  |  |  |  | 67.45d | 0d | ELECTRICAL [795.6 h]; Cost |  |  |  |  | CP2ME26024C0 | PP1CE26009C0 | PA | C | P1 | ER | ME | 260 | 09 | PC | S | BILL 2 | B02 | S2 | 2F | R00 | ACF04 | PC-1 | 260 | 2n | MEP |  |  | E |
| PP1CE09501C10 |  | PA-P1 ; Ceiling Grid and Service Tile (Elec RM)_PC-1 | 15d | 2012-06-19 | 2012-07-07 | PP1CE23002C10, PP1CE23003C10, PP1CE23004C10, PP1CE23007C10, PP1CE23009C10, PP1CE23010C10, PP1CE26001C10, PP1CE26002C10 |  |  |  |  | 32.2d | 0d | CEILING GRID FOR GYPSUM [2118.45 h]; CEILING GRID FOR GYPSUM [180.67 m2]; Cost |  |  | 323 | 1408 | CP2ME09501C0 | PP1CE09501C0 | PA | C | P1 | ER | CE | 095 | 01 | PC | S | BILL 2 | B02 | S2 | 01 | R00 | ACF06 | PC-1 | 095 |  |  |  |  |  |
| PP1CE26008C10 |  | PA-P1 ; 2nd Fix, Cable Pulling (Elec RM)_PC-1 | 30d | 2012-06-19 | 2012-07-24 | PP1CE26002C10 |  |  |  |  | 35.2d | 3d | ELECTRICAL [2731.2 h]; Cost |  |  |  |  | CP2ME26022C0 | PP1CE26008C0 | PA | C | P1 | ER | ME | 260 | 08 | PC | S | BILL 2 | B02 | S2 | 2F | R00 | ACF07 | PC-1 | 260 | 2n | MEP |  |  |  |
| PP1CE27001C10 |  | PA-P1 ; 1st Fix, Wiring/ Cabling work (Elec RM)_PC-1 | 30d | 2012-06-19 | 2012-07-24 | PP1CE27002C10 SS, PP1CE04001C10, PP1CE26002C10 |  |  |  |  | 35.2d | 3d | ELECTRICAL [51.6 h]; Cost |  |  |  |  | CP2ME27012C0 | PP1CE27001C0 | PA | C | P1 | ER | ME | 270 | 01 | PC | S | BILL 2 | B02 | S2 | 1F | R00 | ACF04 | PC-1 | 270 | 1S | MEP | M1F |  |  |
| PP1CE21104C10 |  | PA-P1 ; 2nd Fix, Inst of Sprinkler droppers (Elec RM)_PC-1 | 30d | 2012-07-07 | 2012-08-11 | PP1CE09501C10 |  |  |  |  | 184.2d | 116.12d | MECHANICAL [2132.4 h]; Cost |  |  |  |  | CP2ME21120C0 | PP1CE21104C0 | PA | C | P1 | ER | ME | 211 | 04 | PC | S | BILL 2 | B02 | S2 | 2F | R00 | ACF07 | PC-1 | 211 | 2n | MEP |  |  |  |
| PP1CE21105C10 |  | PA-P1 ; 2nd Fix, Inst of Zone Control Valve (Elec RM)_PC-1 | 30d | 2012-07-07 | 2012-08-11 | PP1CE09501C10 |  |  |  |  | 184.2d | 116.12d | MECHANICAL [490.8 h]; Cost |  |  |  |  | CP2ME21124C0 | PP1CE21105C0 | PA | C | P1 | ER | ME | 211 | 05 | PC | S | BILL 2 | B02 | S2 | 2F | R00 | ACF07 | PC-1 | 211 | 2n | MEP |  |  |  |
| PP1CE23006C10 |  | PA-P1 ; 2nd Fix, Inst of Flexible Duct & Plenum boxes (Elec RM)_PC-1 | 18d | 2012-07-07 | 2012-07-28 | PP1CE09501C10 |  |  |  |  | 32.2d | 0d | MECHANICAL [22.8 h]; Cost |  |  |  |  | CP2ME23032C0 | PP1CE23006C0 | PA | C | P1 | ER | ME | 230 | 06 | PC | S | BILL 2 | B02 | S2 | FF | R00 | ACF07 | PC-1 | 230 | FF | MEP |  |  |  |
| PP1CE27005C10 |  | PA-P1 ; 2nd Fix, Wiring Droppers (Elec RM)_PC-1 | 30d | 2012-07-07 | 2012-08-11 | PP1CE09501C10 |  |  |  |  | 184.2d | 116.12d | ELECTRICAL [51.6 h]; Cost |  |  |  |  | CP2ME27022C0 | PP1CE27005C0 | PA | C | P1 | ER | ME | 270 | 05 | PC | S | BILL 2 | B02 | S2 | 2F | R00 | ACF07 | PC-1 | 270 | 2n | MEP |  |  |  |
| PP1CE27006C10 |  | PA-P1 ; 2nd Fix, Inst of ELV Equipment (Panels) (Elec RM)_PC-1 | 30d | 2012-07-07 | 2012-08-11 | PP1CE09501C10 |  |  |  |  | 184.2d | 116.12d | ELECTRICAL [122.4 h]; Cost |  |  |  |  | CP2ME27020C0 | PP1CE27006C0 | PA | C | P1 | ER | ME | 270 | 06 | PC | S | BILL 2 | B02 | S2 | 2F | R00 | ACF04 | PC-1 | 270 | 2n | MEP |  |  | E |
| PP1CE05501C10 |  | PA-P1 ; Handrails & balustrade (Elec RM)_PC-1 | 9.75d | 2012-07-28 | 2012-08-08 | PP1CE09902C10, PGLS703391C10, PGLS603391C10, PP1S103331C320, PP1S103331C310 |  |  |  |  | 55.45d | 47.25d | SECONDARY STEEL [227 h]; Cost |  |  |  |  | CP2ME05501C0 | PP1CE05501C0 | PA | C | P1 | ER | SW | 055 | 01 | PC | S | BILL 2 | B02 | S2 | 01 | R00 | ACF03 | PC-1 | a |  |  |  |  |  |
| PP1CE08103C10 |  | PA-P1 ; Metal Doors (Elec RM)_PC-1 | 8d | 2012-07-28 | 2012-08-06 | PP1CE08102C10, PGLS703391C10, PGLS603391C10, PP1S103331C320, PP1S103331C310 |  |  |  |  | 48.2d | 0d | METAL DOORS [27 h]; METAL DOORS [2.67 no]; Cost |  |  | 317 | 1375 | CP2ME08105C0 | PP1CE08103C0 | PA | C | P1 | ER | DO | 081 | 03 | PC | S | BILL 2 | B02 | S2 | DR | R00 | ACF06 | PC-1 | 081 |  |  |  | 08 |  |
| PP1CE09203C10 |  | PA-P1 ; Partitions Closing (Elec RM)_PC-1 | 18d | 2012-07-28 | 2012-08-18 | PAFOA09201C1 FF, PP1CE09202C10, PP1CE08102C10 FF, PGLS703391C10, PGLS603391C10, PP1S103331C320, PP1S103331C310 |  |  |  |  | 47.2d | 39d | PARTITIONS [2.67 m]; PARTITIONS [24 h]; Cost |  |  |  | 1540 | CP2ME09205C0 | PP1CE09203C0 | PA | C | P1 | ER | PT | 092 | 03 | PC | S | BILL 2 | B02 | S2 | FF | R00 | ACF06 | PC-1 | 092 |  | GP | P2F |  |  |
| PP1CE09502C10 |  | PA-P1 ; Ceiling closure (Elec RM)_PC-1 | 15d | 2012-07-28 | 2012-08-14 | PAFOA09500C1 FF, PP1CE09501C10, PP1CE23006C10, PP1CE26007C10, PP1CE26008C10, PP1CE27001C10, PGLS703391C10, PGLS603391C10, PP1S103331C320, PP1S103331C310 |  |  |  |  | 32.2d | 0d | ASSORTED CEILING FINISH [119.72 h]; CEILING GYPSUM [59.24 h]; ASSORTED CEILING FINISH [194.67 m2]; CEILING GYPSUM [180.67 m2]; Cost |  |  | 324 | 1409 | CP2ME09503C0 | PP1CE09502C0 | PA | C | P1 | ER | CE | 095 | 02 | PC | S | BILL 2 | B02 | S2 | 02 | R00 | ACF06 | PC-1 | 095 |  |  |  |  |  |
| PP1CE09601C10 |  | PA-P1 ; Flooring (Elec RM)_PC-1 | 12d | 2012-07-28 | 2012-08-11 | PP1CE09902C10, PP1CE09903C10, PP1CE23008C10, PAFGN09600R02 FF, PGLS703391C10, PGLS603391C10, PP1S103331C320, PP1S103331C310, CAFGN09600R02 FF, UAFGN09600R02 FF, DAFGN09600R02 FF, GAFGN09600R02 FF, IAFGN09600R02 FF, TAFGN09600R02 FF, SAFGN09600R02 FF |  |  |  |  | 35.2d | 0d | ASSORTED FLOOR FINISH [1464 h]; ASSORTED FLOOR FINISH [812.67 m2]; Cost |  |  | 326 | 1377 | CP2ME09601C0 | PP1CE09601C0 | PA | C | P1 | ER | FF | 096 | 01 | PC | S | BILL 2 | B02 | S2 | 01 | R00 | ACF06 | PC-1 | FF |  |  |  |  |  |
| PP1CE09901C10 |  | PA-P1 ; Wall - final Paint (Elec RM)_PC-1 | 6.75d | 2012-07-28 | 2012-08-05 | PP1CE09902C10, PGLS703391C10, PGLS603391C10, PP1S103331C320, PP1S103331C310 |  |  |  |  | 58.45d | 50.25d | WALL PAINT [185 h]; WALL PAINT [228.67 m2]; Cost |  |  | 329 | 1379 | CP2ME09903C0 | PP1CE09901C0 | PA | C | P1 | ER | PA | 099 | 01 | PC | S | BILL 2 | B02 | S2 | 02 | R00 | ACF06 | PC-1 | 099 |  |  |  |  |  |
| PP1CE09904C10 |  | PA-P1 ; Ceiling - final Paint (Elec RM)_PC-1 | 4d | 2012-07-28 | 2012-08-01 | PP1CE09903C10, PGLS703391C10, PGLS603391C10, PP1S103331C320, PP1S103331C310 |  |  |  |  | 61.2d | 53d | ASSORTED CEILING FINISH [5 h]; Cost |  |  |  | 1546 | CP2ME09907C0 | PP1CE09904C0 | PA | C | P1 | ER | PA | 099 | 04 | PC | S | BILL 2 | B02 | S2 | 02 | R00 | ACF06 | PC-1 | 099 |  |  |  |  |  |
| PP1CE21101C10 |  | PA-P1 ; Final Fix, Gaseous Fire Suppression Electrical Room (Elec RM)_PC-1 | 18d | 2012-07-28 | 2012-08-18 | PP1CE09502C10 FF, PGLS703391C10, PGLS603391C10, PP1S103331C320, PP1S103331C310 |  |  |  |  | 47.2d | 39d | MECHANICAL [464.4 h]; Cost |  |  |  |  | CP2ME21109C0 | PP1CE21101C0 | PA | C | P1 | ER | ME | 211 | 01 | PC | S | BILL 2 | B02 | S2 | FF | R00 | ACF07 | PC-1 | 211 | FF | MEP |  |  |  |
| PP1CE21102C10 |  | PA-P1 ; Final Fix, Gaseous Fire Suppression Transformer room (Elec RM)_PC-1 | 18d | 2012-07-28 | 2012-08-18 | PP1CE09502C10 FF, PGLS703391C10, PGLS603391C10, PP1S103331C320, PP1S103331C310 |  |  |  |  | 47.2d | 39d | MECHANICAL [464.4 h]; Cost |  |  |  |  | CP2ME21111C0 | PP1CE21102C0 | PA | C | P1 | ER | ME | 211 | 02 | PC | S | BILL 2 | B02 | S2 | FF | R00 | ACF07 | PC-1 | 211 | FF | MEP |  |  |  |
| PP1CE21103C10 |  | PA-P1 ; Final Fix, Gaseous Fire Suppression Telecom Room (Elec RM)_PC-1 | 18d | 2012-07-28 | 2012-08-18 | PP1CE09502C10 FF, PGLS703391C10, PGLS603391C10, PP1S103331C320, PP1S103331C310 |  |  |  |  | 47.2d | 39d | MECHANICAL [464.4 h]; Cost |  |  |  |  | CP2ME21113C0 | PP1CE21103C0 | PA | C | P1 | ER | ME | 211 | 03 | PC | S | BILL 2 | B02 | S2 | FF | R00 | ACF07 | PC-1 | 211 | FF | MEP |  |  |  |
| PP1CE26004C10 |  | PA-P1 ; Final Fix, Inst of Ceiling rose (Elec RM)_PC-1 | 18d | 2012-07-28 | 2012-08-18 | PP1CE09501C10, PGLS703391C10, PGLS603391C10, PP1S103331C320, PP1S103331C310 |  |  |  |  | 47.2d | 39d | ELECTRICAL [16.8 h]; Cost |  |  |  |  | CP2ME26032C0 | PP1CE26004C0 | PA | C | P1 | ER | ME | 260 | 04 | PC | S | BILL 2 | B02 | S2 | FF | R00 | ACF07 | PC-1 | 260 | FF | MEP |  |  |  |
| PP1CE27003C10 |  | PA-P1 ; Final Fix, BMS connection work to Equipment (Elec RM)_PC-1 | 18d | 2012-07-28 | 2012-08-18 | PP1CE26009C10, PGLS703391C10, PGLS603391C10, PP1S103331C320, PP1S103331C310 |  |  |  |  | 47.2d | 39d | ELECTRICAL [1556.4 h]; Cost |  |  |  |  | CP2ME27032C0 | PP1CE27003C0 | PA | C | P1 | ER | ME | 270 | 03 | PC | S | BILL 2 | B02 | S2 | FF | R00 | ACF07 | PC-1 | 270 | FF | MEP |  |  |  |
| PP1CE08701C10 |  | PA-P1 ; Ironmongery (Elec RM)_PC-1 | 9d | 2012-08-06 | 2012-08-16 | PP1CE08103C10, PGLS703391C10, PGLS603391C10, PP1S103331C320, PP1S103331C310 |  |  |  |  | 48.2d | 40d | IRONMONGERY [27 h]; IRONMONGERY [2.67 no]; Cost |  |  | 322 | 6230 | CP2ME08709C0 | PP1CE08701C0 | PA | C | P1 | ER | DO | 087 | 01 | PC | S | BILL 2 | B02 | S2 | IM | R00 | ACF06 | PC-1 | 087 |  |  |  | 08 |  |
| PP1CE22001C10 |  | PA-P1 ; Final Fix, Inst of All drain (Elec RM)_PC-1 | 18d | 2012-08-11 | 2012-09-03 | PP1CE09601C10, PGLS703391C10, PGLS603391C10, PP1S103331C320, PP1S103331C310 |  |  |  |  | 35.2d | 27d | PLUMBING [1437.6 h]; Cost |  |  |  |  | CP2ME22037C0 | PP1CE22001C0 | PA | C | P1 | ER | ME | 220 | 01 | PC | S | BILL 2 | B02 | S2 | FF | R00 | ACF07 | PC-1 | 220 | FF | MEP |  |  |  |
| PP1CE23005C10 |  | PA-P1 ; Final Fix, Inst of Grilles & Diffusers (Elec RM)_PC-1 | 18d | 2012-08-14 | 2012-09-06 | PP1CE09502C10, PGLS703391C10, PGLS603391C10, PP1S103331C320, PP1S103331C310 |  |  |  |  | 32.2d | 24d | MECHANICAL [330 h]; Cost |  |  |  |  | CP2ME23030C0 | PP1CE23005C0 | PA | C | P1 | ER | ME | 230 | 05 | PC | S | BILL 2 | B02 | S2 | FF | R00 | ACF07 | PC-1 | 230 | FF | MEP |  |  |  |
| PP1CE26003C10 |  | PA-P1 ; Final Fix, Termination & Gladding of Cables (Elec RM)_PC-1 | 18d | 2012-08-14 | 2012-09-06 | PP1CE09502C10, PGLS703391C10, PGLS603391C10, PP1S103331C320, PP1S103331C310 |  |  |  |  | 32.2d | 24d | ELECTRICAL [342 h]; Cost |  |  |  |  | CP2ME26030C0 | PP1CE26003C0 | PA | C | P1 | ER | ME | 260 | 03 | PC | S | BILL 2 | B02 | S2 | FF | R00 | ACF07 | PC-1 | 260 | FF | MEP |  |  |  |
| PP1CE26005C10 |  | PA-P1 ; Final Fix, Inst of Switch/Sockets (Elec RM)_PC-1 | 18d | 2012-08-14 | 2012-09-06 | PP1CE09502C10, PGLS703391C10, PGLS603391C10, PP1S103331C320, PP1S103331C310 |  |  |  |  | 32.2d | 24d | ELECTRICAL [82.8 h]; Cost |  |  |  |  | CP2ME26034C0 | PP1CE26005C0 | PA | C | P1 | ER | ME | 260 | 05 | PC | S | BILL 2 | B02 | S2 | FF | R00 | ACF07 | PC-1 | 260 | FF | MEP |  |  |  |
| PP1CE26006C10 |  | PA-P1 ; Final Fix, Inst of Light fittings (Elec RM)_PC-1 | 18d | 2012-08-14 | 2012-09-06 | PP1CE09502C10, PGLS703391C10, PGLS603391C10, PP1S103331C320, PP1S103331C310 |  |  |  |  | 32.2d | 24d | ELECTRICAL [2083.2 h]; Cost |  |  |  |  | CP2ME26039C0 | PP1CE26006C0 | PA | C | P1 | ER | ME | 260 | 06 | PC | S | BILL 2 | B02 | S2 | FF | R00 | ACF07 | PC-1 | 260 | FF | MEP |  |  |  |
| PP1CE27004C10 |  | PA-P1 ; Final Fix, Inst of ELV device (Detector/Speaker) (Elec RM)_PC-1 | 18d | 2012-08-14 | 2012-09-06 | PP1CE09502C10, PGLS703391C10, PGLS603391C10, PP1S103331C320, PP1S103331C310 |  |  |  |  | 32.2d | 24d | ELECTRICAL [51.6 h]; Cost |  |  |  |  | CP2ME27030C0 | PP1CE27004C0 | PA | C | P1 | ER | ME | 270 | 04 | PC | S | BILL 2 | B02 | S2 | FF | R00 | ACF07 | PC-1 | 270 | FF | MEP |  |  |  |

| ID | WBS | Activity | Duration | Start | Finish | Predecessors | Complete | Remaining | Planned start | Planned finish | Total float | Free float | Resources | Cost | Actual cost | change id | IDDD | P_811 | P_711 | CCAD BUILDING(SET) | CCAD PHASE(SET) | CCAD FLOOR(SET) | CCAD ZONE(SET) | CCAD WORK(SET) | CCAD SECTION(SET) | CCAD SERIAL No.(SET) | CCAD Carpark code(SET) | CCAD Carpark district code(set) | CCAD CBS(SET) | CCAD BILL(SET) | CCAD HANDOVER(SET) | CCAD TAG(SET) | CCAD REV(SET) | CCADACF (SET) | FSP CODE | CCAD SSCF | Change Order # | NEW ACTIVITY ID | CCAD SUB ZONE MEP(SET) | CCAD CSA | Act Selector % | CCAD DIVISION(SET) | CCAD MEQ |
| --- | --- | --- | --- | --- | --- | --- | --- | --- | --- | --- | --- | --- | --- | --- | --- | --- | --- | --- | --- | --- | --- | --- | --- | --- | --- | --- | --- | --- | --- | --- | --- | --- | --- | --- | --- | --- | --- | --- | --- | --- | --- | --- | --- |
|  | CE2 | **ELECTRICAL ROOMS (1 NOS.) :Zone PC-2** |  | 2011-08-10 | 2012-08-28 |  |  |  |  |  |  |  |  |  |  |  |  |  |  |  |  |  |  |  |  |  |  |  |  |  |  |  |  |  |  |  |  |  |  |  |  |  |  |
| PP1CE04001C0 |  | PA-P1 ; Block Wall Works (Elec RM)_PC-2 | 5d | 2011-08-10 A | 2011-08-30 A | PP1CE09903C0 | 100% |  | 2012-05-16 | 2012-05-22 |  |  | BLOCKWORKS [793 h]; BLOCKWORKS [226.67 m2]; Cost |  |  | AP1ER04001C0 | PP1CE04001C0 | 100 | 0 | PA | C | P1 | ER | BL | 040 | 01 | PC | S | BILL 2 | B02 | S2 | BL | R00 | ACF06 | PC-2 | 040 |  |  |  |  |  |  |  |
| PP1CE09901C0 |  | PA-P1 ; Wall - final Paint (Elec RM)_PC-2 | 3d | 2011-08-10 A | 2011-08-30 A | PP1CE09902C0, PGLS703391C10, PGLS603391C10, PP1S103331C320, PP1S103331C310 | 100% |  | 2012-07-12 | 2012-07-16 |  |  | WALL PAINT [92 h]; WALL PAINT [114.33 m2]; Cost |  |  | CP2ME09903C0 | PP1CE09901C0 | 100 | 0 | PA | C | P1 | ER | PA | 099 | 01 | PC | S | BILL 2 | B02 | S2 | 02 | R00 | ACF06 | PC-2 | 099 | 329 | 1379 |  |  |  |  |  |
| PP1CE09902C0 |  | PA-P1 ; Wall Prime & 1st coat (Elec RM)_PC-2 | 3.5d | 2011-08-10 A | 2011-08-30 A | PP1CE04001C0 FS+15d | 100% |  | 2012-07-08 | 2012-07-11 |  |  | WALL PAINT [170 h]; WALL PAINT [212.33 m2]; Cost |  |  | CP2ME09901C0 | PP1CE09902C0 | 100 | 0 | PA | C | P1 | ER | PA | 099 | 02 | PC | S | BILL 2 | B02 | S2 | 01 | R00 | ACF06 | PC-2 | 099 | 328 | 1378 |  |  |  |  |  |
| PP1CE09903C0 |  | PA-P1 ; Ceiling Prime & 1st coat (Elec RM)_PC-2 | 5d | 2011-08-10 A | 2011-08-30 A | PGLS703392C0 FS+12d | 100% |  | 2012-12-09 | 2012-12-15 |  |  | ASSORTED CEILING FINISH [5 h]; Cost |  |  | CP2ME09905C0 | PP1CE09903C0 | 100 | 0 | PA | C | P1 | ER | PA | 099 | 03 | PC | S | BILL 2 | B02 | S2 | 01 | R00 | ACF06 | PC-2 | 099 |  | 1544 |  |  |  |  |  |
| PP1CE09904C0 |  | PA-P1 ; Ceiling - final Paint (Elec RM)_PC-2 | 2d | 2011-08-10 A | 2011-08-30 A | PP1CE09903C0, PGLS703391C10, PGLS603391C10, PP1S103331C320, PP1S103331C310 | 100% |  | 2012-12-15 | 2012-12-17 |  |  | ASSORTED CEILING FINISH [4 h]; Cost |  |  | CP2ME09907C0 | PP1CE09904C0 | 100 | 0 | PA | C | P1 | ER | PA | 099 | 04 | PC | S | BILL 2 | B02 | S2 | 02 | R00 | ACF06 | PC-2 | 099 |  | 1546 |  |  |  |  |  |
| PP1CE26001C0 |  | PA-P1 ; 1st Fix, Inst of Trunking/Conduiting (Elec RM)_PC-2 | 7d | 2011-09-05 A | 2011-10-01 | PP1CE23001C0 SS, PP1CE04001C0 | 90% | 0.7d | 2012-09-11 | 2012-09-19 | 254.3d | 0d | ELECTRICAL [63.6 h]; Cost [3749.69 AED] | 3,749.69 | 3,374.72 | CP2ME26010C0 | PP1CE26001C0 |  |  | PA | C | P1 | ER | ME | 260 | 01 | PC | S | BILL 2 | B02 | S2 | 1F | R00 | ACF04 | PC-2 | 260 |  |  | 1S | MEP | M1F |  |  |
| PP1CE26002C0 |  | PA-P1 ; 1st Fix, Inst of Cable Tray (Elec RM)_PC-2 | 7d | 2011-09-05 A | 2011-10-01 | PP1CE27002C0 SS, PP1CE04001C0 | 90% | 0.7d | 2012-10-15 | 2012-10-23 | 195d | 0d | ELECTRICAL [21.6 h]; Cost [1543.99 AED] | 1,543.99 | 1,389.59 | CP2ME26012C0 | PP1CE26002C0 |  |  | PA | C | P1 | ER | ME | 260 | 02 | PC | S | BILL 2 | B02 | S2 | 1F | R00 | ACF04 | PC-2 | 260 |  |  | 1S | MEP | M1F |  |  |
| PP1CE27002C0 |  | PA-P1 ; 1st Fix, Inst of Trunking for ELV system (Elec RM)_PC-2 | 7d | 2011-09-05 A | 2011-10-02 | PP1CE04001C0 | 85% | 1.05d | 2012-10-07 | 2012-10-15 | 195d | 0d | ELECTRICAL [178.8 h]; Cost [9859.61 AED] | 9,859.61 | 8,380.67 | CP2ME27010C0 | PP1CE27002C0 |  |  | PA | C | P1 | ER | ME | 270 | 02 | PC | S | BILL 2 | B02 | S2 | 1F | R00 | ACF04 | PC-2 | 270 |  |  | 1S | MEP | M1F |  |  |
| PP1CE08107C0 |  | PA-P1 ; Access Floor (Elec RM)_PC-2 | 6d | 2011-10-01 | 2011-10-06 | PP1CE09902C0, PGLS703392C0 |  |  |  |  | 262d | 0d | ASSORTED DOORS [3 h]; Cost |  |  | CP2ER08105C0 |  |  |  | PA | C | P1 | ER | FF | 096 | 07 | PC | S | BILL 2 | B02 | S2 | 04 | R00 | ACF06 | PC-2 | AF | 317 | 1375 |  |  |  | 08 |  |
| PP1CE09201C0 |  | PA-P1 ; Metal Studs (Elec RM)_PC-2 | 10d | 2011-10-01 | 2011-10-11 | PP1CE04001C0 |  |  |  |  | 277d | 0d | PARTITIONS [11 h]; PARTITIONS [1.33 m]; Cost |  |  | CP2ME09201C0 | PP1CE09201C0 |  |  | PA | C | P1 | ER | PT | 092 | 01 | PC | S | BILL 2 | B02 | S2 | 1F | R00 | ACF06 | PC-2 | 092 | 313 | 1372 |  | GP | PMS |  |  |
| PP1CE23001C0 |  | PA-P1 ; 1st Fix, Inst. of Supports for MEP (Elec RM)_PC-2 | 12d | 2011-10-01 | 2011-10-13 | PP1CE04001C0 |  |  |  |  | 183d | 0d | MECHANICAL [208.8 h]; Cost |  |  | CP2ME23010C0 | PP1CE23001C0 |  |  | PA | C | P1 | ER | ME | 230 | 01 | PC | S | BILL 2 | B02 | S2 | 1F | R00 | ACF04 | PC-2 | 230 |  |  | 1S | MEP | M1F |  |  |
| PP1CE27001C0 |  | PA-P1 ; 1st Fix, Wiring/ Cabling work (Elec RM)_PC-2 | 30d | 2011-10-01 | 2011-11-03 | PP1CE27002C0 SS, PP1CE04001C0 |  |  |  |  | 261d | 220.8d | ELECTRICAL [25.2 h]; Cost |  |  | CP2ME27012C0 | PP1CE27001C0 |  |  | PA | C | P1 | ER | ME | 270 | 01 | PC | S | BILL 2 | B02 | S2 | 1F | R00 | ACF04 | PC-2 | 270 |  |  | 1S | MEP | M1F |  |  |
| PP1CE26007C0 |  | PA-P1 ; 2nd Fix, Wiring for Power/Lighting/Emergency (Elec RM)_PC-2 | 30d | 2011-10-01 | 2011-11-05 | PP1CE26001C0 |  |  |  |  | 260.3d | 220.1d | ELECTRICAL [25.2 h]; Cost |  |  | CP2ME26020C0 | PP1CE26007C0 |  |  | PA | C | P1 | ER | ME | 260 | 07 | PC | S | BILL 2 | B02 | S2 | 2F | R00 | ACF07 | PC-2 | 260 |  |  | 2n | MEP |  |  |  |
| PP1CE26008C0 |  | PA-P1 ; 2nd Fix, Cable Pulling (Elec RM)_PC-2 | 30d | 2011-10-01 | 2011-11-05 | PP1CE26002C0 |  |  |  |  | 260.3d | 220.1d | ELECTRICAL [1365.6 h]; Cost |  |  | CP2ME26022C0 | PP1CE26008C0 |  |  | PA | C | P1 | ER | ME | 260 | 08 | PC | S | BILL 2 | B02 | S2 | 2F | R00 | ACF07 | PC-2 | 260 |  |  | 2n | MEP |  |  |  |
| PP1CE26009C0 |  | PA-P1 ; 2nd Fix, Inst of Equipment (DB, TR, SG) (Elec RM)_PC-2 | 30d | 2011-10-08 | 2011-11-14 | PP1CE08107C0 |  |  |  |  | 262d | 214.8d | ELECTRICAL [397.2 h]; Cost |  |  | CP2ME26024C0 | PP1CE26009C0 |  |  | PA | C | P1 | ER | ME | 260 | 09 | PC | S | BILL 2 | B02 | S2 | 2F | R00 | ACF04 | PC-2 | 260 |  |  | 2n | MEP |  |  | E |
| PP1CE08102C0 |  | PA-P1 ; Metal Door Frames (Elec RM)_PC-2 | 4d | 2011-10-12 | 2011-10-16 | PP1CE09201C0, GNHE08101C0 |  |  |  |  | 293d | 236.8d | METAL DOORS [16 h]; Cost |  |  | CP2ME08101C0 | PP1CE08102C0 |  |  | PA | C | P1 | ER | DO | 081 | 02 | PC | S | BILL 2 | B02 | S2 | DF | R00 | ACF06 | PC-2 | 081 | 316 | 1374 |  |  |  | 08 |  |
| PP1CE09202C0 |  | PA-P1 ; Partitions 1st face (Elec RM)_PC-2 | 12d | 2011-10-15 | 2011-10-27 | PP1CE09201C0 SS+12d |  |  |  |  | 277d | 226.8d | PARTITIONS [1.33 m]; PARTITIONS [5 h]; Cost |  |  | CP2ME09203C0 | PP1CE09202C0 |  |  | PA | C | P1 | ER | PT | 092 | 02 | PC | S | BILL 2 | B02 | S2 | 2F | R00 | ACF06 | PC-2 | 092 | 314 | 1373 |  | GP | P1F |  |  |
| PP1CE23002C0 |  | PA-P1 ; 1st Fix, Inst of CHW pipe (Elec RM)_PC-2 | 30d | 2011-10-15 | 2011-11-21 | PP1CE23001C0, PP1CE26002C0 SS, PP1CE04001C0 |  |  |  |  | 183d | 0d | MECHANICAL [1032 h]; Cost |  |  | CP2ME23012C0 | PP1CE23002C0 |  |  | PA | C | P1 | ER | ME | 230 | 02 | PC | S | BILL 2 | B02 | S2 | 1F | R00 | ACF04 | PC-2 | 230 |  |  | 1S | MEP | M1F |  |  |
| PP1CE23003C0 |  | PA-P1 ; 1st Fix, Inst of Ducting (Elec RM)_PC-2 | 30d | 2011-10-15 | 2011-11-21 | PP1CE23001C0, PP1CE23002C0 SS, PP1CE04001C0 |  |  |  |  | 183d | 0d | MECHANICAL [1316.4 h]; Cost |  |  | CP2ME23014C0 | PP1CE23003C0 |  |  | PA | C | P1 | ER | ME | 230 | 03 | PC | S | BILL 2 | B02 | S2 | 1F | R00 | ACF04 | PC-2 | 230 |  |  | 1S | MEP | M1F |  |  |
| PP1CE23004C0 |  | PA-P1 ; 1st Fix, Inst of VCD's/FD's (Elec RM)_PC-2 | 30d | 2011-10-15 | 2011-11-21 | PP1CE23003C0 SS, PP1CE04001C0 |  |  |  |  | 213d | 30d | MECHANICAL [390 h]; Cost |  |  | CP2ME23016C0 | PP1CE23004C0 |  |  | PA | C | P1 | ER | ME | 230 | 04 | PC | S | BILL 2 | B02 | S2 | 1F | R00 | ACF04 | PC-2 | 230 |  |  | 1S | MEP | M1F |  |  |
| PP1CE23007C0 |  | PA-P1 ; 2nd Fix, Inst of VAV'S CHW connection (Elec RM)_PC-2 | 30d | 2011-10-15 | 2011-11-21 | PP1CE23001C0 |  |  |  |  | 213d | 30d | MECHANICAL [16.8 h]; Cost |  |  | CP2ME23020C0 | PP1CE23007C0 |  |  | PA | C | P1 | ER | ME | 230 | 07 | PC | S | BILL 2 | B02 | S2 | 2F | R00 | ACF07 | PC-2 | 230 |  |  | 2n | MEP |  |  |  |
| PP1CE23010C0 |  | PA-P1 ; 2nd Fix, Insulation of CHW pipe & Duct (Elec RM)_PC-2 | 30d | 2011-10-15 | 2011-11-21 | PP1CE23001C0 |  |  |  |  | 213d | 30d | MECHANICAL [1233.6 h]; Cost |  |  | CP2ME23026C0 | PP1CE23010C0 |  |  | PA | C | P1 | ER | ME | 230 | 10 | PC | S | BILL 2 | B02 | S2 | 2F | R00 | ACF07 | PC-2 | 230 |  |  | 2n | MEP |  |  |  |
| PP1CE23009C0 |  | PA-P1 ; 2nd Fix, Inst of VCD's/FD's (Elec RM)_PC-2 | 30d | 2011-11-22 | 2011-12-28 | PP1CE23003C0 |  |  |  |  | 183d | 0d | MECHANICAL [390 h]; Cost |  |  | CP2ME23024C0 | PP1CE23009C0 |  |  | PA | C | P1 | ER | ME | 230 | 09 | PC | S | BILL 2 | B02 | S2 | 2F | R00 | ACF07 | PC-2 | 230 |  |  | 2n | MEP |  |  |  |
| PP1CE09501C0 |  | PA-P1 ; Ceiling Grid and and Service Tile (Elec RM)_PC-2 | 7d | 2011-12-29 | 2012-01-07 | PP1CE23002C0, PP1CE23003C0, PP1CE23004C0, PP1CE23007C0, PP1CE23009C0, PP1CE23010C0, PP1CE26001C0, PP1CE26002C0 |  |  |  |  | 183d | 0d | CEILING GRID FOR GYPSUM [1056.79 h]; CEILING GRID FOR GYPSUM [90.33 m2]; Cost |  |  | CP2ME09501C0 | PP1CE09501C0 |  |  | PA | C | P1 | ER | CE | 095 | 01 | PC | S | BILL 2 | B02 | S2 | 01 | R00 | ACF06 | PC-2 | 095 | 323 | 1408 |  |  |  |  |  |
| PP1CE21104C0 |  | PA-P1 ; 2nd Fix, Inst of Sprinkler droppers (Elec RM)_PC-2 | 30d | 2012-01-08 | 2012-02-12 | PP1CE09501C0 |  |  |  |  | 338d | 269.93d | MECHANICAL [1066.8 h]; Cost |  |  | CP2ME21120C0 | PP1CE21104C0 |  |  | PA | C | P1 | ER | ME | 211 | 04 | PC | S | BILL 2 | B02 | S2 | 2F | R00 | ACF07 | PC-2 | 211 |  |  | 2n | MEP |  |  |  |
| PP1CE21105C0 |  | PA-P1 ; 2nd Fix, Inst of Zone Control Valve (Elec RM)_PC-2 | 30d | 2012-01-08 | 2012-02-12 | PP1CE09501C0 |  |  |  |  | 338d | 269.93d | MECHANICAL [244.8 h]; Cost |  |  | CP2ME21124C0 | PP1CE21105C0 |  |  | PA | C | P1 | ER | ME | 211 | 05 | PC | S | BILL 2 | B02 | S2 | 2F | R00 | ACF07 | PC-2 | 211 |  |  | 2n | MEP |  |  |  |
| PP1CE23006C0 |  | PA-P1 ; 2nd Fix, Inst of Flexible Duct & Plenum boxes (Elec RM)_PC-2 | 18d | 2012-01-08 | 2012-01-28 | PP1CE09501C0 |  |  |  |  | 194d | 153.8d | MECHANICAL [10.8 h]; Cost |  |  | CP2ME23032C0 | PP1CE23006C0 |  |  | PA | C | P1 | ER | ME | 230 | 06 | PC | S | BILL 2 | B02 | S2 | FF | R00 | ACF07 | PC-2 | 230 |  |  | FF | MEP |  |  |  |
| PP1CE23008C0 |  | PA-P1 ; 2nd Fix, Inst of Equipment (FCU,FAN,PUMP) (Elec RM)_PC-2 | 30d | 2012-01-08 | 2012-02-12 | PP1CE09501C0 |  |  |  |  | 183d | 141.8d | MECHANICAL [728.4 h]; Cost |  |  | CP2ME23022C0 | PP1CE23008C0 |  |  | PA | C | P1 | ER | ME | 230 | 08 | PC | S | BILL 2 | B02 | S2 | 2F | R00 | ACF04 | PC-2 | 230 |  |  | 2n | MEP |  |  | H |
| PP1CE27005C0 |  | PA-P1 ; 2nd Fix, Wiring Droppers (Elec RM)_PC-2 | 30d | 2012-01-08 | 2012-02-12 | PP1CE09501C0 |  |  |  |  | 338d | 269.93d | ELECTRICAL [25.2 h]; Cost |  |  | CP2ME27022C0 | PP1CE27005C0 |  |  | PA | C | P1 | ER | ME | 270 | 05 | PC | S | BILL 2 | B02 | S2 | 2F | R00 | ACF07 | PC-2 | 270 |  |  | 2n | MEP |  |  |  |
| PP1CE27006C0 |  | PA-P1 ; 2nd Fix, Inst of ELV Equipment (Panels) (Elec RM)_PC-2 | 30d | 2012-01-08 | 2012-02-12 | PP1CE09501C0 |  |  |  |  | 338d | 269.93d | ELECTRICAL [61.2 h]; Cost |  |  | CP2ME27020C0 | PP1CE27006C0 |  |  | PA | C | P1 | ER | ME | 270 | 06 | PC | S | BILL 2 | B02 | S2 | 2F | R00 | ACF04 | PC-2 | 270 |  |  | 2n | MEP |  |  | E |
| PP1CE05501C0 |  | PA-P1 ; Handrails & balustrade (Elec RM)_PC-2 | 6d | 2012-07-28 | 2012-08-04 | PP1CE09902C0, PGLS703391C10, PGLS603391C10, PP1S103331C320, PP1S103331C310 |  |  |  |  | 59.2d | 51d | SECONDARY STEEL [113 h]; Cost |  |  | CP2ME05501C0 | PP1CE05501C0 |  |  | PA | C | P1 | ER | SW | 055 | 01 | PC | S | BILL 2 | B02 | S2 | 01 | R00 | ACF03 | PC-2 | a |  |  |  |  |  |  |  |
| PP1CE08103C0 |  | PA-P1 ; Metal Doors (Elec RM)_PC-2 | 4d | 2012-07-28 | 2012-08-01 | PP1CE08102C0, PGLS703391C10, PGLS603391C10, PP1S103331C320, PP1S103331C310 |  |  |  |  | 56.2d | 0d | METAL DOORS [13 h]; METAL DOORS [1.33 no]; Cost |  |  | CP2ME08105C0 | PP1CE08103C0 |  |  | PA | C | P1 | ER | DO | 081 | 03 | PC | S | BILL 2 | B02 | S2 | DR | R00 | ACF06 | PC-2 | 081 | 317 | 1375 |  |  |  | 08 |  |
| PP1CE09203C0 |  | PA-P1 ; Partitions Closing (Elec RM)_PC-2 | 15d | 2012-07-28 | 2012-08-14 | PAFOA09201C1 FF, PP1CE09202C0, PP1CE08102C0 FF, PGLS703391C10, PGLS603391C10, PP1S103331C320, PP1S103331C310 |  |  |  |  | 50.2d | 42d | PARTITIONS [1.33 m]; PARTITIONS [12 h]; Cost |  |  | CP2ME09205C0 | PP1CE09203C0 |  |  | PA | C | P1 | ER | PT | 092 | 03 | PC | S | BILL 2 | B02 | S2 | FF | R00 | ACF06 | PC-2 | 092 |  | 1540 |  | GP | P2F |  |  |
| PP1CE09502C0 |  | PA-P1 ; Ceiling closure (Elec RM)_PC-2 | 7d | 2012-07-28 | 2012-08-05 | PAFOA09500C1 FF, PP1CE09501C0, PP1CE23006C0, PP1CE26007C0, PP1CE26008C0, PP1CE27001C0, PGLS703391C10, PGLS603391C10, PP1S103331C320, PP1S103331C310 |  |  |  |  | 40.2d | 0d | ASSORTED CEILING FINISH [59.86 h]; CEILING GYPSUM [29.73 h]; ASSORTED CEILING FINISH [97.33 m2]; CEILING GYPSUM [91 m2]; Cost |  |  | CP2ME09503C0 | PP1CE09502C0 |  |  | PA | C | P1 | ER | CE | 095 | 02 | PC | S | BILL 2 | B02 | S2 | 02 | R00 | ACF06 | PC-2 | 095 | 324 | 1409 |  |  |  |  |  |
| PP1CE09601C0 |  | PA-P1 ; Flooring (Elec RM)_PC-2 | 6d | 2012-07-28 | 2012-08-04 | PP1CE09902C0, PP1CE09903C0, PP1CE23008C0, PGLS703391C10, PGLS603391C10, PP1S103331C320, PP1S103331C310 |  |  |  |  | 41.2d | 0d | ASSORTED FLOOR FINISH [736 h]; ASSORTED FLOOR FINISH [406.33 m2]; Cost |  |  | CP2ME09601C0 | PP1CE09601C0 |  |  | PA | C | P1 | ER | FF | 096 | 01 | PC | S | BILL 2 | B02 | S2 | 01 | R00 | ACF06 | PC-2 | FF | 326 | 1377 |  |  |  |  |  |
| PP1CE26004C0 |  | PA-P1 ; Final Fix, Inst of Ceiling rose (Elec RM)_PC-2 | 18d | 2012-07-28 | 2012-08-18 | PP1CE09501C0, PGLS703391C10, PGLS603391C10, PP1S103331C320, PP1S103331C310 |  |  |  |  | 47.2d | 39d | ELECTRICAL [8.4 h]; Cost |  |  | CP2ME26032C0 | PP1CE26004C0 |  |  | PA | C | P1 | ER | ME | 260 | 04 | PC | S | BILL 2 | B02 | S2 | FF | R00 | ACF07 | PC-2 | 260 |  |  | FF | MEP |  |  |  |
| PP1CE27003C0 |  | PA-P1 ; Final Fix, BMS connection work to Equipment (Elec RM)_PC-2 | 18d | 2012-07-28 | 2012-08-18 | PP1CE26009C0, PGLS703391C10, PGLS603391C10, PP1S103331C320, PP1S103331C310 |  |  |  |  | 47.2d | 39d | ELECTRICAL [778.8 h]; Cost |  |  | CP2ME27032C0 | PP1CE27003C0 |  |  | PA | C | P1 | ER | ME | 270 | 03 | PC | S | BILL 2 | B02 | S2 | FF | R00 | ACF07 | PC-2 | 270 |  |  | FF | MEP |  |  |  |
| PP1CE08701C0 |  | PA-P1 ; Ironmongery (Elec RM)_PC-2 | 5d | 2012-08-01 | 2012-08-07 | PP1CE08103C0, PGLS703391C10, PGLS603391C10, PP1S103331C320, PP1S103331C310 |  |  |  |  | 56.2d | 48d | IRONMONGERY [13 h]; IRONMONGERY [1.33 no]; Cost |  |  | CP2ME08709C0 | PP1CE08701C0 |  |  | PA | C | P1 | ER | DO | 087 | 01 | PC | S | BILL 2 | B02 | S2 | IM | R00 | ACF06 | PC-2 | 087 | 322 | 6230 |  |  |  | 08 |  |
| PP1CE22001C0 |  | PA-P1 ; Final Fix, Inst of All drain (Elec RM)_PC-2 | 18d | 2012-08-04 | 2012-08-27 | PP1CE09601C0, PGLS703391C10, PGLS603391C10, PP1S103331C320, PP1S103331C310 |  |  |  |  | 41.2d | 33d | PLUMBING [718.8 h]; Cost |  |  | CP2ME22037C0 | PP1CE22001C0 |  |  | PA | C | P1 | ER | ME | 220 | 01 | PC | S | BILL 2 | B02 | S2 | FF | R00 | ACF07 | PC-2 | 220 |  |  | FF | MEP |  |  |  |
| PP1CE21101C0 |  | PA-P1 ; Final Fix, Gaseous Fire Suppression Electrical Room (Elec RM)_PC-2 | 18d | 2012-08-05 | 2012-08-28 | PP1CE09502C0, PGLS703391C10, PGLS603391C10, PP1S103331C320, PP1S103331C310 |  |  |  |  | 40.2d | 32d | MECHANICAL [232.8 h]; Cost |  |  | CP2ME21109C0 | PP1CE21101C0 |  |  | PA | C | P1 | ER | ME | 211 | 01 | PC | S | BILL 2 | B02 | S2 | FF | R00 | ACF07 | PC-2 | 211 |  |  | FF | MEP |  |  |  |
| PP1CE21102C0 |  | PA-P1 ; Final Fix, Gaseous Fire Suppression Transformer room (Elec RM)_PC-2 | 18d | 2012-08-05 | 2012-08-28 | PP1CE09502C0, PGLS703391C10, PGLS603391C10, PP1S103331C320, PP1S103331C310 |  |  |  |  | 40.2d | 32d | MECHANICAL [232.8 h]; Cost |  |  | CP2ME21111C0 | PP1CE21102C0 |  |  | PA | C | P1 | ER | ME | 211 | 02 | PC | S | BILL 2 | B02 | S2 | FF | R00 | ACF07 | PC-2 | 211 |  |  | FF | MEP |  |  |  |
| PP1CE21103C0 |  | PA-P1 ; Final Fix, Gaseous Fire Suppression Telecom Room (Elec RM)_PC-2 | 18d | 2012-08-05 | 2012-08-28 | PP1CE09502C0, PGLS703391C10, PGLS603391C10, PP1S103331C320, PP1S103331C310 |  |  |  |  | 40.2d | 32d | MECHANICAL [232.8 h]; Cost |  |  | CP2ME21113C0 | PP1CE21103C0 |  |  | PA | C | P1 | ER | ME | 211 | 03 | PC | S | BILL 2 | B02 | S2 | FF | R00 | ACF07 | PC-2 | 211 |  |  | FF | MEP |  |  |  |
| PP1CE23005C0 |  | PA-P1 ; Final Fix, Inst of Grilles & Diffusers (Elec RM)_PC-2 | 18d | 2012-08-05 | 2012-08-28 | PP1CE09502C0, PGLS703391C10, PGLS603391C10, PP1S103331C320, PP1S103331C310 |  |  |  |  | 40.2d | 32d | MECHANICAL [165.6 h]; Cost |  |  | CP2ME23030C0 | PP1CE23005C0 |  |  | PA | C | P1 | ER | ME | 230 | 05 | PC | S | BILL 2 | B02 | S2 | FF | R00 | ACF07 | PC-2 | 230 |  |  | FF | MEP |  |  |  |
| PP1CE26003C0 |  | PA-P1 ; Final Fix, Termination & Gladding of Cables (Elec RM)_PC-2 | 18d | 2012-08-05 | 2012-08-28 | PP1CE09502C0, PGLS703391C10, PGLS603391C10, PP1S103331C320, PP1S103331C310 |  |  |  |  | 40.2d | 32d | ELECTRICAL [170.4 h]; Cost |  |  | CP2ME26030C0 | PP1CE26003C0 |  |  | PA | C | P1 | ER | ME | 260 | 03 | PC | S | BILL 2 | B02 | S2 | FF | R00 | ACF07 | PC-2 | 260 |  |  | FF | MEP |  |  |  |
| PP1CE26005C0 |  | PA-P1 ; Final Fix, Inst of Switch/Sockets (Elec RM)_PC-2 | 18d | 2012-08-05 | 2012-08-28 | PP1CE09502C0, PGLS703391C10, PGLS603391C10, PP1S103331C320, PP1S103331C310 |  |  |  |  | 40.2d | 32d | ELECTRICAL [42 h]; Cost |  |  | CP2ME26034C0 | PP1CE26005C0 |  |  | PA | C | P1 | ER | ME | 260 | 05 | PC | S | BILL 2 | B02 | S2 | FF | R00 | ACF07 | PC-2 | 260 |  |  | FF | MEP |  |  |  |
| PP1CE26006C0 |  | PA-P1 ; Final Fix, Inst of Light fittings (Elec RM)_PC-2 | 18d | 2012-08-05 | 2012-08-28 | PP1CE09502C0, PGLS703391C10, PGLS603391C10, PP1S103331C320, PP1S103331C310 |  |  |  |  | 40.2d | 32d | ELECTRICAL [1041.6 h]; Cost |  |  | CP2ME26039C0 | PP1CE26006C0 |  |  | PA | C | P1 | ER | ME | 260 | 06 | PC | S | BILL 2 | B02 | S2 | FF | R00 | ACF07 | PC-2 | 260 |  |  | FF | MEP |  |  |  |
| PP1CE27004C0 |  | PA-P1 ; Final Fix, Inst of ELV device (Detector/Speaker) (Elec RM)_PC-2 | 18d | 2012-08-05 | 2012-08-28 | PP1CE09502C0, PGLS703391C10, PGLS603391C10, PP1S103331C320, PP1S103331C310 |  |  |  |  | 40.2d | 32d | ELECTRICAL [26.4 h]; Cost |  |  | CP2ME27030C0 | PP1CE27004C0 |  |  | PA | C | P1 | ER | ME | 270 | 04 | PC | S | BILL 2 | B02 | S2 | FF | R00 | ACF07 | PC-2 | 270 |  |  | FF | MEP |  |  |  |

| ID | WBS | Activity | Duration | Start | Finish | Predecessors | Total float | Free float | Resources | Change Order # | NEW ACTIVITY ID | change id | IDDD | CCAD BUILDING(SET) | CCAD PHASE(SET) | CCAD FLOOR(SET) | CCAD ZONE(SET) | CCAD WORK(SET) | CCAD SECTION(SET) | CCAD SERIAL No.(SET) | CCAD Carpark code(SET) | CCAD Carpark district code(set) | CCAD CBS(SET) | CCAD BILL(SET) | CCAD HANDOVER(SET) | CCAD TAG(SET) | CCAD REV(SET) | CCADACF (SET) | FSP CODE | CCAD SSCF | CCAD SUB ZONE MEP(SET) | CCAD CSA | Act Selector % | CCAD MEQ | CCAD DIVISION(SET) |
| --- | --- | --- | --- | --- | --- | --- | --- | --- | --- | --- | --- | --- | --- | --- | --- | --- | --- | --- | --- | --- | --- | --- | --- | --- | --- | --- | --- | --- | --- | --- | --- | --- | --- | --- | --- |
|  | CM1 | **MECHANICAL ROOMS (3 NOS.) :Zone PC-1** |  | 2012-01-08 | 2012-10-04 |  |  |  |  |  |  |  |  |  |  |  |  |  |  |  |  |  |  |  |  |  |  |  |  |  |  |  |  |  |  |
| PP1CM09902C10 |  | PA-P1 ; Wall Prime & 1st coat (Mech RM)_PC-1 | 18d | 2012-01-08 | 2012-01-29 | PGLS603391C0, PGLS703391C0, PP3CM09902C0 | 8.2d | 0d | WALL PAINT [1204 h]; WALL PAINT [1501.5 m2]; Cost | 328 | 1469 | C04ME09901C0 | PP1CM09902C0 | PA | C | P1 | M1 | PA | 099 | 02 | PC | S | BILL 2 | B02 | S2 | 01 | R00 | ACF06 | PC-1 | 099 |  |  |  |  |  |
| PP1CM04001C10 |  | PA-P1 ; Block Wall Works (Mech RM)_PC-1 | 30d | 2012-01-29 | 2012-03-05 | PP1CM09902C10 | 8.2d | 0d | BLOCKWORKS [5610 h]; BLOCKWORKS [1602.75 m2]; Cost |  |  | AP1M104001C0 | PP1CM04001C0 | PA | C | P1 | M1 | BL | 040 | 01 | PC | S | BILL 2 | B02 | S2 | BL | R00 | ACF06 | PC-1 | 040 |  |  |  |  |  |
| PP1CM23003C10 |  | PA-P1 ; 1st Fix, Inst. of Supports for MEP (Mech RM)_PC-1 | 12d | 2012-03-05 | 2012-03-19 | PP1CM04001C10 | 8.2d | 0d | MECHANICAL [469.2 h]; Cost |  |  | C04ME23001C0 | PP1CM23003C0 | PA | C | P1 | M1 | ME | 230 | 03 | PC | S | BILL 2 | B02 | S2 | 1F | R00 | ACF04 | PC-1 | 230 | 1S | MEP | M1F |  |  |
| PP1CM21102C10 |  | PA-P1 ; 1st Fix, Inst of Sprinkler main pipe (Mech RM)_PC-1 | 30d | 2012-03-19 | 2012-04-23 | PP1CM23003C10, PP1CM04001C10 | 8.2d | 0d | MECHANICAL [7368 h]; Cost |  |  | C04ME21111C0 | PP1CM21102C0 | PA | C | P1 | M1 | ME | 211 | 02 | PC | S | BILL 2 | B02 | S2 | 1F | R00 | ACF04 | PC-1 | 211 | 1S | MEP | M1F |  |  |
| PP1CM22001C10 |  | PA-P1 ; 1st Fix, Inst of Drainage pipe (Mech RM)_PC-1 | 30d | 2012-03-19 | 2012-04-23 | PP1CM23003C10, PP1CM04001C10 | 68.2d | 0d | PLUMBING [1617.6 h]; Cost |  |  | C04ME22011C0 | PP1CM22001C0 | PA | C | P1 | M1 | ME | 220 | 01 | PC | S | BILL 2 | B02 | S2 | 1F | R00 | ACF04 | PC-1 | 220 | 1S | MEP | M1F |  |  |
| PP1CM22003C10 |  | PA-P1 ; 1st Fix, Inst of Water supply pipe (Mech RM)_PC-1 | 30d | 2012-03-19 | 2012-04-23 | PP1CM23003C10, PP1CM04001C10 | 68.2d | 0d | PLUMBING [4562.4 h]; Cost |  |  | C04ME22006C0 | PP1CM22003C0 | PA | C | P1 | M1 | ME | 220 | 03 | PC | S | BILL 2 | B02 | S2 | 1F | R00 | ACF04 | PC-1 | 220 | 1S | MEP | M1F |  |  |
| PP1CM23001C10 |  | PA-P1 ; 1st Fix, Inst of CHW pipe (Mech RM)_PC-1 | 30d | 2012-03-19 | 2012-04-23 | PP1CM23003C10, PP1CM04001C10 | 80.2d | 0d | MECHANICAL [2323.2 h]; Cost |  |  | C04ME23019C0 | PP1CM23001C0 | PA | C | P1 | M1 | ME | 230 | 01 | PC | S | BILL 2 | B02 | S2 | 1F | R00 | ACF04 | PC-1 | 230 | 1S | MEP | M1F |  |  |
| PP1CM23004C10 |  | PA-P1 ; 2nd Fix, Inst of Equipment (AHU) (Mech RM)_PC-1 | 30d | 2012-03-19 | 2012-04-23 | PP1CM04001C10, PP1CM22001C10 FF, PP1CM22003C10 FF | 68.2d | 0d | MECHANICAL [396 h]; Cost |  |  | C04ME23013C0 | PP1CM23004C0 | PA | C | P1 | M1 | ME | 230 | 04 | PC | S | BILL 2 | B02 | S2 | 2F | R00 | ACF04 | PC-1 | 230 | 2n | MEP |  | H |  |
| PP1CM09201C10 |  | PA-P1 ; Metal Studs (Mech RM)_PC-1 | 6d | 2012-04-23 | 2012-04-30 | PP1CM04001C10 SS+14d, PP1CM04001C10, PP1CM23004C10 | 100.45d | 0d | PARTITIONS [65 h]; PARTITIONS [9 m]; Cost |  |  | C04ME09201C0 | PP1CM09201C0 | PA | C | P1 | M1 | PT | 092 | 01 | PC | S | BILL 2 | B02 | S2 | 1F | R00 | ACF06 | PC-1 | 092 |  | GP | PMS |  |  |
| PP1CM21101C10 |  | PA-P1 ; 1st Fix, Inst of Sprinkler branch pipe (Mech RM)_PC-1 | 30d | 2012-04-23 | 2012-05-28 | PP1CM21102C10, PP1CM04001C10 | 68.2d | 0d | MECHANICAL [6057.6 h]; Cost |  |  | C04ME21119C0 | PP1CM21101C0 | PA | C | P1 | M1 | ME | 211 | 01 | PC | S | BILL 2 | B02 | S2 | 1F | R00 | ACF04 | PC-1 | 211 | 1S | MEP | M1F |  |  |
| PP1CM21105C10 |  | PA-P1 ; 2nd Fix, Inst of Zone Control Valve (Mech RM)_PC-1 | 30d | 2012-04-23 | 2012-05-28 | PP1CM23001C10, PP1CM23004C10 | 98.2d | 60d | MECHANICAL [552 h]; Cost |  |  | C04ME21117C0 | PP1CM21105C0 | PA | C | P1 | M1 | ME | 211 | 05 | PC | S | BILL 2 | B02 | S2 | 2F | R00 | ACF07 | PC-1 | 211 | 2n | MEP |  |  |  |
| PP1CM23002C10 |  | PA-P1 ; 1st Fix, Inst of Ducting (Mech RM)_PC-1 | 30d | 2012-04-23 | 2012-05-28 | PP1CM23003C10, PP1CM04001C10, PP1CM21102C10 | 8.2d | 0d | MECHANICAL [2961.6 h]; Cost |  |  | C04ME23005C0 | PP1CM23002C0 | PA | C | P1 | M1 | ME | 230 | 02 | PC | S | BILL 2 | B02 | S2 | 1F | R00 | ACF04 | PC-1 | 230 | 1S | MEP | M1F |  |  |
| PP1CM23005C10 |  | PA-P1 ; 2nd Fix, Inst of Equipment (FCU,FAN,PUMP) (Mech RM)_PC-1 | 30d | 2012-04-23 | 2012-05-28 | PP1CM23004C10 | 68.2d | 0d | MECHANICAL [1638 h]; Cost |  |  | C04ME23011C0 | PP1CM23005C0 | PA | C | P1 | M1 | ME | 230 | 05 | PC | S | BILL 2 | B02 | S2 | 2F | R00 | ACF04 | PC-1 | 230 | 2n | MEP |  | H |  |
| PP1CM26004C10 |  | PA-P1 ; 2nd Fix, Inst of Equipment (DB, TR, SG) (Mech RM)_PC-1 | 30d | 2012-04-23 | 2012-05-28 | PP1CM23004C10 | 98.2d | 60d | ELECTRICAL [895.2 h]; Cost |  |  | C04ME26009C0 | PP1CM26004C0 | PA | C | P1 | M1 | ME | 260 | 04 | PC | S | BILL 2 | B02 | S2 | 2F | R00 | ACF04 | PC-1 | 260 | 2n | MEP |  | E |  |
| PP1CM27003C10 |  | PA-P1 ; 2nd Fix, Inst of ELV Equipment (Panels) (Mech RM)_PC-1 | 30d | 2012-04-23 | 2012-05-28 | PP1CM23004C10 | 98.2d | 51d | ELECTRICAL [138 h]; Cost |  |  | C04ME27020C0 | PP1CM27003C0 | PA | C | P1 | M1 | ME | 270 | 03 | PC | S | BILL 2 | B02 | S2 | 2F | R00 | ACF04 | PC-1 | 270 | 2n | MEP |  | E |  |
| PP1CM08102C10 |  | PA-P1 ; Metal Door Frames (Mech RM)_PC-1 | 10.75d | 2012-04-30 | 2012-05-13 | PP1CM09201C10, GNHE08101C0 | 107.45d | 64.25d | METAL DOORS [115 h]; Cost | 316 | 1465 | C04ME08101C0 | PP1CM08102C0 | PA | C | P1 | M1 | DO | 081 | 02 | PC | S | BILL 2 | B02 | S2 | DF | R00 | ACF06 | PC-1 | 081 |  |  |  |  | 08 |
| PP1CM09202C10 |  | PA-P1 ; Partitions 1st face (Mech RM)_PC-1 | 13.75d | 2012-05-07 | 2012-05-23 | PP1CM09201C10 SS+12d | 100.45d | 55.25d | PARTITIONS [9 m]; PARTITIONS [48 h]; Cost | 314 | 1463 | C04ME09203C0 | PP1CM09202C0 | PA | C | P1 | M1 | PT | 092 | 02 | PC | S | BILL 2 | B02 | S2 | 2F | R00 | ACF06 | PC-1 | 092 |  | GP | P1F |  |  |
| PP1CM21104C10 |  | PA-P1 ; 2nd Fix, Inst of Sprinkler droppers (Mech RM)_PC-1 | 30d | 2012-05-28 | 2012-07-03 | PP1CM21101C10 | 68.2d | 21d | MECHANICAL [2400 h]; Cost |  |  | C04ME21115C0 | PP1CM21104C0 | PA | C | P1 | M1 | ME | 211 | 04 | PC | S | BILL 2 | B02 | S2 | 2F | R00 | ACF07 | PC-1 | 211 | 2n | MEP |  |  |  |
| PP1CM23006C10 |  | PA-P1 ; 2nd Fix, Inst of VAV'S CHW connection (Mech RM)_PC-1 | 30d | 2012-05-28 | 2012-07-03 | PP1CM23005C10 | 68.2d | 21d | MECHANICAL [38.4 h]; Cost |  |  | C04ME23009C0 | PP1CM23006C0 | PA | C | P1 | M1 | ME | 230 | 06 | PC | S | BILL 2 | B02 | S2 | 2F | R00 | ACF07 | PC-1 | 230 | 2n | MEP |  |  |  |
| PP1CM23007C10 |  | PA-P1 ; 2nd Fix, Inst of VCD's/FD's (Mech RM)_PC-1 | 30d | 2012-05-28 | 2012-07-03 | PP1CM23002C10 | 50.2d | 0d | MECHANICAL [877.2 h]; Cost |  |  | C04ME23015C0 | PP1CM23007C0 | PA | C | P1 | M1 | ME | 230 | 07 | PC | S | BILL 2 | B02 | S2 | 2F | R00 | ACF07 | PC-1 | 230 | 2n | MEP |  |  |  |
| PP1CM23008C10 |  | PA-P1 ; 2nd Fix, Insulation of CHW pipe & Duct (Mech RM)_PC-1 | 30d | 2012-05-28 | 2012-07-03 | PP1CM23001C10, PP1CM23002C10 | 50.2d | 0d | MECHANICAL [2776.8 h]; Cost |  |  | C04ME23017C0 | PP1CM23008C0 | PA | C | P1 | M1 | ME | 230 | 08 | PC | S | BILL 2 | B02 | S2 | 2F | R00 | ACF07 | PC-1 | 230 | 2n | MEP |  |  |  |
| PP1CM26001C10 |  | PA-P1 ; 1st Fix, Inst of Cable Tray (Mech RM)_PC-1 | 30d | 2012-05-28 | 2012-07-03 | PP1CM04001C10, PP1CM23002C10 | 8.2d | 0d | ELECTRICAL [68.4 h]; Cost |  |  | C04ME26011C0 | PP1CM26001C0 | PA | C | P1 | M1 | ME | 260 | 01 | PC | S | BILL 2 | B02 | S2 | 1F | R00 | ACF04 | PC-1 | 260 | 1S | MEP | M1F |  |  |
| PP1CM26002C10 |  | PA-P1 ; 1st Fix, Inst of Trunking/Conduiting (Mech RM)_PC-1 | 30d | 2012-05-28 | 2012-07-03 | PP1CM23003C10, PP1CM04001C10, PP1CM23002C10 | 38.2d | 30d | ELECTRICAL [144 h]; Cost |  |  | C04ME26001C0 | PP1CM26002C0 | PA | C | P1 | M1 | ME | 260 | 02 | PC | S | BILL 2 | B02 | S2 | 1F | R00 | ACF04 | PC-1 | 260 | 1S | MEP | M1F |  |  |
| PP1CM27001C10 |  | PA-P1 ; 1st Fix, Inst of Trunking for ELV system (Mech RM)_PC-1 | 30d | 2012-05-28 | 2012-07-03 | PP1CM23002C10 SS, PP1CM04001C10, PP1CM23002C10 | 8.2d | 0d | ELECTRICAL [402 h]; Cost |  |  | C04ME27010C0 | PP1CM27001C0 | PA | C | P1 | M1 | ME | 270 | 01 | PC | S | BILL 2 | B02 | S2 | 1F | R00 | ACF04 | PC-1 | 270 | 1S | MEP | M1F |  |  |
| PP1CM23009C10 |  | PA-P1 ; 2nd Fix, Inst of Flexible Duct & Plenum boxes (Mech RM)_PC-1 | 18d | 2012-07-03 | 2012-07-24 | PP1CM23007C10, PP1CM23008C10 | 50.2d | 3d | MECHANICAL [25.2 h]; Cost |  |  | C04ME23023C0 | PP1CM23009C0 | PA | C | P1 | M1 | ME | 230 | 09 | PC | S | BILL 2 | B02 | S2 | FF | R00 | ACF07 | PC-1 | 230 | FF | MEP |  |  |  |
| PP1CM26003C10 |  | PA-P1 ; 2nd Fix, Cable Pulling (Mech RM)_PC-1 | 30d | 2012-07-03 | 2012-08-07 | PP1CM26001C10 | 8.2d | 0d | ELECTRICAL [3073.2 h]; Cost |  |  | C04ME26007C0 | PP1CM26003C0 | PA | C | P1 | M1 | ME | 260 | 03 | PC | S | BILL 2 | B02 | S2 | 2F | R00 | ACF07 | PC-1 | 260 | 2n | MEP |  |  |  |
| PP1CM27002C10 |  | PA-P1 ; 1st Fix, Wiring/ Cabling work (Mech RM)_PC-1 | 30d | 2012-07-03 | 2012-08-07 | PP1CM26001C10 SS, PP1CM26002C10 SS, PP1CM27001C10 SS, PP1CM04001C10, PP1CM27001C10 | 8.2d | 0d | ELECTRICAL [57.6 h]; Cost |  |  | C04ME27001C0 | PP1CM27002C0 | PA | C | P1 | M1 | ME | 270 | 02 | PC | S | BILL 2 | B02 | S2 | 1F | R00 | ACF04 | PC-1 | 270 | 1S | MEP | M1F |  |  |
| PP1CM08103C10 |  | PA-P1 ; Metal Doors (Mech RM)_PC-1 | 12d | 2012-07-28 | 2012-08-11 | PP1CM08102C10, PGLS703391C10, PGLS603391C10, PP1S103331C320, PP1S103331C310 | 43.2d | 0d | METAL DOORS [105 h]; METAL DOORS [10.5 no]; Cost | 317 | 1466 | C04ME08105C0 | PP1CM08103C0 | PA | C | P1 | M1 | DO | 081 | 03 | PC | S | BILL 2 | B02 | S2 | DR | R00 | ACF06 | PC-1 | 081 |  |  |  |  | 08 |
| PP1CM09203C10 |  | PA-P1 ; Partitions Closing (Mech RM)_PC-1 | 20d | 2012-07-28 | 2012-08-22 | PAFOA09201C1 FF, PP1CM09202C10, PP1CM22001C10, PP1CM22003C10, PP1CM08102C10 FF, PGLS703391C10, PGLS603391C10, PP1S103331C320, PP1S103331C310 | 45.2d | 0d | PARTITIONS [9 m]; PARTITIONS [68 h]; Cost | 315 | 1464 | C04ME09205C0 | PP1CM09203C0 | PA | C | P1 | M1 | PT | 092 | 03 | PC | S | BILL 2 | B02 | S2 | FF | R00 | ACF06 | PC-1 | 092 |  | GP | P2F |  |  |
| PP1CM09601C10 |  | PA-P1 ; Floor Finishes (Mech RM)_PC-1 | 21d | 2012-07-28 | 2012-08-23 | PP1CM09203C10 FF, PGLS703391C10, PGLS603391C10, PP1S103331C320, PP1S103331C310 | 44.2d | 0d | ASSORTED FLOOR FINISH [5176 h]; ASSORTED FLOOR FINISH [2874 m2]; Cost | 326 | 1501 | C04ME09601C0 | PP1CM09601C0 | PA | C | P1 | M1 | FF | 096 | 01 | PC | S | BILL 2 | B02 | S2 | 01 | R00 | ACF06 | PC-1 | FF |  |  |  |  |  |
| PP1CM09901C10 |  | PA-P1 ; Wall - final Paint (Mech RM)_PC-1 | 11d | 2012-07-28 | 2012-08-09 | PP1CM09902C10, PGLS703391C10, PGLS603391C10, PP1S103331C320, PP1S103331C310 | 54.2d | 46d | WALL PAINT [648 h]; WALL PAINT [808.5 m2]; Cost | 329 | 1470 | C04ME09903C0 | PP1CM09901C0 | PA | C | P1 | M1 | PA | 099 | 01 | PC | S | BILL 2 | B02 | S2 | 02 | R00 | ACF06 | PC-1 | 099 |  |  |  |  |  |
| PP1CM21107C10 |  | PA-P1 ; Final Fix, Inst of Sprinklers head (Mech RM)_PC-1 | 18d | 2012-07-28 | 2012-08-18 | PP1CM21104C10, PGLS703391C10, PGLS603391C10, PP1S103331C320, PP1S103331C310 | 47.2d | 39d | MECHANICAL [1047.6 h]; Cost |  |  | C04ME21121C0 | PP1CM21107C0 | PA | C | P1 | M1 | ME | 211 | 07 | PC | S | BILL 2 | B02 | S2 | FF | R00 | ACF07 | PC-1 | 211 | FF | MEP |  |  |  |
| PP1CM23010C10 |  | PA-P1 ; Final Fix, Inst of Grilles & Diffusers (Mech RM)_PC-1 | 18d | 2012-07-28 | 2012-08-18 | PP1CM23009C10, PGLS703391C10, PGLS603391C10, PP1S103331C320, PP1S103331C310 | 47.2d | 39d | MECHANICAL [372 h]; Cost |  |  | C04ME23021C0 | PP1CM23010C0 | PA | C | P1 | M1 | ME | 230 | 10 | PC | S | BILL 2 | B02 | S2 | FF | R00 | ACF07 | PC-1 | 230 | FF | MEP |  |  |  |
| PP1CM26007C10 |  | PA-P1 ; Final Fix, Inst of Light fittings (Mech RM)_PC-1 | 18d | 2012-07-28 | 2012-08-18 | PP1CM09902C10, PGLS703391C10, PGLS603391C10, PP1S103331C320, PP1S103331C310 | 47.2d | 39d | ELECTRICAL [2343.6 h]; Cost |  |  | C04ME26019C0 | PP1CM26007C0 | PA | C | P1 | M1 | ME | 260 | 07 | PC | S | BILL 2 | B02 | S2 | FF | R00 | ACF07 | PC-1 | 260 | FF | MEP |  |  |  |
| PP1CM26008C10 |  | PA-P1 ; Final Fix, Inst of Switch/Sockets (Mech RM)_PC-1 | 18d | 2012-07-28 | 2012-08-18 | PP1CM09902C10, PGLS703391C10, PGLS603391C10, PP1S103331C320, PP1S103331C310 | 47.2d | 39d | ELECTRICAL [93.6 h]; Cost |  |  | C04ME26017C0 | PP1CM26008C0 | PA | C | P1 | M1 | ME | 260 | 08 | PC | S | BILL 2 | B02 | S2 | FF | R00 | ACF07 | PC-1 | 260 | FF | MEP |  |  |  |
| PP1CM27005C10 |  | PA-P1 ; Final Fix, Inst of ELV device (Detector/Speaker) (Mech RM)_PC-1 | 18d | 2012-07-28 | 2012-08-18 | PP1CM09902C10, PP1CM23006C10, PP1CM27003C10, PGLS703391C10, PGLS603391C10, PP1S103331C320, PP1S103331C310 | 47.2d | 39d | ELECTRICAL [58.8 h]; Cost |  |  | C04ME27030C0 | PP1CM27005C0 | PA | C | P1 | M1 | ME | 270 | 05 | PC | S | BILL 2 | B02 | S2 | FF | R00 | ACF07 | PC-1 | 270 | FF | MEP |  |  |  |
| PP1CM21106C10 |  | PA-P1 ; Final Fix, Inst of Fire Extinguishers/FHC (Mech RM)_PC-1 | 18d | 2012-07-30 | 2012-08-22 | PP1CM09203C10 FF, PGLS703391C10, PGLS603391C10, PP1S103331C320, PP1S103331C310 | 45.2d | 37d | MECHANICAL [1512 h]; Cost |  |  | C04ME21123C0 | PP1CM21106C0 | PA | C | P1 | M1 | ME | 211 | 06 | PC | S | BILL 2 | B02 | S2 | FF | R00 | ACF07 | PC-1 | 211 | FF | MEP |  |  |  |
| PP1CM26006C10 |  | PA-P1 ; Final Fix, Inst of Ceiling rose (Mech RM)_PC-1 | 18d | 2012-07-30 | 2012-08-22 | PP1CM09203C10 FF, PGLS703391C10, PGLS603391C10, PP1S103331C320, PP1S103331C310 | 45.2d | 37d | ELECTRICAL [19.2 h]; Cost |  |  | C04ME26015C0 | PP1CM26006C0 | PA | C | P1 | M1 | ME | 260 | 06 | PC | S | BILL 2 | B02 | S2 | FF | R00 | ACF07 | PC-1 | 260 | FF | MEP |  |  |  |
| PP1CM22004C10 |  | PA-P1 ; Final Fix, Inst of All drain (Mech RM)_PC-1 | 18d | 2012-07-31 | 2012-08-23 | PP1CM09601C10 FF, PGLS703391C10, PGLS603391C10, PP1S103331C320, PP1S103331C310 | 44.2d | 36d | PLUMBING [1617.6 h]; Cost |  |  | C04ME22003C0 | PP1CM22004C0 | PA | C | P1 | M1 | ME | 220 | 04 | PC | S | BILL 2 | B02 | S2 | FF | R00 | ACF07 | PC-1 | 220 | FF | MEP |  |  |  |
| PP1CM26005C10 |  | PA-P1 ; 2nd Fix, Wiring for Power/Lighting/Emergency (Mech RM)_PC-1 | 30d | 2012-08-07 | 2012-09-13 | PP1CM26001C10, PP1CM26002C10, PP1CM26003C10, PP1CM27001C10, PP1CM27002C10 | 8.2d | 0d | ELECTRICAL [57.6 h]; Cost |  |  | C04ME26005C0 | PP1CM26005C0 | PA | C | P1 | M1 | ME | 260 | 05 | PC | S | BILL 2 | B02 | S2 | 2F | R00 | ACF07 | PC-1 | 260 | 2n | MEP |  |  |  |
| PP1CM27004C10 |  | PA-P1 ; Final Fix, BMS connection work to Equipment (Mech RM)_PC-1 | 18d | 2012-08-07 | 2012-08-30 | PP1CM21105C10, PP1CM23004C10, PP1CM23005C10, PP1CM23007C10, PP1CM26004C10, PP1CM27002C10, PP1CM27003C10, PGLS703391C10, PGLS603391C10, PP1S103331C320, PP1S103331C310 | 38.2d | 30d | ELECTRICAL [1752 h]; Cost |  |  | C04ME27003C0 | PP1CM27004C0 | PA | C | P1 | M1 | ME | 270 | 04 | PC | S | BILL 2 | B02 | S2 | FF | R00 | ACF07 | PC-1 | 270 | FF | MEP |  |  |  |
| PP1CM08101C10 |  | PA-P1 ; Al / Glass doors (Mech RM)_PC-1 | 10d | 2012-08-11 | 2012-08-25 | PP1CM08103C10, PGLS703391C10, PGLS603391C10, PP1S103331C320, PP1S103331C310 | 43.2d | 0d | ASSORTED DOORS [158 h]; ASSORTED DOORS [15.75 no]; Cost |  |  | C04ME08109C0 | PP1CM08101C0 | PA | C | P1 | M1 | DO | 081 | 01 | PC | S | BILL 2 | B02 | S2 | 03 | R00 | ACF06 | PC-1 | 081 |  |  |  |  |  |
| PP1CM08701C10 |  | PA-P1 ; Ironmongery (Mech RM)_PC-1 | 10d | 2012-08-11 | 2012-08-25 | PP1CM08101C10 FF, PP1CM08103C10, PGLS703391C10, PGLS603391C10, PP1S103331C320, PP1S103331C310 | 43.2d | 35d | IRONMONGERY [105 h]; IRONMONGERY [10.5 no]; Cost | 322 | 1467 | C04ME08709C0 | PP1CM08701C0 | PA | C | P1 | M1 | DO | 087 | 01 | PC | S | BILL 2 | B02 | S2 | IM | R00 | ACF06 | PC-1 | 087 |  |  |  |  | 08 |
| PP1CM26009C10 |  | PA-P1 ; Final Fix, Termination & Gladding of Cables (Mech RM)_PC-1 | 18d | 2012-09-13 | 2012-10-04 | PP1CM09203C10 FF, PP1CM26005C10, PGLS703391C10, PGLS603391C10, PP1S103331C320, PP1S103331C310 | 8.2d | 0d | ELECTRICAL [384 h]; Cost |  |  | C04ME26013C0 | PP1CM26009C0 | PA | C | P1 | M1 | ME | 260 | 09 | PC | S | BILL 2 | B02 | S2 | FF | R00 | ACF07 | PC-1 | 260 | FF | MEP |  |  |  |

| ID | WBS | Activity | Duration | Start | Finish | Predecessors | Complete | Remaining | Planned start | Planned finish | Total float | Free float | Resources | Cost | Actual cost | change id | IDDD | P_811 | P_711 | CCAD BUILDING(SET) | CCAD PHASE(SET) | CCAD FLOOR(SET) | CCAD ZONE(SET) | CCAD WORK(SET) | CCAD SECTION(SET) | CCAD SERIAL No.(SET) | CCAD Carpark code(SET) | CCAD Carpark district code(set) | CCAD CBS(SET) | CCAD BILL(SET) | CCAD HANDOVER(SET) | CCAD TAG(SET) | CCAD REV(SET) | CCADACF (SET) | FSP CODE | CCAD SSCF | Change Order # | NEW ACTIVITY ID | CCAD SUB ZONE MEP(SET) | CCAD CSA | Act Selector % | CCAD MEQ | CCAD DIVISION(SET) |
| --- | --- | --- | --- | --- | --- | --- | --- | --- | --- | --- | --- | --- | --- | --- | --- | --- | --- | --- | --- | --- | --- | --- | --- | --- | --- | --- | --- | --- | --- | --- | --- | --- | --- | --- | --- | --- | --- | --- | --- | --- | --- | --- | --- |
|  | CM2 | **MECHANICAL ROOMS (1 NOS.) :Zone PC-2** |  | 2011-08-10 | 2012-09-10 |  |  |  |  |  |  |  |  |  |  |  |  |  |  |  |  |  |  |  |  |  |  |  |  |  |  |  |  |  |  |  |  |  |  |  |  |  |  |
| PP1CM04001C0 |  | PA-P1 ; Block Wall Works (Mech RM)_PC-2 | 5d | 2011-08-10 A | 2011-08-30 A | PP1CM09902C0 | 100% |  | 2012-05-16 | 2012-05-22 |  |  | BLOCKWORKS [1870 h]; BLOCKWORKS [534.25 m2]; Cost |  |  | AP1M104001C0 | PP1CM04001C0 | 100 | 0 | PA | C | P1 | M1 | BL | 040 | 01 | PC | S | BILL 2 | B02 | S2 | BL | R00 | ACF06 | PC-2 | 040 |  |  |  |  |  |  |  |
| PP1CM09901C0 |  | PA-P1 ; Wall - final Paint (Mech RM)_PC-2 | 4d | 2011-08-10 A | 2011-08-30 A | PP1CM09902C0, PGLS703391C10, PGLS603391C10, PP1S103331C320, PP1S103331C310 | 100% |  | 2012-08-27 | 2012-09-01 |  |  | WALL PAINT [217 h]; WALL PAINT [269.5 m2]; Cost |  |  | C04ME09903C0 | PP1CM09901C0 | 100 | 0 | PA | C | P1 | M1 | PA | 099 | 01 | PC | S | BILL 2 | B02 | S2 | 02 | R00 | ACF06 | PC-2 | 099 | 329 | 1470 |  |  |  |  |  |
| PP1CM09902C0 |  | PA-P1 ; Wall Prime & 1st coat (Mech RM)_PC-2 | 7.26d | 2011-08-10 A | 2011-08-30 A | PGLS703392C0 FS+12d | 100% |  | 2012-08-16 | 2012-08-27 |  |  | WALL PAINT [401 h]; WALL PAINT [500.5 m2]; Cost |  |  | C04ME09901C0 | PP1CM09902C0 | 100 | 0 | PA | C | P1 | M1 | PA | 099 | 02 | PC | S | BILL 2 | B02 | S2 | 01 | R00 | ACF06 | PC-2 | 099 | 328 | 1469 |  |  |  |  |  |
| PP1CM21101C0 |  | PA-P1 ; 1st Fix, Inst of Sprinkler branch pipe (Mech RM)_PC-2 | 4.93d | 2011-09-05 A | 2011-09-29 A | PP1CM21102C0 SS, PP1CM04001C0 | 100% |  | 2012-07-21 | 2012-07-25 |  |  | MECHANICAL [2019.6 h]; Cost [110338 AED] | 110,337.86 | 110,337.86 | C04ME21119C0 | PP1CM21101C0 |  |  | PA | C | P1 | M1 | ME | 211 | 01 | PC | S | BILL 2 | B02 | S2 | 1F | R00 | ACF04 | PC-2 | 211 |  |  | 1S | MEP | M1F |  |  |
| PP1CM21102C0 |  | PA-P1 ; 1st Fix, Inst of Sprinkler main pipe (Mech RM)_PC-2 | 6.68d | 2011-09-05 A | 2011-09-29 A | PP1CM22003C0 SS, PP1CM23003C0 SS, PP1CM04001C0 | 100% |  | 2012-07-10 | 2012-07-17 |  |  | MECHANICAL [2456.4 h]; Cost [134116 AED] | 134,116.49 | 134,116.49 | C04ME21111C0 | PP1CM21102C0 |  |  | PA | C | P1 | M1 | ME | 211 | 02 | PC | S | BILL 2 | B02 | S2 | 1F | R00 | ACF04 | PC-2 | 211 |  |  | 1S | MEP | M1F |  |  |
| PP1CM21104C0 |  | PA-P1 ; 2nd Fix, Inst of Sprinkler droppers (Mech RM)_PC-2 | 3.21d | 2011-09-05 A | 2011-09-29 A | PP1CM09203C0, PP1CM21101C0 | 100% |  | 2012-08-18 | 2012-08-23 |  |  | MECHANICAL [800.4 h]; Cost [43616.4 AED] | 43,616.43 | 43,616.43 | C04ME21115C0 | PP1CM21104C0 |  |  | PA | C | P1 | M1 | ME | 211 | 04 | PC | S | BILL 2 | B02 | S2 | 2F | R00 | ACF07 | PC-2 | 211 |  |  | 2n | MEP |  |  |  |
| PP1CM22001C0 |  | PA-P1 ; 1st Fix, Inst of Drainage pipe (Mech RM)_PC-2 | 7.79d | 2011-09-05 A | 2011-09-29 A | PP1CM23003C0 SS, PP1CM26002C0 SS, PP1CM04001C0 | 100% |  | 2012-06-13 | 2012-06-23 |  |  | PLUMBING [538.8 h]; Cost [29435.9 AED] | 29,435.87 | 29,435.87 | C04ME22011C0 | PP1CM22001C0 |  |  | PA | C | P1 | M1 | ME | 220 | 01 | PC | S | BILL 2 | B02 | S2 | 1F | R00 | ACF04 | PC-2 | 220 |  |  | 1S | MEP | M1F |  |  |
| PP1CM22003C0 |  | PA-P1 ; 1st Fix, Inst of Water supply pipe (Mech RM)_PC-2 | 6d | 2011-09-05 A | 2011-09-29 A | PP1CM22001C0 SS, PP1CM23003C0 SS, PP1CM04001C0 | 100% |  | 2012-06-26 | 2012-07-03 |  |  | PLUMBING [1520.4 h]; Cost [83054.9 AED] | 83,054.92 | 83,054.92 | C04ME22006C0 | PP1CM22003C0 |  |  | PA | C | P1 | M1 | ME | 220 | 03 | PC | S | BILL 2 | B02 | S2 | 1F | R00 | ACF04 | PC-2 | 220 |  |  | 1S | MEP | M1F |  |  |
| PP1CM23001C0 |  | PA-P1 ; 1st Fix, Inst of CHW pipe (Mech RM)_PC-2 | 6.58d | 2011-09-05 A | 2011-09-29 A | PP1CM21102C0 SS, PP1CM23003C0 SS, PP1CM04001C0 | 100% |  | 2012-07-25 | 2012-08-01 |  |  | MECHANICAL [774 h]; Cost [42287.1 AED] | 42,287.08 | 42,287.08 | C04ME23019C0 | PP1CM23001C0 |  |  | PA | C | P1 | M1 | ME | 230 | 01 | PC | S | BILL 2 | B02 | S2 | 1F | R00 | ACF04 | PC-2 | 230 |  |  | 1S | MEP | M1F |  |  |
| PP1CM23003C0 |  | PA-P1 ; 1st Fix, Inst. of Supports for MEP (Mech RM)_PC-2 | 4d | 2011-09-05 A | 2011-09-29 A | PP1CM04001C0 | 100% |  | 2012-05-23 | 2012-05-28 |  |  | MECHANICAL [156 h]; Cost [8813.3 AED] | 8,813.3 | 8,813.3 | C04ME23001C0 | PP1CM23003C0 |  |  | PA | C | P1 | M1 | ME | 230 | 03 | PC | S | BILL 2 | B02 | S2 | 1F | R00 | ACF04 | PC-2 | 230 |  |  | 1S | MEP | M1F |  |  |
| PP1CM26001C0 |  | PA-P1 ; 1st Fix, Inst of Cable Tray (Mech RM)_PC-2 | 6d | 2011-09-05 A | 2011-10-01 | PP1CM04001C0 | 85% | 0.9d | 2012-07-03 | 2012-07-10 | 237.1d | 0d | ELECTRICAL [15.6 h]; Cost [1157.99 AED] | 1,157.99 | 984.29 | C04ME26011C0 | PP1CM26001C0 |  |  | PA | C | P1 | M1 | ME | 260 | 01 | PC | S | BILL 2 | B02 | S2 | 1F | R00 | ACF04 | PC-2 | 260 |  |  | 1S | MEP | M1F |  |  |
| PP1CM26002C0 |  | PA-P1 ; 1st Fix, Inst of Trunking/Conduiting (Mech RM)_PC-2 | 6d | 2011-09-05 A | 2011-10-01 | PP1CM23003C0 SS, PP1CM04001C0 | 85% | 0.9d | 2012-05-28 | 2012-06-04 | 238d | 0d | ELECTRICAL [48 h]; Cost [2812.27 AED] | 2,812.27 | 2,390.43 | C04ME26001C0 | PP1CM26002C0 |  |  | PA | C | P1 | M1 | ME | 260 | 02 | PC | S | BILL 2 | B02 | S2 | 1F | R00 | ACF04 | PC-2 | 260 |  |  | 1S | MEP | M1F |  |  |
| PP1CM27001C0 |  | PA-P1 ; 1st Fix, Inst of Trunking for ELV system (Mech RM)_PC-2 | 3.26d | 2011-09-05 A | 2011-10-01 | PP1CM23002C0 SS, PP1CM04001C0 | 79% | 0.69d | 2012-07-14 | 2012-07-17 | 265d | 0d | ELECTRICAL [134.4 h]; Cost [7394.71 AED] | 7,394.71 | 6,285.5 | C04ME27010C0 | PP1CM27001C0 |  |  | PA | C | P1 | M1 | ME | 270 | 01 | PC | S | BILL 2 | B02 | S2 | 1F | R00 | ACF04 | PC-2 | 270 |  |  | 1S | MEP | M1F |  |  |
| PP1CM27002C0 |  | PA-P1 ; 1st Fix, Wiring/ Cabling work (Mech RM)_PC-2 | 5.5d | 2011-09-05 A | 2011-10-03 | PP1CM26001C0 SS, PP1CM26002C0 SS, PP1CM27001C0 SS, PP1CM04001C0 | 45% | 3d | 2012-07-18 | 2012-07-24 | 265d | 27.9d | ELECTRICAL [19.2 h]; Cost [1068.02 AED] | 1,068.02 | 534.01 | C04ME27001C0 | PP1CM27002C0 |  |  | PA | C | P1 | M1 | ME | 270 | 02 | PC | S | BILL 2 | B02 | S2 | 1F | R00 | ACF04 | PC-2 | 270 |  |  | 1S | MEP | M1F |  |  |
| PP1CM23002C0 |  | PA-P1 ; 1st Fix, Inst of Ducting (Mech RM)_PC-2 | 30d | 2011-10-01 | 2011-11-03 | PP1CM23003C0 SS, PP1CM04001C0 |  |  |  |  | 220d | 0d | MECHANICAL [987.6 h]; Cost |  |  | C04ME23005C0 | PP1CM23002C0 |  |  | PA | C | P1 | M1 | ME | 230 | 02 | PC | S | BILL 2 | B02 | S2 | 1F | R00 | ACF04 | PC-2 | 230 |  |  | 1S | MEP | M1F |  |  |
| PP1CM23004C0 |  | PA-P1 ; 2nd Fix, Inst of Equipment (AHU) (Mech RM)_PC-2 | 30d | 2011-10-01 | 2011-11-03 | PP1CM04001C0, PP1CM22001C0 FF, PP1CM22003C0 FF |  |  |  |  | 208d | 0d | MECHANICAL [132 h]; Cost |  |  | C04ME23013C0 | PP1CM23004C0 |  |  | PA | C | P1 | M1 | ME | 230 | 04 | PC | S | BILL 2 | B02 | S2 | 2F | R00 | ACF04 | PC-2 | 230 |  |  | 2n | MEP |  | H |  |
| PP1CM26003C0 |  | PA-P1 ; 2nd Fix, Cable Pulling (Mech RM)_PC-2 | 30d | 2011-10-01 | 2011-11-05 | PP1CM26001C0 |  |  |  |  | 237.1d | 0d | ELECTRICAL [1024.8 h]; Cost |  |  | C04ME26007C0 | PP1CM26003C0 |  |  | PA | C | P1 | M1 | ME | 260 | 03 | PC | S | BILL 2 | B02 | S2 | 2F | R00 | ACF07 | PC-2 | 260 |  |  | 2n | MEP |  |  |  |
| PP1CM09201C0 |  | PA-P1 ; Metal Studs (Mech RM)_PC-2 | 9.88d | 2011-11-05 | 2011-11-19 | PP1CM04001C0 SS+14d, PP1CM04001C0, PP1CM23004C0 |  |  |  |  | 227.5d | 0d | PARTITIONS [22 h]; PARTITIONS [3 m]; Cost |  |  | C04ME09201C0 | PP1CM09201C0 |  |  | PA | C | P1 | M1 | PT | 092 | 01 | PC | S | BILL 2 | B02 | S2 | 1F | R00 | ACF06 | PC-2 | 092 |  |  |  | GP | PMS |  |  |
| PP1CM21105C0 |  | PA-P1 ; 2nd Fix, Inst of Zone Control Valve (Mech RM)_PC-2 | 30d | 2011-11-05 | 2011-12-14 | PP1CM23001C0, PP1CM23004C0, PGLS703392C0 |  |  |  |  | 238d | 190.8d | MECHANICAL [183.6 h]; Cost |  |  | C04ME21117C0 | PP1CM21105C0 |  |  | PA | C | P1 | M1 | ME | 211 | 05 | PC | S | BILL 2 | B02 | S2 | 2F | R00 | ACF07 | PC-2 | 211 |  |  | 2n | MEP |  |  |  |
| PP1CM23005C0 |  | PA-P1 ; 2nd Fix, Inst of Equipment (FCU,FAN,PUMP) (Mech RM)_PC-2 | 30d | 2011-11-05 | 2011-12-14 | PP1CM23004C0 |  |  |  |  | 208d | 0d | MECHANICAL [546 h]; Cost |  |  | C04ME23011C0 | PP1CM23005C0 |  |  | PA | C | P1 | M1 | ME | 230 | 05 | PC | S | BILL 2 | B02 | S2 | 2F | R00 | ACF04 | PC-2 | 230 |  |  | 2n | MEP |  | H |  |
| PP1CM23007C0 |  | PA-P1 ; 2nd Fix, Inst of VCD's/FD's (Mech RM)_PC-2 | 30d | 2011-11-05 | 2011-12-14 | PP1CM23002C0, PGLS703392C0 |  |  |  |  | 220d | 0d | MECHANICAL [292.8 h]; Cost |  |  | C04ME23015C0 | PP1CM23007C0 |  |  | PA | C | P1 | M1 | ME | 230 | 07 | PC | S | BILL 2 | B02 | S2 | 2F | R00 | ACF07 | PC-2 | 230 |  |  | 2n | MEP |  |  |  |
| PP1CM23008C0 |  | PA-P1 ; 2nd Fix, Insulation of CHW pipe & Duct (Mech RM)_PC-2 | 30d | 2011-11-05 | 2011-12-14 | PP1CM23001C0, PP1CM23002C0, PGLS703392C0 |  |  |  |  | 220d | 0d | MECHANICAL [925.2 h]; Cost |  |  | C04ME23017C0 | PP1CM23008C0 |  |  | PA | C | P1 | M1 | ME | 230 | 08 | PC | S | BILL 2 | B02 | S2 | 2F | R00 | ACF07 | PC-2 | 230 |  |  | 2n | MEP |  |  |  |
| PP1CM26004C0 |  | PA-P1 ; 2nd Fix, Inst of Equipment (DB, TR, SG) (Mech RM)_PC-2 | 30d | 2011-11-05 | 2011-12-14 | PP1CM23004C0 |  |  |  |  | 238d | 190.8d | ELECTRICAL [298.8 h]; Cost |  |  | C04ME26009C0 | PP1CM26004C0 |  |  | PA | C | P1 | M1 | ME | 260 | 04 | PC | S | BILL 2 | B02 | S2 | 2F | R00 | ACF04 | PC-2 | 260 |  |  | 2n | MEP |  | E |  |
| PP1CM27003C0 |  | PA-P1 ; 2nd Fix, Inst of ELV Equipment (Panels) (Mech RM)_PC-2 | 30d | 2011-11-05 | 2011-12-14 | PP1CM23004C0 |  |  |  |  | 238d | 190.8d | ELECTRICAL [45.6 h]; Cost |  |  | C04ME27020C0 | PP1CM27003C0 |  |  | PA | C | P1 | M1 | ME | 270 | 03 | PC | S | BILL 2 | B02 | S2 | 2F | R00 | ACF04 | PC-2 | 270 |  |  | 2n | MEP |  | E |  |
| PP1CM26005C0 |  | PA-P1 ; 2nd Fix, Wiring for Power/Lighting/Emergency (Mech RM)_PC-2 | 30d | 2011-11-05 | 2011-12-15 | PP1CM26001C0, PP1CM26002C0, PP1CM26003C0, PP1CM27001C0, PP1CM27002C0, PGLS703392C0 |  |  |  |  | 237.1d | 201.15d | ELECTRICAL [19.2 h]; Cost |  |  | C04ME26005C0 | PP1CM26005C0 |  |  | PA | C | P1 | M1 | ME | 260 | 05 | PC | S | BILL 2 | B02 | S2 | 2F | R00 | ACF07 | PC-2 | 260 |  |  | 2n | MEP |  |  |  |
| PP1CM08102C0 |  | PA-P1 ; Metal Door Frames (Mech RM)_PC-2 | 4.12d | 2011-11-19 | 2011-11-23 | PP1CM09201C0, GNHE08101C0 |  |  |  |  | 247.74d | 206.8d | METAL DOORS [38 h]; Cost |  |  | C04ME08101C0 | PP1CM08102C0 |  |  | PA | C | P1 | M1 | DO | 081 | 02 | PC | S | BILL 2 | B02 | S2 | DF | R00 | ACF06 | PC-2 | 081 | 316 | 1465 |  |  |  |  | 08 |
| PP1CM09202C0 |  | PA-P1 ; Partitions 1st face (Mech RM)_PC-2 | 10.99d | 2011-11-22 | 2011-12-06 | PP1CM09201C0 SS+12d |  |  |  |  | 227.5d | 197.81d | PARTITIONS [3 m]; PARTITIONS [16 h]; Cost |  |  | C04ME09203C0 | PP1CM09202C0 |  |  | PA | C | P1 | M1 | PT | 092 | 02 | PC | S | BILL 2 | B02 | S2 | 2F | R00 | ACF06 | PC-2 | 092 | 314 | 1463 |  | GP | P1F |  |  |
| PP1CM23006C0 |  | PA-P1 ; 2nd Fix, Inst of VAV'S CHW connection (Mech RM)_PC-2 | 30d | 2011-12-15 | 2012-01-19 | PP1CM23005C0 |  |  |  |  | 208d | 160.8d | MECHANICAL [13.2 h]; Cost |  |  | C04ME23009C0 | PP1CM23006C0 |  |  | PA | C | P1 | M1 | ME | 230 | 06 | PC | S | BILL 2 | B02 | S2 | 2F | R00 | ACF07 | PC-2 | 230 |  |  | 2n | MEP |  |  |  |
| PP1CM23009C0 |  | PA-P1 ; 2nd Fix, Inst of Flexible Duct & Plenum boxes (Mech RM)_PC-2 | 18d | 2011-12-15 | 2012-01-05 | PP1CM23007C0, PP1CM23008C0 |  |  |  |  | 220d | 172.8d | MECHANICAL [8.4 h]; Cost |  |  | C04ME23023C0 | PP1CM23009C0 |  |  | PA | C | P1 | M1 | ME | 230 | 09 | PC | S | BILL 2 | B02 | S2 | FF | R00 | ACF07 | PC-2 | 230 |  |  | FF | MEP |  |  |  |
| PP1CM08103C0 |  | PA-P1 ; Metal Doors (Mech RM)_PC-2 | 3.74d | 2012-07-28 | 2012-08-01 | PP1CM08102C0, PGLS703391C10, PGLS603391C10, PP1S103331C320, PP1S103331C310 |  |  |  |  | 53.21d | 0d | METAL DOORS [35 h]; METAL DOORS [3.5 no]; Cost |  |  | C04ME08105C0 | PP1CM08103C0 |  |  | PA | C | P1 | M1 | DO | 081 | 03 | PC | S | BILL 2 | B02 | S2 | DR | R00 | ACF06 | PC-2 | 081 | 317 | 1466 |  |  |  |  | 08 |
| PP1CM09203C0 |  | PA-P1 ; Partitions Closing (Mech RM)_PC-2 | 11.25d | 2012-07-28 | 2012-08-11 | PAFOA09201C1 FF, PP1CM09202C0, PP1CM22001C0, PP1CM22003C0, PP1CM08102C0 FF, PGLS703391C10, PGLS603391C10, PP1S103331C320, PP1S103331C310 |  |  |  |  | 29.69d | 0d | PARTITIONS [3 m]; PARTITIONS [23 h]; Cost |  |  | C04ME09205C0 | PP1CM09203C0 |  |  | PA | C | P1 | M1 | PT | 092 | 03 | PC | S | BILL 2 | B02 | S2 | FF | R00 | ACF06 | PC-2 | 092 | 315 | 1464 |  | GP | P2F |  |  |
| PP1CM23010C0 |  | PA-P1 ; Final Fix, Inst of Grilles & Diffusers (Mech RM)_PC-2 | 18d | 2012-07-28 | 2012-08-18 | PP1CM23009C0, PGLS703391C10, PGLS603391C10, PP1S103331C320, PP1S103331C310 |  |  |  |  | 47.2d | 39d | MECHANICAL [123.6 h]; Cost |  |  | C04ME23021C0 | PP1CM23010C0 |  |  | PA | C | P1 | M1 | ME | 230 | 10 | PC | S | BILL 2 | B02 | S2 | FF | R00 | ACF07 | PC-2 | 230 |  |  | FF | MEP |  |  |  |
| PP1CM26007C0 |  | PA-P1 ; Final Fix, Inst of Light fittings (Mech RM)_PC-2 | 18d | 2012-07-28 | 2012-08-18 | PP1CM09902C0, PGLS703391C10, PGLS603391C10, PP1S103331C320, PP1S103331C310 |  |  |  |  | 47.2d | 39d | ELECTRICAL [781.2 h]; Cost |  |  | C04ME26019C0 | PP1CM26007C0 |  |  | PA | C | P1 | M1 | ME | 260 | 07 | PC | S | BILL 2 | B02 | S2 | FF | R00 | ACF07 | PC-2 | 260 |  |  | FF | MEP |  |  |  |
| PP1CM26008C0 |  | PA-P1 ; Final Fix, Inst of Switch/Sockets (Mech RM)_PC-2 | 18d | 2012-07-28 | 2012-08-18 | PP1CM09902C0, PGLS703391C10, PGLS603391C10, PP1S103331C320, PP1S103331C310 |  |  |  |  | 47.2d | 39d | ELECTRICAL [31.2 h]; Cost |  |  | C04ME26017C0 | PP1CM26008C0 |  |  | PA | C | P1 | M1 | ME | 260 | 08 | PC | S | BILL 2 | B02 | S2 | FF | R00 | ACF07 | PC-2 | 260 |  |  | FF | MEP |  |  |  |
| PP1CM27004C0 |  | PA-P1 ; Final Fix, BMS connection work to Equipment (Mech RM)_PC-2 | 18d | 2012-07-28 | 2012-08-18 | PP1CM21105C0, PP1CM23004C0, PP1CM23005C0, PP1CM23007C0, PP1CM26004C0, PP1CM27002C0, PP1CM27003C0, PGLS703391C10, PGLS603391C10, PP1S103331C320, PP1S103331C310 |  |  |  |  | 47.2d | 39d | ELECTRICAL [584.4 h]; Cost |  |  | C04ME27003C0 | PP1CM27004C0 |  |  | PA | C | P1 | M1 | ME | 270 | 04 | PC | S | BILL 2 | B02 | S2 | FF | R00 | ACF07 | PC-2 | 270 |  |  | FF | MEP |  |  |  |
| PP1CM27005C0 |  | PA-P1 ; Final Fix, Inst of ELV device (Detector/Speaker) (Mech RM)_PC-2 | 18d | 2012-07-28 | 2012-08-18 | PP1CM09902C0, PP1CM23006C0, PP1CM27003C0, PGLS703391C10, PGLS603391C10, PP1S103331C320, PP1S103331C310 |  |  |  |  | 47.2d | 39d | ELECTRICAL [19.2 h]; Cost |  |  | C04ME27030C0 | PP1CM27005C0 |  |  | PA | C | P1 | M1 | ME | 270 | 05 | PC | S | BILL 2 | B02 | S2 | FF | R00 | ACF07 | PC-2 | 270 |  |  | FF | MEP |  |  |  |
| PP1CM08101C0 |  | PA-P1 ; Al / Glass doors (Mech RM)_PC-2 | 4.5d | 2012-08-01 | 2012-08-07 | PP1CM08103C0, PGLS703391C10, PGLS603391C10, PP1S103331C320, PP1S103331C310 |  |  |  |  | 53.21d | 0d | ASSORTED DOORS [53 h]; ASSORTED DOORS [5.25 no]; Cost |  |  | C04ME08109C0 | PP1CM08101C0 |  |  | PA | C | P1 | M1 | DO | 081 | 01 | PC | S | BILL 2 | B02 | S2 | 03 | R00 | ACF06 | PC-2 | 081 |  |  |  |  |  |  |  |
| PP1CM08701C0 |  | PA-P1 ; Ironmongery (Mech RM)_PC-2 | 3.75d | 2012-08-07 | 2012-08-11 | PP1CM08101C0, PP1CM08103C0, PGLS703391C10, PGLS603391C10, PP1S103331C320, PP1S103331C310 |  |  |  |  | 53.21d | 45.01d | IRONMONGERY [35 h]; IRONMONGERY [3.5 no]; Cost |  |  | C04ME08709C0 | PP1CM08701C0 |  |  | PA | C | P1 | M1 | DO | 087 | 01 | PC | S | BILL 2 | B02 | S2 | IM | R00 | ACF06 | PC-2 | 087 | 322 | 1467 |  |  |  |  | 08 |
| PP1CM09601C0 |  | PA-P1 ; Floor Finishes (Mech RM)_PC-2 | 6.26d | 2012-08-11 | 2012-08-18 | PP1CM09203C0, PGLS703391C10, PGLS603391C10, PP1S103331C320, PP1S103331C310 |  |  |  |  | 29.69d | 0d | ASSORTED FLOOR FINISH [1728 h]; ASSORTED FLOOR FINISH [958 m2]; Cost |  |  | C04ME09601C0 | PP1CM09601C0 |  |  | PA | C | P1 | M1 | FF | 096 | 01 | PC | S | BILL 2 | B02 | S2 | 01 | R00 | ACF06 | PC-2 | FF | 326 | 1501 |  |  |  |  |  |
| PP1CM21106C0 |  | PA-P1 ; Final Fix, Inst of Fire Extinguishers/FHC (Mech RM)_PC-2 | 18d | 2012-08-11 | 2012-09-03 | PP1CM09203C0, PGLS703391C10, PGLS603391C10, PP1S103331C320, PP1S103331C310 |  |  |  |  | 35.95d | 27.75d | MECHANICAL [504 h]; Cost |  |  | C04ME21123C0 | PP1CM21106C0 |  |  | PA | C | P1 | M1 | ME | 211 | 06 | PC | S | BILL 2 | B02 | S2 | FF | R00 | ACF07 | PC-2 | 211 |  |  | FF | MEP |  |  |  |
| PP1CM21107C0 |  | PA-P1 ; Final Fix, Inst of Sprinklers head (Mech RM)_PC-2 | 18d | 2012-08-11 | 2012-09-03 | PP1CM21104C0, PGLS703391C10, PGLS603391C10, PP1S103331C320, PP1S103331C310 |  |  |  |  | 35.95d | 27.75d | MECHANICAL [349.2 h]; Cost |  |  | C04ME21121C0 | PP1CM21107C0 |  |  | PA | C | P1 | M1 | ME | 211 | 07 | PC | S | BILL 2 | B02 | S2 | FF | R00 | ACF07 | PC-2 | 211 |  |  | FF | MEP |  |  |  |
| PP1CM26006C0 |  | PA-P1 ; Final Fix, Inst of Ceiling rose (Mech RM)_PC-2 | 18d | 2012-08-11 | 2012-09-03 | PP1CM09203C0, PGLS703391C10, PGLS603391C10, PP1S103331C320, PP1S103331C310 |  |  |  |  | 35.95d | 27.75d | ELECTRICAL [6 h]; Cost |  |  | C04ME26015C0 | PP1CM26006C0 |  |  | PA | C | P1 | M1 | ME | 260 | 06 | PC | S | BILL 2 | B02 | S2 | FF | R00 | ACF07 | PC-2 | 260 |  |  | FF | MEP |  |  |  |
| PP1CM26009C0 |  | PA-P1 ; Final Fix, Termination & Gladding of Cables (Mech RM)_PC-2 | 18d | 2012-08-11 | 2012-09-03 | PP1CM09203C0, PP1CM26005C0, PGLS703391C10, PGLS603391C10, PP1S103331C320, PP1S103331C310 |  |  |  |  | 35.95d | 27.75d | ELECTRICAL [128.4 h]; Cost |  |  | C04ME26013C0 | PP1CM26009C0 |  |  | PA | C | P1 | M1 | ME | 260 | 09 | PC | S | BILL 2 | B02 | S2 | FF | R00 | ACF07 | PC-2 | 260 |  |  | FF | MEP |  |  |  |
| PP1CM22004C0 |  | PA-P1 ; Final Fix, Inst of All drain (Mech RM)_PC-2 | 18d | 2012-08-18 | 2012-09-10 | PP1CM09601C0, PGLS703391C10, PGLS603391C10, PP1S103331C320, PP1S103331C310 |  |  |  |  | 29.69d | 21.49d | PLUMBING [538.8 h]; Cost |  |  | C04ME22003C0 | PP1CM22004C0 |  |  | PA | C | P1 | M1 | ME | 220 | 04 | PC | S | BILL 2 | B02 | S2 | FF | R00 | ACF07 | PC-2 | 220 |  |  | FF | MEP |  |  |  |

| ID | WBS | Activity | Duration | Start | Finish | Predecessors | Total float | Free float | Resources | Change Order # | NEW ACTIVITY ID | change id | IDDD | CCAD BUILDING(SET) | CCAD PHASE(SET) | CCAD FLOOR(SET) | CCAD ZONE(SET) | CCAD WORK(SET) | CCAD SECTION(SET) | CCAD SERIAL No.(SET) | CCAD Carpark code(SET) | CCAD Carpark district code(set) | CCAD CBS(SET) | CCAD BILL(SET) | CCAD HANDOVER(SET) | CCAD TAG(SET) | CCAD REV(SET) | CCADACF (SET) | FSP CODE | CCAD SSCF | CCAD SUB ZONE MEP(SET) | CCAD CSA | Act Selector % |
| --- | --- | --- | --- | --- | --- | --- | --- | --- | --- | --- | --- | --- | --- | --- | --- | --- | --- | --- | --- | --- | --- | --- | --- | --- | --- | --- | --- | --- | --- | --- | --- | --- | --- |
|  | DP1 | **PARKING AREA :Zone PD-1** |  | 2011-11-15 | 2012-11-05 |  |  |  |  |  |  |  |  |  |  |  |  |  |  |  |  |  |  |  |  |  |  |  |  |  |  |  |  |
| PP1DP09901C10 |  | PA-P1 ; Prime & 1st coat (Wall & Ceiling) (Parking Area)_PD-1 | 18d | 2011-11-15 | 2011-12-07 | PGLS403391C0, PP2DP09901C10 | 38d | 30d | CEILING PAINT [1229 h]; WALL PAINT [266 h]; CEILING PAINT [1533.25 m2]; WALL PAINT [331.25 m2]; Cost | 328 | 956 | CP3PA09901C0 | PP1DP09901C0 | PA | C | P1 | PK | PA | 099 | 01 | PD | S | BILL 2 | B02 | S2 | 01 | R00 | ACF06 | PD-1 | 099 |  |  |  |
| PP1DP21114C10 |  | PA-P1 ; 1st Fix, Fire Fighting system (Parking Area)_PD-1 | 33d | 2012-01-14 | 2012-02-21 | PGLS403391C0 FS+26d, PP1DP09901C10, PP2DP21114C10 | 8d | 0d | MECHANICAL [201.6 h]; Cost |  |  | CP3PA21109C0 | PP1DP21114C0 | PA | C | P1 | PK | ME | 211 | 14 | PD | S | BILL 2 | B02 | S2 | 1F | R00 | ACF04 | PD-1 | 211 | 1S | MEP | M1F |
| PP1DP21124C10 |  | PA-P1 ; 2nd Fix, Fire Fighting system (Parking Area)_PD-1 | 33d | 2012-02-22 | 2012-03-31 | PP1DP21114C10 | 92d | 45.12d | MECHANICAL [201.6 h]; Cost |  |  | CP3PA21115C0 | PP1DP21124C0 | PA | C | P1 | PK | ME | 211 | 24 | PD | S | BILL 2 | B02 | S2 | 2F | R00 | ACF07 | PD-1 | 211 | 2n | MEP |  |
| PP1DP22015C10 |  | PA-P1 ; 1st Fix, Plumbing / Drainage System (Parking Area)_PD-1 | 33d | 2012-02-22 | 2012-03-31 | PP1DP09901C10, PP1DP21114C10 | 8d | 0d | PLUMBING [538.8 h]; Cost |  |  | CP3PA22001C0 | PP1DP22015C0 | PA | C | P1 | PK | ME | 220 | 15 | PD | S | BILL 2 | B02 | S2 | 1F | R00 | ACF04 | PD-1 | 220 | 1S | MEP | M1F |
| PP1DP22025C10 |  | PA-P1 ; 2nd Fix, Plumbing / Drainage System (Parking Area)_PD-1 | 33d | 2012-04-01 | 2012-05-08 | PP1DP22015C10 | 71d | 24.12d | PLUMBING [538.8 h]; Cost |  |  | CP3PA22011C0 | PP1DP22025C0 | PA | C | P1 | PK | ME | 220 | 25 | PD | S | BILL 2 | B02 | S2 | 2F | R00 | ACF07 | PD-1 | 220 | 2n | MEP |  |
| PP1DP23011C10 |  | PA-P1 ; 1st Fix, CHW / HVAC System (Parking Area)_PD-1 | 33d | 2012-04-01 | 2012-05-08 | PP1DP09901C10, PP1DP22015C10 | 8d | 0d | MECHANICAL [1394.4 h]; Cost |  |  | CP3PA23001C0 | PP1DP23011C0 | PA | C | P1 | PK | ME | 230 | 11 | PD | S | BILL 2 | B02 | S2 | 1F | R00 | ACF04 | PD-1 | 230 | 1S | MEP | M1F |
| PP1DP09902C10 |  | PA-P1 ; 2nd coat (Wall & Ceiling) (Parking Area)_PD-1 | 13d | 2012-05-08 | 2012-05-23 | PP1DP09901C10, PGLS403391C10, PGLS103331C290, PP3DP23021C10 | 41.48d | 0d | CEILING PAINT [662 h]; WALL PAINT [143 h]; CEILING PAINT [825.5 m2]; WALL PAINT [178.25 m2]; Cost | 329 | 957 | CP3PA09903C0 | PP1DP09902C0 | PA | C | P1 | PK | PA | 099 | 02 | PD | S | BILL 2 | B02 | S2 | 02 | R00 | ACF06 | PD-1 | 099 |  |  |  |
| PP1DP23021C10 |  | PA-P1 ; 2nd Fix, CHW / HVAC System (Parking Area)_PD-1 | 33d | 2012-05-09 | 2012-06-17 | PP1DP23011C10 | 50d | 3.12d | MECHANICAL [1394.4 h]; Cost |  |  | CP3PA23011C0 | PP1DP23021C0 | PA | C | P1 | PK | ME | 230 | 21 | PD | S | BILL 2 | B02 | S2 | 2F | R00 | ACF07 | PD-1 | 230 | 2n | MEP |  |
| PP1DP26012C10 |  | PA-P1 ; 1st Fix, Electrical System (Parking Area)_PD-1 | 33d | 2012-05-09 | 2012-06-17 | PP1DP09901C10, PP1DP23011C10 | 8d | 0d | ELECTRICAL [1297.2 h]; Cost |  |  | CP3PA26001C0 | PP1DP26012C0 | PA | C | P1 | PK | ME | 260 | 12 | PD | S | BILL 2 | B02 | S2 | 1F | R00 | ACF04 | PD-1 | 260 | 1S | MEP | M1F |
| PP1DP21113C10 |  | PA-P1 ; Final Fix, Fire Fighting system (Parking Area)_PD-1 | 12d | 2012-05-23 | 2012-06-06 | PP1DP09902C10, PP1DP21124C10, PGLS403391C10, PGLS103331C290 FF, PP3DP23021C10 | 46.88d | 0d | MECHANICAL [201.6 h]; Cost |  |  | CP3PA21113C0 | PP1DP21113C0 | PA | C | P1 | PK | ME | 211 | 13 | PD | S | BILL 2 | B02 | S2 | FF | R00 | ACF07 | PD-1 | 211 | FF | MEP |  |
| PP1DP22011C10 |  | PA-P1 ; Final Fix, Drainage System (Parking Area)_PD-1 | 12d | 2012-06-06 | 2012-06-21 | PP1DP09902C10, PP1DP22025C10, PGLS403391C10, PGLS103331C290 FF, PP3DP23021C10, PP1DP21113C10 | 46.88d | 0d | PLUMBING [538.8 h]; Cost |  |  | CP3PA22011C0 | PP1DP22011C0 | PA | C | P1 | PK | ME | 220 | 11 | PD | S | BILL 2 | B02 | S2 | FF | R00 | ACF07 | PD-1 | 220 | FF | MEP |  |
| PP1DP26022C10 |  | PA-P1 ; 2nd Fix, Electrical System (Parking Area)_PD-1 | 33d | 2012-06-18 | 2012-07-25 | PP1DP26012C10 | 29d | 0d | ELECTRICAL [1297.2 h]; Cost |  |  | CP3PA26005C0 | PP1DP26022C0 | PA | C | P1 | PK | ME | 260 | 22 | PD | S | BILL 2 | B02 | S2 | 2F | R00 | ACF07 | PD-1 | 260 | 2n | MEP |  |
| PP1DP27013C10 |  | PA-P1 ; 1st Fix, ELV system (Parking Area)_PD-1 | 33d | 2012-06-18 | 2012-07-25 | PP1DP09901C10, PP1DP26012C10 | 8d | 0d | ELECTRICAL [211.2 h]; Cost |  |  | CP3PA27010C0 | PP1DP27013C0 | PA | C | P1 | PK | ME | 270 | 13 | PD | S | BILL 2 | B02 | S2 | 1F | R00 | ACF04 | PD-1 | 270 | 1S | MEP | M1F |
| PP1DP23019C10 |  | PA-P1 ; Final Fix, CHW / HVAC System (Parking Area)_PD-1 | 12d | 2012-06-21 | 2012-07-05 | PP1DP09902C10, PP1DP23021C10, PGLS403391C10, PGLS103331C290 FF, PP3DP23021C10, PP1DP22011C10 | 46.88d | 17.88d | MECHANICAL [1394.4 h]; Cost |  |  | CP3PA23019C0 | PP1DP23019C0 | PA | C | P1 | PK | ME | 230 | 19 | PD | S | BILL 2 | B02 | S2 | FF | R00 | ACF07 | PD-1 | 230 | FF | MEP |  |
| PP1DP26017C10 |  | PA-P1 ; Final Fix, Electrical System (Parking Area)_PD-1 | 12d | 2012-07-26 | 2012-08-08 | PP1DP09902C10, PP1DP26022C10, PGLS403391C10, PGLS103331C290 FF, PP3DP23021C10, PP1DP23019C10 | 29d | 21d | ELECTRICAL [1297.2 h]; Cost |  |  | CP3PA26017C0 | PP1DP26017C0 | PA | C | P1 | PK | ME | 260 | 17 | PD | S | BILL 2 | B02 | S2 | FF | R00 | ACF07 | PD-1 | 260 | FF | MEP |  |
| PP1DP27023C10 |  | PA-P1 ; 2nd Fix, ELV system (Parking Area)_PD-1 | 33d | 2012-07-26 | 2012-09-04 | PP1DP27013C10 | 8d | 0d | ELECTRICAL [211.2 h]; Cost |  |  | CP3PA27020C0 | PP1DP27023C0 | PA | C | P1 | PK | ME | 270 | 23 | PD | S | BILL 2 | B02 | S2 | 2F | R00 | ACF07 | PD-1 | 270 | 2n | MEP |  |
| PP1DP27030C10 |  | PA-P1 ; Final Fix, ELV system (Parking Area)_PD-1 | 12d | 2012-09-05 | 2012-09-18 | PP1DP09902C10, PP1DP27023C10, PP1DP27023C10 FF, PGLS403391C10, PGLS103331C290 FF, PP3DP23021C10, PP1DP26017C10 | 8d | 0d | ELECTRICAL [211.2 h]; Cost |  |  | CP3PA27030C0 | PP1DP27030C0 | PA | C | P1 | PK | ME | 270 | 30 | PD | S | BILL 2 | B02 | S2 | FF | R00 | ACF07 | PD-1 | 270 | FF | MEP |  |
| PP1DP09903C10 |  | PA-P1 ; Concrete Sealer (Floor) (Parking Area)_PD-1 | 13d | 2012-09-19 | 2012-10-03 | PP1DP21113C10, PP1DP22011C10, PP1DP23019C10, PP1DP26017C10, PP1DP27030C10, PGLS403391C10, PGLS103331C290 FF, PP3DP23021C10 | 8d | 0d | ASSORTED FLOOR FINISH [2064 h]; ASSORTED FLOOR FINISH [1146 m2]; Cost |  |  | AP1PK09903C0 | PP1DP09903C0 | PA | C | P1 | PK | FF | 096 | 03 | PD | S | BILL 2 | B02 | S2 | 05 | R00 | ACF06 | PD-1 | CS |  |  |  |
| PP1DP05509C10 |  | PA-P1 ; Grill & Louvers (Parking Area)_PD-1 | 7d | 2012-10-04 | 2012-10-11 | PP1DP09903C10, PGLS403391C10, PGLS103331C290 FF, PP3DP23021C10 | 27d | 19d | SECONDARY STEEL [159 h]; Cost | 328 | 956 | CP3PA09901C0 | PP3AP09901C0 | PA | C | P1 | PK | SW | 055 | 01 | PD | S | BILL 2 | B02 | S2 | 02 | R00 | ACF03 | PD-1 | 056 |  |  |  |
| PP1DP11006C10 |  | PA-P1 ; Wall Protection (WP, CG, WG, FCG) (Parking Area)_PD-1 | 10d | 2012-10-04 | 2012-10-15 | PP1DP09903C10, PGLS403391C10, PGLS103331C290 FF, PP3DP23021C10 | 8d | 0d | FF&E [40 h]; Cost | 326 | 1001 | CP3PA11001C0 | PP1DP11006C0 | PA | C | P1 | PK | WF | 097 | 06 | PD | S | BILL 2 | B02 | S2 | 03 | R00 | ACF08 | PD-1 | 097 |  |  |  |
| PP1DP11004C10 |  | PA-P1 ; Floor Marking & Signage (Parking Area)_PD-1 | 8d | 2012-10-16 | 2012-10-24 | PP1DP09903C10, PP1DP11006C10, PGLS403391C10, PGLS103331C290 FF, PP3DP23021C10 | 8d | 0d | SIGNAGES [477 h]; SIGNAGES [66.25 no]; Cost |  |  | AP1PK11004C0 | PP1DP11004C0 | PA | C | P1 | PK | SA | 110 | 04 | PD | S | BILL 2 | B02 | S2 | 09 | R00 | ACF08 | PD-1 | c |  |  |  |
| PP1DP11009C10 |  | PA-P1 ; FF&E (Parking Area)_PD-1 | 8d | 2012-10-25 | 2012-11-05 | PP1DP11004C10, PGLS403391C10, PGLS103331C290, PP3DP23021C10 | 8d | 0d | FF&E [17 h]; Cost |  |  | AP3PK11004C0 | PP3BP11004C0 | PA | C | P1 | PK | SA | 110 | 04 | PB | S | BILL 2 | B02 | S2 | 01 | R00 | ACF08 | PD-1 | a |  |  |  |
|  | DP2 | **PARKING AREA :Zone PD-2** |  | 2012-05-26 | 2012-12-31 |  |  |  |  |  |  |  |  |  |  |  |  |  |  |  |  |  |  |  |  |  |  |  |  |  |  |  |  |
| PP1DP09901C20 |  | PA-P1 ; Prime & 1st coat (Wall & Ceiling) (Parking Area)_PD-2 | 18d | 2012-05-26 | 2012-06-17 | PGLS403392C0 SS, PGLS503391C0 SS, PGLS503392C0 SS | 12.07d | 0d | CEILING PAINT [3685 h]; WALL PAINT [797 h]; CEILING PAINT [4599.75 m2]; WALL PAINT [993.75 m2]; Cost | 328 | 956 | CP3PA09901C0 | PP1DP09901C0 | PA | C | P1 | PK | PA | 099 | 01 | PD | S | BILL 2 | B02 | S2 | 01 | R00 | ACF06 | PD-2 | 099 |  |  |  |
| PP1DP21114C20 |  | PA-P1 ; 1st Fix, Fire Fighting system (Parking Area)_PD-2 | 18d | 2012-06-17 | 2012-07-08 | PP1DP09901C20 | 12.07d | 0d | MECHANICAL [603.6 h]; Cost |  |  | CP3PA21109C0 | PP1DP21114C0 | PA | C | P1 | PK | ME | 211 | 14 | PD | S | BILL 2 | B02 | S2 | 1F | R00 | ACF04 | PD-2 | 211 | 1S | MEP | M1F |
| PP1DP21124C20 |  | PA-P1 ; 2nd Fix, Fire Fighting system (Parking Area)_PD-2 | 30d | 2012-07-08 | 2012-08-12 | PP1DP21114C20 | 30.07d | 0d | MECHANICAL [603.6 h]; Cost |  |  | CP3PA21115C0 | PP1DP21124C0 | PA | C | P1 | PK | ME | 211 | 24 | PD | S | BILL 2 | B02 | S2 | 2F | R00 | ACF07 | PD-2 | 211 | 2n | MEP |  |
| PP1DP22015C20 |  | PA-P1 ; 1st Fix, Plumbing / Drainage System (Parking Area)_PD-2 | 18d | 2012-07-08 | 2012-07-29 | PP1DP09901C20, PP1DP21114C20 | 12.07d | 0d | PLUMBING [1617.6 h]; Cost |  |  | CP3PA22001C0 | PP1DP22015C0 | PA | C | P1 | PK | ME | 220 | 15 | PD | S | BILL 2 | B02 | S2 | 1F | R00 | ACF04 | PD-2 | 220 | 1S | MEP | M1F |
| PP1DP09902C20 |  | PA-P1 ; 2nd coat (Wall & Ceiling) (Parking Area)_PD-2 | 29d | 2012-07-23 | 2012-08-28 | PP1DP09901C20, PGLS103331C290, PGLS103331C300, PGLS403392C20, PGLS503392C10 | 30.07d | 0d | CEILING PAINT [1984 h]; WALL PAINT [430 h]; CEILING PAINT [2476.5 m2]; WALL PAINT [534.75 m2]; Cost | 329 | 957 | CP3PA09903C0 | PP1DP09902C0 | PA | C | P1 | PK | PA | 099 | 02 | PD | S | BILL 2 | B02 | S2 | 02 | R00 | ACF06 | PD-2 | 099 |  |  |  |
| PP1DP22025C20 |  | PA-P1 ; 2nd Fix, Plumbing / Drainage System (Parking Area)_PD-2 | 30d | 2012-07-29 | 2012-09-04 | PP1DP22015C20 | 24.07d | 0d | PLUMBING [1617.6 h]; Cost |  |  | CP3PA22011C0 | PP1DP22025C0 | PA | C | P1 | PK | ME | 220 | 25 | PD | S | BILL 2 | B02 | S2 | 2F | R00 | ACF07 | PD-2 | 220 | 2n | MEP |  |
| PP1DP23011C20 |  | PA-P1 ; 1st Fix, CHW / HVAC System (Parking Area)_PD-2 | 18d | 2012-07-29 | 2012-08-21 | PP1DP09901C20, PP1DP22015C20 | 12.07d | 0d | MECHANICAL [4182 h]; Cost |  |  | CP3PA23001C0 | PP1DP23011C0 | PA | C | P1 | PK | ME | 230 | 11 | PD | S | BILL 2 | B02 | S2 | 1F | R00 | ACF04 | PD-2 | 230 | 1S | MEP | M1F |
| PP1DP21113C20 |  | PA-P1 ; Final Fix, Fire Fighting system (Parking Area)_PD-2 | 12d | 2012-08-12 | 2012-08-28 | PP1DP09902C20 FF, PP1DP21124C20, PGLS103331C290, PGLS103331C300, PGLS403392C20, PGLS503392C10, PP3DP21113C20 SS | 30.07d | 6d | MECHANICAL [603.6 h]; Cost |  |  | CP3PA21113C0 | PP1DP21113C0 | PA | C | P1 | PK | ME | 211 | 13 | PD | S | BILL 2 | B02 | S2 | FF | R00 | ACF07 | PD-2 | 211 | FF | MEP |  |
| PP1DP23021C20 |  | PA-P1 ; 2nd Fix, CHW / HVAC System (Parking Area)_PD-2 | 30d | 2012-08-21 | 2012-09-25 | PP1DP23011C20 | 18.07d | 0d | MECHANICAL [4182 h]; Cost |  |  | CP3PA23011C0 | PP1DP23021C0 | PA | C | P1 | PK | ME | 230 | 21 | PD | S | BILL 2 | B02 | S2 | 2F | R00 | ACF07 | PD-2 | 230 | 2n | MEP |  |
| PP1DP26012C20 |  | PA-P1 ; 1st Fix, Electrical System (Parking Area)_PD-2 | 18d | 2012-08-21 | 2012-09-11 | PP1DP09901C20, PP1DP23011C20 | 12.07d | 0d | ELECTRICAL [3890.4 h]; Cost |  |  | CP3PA26001C0 | PP1DP26012C0 | PA | C | P1 | PK | ME | 260 | 12 | PD | S | BILL 2 | B02 | S2 | 1F | R00 | ACF04 | PD-2 | 260 | 1S | MEP | M1F |
| PP1DP22011C20 |  | PA-P1 ; Final Fix, Drainage System (Parking Area)_PD-2 | 12d | 2012-09-04 | 2012-09-18 | PP1DP09902C20 FF, PP1DP22025C20, PGLS103331C290, PGLS103331C300, PGLS403392C20, PGLS503392C10, PP3DP21113C20 SS, PP1DP21113C20 | 24.07d | 6d | PLUMBING [1617.6 h]; Cost |  |  | CP3PA22011C0 | PP1DP22011C0 | PA | C | P1 | PK | ME | 220 | 11 | PD | S | BILL 2 | B02 | S2 | FF | R00 | ACF07 | PD-2 | 220 | FF | MEP |  |
| PP1DP26022C20 |  | PA-P1 ; 2nd Fix, Electrical System (Parking Area)_PD-2 | 30d | 2012-09-11 | 2012-10-16 | PP1DP26012C20 | 12.07d | 0d | ELECTRICAL [3890.4 h]; Cost |  |  | CP3PA26005C0 | PP1DP26022C0 | PA | C | P1 | PK | ME | 260 | 22 | PD | S | BILL 2 | B02 | S2 | 2F | R00 | ACF07 | PD-2 | 260 | 2n | MEP |  |
| PP1DP27013C20 |  | PA-P1 ; 1st Fix, ELV system (Parking Area)_PD-2 | 12d | 2012-09-11 | 2012-09-25 | PP1DP09901C20, PP1DP26012C20 | 27.07d | 0d | ELECTRICAL [632.4 h]; Cost |  |  | CP3PA27010C0 | PP1DP27013C0 | PA | C | P1 | PK | ME | 270 | 13 | PD | S | BILL 2 | B02 | S2 | 1F | R00 | ACF04 | PD-2 | 270 | 1S | MEP | M1F |
| PP1DP23019C20 |  | PA-P1 ; Final Fix, CHW / HVAC System (Parking Area)_PD-2 | 12d | 2012-09-25 | 2012-10-09 | PP1DP09902C20 FF, PP1DP23021C20, PGLS103331C290, PGLS103331C300, PGLS403392C20, PGLS503392C10, PP3DP21113C20 SS, PP1DP22011C20 | 18.07d | 6d | MECHANICAL [4182 h]; Cost |  |  | CP3PA23019C0 | PP1DP23019C0 | PA | C | P1 | PK | ME | 230 | 19 | PD | S | BILL 2 | B02 | S2 | FF | R00 | ACF07 | PD-2 | 230 | FF | MEP |  |
| PP1DP27023C20 |  | PA-P1 ; 2nd Fix, ELV system (Parking Area)_PD-2 | 12d | 2012-09-25 | 2012-10-09 | PP1DP27013C20 | 27.07d | 15d | ELECTRICAL [632.4 h]; Cost |  |  | CP3PA27020C0 | PP1DP27023C0 | PA | C | P1 | PK | ME | 270 | 23 | PD | S | BILL 2 | B02 | S2 | 2F | R00 | ACF07 | PD-2 | 270 | 2n | MEP |  |
| PP1DP26017C20 |  | PA-P1 ; Final Fix, Electrical System (Parking Area)_PD-2 | 9d | 2012-10-16 | 2012-10-29 | PP1DP26022C20, PGLS103331C290, PGLS103331C300, PGLS403392C20, PGLS503392C10, PP3DP21113C20 SS, PP1DP23019C20 | 12.07d | 0d | ELECTRICAL [3890.4 h]; Cost |  |  | CP3PA26017C0 | PP1DP26017C0 | PA | C | P1 | PK | ME | 260 | 17 | PD | S | BILL 2 | B02 | S2 | FF | R00 | ACF07 | PD-2 | 260 | FF | MEP |  |
| PP1DP27030C20 |  | PA-P1 ; Final Fix, ELV system (Parking Area)_PD-2 | 9d | 2012-10-29 | 2012-11-08 | PP1DP09902C20 FF, PP1DP27023C20, PP1DP27023C20 FF, PGLS103331C290, PGLS103331C300, PGLS403392C20, PGLS503392C10, PP3DP21113C20 SS, PP1DP26017C20 | 12.07d | 0d | ELECTRICAL [632.4 h]; Cost |  |  | CP3PA27030C0 | PP1DP27030C0 | PA | C | P1 | PK | ME | 270 | 30 | PD | S | BILL 2 | B02 | S2 | FF | R00 | ACF07 | PD-2 | 270 | FF | MEP |  |
| PP1DP09903C20 |  | PA-P1 ; Concrete Sealer (Floor) (Parking Area)_PD-2 | 23d | 2012-11-08 | 2012-12-08 | PP1DP21113C20, PP1DP22011C20, PP1DP23019C20, PP1DP26017C20, PP1DP27030C20, PGLS103331C290, PGLS103331C300, PGLS403392C20, PGLS503392C10, PP3DP21113C20 SS | 12.07d | 0d | ASSORTED FLOOR FINISH [6192 h]; ASSORTED FLOOR FINISH [3438 m2]; Cost |  |  | AP1PK09903C0 | PP1DP09903C0 | PA | C | P1 | PK | FF | 096 | 03 | PD | S | BILL 2 | B02 | S2 | 05 | R00 | ACF06 | PD-2 | CS |  |  |  |
| PP1DP05509C20 |  | PA-P1 ; Grill & Louvers (Parking Area)_PD-2 | 12d | 2012-12-08 | 2012-12-22 | PP1DP09903C20, PGLS103331C290, PGLS103331C300, PGLS403392C20, PGLS503392C10, PP3DP21113C20 SS | 20.2d | 8.12d | SECONDARY STEEL [476 h]; Cost | 328 | 956 | CP3PA09901C0 | PP3AP09901C0 | PA | C | P1 | PK | SW | 055 | 01 | PD | S | BILL 2 | B02 | S2 | 02 | R00 | ACF03 | PD-2 | 056 |  |  |  |
| PP1DP11006C20 |  | PA-P1 ; Wall Protection (WP, CG, WG, FCG) (Parking Area)_PD-2 | 6d | 2012-12-08 | 2012-12-15 | PP1DP09903C20, PGLS103331C290, PGLS103331C300, PGLS403392C20, PGLS503392C10, PP3DP21113C20 SS | 12.07d | 0d | FF&E [119 h]; Cost | 326 | 1001 | CP3PA11001C0 | PP1DP11006C0 | PA | C | P1 | PK | WF | 097 | 06 | PD | S | BILL 2 | B02 | S2 | 03 | R00 | ACF08 | PD-2 | 097 |  |  |  |
| PP1DP11004C20 |  | PA-P1 ; Floor Marking & Signage (Parking Area)_PD-2 | 9d | 2012-12-15 | 2012-12-25 | PP1DP09903C20, PP1DP11006C20, PGLS103331C290, PGLS103331C300, PGLS403392C20, PGLS503392C10, PP3DP21113C20 SS | 12.07d | 0d | SIGNAGES [1432 h]; SIGNAGES [198.75 no]; Cost |  |  | AP1PK11004C0 | PP1DP11004C0 | PA | C | P1 | PK | SA | 110 | 04 | PD | S | BILL 2 | B02 | S2 | 09 | R00 | ACF08 | PD-2 | c |  |  |  |
| PP1DP11009C20 |  | PA-P1 ; FF&E (Parking Area)_PD-2 | 5.12d | 2012-12-25 | 2012-12-31 | PP1DP11004C20, PGLS103331C290, PGLS103331C300, PGLS403392C20, PGLS503392C10, PP3DP21113C20 SS | 12.07d | 0d | FF&E [50 h]; Cost |  |  | AP3PK11004C0 | PP3BP11004C0 | PA | C | P1 | PK | SA | 110 | 04 | PB | S | BILL 2 | B02 | S2 | 01 | R00 | ACF08 | PD-2 | a |  |  |  |

| ID | WBS | Activity | Duration | Start | Finish | Predecessors | Total float | Free float | Resources | Change Order # | NEW ACTIVITY ID | change id | IDDD | CCAD BUILDING(SET) | CCAD PHASE(SET) | CCAD FLOOR(SET) | CCAD ZONE(SET) | CCAD WORK(SET) | CCAD SECTION(SET) | CCAD SERIAL No.(SET) | CCAD Carpark code(SET) | CCAD Carpark district code(set) | CCAD CBS(SET) | CCAD BILL(SET) | CCAD HANDOVER(SET) | CCAD TAG(SET) | CCAD REV(SET) | CCADACF (SET) | FSP CODE | CCAD SSCF | CCAD SUB ZONE MEP(SET) | CCAD CSA | Act Selector % | CCAD MEQ | CCAD DIVISION(SET) |
| --- | --- | --- | --- | --- | --- | --- | --- | --- | --- | --- | --- | --- | --- | --- | --- | --- | --- | --- | --- | --- | --- | --- | --- | --- | --- | --- | --- | --- | --- | --- | --- | --- | --- | --- | --- |
|  | DM2 | **MECHANICAL ROOMS (2 NOS.) :Zone PD-2** |  | 2012-05-26 | 2012-12-23 |  |  |  |  |  |  |  |  |  |  |  |  |  |  |  |  |  |  |  |  |  |  |  |  |  |  |  |  |  |  |
| PP1DM09902C0 |  | PA-P1 ; Wall Prime & 1st coat (Mech RM)_PD-2 | 18d | 2012-05-26 | 2012-06-17 | PGLS403392C0, PGLS503391C0, PGLS503392C0 SS | 19.2d | 0d | WALL PAINT [729 h]; WALL PAINT [910 m2]; Cost | 328 | 1469 | C04ME09901C0 | PP1DM09902C0 | PA | C | P1 | M1 | PA | 099 | 02 | PD | S | BILL 2 | B02 | S2 | 01 | R00 | ACF06 | PD-2 | 099 |  |  |  |  |  |
| PP1DM04001C0 |  | PA-P1 ; Block Wall Works (Mech RM)_PD-2 | 30d | 2012-06-17 | 2012-07-22 | PP1DM09902C0 | 19.2d | 0d | BLOCKWORKS [3399 h]; BLOCKWORKS [971 m2]; Cost |  |  | AP1M104001C0 | PP1DM04001C0 | PA | C | P1 | M1 | BL | 040 | 01 | PD | S | BILL 2 | B02 | S2 | BL | R00 | ACF06 | PD-2 | 040 |  |  |  |  |  |
| PP1DM23003C0 |  | PA-P1 ; 1st Fix, Inst. of Supports for MEP (Mech RM)_PD-2 | 12d | 2012-07-22 | 2012-08-05 | PP1DM04001C0 | 19.2d | 0d | MECHANICAL [625.2 h]; Cost |  |  | C04ME23001C0 | PP1DM23003C0 | PA | C | P1 | M1 | ME | 230 | 03 | PD | S | BILL 2 | B02 | S2 | 1F | R00 | ACF04 | PD-2 | 230 | 1S | MEP | M1F |  |  |
| PP1DM21102C0 |  | PA-P1 ; 1st Fix, Inst of Sprinkler main pipe (Mech RM)_PD-2 | 30d | 2012-08-05 | 2012-09-11 | PP1DM23003C0, PP1DM04001C0 | 37.2d | 0d | MECHANICAL [9823.2 h]; Cost |  |  | C04ME21111C0 | PP1DM21102C0 | PA | C | P1 | M1 | ME | 211 | 02 | PD | S | BILL 2 | B02 | S2 | 1F | R00 | ACF04 | PD-2 | 211 | 1S | MEP | M1F |  |  |
| PP1DM22001C0 |  | PA-P1 ; 1st Fix, Inst of Drainage pipe (Mech RM)_PD-2 | 30d | 2012-08-05 | 2012-09-11 | PP1DM23003C0, PP1DM04001C0 | 25.2d | 0d | PLUMBING [2156.4 h]; Cost |  |  | C04ME22011C0 | PP1DM22001C0 | PA | C | P1 | M1 | ME | 220 | 01 | PD | S | BILL 2 | B02 | S2 | 1F | R00 | ACF04 | PD-2 | 220 | 1S | MEP | M1F |  |  |
| PP1DM22003C0 |  | PA-P1 ; 1st Fix, Inst of Water supply pipe (Mech RM)_PD-2 | 30d | 2012-08-05 | 2012-09-11 | PP1DM23003C0, PP1DM04001C0 | 25.2d | 0d | PLUMBING [6082.8 h]; Cost |  |  | C04ME22006C0 | PP1DM22003C0 | PA | C | P1 | M1 | ME | 220 | 03 | PD | S | BILL 2 | B02 | S2 | 1F | R00 | ACF04 | PD-2 | 220 | 1S | MEP | M1F |  |  |
| PP1DM23001C0 |  | PA-P1 ; 1st Fix, Inst of CHW pipe (Mech RM)_PD-2 | 30d | 2012-08-05 | 2012-09-11 | PP1DM23003C0, PP1DM04001C0 | 37.2d | 0d | MECHANICAL [3097.2 h]; Cost |  |  | C04ME23019C0 | PP1DM23001C0 | PA | C | P1 | M1 | ME | 230 | 01 | PD | S | BILL 2 | B02 | S2 | 1F | R00 | ACF04 | PD-2 | 230 | 1S | MEP | M1F |  |  |
| PP1DM23002C0 |  | PA-P1 ; 1st Fix, Inst of Ducting (Mech RM)_PD-2 | 30d | 2012-08-05 | 2012-09-11 | PP1DM23003C0, PP1DM04001C0 | 19.2d | 0d | MECHANICAL [3948 h]; Cost |  |  | C04ME23005C0 | PP1DM23002C0 | PA | C | P1 | M1 | ME | 230 | 02 | PD | S | BILL 2 | B02 | S2 | 1F | R00 | ACF04 | PD-2 | 230 | 1S | MEP | M1F |  |  |
| PP1DM23004C0 |  | PA-P1 ; 2nd Fix, Inst of Equipment (Mech RM)_PD-2 | 30d | 2012-08-05 | 2012-09-11 | PP1DM22001C0 FF, PP1DM22003C0 FF | 25.2d | 0d | Labor General [1.2 h]; Cost |  |  | C04ME23013C0 | PP1DM23004C0 | PA | C | P1 | M1 | ME | 230 | 04 | PD | S | BILL 2 | B02 | S2 | 2F | R00 | ACF04 | PD-2 | 230 | 2n | MEP |  | M |  |
| PP1DM08102C0 |  | PA-P1 ; Metal Door Frames (Mech RM)_PD-2 | 12d | 2012-09-11 | 2012-09-25 | GNHE08101C0, PP1DM04001C0 SS+14d, PP1DM04001C0, PP1DM23004C0 | 25.2d | 0d | METAL DOORS [70 h]; Cost | 316 | 1465 | C04ME08101C0 | PP1DM08102C0 | PA | C | P1 | M1 | DO | 081 | 02 | PD | S | BILL 2 | B02 | S2 | DF | R00 | ACF06 | PD-2 | 081 |  |  |  |  | 08 |
| PP1DM09601C0 |  | PA-P1 ; Floor Finishes (Mech RM)_PD-2 | 24d | 2012-09-11 | 2012-10-09 | PP1DM04001C0, PGLS103331C290, PGLS103331C300, PGLS403392C20, PGLS503392C10, PP1DM08103C0 FF, PP3DP21113C20 SS | 25.2d | 0d | ASSORTED FLOOR FINISH [3144 h]; ASSORTED FLOOR FINISH [1742 m2]; Cost | 326 | 1501 | C04ME09601C0 | PP1DM09601C0 | PA | C | P1 | M1 | FF | 096 | 01 | PD | S | BILL 2 | B02 | S2 | 01 | R00 | ACF06 | PD-2 | FF |  |  |  |  |  |
| PP1DM21101C0 |  | PA-P1 ; 1st Fix, Inst of Sprinkler branch pipe (Mech RM)_PD-2 | 30d | 2012-09-11 | 2012-10-16 | PP1DM21102C0, PP1DM04001C0 | 37.2d | 0d | MECHANICAL [8076 h]; Cost |  |  | C04ME21119C0 | PP1DM21101C0 | PA | C | P1 | M1 | ME | 211 | 01 | PD | S | BILL 2 | B02 | S2 | 1F | R00 | ACF04 | PD-2 | 211 | 1S | MEP | M1F |  |  |
| PP1DM21105C0 |  | PA-P1 ; 2nd Fix, Inst of Zone Control Valve (Mech RM)_PD-2 | 30d | 2012-09-11 | 2012-10-16 | PP1DM23001C0, PP1DM23004C0 | 55.2d | 18d | MECHANICAL [735.6 h]; Cost |  |  | C04ME21117C0 | PP1DM21105C0 | PA | C | P1 | M1 | ME | 211 | 05 | PD | S | BILL 2 | B02 | S2 | 2F | R00 | ACF07 | PD-2 | 211 | 2n | MEP |  |  |  |
| PP1DM23005C0 |  | PA-P1 ; 2nd Fix, Inst of Equipment (FCU,FAN,PUMP) (Mech RM)_PD-2 | 30d | 2012-09-11 | 2012-10-16 | PP1DM23004C0 | 55.2d | 0d | MECHANICAL [2184 h]; Cost |  |  | C04ME23011C0 | PP1DM23005C0 | PA | C | P1 | M1 | ME | 230 | 05 | PD | S | BILL 2 | B02 | S2 | 2F | R00 | ACF04 | PD-2 | 230 | 2n | MEP |  | H |  |
| PP1DM23006C0 |  | PA-P1 ; 2nd Fix, Inst of VAV'S CHW connection (Mech RM)_PD-2 | 30d | 2012-09-11 | 2012-10-16 | PP1DM23005C0 FF | 55.2d | 0d | MECHANICAL [50.4 h]; Cost |  |  | C04ME23009C0 | PP1DM23006C0 | PA | C | P1 | M1 | ME | 230 | 06 | PD | S | BILL 2 | B02 | S2 | 2F | R00 | ACF07 | PD-2 | 230 | 2n | MEP |  |  |  |
| PP1DM23007C0 |  | PA-P1 ; 2nd Fix, Inst of VCD's/FD's (Mech RM)_PD-2 | 30d | 2012-09-11 | 2012-10-16 | PP1DM23002C0 | 37.2d | 0d | MECHANICAL [1168.8 h]; Cost |  |  | C04ME23015C0 | PP1DM23007C0 | PA | C | P1 | M1 | ME | 230 | 07 | PD | S | BILL 2 | B02 | S2 | 2F | R00 | ACF07 | PD-2 | 230 | 2n | MEP |  |  |  |
| PP1DM23008C0 |  | PA-P1 ; 2nd Fix, Insulation of CHW pipe & Duct (Mech RM)_PD-2 | 30d | 2012-09-11 | 2012-10-16 | PP1DM23001C0, PP1DM23002C0 | 37.2d | 0d | MECHANICAL [3702 h]; Cost |  |  | C04ME23017C0 | PP1DM23008C0 | PA | C | P1 | M1 | ME | 230 | 08 | PD | S | BILL 2 | B02 | S2 | 2F | R00 | ACF07 | PD-2 | 230 | 2n | MEP |  |  |  |
| PP1DM26001C0 |  | PA-P1 ; 1st Fix, Inst of Cable Tray (Mech RM)_PD-2 | 30d | 2012-09-11 | 2012-10-16 | PP1DM04001C0, PP1DM23002C0 | 19.2d | 0d | ELECTRICAL [63.6 h]; Cost |  |  | C04ME26011C0 | PP1DM26001C0 | PA | C | P1 | M1 | ME | 260 | 01 | PD | S | BILL 2 | B02 | S2 | 1F | R00 | ACF04 | PD-2 | 260 | 1S | MEP | M1F |  |  |
| PP1DM26002C0 |  | PA-P1 ; 1st Fix, Inst of Trunking/Conduiting (Mech RM)_PD-2 | 30d | 2012-09-11 | 2012-10-16 | PP1DM23003C0, PP1DM04001C0, PP1DM23002C0 | 37.2d | 18d | ELECTRICAL [192 h]; Cost |  |  | C04ME26001C0 | PP1DM26002C0 | PA | C | P1 | M1 | ME | 260 | 02 | PD | S | BILL 2 | B02 | S2 | 1F | R00 | ACF04 | PD-2 | 260 | 1S | MEP | M1F |  |  |
| PP1DM26004C0 |  | PA-P1 ; 2nd Fix, Inst of Equipment (DB, TR, SG) (Mech RM)_PD-2 | 30d | 2012-09-11 | 2012-10-16 | PP1DM23004C0 | 55.2d | 18d | ELECTRICAL [1192.8 h]; Cost |  |  | C04ME26009C0 | PP1DM26004C0 | PA | C | P1 | M1 | ME | 260 | 04 | PD | S | BILL 2 | B02 | S2 | 2F | R00 | ACF04 | PD-2 | 260 | 2n | MEP |  | E |  |
| PP1DM27001C0 |  | PA-P1 ; 1st Fix, Inst of Trunking for ELV system (Mech RM)_PD-2 | 30d | 2012-09-11 | 2012-10-16 | PP1DM23002C0 SS, PP1DM04001C0, PP1DM23002C0 | 19.2d | 0d | ELECTRICAL [535.2 h]; Cost |  |  | C04ME27010C0 | PP1DM27001C0 | PA | C | P1 | M1 | ME | 270 | 01 | PD | S | BILL 2 | B02 | S2 | 1F | R00 | ACF04 | PD-2 | 270 | 1S | MEP | M1F |  |  |
| PP1DM27003C0 |  | PA-P1 ; 2nd Fix, Inst of ELV Equipment (Panels) (Mech RM)_PD-2 | 30d | 2012-09-11 | 2012-10-16 | PP1DM23004C0 | 55.2d | 0d | ELECTRICAL [183.6 h]; Cost |  |  | C04ME27020C0 | PP1DM27003C0 | PA | C | P1 | M1 | ME | 270 | 03 | PD | S | BILL 2 | B02 | S2 | 2F | R00 | ACF04 | PD-2 | 270 | 2n | MEP |  | E |  |
| PP1DM08103C0 |  | PA-P1 ; Metal Doors (Mech RM)_PD-2 | 12d | 2012-09-25 | 2012-10-09 | PP1DM08102C0, PGLS103331C290, PGLS103331C300, PGLS403392C20, PGLS503392C10, PP3DP21113C20 SS | 25.2d | 0d | METAL DOORS [60 h]; METAL DOORS [6 no]; Cost | 317 | 1466 | C04ME08105C0 | PP1DM08103C0 | PA | C | P1 | M1 | DO | 081 | 03 | PD | S | BILL 2 | B02 | S2 | DR | R00 | ACF06 | PD-2 | 081 |  |  |  |  | 08 |
| PP1DM08101C0 |  | PA-P1 ; Al / Glass doors (Mech RM)_PD-2 | 19d | 2012-10-09 | 2012-11-03 | PP1DM08103C0, PGLS103331C290, PGLS103331C300, PGLS403392C20, PGLS503392C10, PP3DP21113C20 SS | 44.2d | 0d | ASSORTED DOORS [100 h]; ASSORTED DOORS [10 no]; Cost |  |  | C04ME08109C0 | PP1DM08101C0 | PA | C | P1 | M1 | DO | 081 | 01 | PD | S | BILL 2 | B02 | S2 | 03 | R00 | ACF06 | PD-2 | 081 |  |  |  |  |  |
| PP1DM21106C0 |  | PA-P1 ; Final Fix, Inst of Fire Extinguishers/FHC (Mech RM)_PD-2 | 18d | 2012-10-09 | 2012-11-01 | PP1DM09601C0, PGLS103331C290, PGLS103331C300, PGLS403392C20, PGLS503392C10, PP3DP21113C20 SS | 25.2d | 0d | MECHANICAL [2016 h]; Cost |  |  | C04ME21123C0 | PP1DM21106C0 | PA | C | P1 | M1 | ME | 211 | 06 | PD | S | BILL 2 | B02 | S2 | FF | R00 | ACF07 | PD-2 | 211 | FF | MEP |  |  |  |
| PP1DM22004C0 |  | PA-P1 ; Final Fix, Inst of All drain (Mech RM)_PD-2 | 18d | 2012-10-09 | 2012-11-01 | PP1DM09601C0, PGLS103331C290, PGLS103331C300, PGLS403392C20, PGLS503392C10, PP3DP21113C20 SS | 61.2d | 49.12d | PLUMBING [2156.4 h]; Cost |  |  | C04ME22003C0 | PP1DM22004C0 | PA | C | P1 | M1 | ME | 220 | 04 | PD | S | BILL 2 | B02 | S2 | FF | R00 | ACF07 | PD-2 | 220 | FF | MEP |  |  |  |
| PP1DM21104C0 |  | PA-P1 ; 2nd Fix, Inst of Sprinkler droppers (Mech RM)_PD-2 | 18d | 2012-10-16 | 2012-11-08 | PP1DM21101C0 | 37.2d | 0d | MECHANICAL [3199.2 h]; Cost |  |  | C04ME21115C0 | PP1DM21104C0 | PA | C | P1 | M1 | ME | 211 | 04 | PD | S | BILL 2 | B02 | S2 | 2F | R00 | ACF07 | PD-2 | 211 | 2n | MEP |  |  |  |
| PP1DM23009C0 |  | PA-P1 ; 2nd Fix, Inst of Flexible Duct & Plenum boxes (Mech RM)_PD-2 | 18d | 2012-10-16 | 2012-11-08 | PP1DM23007C0, PP1DM23008C0, PGLS103331C290, PGLS103331C300, PGLS403392C20, PGLS503392C10 | 37.2d | 0d | MECHANICAL [33.6 h]; Cost |  |  | C04ME23023C0 | PP1DM23009C0 | PA | C | P1 | M1 | ME | 230 | 09 | PD | S | BILL 2 | B02 | S2 | FF | R00 | ACF07 | PD-2 | 230 | FF | MEP |  |  |  |
| PP1DM26003C0 |  | PA-P1 ; 2nd Fix, Cable Pulling (Mech RM)_PD-2 | 18d | 2012-10-16 | 2012-11-08 | PP1DM26001C0 | 19.2d | 0d | ELECTRICAL [4096.8 h]; Cost |  |  | C04ME26007C0 | PP1DM26003C0 | PA | C | P1 | M1 | ME | 260 | 03 | PD | S | BILL 2 | B02 | S2 | 2F | R00 | ACF07 | PD-2 | 260 | 2n | MEP |  |  |  |
| PP1DM27002C0 |  | PA-P1 ; 1st Fix, Wiring/ Cabling work (Mech RM)_PD-2 | 18d | 2012-10-16 | 2012-11-08 | PP1DM26001C0 SS, PP1DM26002C0 SS, PP1DM27001C0 SS, PP1DM04001C0, PP1DM27001C0 | 19.2d | 0d | ELECTRICAL [76.8 h]; Cost |  |  | C04ME27001C0 | PP1DM27002C0 | PA | C | P1 | M1 | ME | 270 | 02 | PD | S | BILL 2 | B02 | S2 | 1F | R00 | ACF04 | PD-2 | 270 | 1S | MEP | M1F |  |  |
| PP1DM27005C0 |  | PA-P1 ; Final Fix, Inst of ELV device (Detector/Speaker) (Mech RM)_PD-2 | 18d | 2012-10-16 | 2012-11-08 | PP1DM09902C0, PP1DM23006C0, PP1DM27003C0, PGLS103331C290, PGLS103331C300, PGLS403392C20, PGLS503392C10, PP3DP21113C20 SS | 55.2d | 43.12d | ELECTRICAL [78 h]; Cost |  |  | C04ME27030C0 | PP1DM27005C0 | PA | C | P1 | M1 | ME | 270 | 05 | PD | S | BILL 2 | B02 | S2 | FF | R00 | ACF07 | PD-2 | 270 | FF | MEP |  |  |  |
| PP1DM26006C0 |  | PA-P1 ; Final Fix, Inst of Ceiling rose (Mech RM)_PD-2 | 18d | 2012-11-01 | 2012-11-24 | PP1DM21106C0, PGLS103331C290, PGLS103331C300, PGLS403392C20, PGLS503392C10, PP3DP21113C20 SS | 25.2d | 0d | ELECTRICAL [25.2 h]; Cost |  |  | C04ME26015C0 | PP1DM26006C0 | PA | C | P1 | M1 | ME | 260 | 06 | PD | S | BILL 2 | B02 | S2 | FF | R00 | ACF07 | PD-2 | 260 | FF | MEP |  |  |  |
| PP1DM08701C0 |  | PA-P1 ; Ironmongery (Mech RM)_PD-2 | 16d | 2012-11-03 | 2012-11-22 | PP1DM08101C0, PP1DM08103C0, PGLS103331C290, PGLS103331C300, PGLS403392C20, PGLS503392C10, PP3DP21113C20 SS | 44.2d | 32.12d | IRONMONGERY [60 h]; IRONMONGERY [6 no]; Cost | 322 | 1467 | C04ME08709C0 | PP1DM08701C0 | PA | C | P1 | M1 | DO | 087 | 01 | PD | S | BILL 2 | B02 | S2 | IM | R00 | ACF06 | PD-2 | 087 |  |  |  |  | 08 |
| PP1DM21107C0 |  | PA-P1 ; Final Fix, Inst of Sprinklers head (Mech RM)_PD-2 | 18d | 2012-11-08 | 2012-12-01 | PP1DM21104C0, PGLS103331C290, PGLS103331C300, PGLS403392C20, PGLS503392C10, PP1DM23010C0 FF, PP3DP21113C20 SS | 37.2d | 25.12d | MECHANICAL [1396.8 h]; Cost |  |  | C04ME21121C0 | PP1DM21107C0 | PA | C | P1 | M1 | ME | 211 | 07 | PD | S | BILL 2 | B02 | S2 | FF | R00 | ACF07 | PD-2 | 211 | FF | MEP |  |  |  |
| PP1DM23010C0 |  | PA-P1 ; Final Fix, Inst of Grilles & Diffusers (Mech RM)_PD-2 | 18d | 2012-11-08 | 2012-12-01 | PP1DM23009C0, PGLS103331C290, PGLS103331C300, PGLS403392C20, PGLS503392C10, PP3DP21113C20 SS | 37.2d | 0d | MECHANICAL [495.6 h]; Cost |  |  | C04ME23021C0 | PP1DM23010C0 | PA | C | P1 | M1 | ME | 230 | 10 | PD | S | BILL 2 | B02 | S2 | FF | R00 | ACF07 | PD-2 | 230 | FF | MEP |  |  |  |
| PP1DM26005C0 |  | PA-P1 ; 2nd Fix, Wiring for Power/Lighting/Emergency (Mech RM)_PD-2 | 18d | 2012-11-08 | 2012-12-01 | PP1DM26001C0, PP1DM26002C0, PP1DM26003C0, PP1DM27001C0, PP1DM27002C0 | 19.2d | 0d | ELECTRICAL [76.8 h]; Cost |  |  | C04ME26005C0 | PP1DM26005C0 | PA | C | P1 | M1 | ME | 260 | 05 | PD | S | BILL 2 | B02 | S2 | 2F | R00 | ACF07 | PD-2 | 260 | 2n | MEP |  |  |  |
| PP1DM27004C0 |  | PA-P1 ; Final Fix, BMS connection work to Equipment (Mech RM)_PD-2 | 18d | 2012-11-08 | 2012-12-01 | PP1DM21105C0, PP1DM23004C0, PP1DM23005C0, PP1DM23007C0, PP1DM26004C0, PP1DM27002C0, PP1DM27003C0, PGLS103331C290, PGLS103331C300, PGLS403392C20, PGLS503392C10, PP3DP21113C20 SS | 37.2d | 25.12d | ELECTRICAL [2335.2 h]; Cost |  |  | C04ME27003C0 | PP1DM27004C0 | PA | C | P1 | M1 | ME | 270 | 04 | PD | S | BILL 2 | B02 | S2 | FF | R00 | ACF07 | PD-2 | 270 | FF | MEP |  |  |  |
| PP1DM09901C0 |  | PA-P1 ; Wall - final Paint (Mech RM)_PD-2 | 13d | 2012-11-24 | 2012-12-10 | PP1DM09902C0, PGLS103331C290, PGLS103331C300, PGLS403392C20, PGLS503392C10, PP1DM26006C0, PP3DP21113C20 SS | 30.2d | 18.12d | WALL PAINT [393 h]; WALL PAINT [490 m2]; Cost | 329 | 1470 | C04ME09903C0 | PP1DM09901C0 | PA | C | P1 | M1 | PA | 099 | 01 | PD | S | BILL 2 | B02 | S2 | 02 | R00 | ACF06 | PD-2 | 099 |  |  |  |  |  |
| PP1DM26007C0 |  | PA-P1 ; Final Fix, Inst of Light fittings (Mech RM)_PD-2 | 18d | 2012-11-24 | 2012-12-16 | PP1DM09902C0, PGLS103331C290, PGLS103331C300, PGLS403392C20, PGLS503392C10, PP1DM26006C0, PP3DP21113C20 SS | 25.2d | 13.12d | ELECTRICAL [3124.8 h]; Cost |  |  | C04ME26019C0 | PP1DM26007C0 | PA | C | P1 | M1 | ME | 260 | 07 | PD | S | BILL 2 | B02 | S2 | FF | R00 | ACF07 | PD-2 | 260 | FF | MEP |  |  |  |
| PP1DM26008C0 |  | PA-P1 ; Final Fix, Inst of Switch/Sockets (Mech RM)_PD-2 | 18d | 2012-11-24 | 2012-12-16 | PP1DM09902C0, PGLS103331C290, PGLS103331C300, PGLS403392C20, PGLS503392C10, PP1DM26006C0, PP3DP21113C20 SS | 25.2d | 13.12d | ELECTRICAL [124.8 h]; Cost |  |  | C04ME26017C0 | PP1DM26008C0 | PA | C | P1 | M1 | ME | 260 | 08 | PD | S | BILL 2 | B02 | S2 | FF | R00 | ACF07 | PD-2 | 260 | FF | MEP |  |  |  |
| PP1DM26009C0 |  | PA-P1 ; Final Fix, Termination & Gladding of Cables (Mech RM)_PD-2 | 18d | 2012-12-01 | 2012-12-23 | PP1DM26005C0, PGLS103331C290, PGLS103331C300, PGLS403392C20, PGLS503392C10, PP3DP21113C20 SS | 19.2d | 7.12d | ELECTRICAL [512.4 h]; Cost |  |  | C04ME26013C0 | PP1DM26009C0 | PA | C | P1 | M1 | ME | 260 | 09 | PD | S | BILL 2 | B02 | S2 | FF | R00 | ACF07 | PD-2 | 260 | FF | MEP |  |  |  |

| ID | WBS | Activity | Duration | Start | Finish | Predecessors | Complete | Remaining | Planned start | Planned finish | Total float | Free float | Resources | Cost | Actual cost | change id | IDDD | July2011 Target% Complete | Claimed This Month | P_811 | P_711 | CCAD BUILDING(SET) | CCAD PHASE(SET) | CCAD FLOOR(SET) | CCAD ZONE(SET) | CCAD WORK(SET) | CCAD SECTION(SET) | CCAD SERIAL No.(SET) | CCAD SUB ZONE MEP(SET) | CCAD Carpark code(SET) | CCAD Carpark district code(set) | CCAD CBS(SET) | CCAD BILL(SET) | CCAD HANDOVER(SET) | CCAD TAG(SET) | CCAD REV(SET) | CCADACF (SET) | FSP CODE | CCAD CSA | CCAD SSCF | Act Selector % | user_number8 | user_integer1 | user_integer2 | user_number7 | Change Order # | NEW ACTIVITY ID |
| --- | --- | --- | --- | --- | --- | --- | --- | --- | --- | --- | --- | --- | --- | --- | --- | --- | --- | --- | --- | --- | --- | --- | --- | --- | --- | --- | --- | --- | --- | --- | --- | --- | --- | --- | --- | --- | --- | --- | --- | --- | --- | --- | --- | --- | --- | --- | --- |
|  | EP1 | **PARKING AREA :Zone PE-1** |  | 2011-06-14 | 2012-08-29 |  |  |  |  |  |  |  |  |  |  |  |  |  |  |  |  |  |  |  |  |  |  |  |  |  |  |  |  |  |  |  |  |  |  |  |  |  |  |  |  |  |  |
| PP1EP21114C10 |  | PA-P1 ; 1st Fix, Fire Fighting system (Parking Area)_PE-1 | 12d | 2011-06-14 A | 2011-08-30 A | PGLS103391C30, PP1EP09901C10 | 100% |  | 2011-07-07 | 2011-07-20 |  |  | MECHANICAL [241.2 h]; Cost [14636.1 AED] | 14,636.14 | 14,636.14 | CP3PA21109C0 | PP1EP21114C0 | 80 | 5348.05 | 100 | 80 | PA | C | P1 | PK | ME | 211 | 14 | 1S | PE | S | BILL 2 | B02 | S2 | 1F | R00 | ACF04 | PE-1 | MEP | 211 | M1F |  |  |  |  |  |  |
| PP1EP21124C10 |  | PA-P1 ; 2nd Fix, Fire Fighting system (Parking Area)_PE-1 | 8d | 2011-06-21 A | 2011-09-29 A | PP1EP21114C10 | 100% |  | 2011-07-21 | 2011-07-30 |  |  | MECHANICAL [241.2 h]; Cost [14636.1 AED] | 14,636.14 | 14,636.14 | CP3PA21115C0 | PP1EP21124C0 | 80 | 5348.05 | 90 | 35 | PA | C | P1 | PK | ME | 211 | 24 | 2n | PE | S | BILL 2 | B02 | S2 | 2F | R00 | ACF07 | PE-1 | MEP | 211 |  |  |  |  |  |  |  |
| PP1EP26012C10 |  | PA-P1 ; 1st Fix, Electrical System (Parking Area)_PE-1 | 16.88d | 2011-06-22 A | 2011-10-24 | PP1EP21114C10 SS+14d, PP1EP09901C10 | 90% | 1.69d | 2011-07-24 | 2011-08-11 | 251.81d | 0d | ELECTRICAL [1556.4 h]; Cost [92758.2 AED] | 92,758.18 | 83,482.36 | CP3PA26001C0 | PP1EP26012C0 | 35 | 24639.53 | 60 | 35 | PA | C | P1 | PK | ME | 260 | 12 | 1S | PE | S | BILL 2 | B02 | S2 | 1F | R00 | ACF04 | PE-1 | MEP | 260 | M1F |  |  |  |  |  |  |
| PP1EP27013C10 |  | PA-P1 ; 1st Fix, ELV system (Parking Area)_PE-1 | 12d | 2011-06-23 A | 2011-08-30 A | PP1EP26012C10 SS+14d, PP1EP09901C10 | 100% |  | 2011-08-09 | 2011-08-22 |  |  | ELECTRICAL [253.2 h]; Cost [14034.6 AED] | 14,034.62 | 14,034.62 | CP3PA27010C0 | PP1EP27013C0 | 35 | 4015.74 | 100 | 35 | PA | C | P1 | PK | ME | 270 | 13 | 1S | PE | S | BILL 2 | B02 | S2 | 1F | R00 | ACF04 | PE-1 | MEP | 270 | M1F |  |  |  |  |  |  |
| PP1EP26022C10 |  | PA-P1 ; 2nd Fix, Electrical System (Parking Area)_PE-1 | 8.85d | 2011-06-25 A | 2011-10-25 | PP1EP26012C10 | 85% | 1.33d | 2011-08-13 | 2011-08-22 | 273.29d | 209.21d | ELECTRICAL [1556.4 h]; Cost [92758.2 AED] | 92,758.18 | 78,844.45 | CP3PA26005C0 | PP1EP26022C0 | 35 | 24639.53 | 60 | 35 | PA | C | P1 | PK | ME | 260 | 22 | 2n | PE | S | BILL 2 | B02 | S2 | 2F | R00 | ACF07 | PE-1 | MEP | 260 |  | 0 | 0 | 0 | 0 |  |  |
| PP1EP22015C10 |  | PA-P1 ; 1st Fix, Plumbing / Drainage System (Parking Area)_PE-1 | 7.72d | 2011-06-27 A | 2011-08-30 A | PP1EP21114C10 SS+14d, PP1EP26012C10, PP1EP09901C10 | 100% |  | 2011-08-13 | 2011-08-21 |  |  | PLUMBING [646.8 h]; Cost [39247.8 AED] | 39,247.83 | 39,247.83 | CP3PA22001C0 | PP1EP22015C0 | 45 | 4097.22 | 100 | 45 | PA | C | P1 | PK | ME | 220 | 15 | 1S | PE | S | BILL 2 | B02 | S2 | 1F | R00 | ACF04 | PE-1 | MEP | 220 | M1F |  |  |  |  |  |  |
| PP1EP22025C10 |  | PA-P1 ; 2nd Fix, Plumbing / Drainage System (Parking Area)_PE-1 | 13d | 2011-06-28 A | 2011-09-29 A | PP1EP22015C10 | 100% |  | 2011-08-21 | 2011-09-07 |  |  | PLUMBING [646.8 h]; Cost [39247.8 AED] | 39,247.83 | 39,247.83 | CP3PA22011C0 | PP1EP22025C0 | 35 | 4097.22 | 90 | 35 | PA | C | P1 | PK | ME | 220 | 25 | 2n | PE | S | BILL 2 | B02 | S2 | 2F | R00 | ACF07 | PE-1 | MEP | 220 |  |  |  |  |  |  |  |
| PP1EP11006C10 |  | PA-P1 ; Wall Protection (WP, CG, WG, FCG) (Parking Area)_PE-1 | 4d | 2011-08-10 A | 2012-08-21 | PP1EP09903C10, PGLS103331C260, PP3DP23021C10 | 95% | 0.2d | 2012-03-13 | 2012-03-18 | 64.88d | 0d | FF&E [96 h]; Cost |  |  | CP3PA11001C0 | PP1EP11006C0 |  |  | 85 | 0 | PA | C | P1 | PK | WF | 097 | 06 |  | PE | S | BILL 2 | B02 | S2 | 03 | R00 | ACF08 | PE-1 |  | 097 |  |  |  |  |  | 326 | 1001 |
| PP1EP22011C10 |  | PA-P1 ; Final Fix, Drainage System (Parking Area)_PE-1 | 12d | 2011-08-10 A | 2012-06-20 | PP1EP09902C10, PP1EP22025C10, PGLS103331C260, PP3DP23021C10, PP1EP21113C10 | 10% | 10.8d | 2012-02-16 | 2012-03-01 | 64.08d | 0d | PLUMBING [646.8 h]; Cost [39247.8 AED] | 39,247.83 | 3,924.78 | CP3PA22011C0 | PP1EP22011C0 |  |  | 10 | 0 | PA | C | P1 | PK | ME | 220 | 11 | FF | PE | S | BILL 2 | B02 | S2 | FF | R00 | ACF07 | PE-1 | MEP | 220 |  |  |  |  |  |  |  |
| PP1EP23011C10 |  | PA-P1 ; 1st Fix, CHW / HVAC System (Parking Area)_PE-1 | 8.86d | 2011-08-10 A | 2011-09-29 A | PP1EP22015C10 SS+14d, PP1EP09901C10 | 100% |  | 2012-01-02 | 2012-01-11 |  |  | MECHANICAL [1672.8 h]; Cost [101523 AED] | 101,522.74 | 101,522.74 | CP3PA23001C0 | PP1EP23011C0 |  |  | 80 | 0 | PA | C | P1 | PK | ME | 230 | 11 | 1S | PE | S | BILL 2 | B02 | S2 | 1F | R00 | ACF04 | PE-1 | MEP | 230 | M1F |  |  |  |  |  |  |
| PP1EP23021C10 |  | PA-P1 ; 2nd Fix, CHW / HVAC System (Parking Area)_PE-1 | 5.94d | 2011-08-10 A | 2011-10-25 | PP1EP23011C10 | 80% | 1.19d | 2012-01-12 | 2012-01-18 | 261.43d | 197.35d | MECHANICAL [1672.8 h]; Cost [101523 AED] | 101,522.74 | 81,218.2 | CP3PA23011C0 | PP1EP23021C0 |  |  | 50 | 0 | PA | C | P1 | PK | ME | 230 | 21 | 2n | PE | S | BILL 2 | B02 | S2 | 2F | R00 | ACF07 | PE-1 | MEP | 230 |  | 0 | 0 | 0 | 0 |  |  |
| PP1EP27023C10 |  | PA-P1 ; 2nd Fix, ELV system (Parking Area)_PE-1 | 9d | 2011-08-10 A | 2011-10-24 | PP1EP27013C10 | 85% | 1.35d | 2011-08-10 | 2011-08-20 | 286.95d | 222.88d | ELECTRICAL [253.2 h]; Cost [14034.6 AED] | 14,034.62 | 11,929.43 | CP3PA27020C0 | PP1EP27023C0 |  |  | 80 | 0 | PA | C | P1 | PK | ME | 270 | 23 | 2n | PE | S | BILL 2 | B02 | S2 | 2F | R00 | ACF07 | PE-1 | MEP | 270 |  | 0 | 0 | 0 | 0 |  |  |
| PP1EP09901C10 |  | PA-P1 ; Prime & 1st coat (Wall & Ceiling) (Parking Area)_PE-1 | 18d | 2011-10-01 | 2011-10-22 | PGLS103391C40, PGLS103391C10 |  |  |  |  | 227.5d | 0d | CEILING PAINT [2948 h]; WALL PAINT [638 h]; CEILING PAINT [3679.8 m2]; WALL PAINT [794.7 m2]; Cost |  |  | CP3PA09901C0 | PP1EP09901C0 |  |  |  |  | PA | C | P1 | PK | PA | 099 | 01 |  | PE | S | BILL 2 | B02 | S2 | 01 | R00 | ACF06 | PE-1 |  | 099 |  |  |  |  |  | 328 | 956 |
| PP1EP09902C10 |  | PA-P1 ; 2nd coat (Wall & Ceiling) (Parking Area)_PE-1 | 14d | 2012-05-08 | 2012-05-24 | PP1EP09901C10, PP1DP09902C10 SS, PP3DP23021C10 |  |  |  |  | 64.08d | 0d | CEILING PAINT [1588 h]; WALL PAINT [343 h]; CEILING PAINT [1981.5 m2]; WALL PAINT [427.8 m2]; Cost |  |  | CP3PA09903C0 | PP1EP09902C0 |  |  |  |  | PA | C | P1 | PK | PA | 099 | 02 |  | PE | S | BILL 2 | B02 | S2 | 02 | R00 | ACF06 | PE-1 |  | 099 |  |  |  |  |  | 329 | 957 |
| PP1EP21113C10 |  | PA-P1 ; Final Fix, Fire Fighting system (Parking Area)_PE-1 | 12d | 2012-05-24 | 2012-06-07 | PP1EP09902C10, PP1EP21124C10, PGLS103331C260, PP3DP23021C10 |  |  |  |  | 64.08d | 0d | MECHANICAL [241.2 h]; Cost |  |  | CP3PA21113C0 | PP1EP21113C0 |  |  |  |  | PA | C | P1 | PK | ME | 211 | 13 | FF | PE | S | BILL 2 | B02 | S2 | FF | R00 | ACF07 | PE-1 | MEP | 211 |  |  |  |  |  |  |  |
| PP1EP23019C10 |  | PA-P1 ; Final Fix, CHW / HVAC System (Parking Area)_PE-1 | 12d | 2012-06-20 | 2012-07-04 | PP1EP09902C10, PP1EP23021C10, PGLS103331C260, PP3DP23021C10, PP1EP22011C10 |  |  |  |  | 64.08d | 0d | MECHANICAL [1672.8 h]; Cost |  |  | CP3PA23019C0 | PP1EP23019C0 |  |  |  |  | PA | C | P1 | PK | ME | 230 | 19 | FF | PE | S | BILL 2 | B02 | S2 | FF | R00 | ACF07 | PE-1 | MEP | 230 |  |  |  |  |  |  |  |
| PP1EP26017C10 |  | PA-P1 ; Final Fix, Electrical System (Parking Area)_PE-1 | 12d | 2012-07-04 | 2012-07-18 | PP1EP09902C10, PP1EP26022C10, PGLS103331C260, PP3DP23021C10, PP1EP23019C10 |  |  |  |  | 64.08d | 0d | ELECTRICAL [1556.4 h]; Cost |  |  | CP3PA26017C0 | PP1EP26017C0 |  |  |  |  | PA | C | P1 | PK | ME | 260 | 17 | FF | PE | S | BILL 2 | B02 | S2 | FF | R00 | ACF07 | PE-1 | MEP | 260 |  |  |  |  |  |  |  |
| PP1EP27030C10 |  | PA-P1 ; Final Fix, ELV system (Parking Area)_PE-1 | 12d | 2012-07-18 | 2012-08-01 | PP1EP09902C10, PP1EP27023C10, PP1EP27023C10 FF, PGLS103331C260, PP3DP23021C10, PP1EP26017C10 |  |  |  |  | 64.08d | 0d | ELECTRICAL [253.2 h]; Cost |  |  | CP3PA27030C0 | PP1EP27030C0 |  |  |  |  | PA | C | P1 | PK | ME | 270 | 30 | FF | PE | S | BILL 2 | B02 | S2 | FF | R00 | ACF07 | PE-1 | MEP | 270 |  |  |  |  |  |  |  |
| PP1EP09903C10 |  | PA-P1 ; Concrete Sealer (Floor) (Parking Area)_PE-1 | 14d | 2012-08-01 | 2012-08-18 | PP1EP21113C10, PP1EP22011C10, PP1EP23019C10, PP1EP26017C10, PP1EP27030C10, PGLS103331C260, PP3DP23021C10 |  |  |  |  | 64.08d | 0d | ASSORTED FLOOR FINISH [4952 h]; ASSORTED FLOOR FINISH [2750.7 m2]; Cost |  |  | AP1PK09903C0 | PP1EP09903C0 |  |  |  |  | PA | C | P1 | PK | FF | 096 | 03 |  | PE | S | BILL 2 | B02 | S2 | 05 | R00 | ACF06 | PE-1 |  | CS |  |  |  |  |  |  |  |
| PP1EP05509C10 |  | PA-P1 ; Grill & Louvers (Parking Area)_PE-1 | 8d | 2012-08-18 | 2012-08-29 | PP1EP09903C10, PGLS103331C260, PP3DP23021C10 |  |  |  |  | 64.08d | 56.08d | SECONDARY STEEL [381 h]; Cost |  |  | CP3PA09901C0 | PP3AP09901C0 |  |  |  |  | PA | C | P1 | PK | SW | 055 | 01 |  | PE | S | BILL 2 | B02 | S2 | 02 | R00 | ACF03 | PE-1 |  | 056 |  |  |  |  |  | 328 | 956 |
| PP1EP11004C10 |  | PA-P1 ; Floor Marking & Signage (Parking Area)_PE-1 | 7d | 2012-08-21 | 2012-08-29 | PP1EP09903C10, PP1EP11006C10, PGLS103331C260, PP3DP23021C10 |  |  |  |  | 64.88d | 56.88d | SIGNAGES [1145 h]; SIGNAGES [159.3 no]; Cost |  |  | AP1PK11004C0 | PP1EP11004C0 |  |  |  |  | PA | C | P1 | PK | SA | 110 | 04 |  | PE | S | BILL 2 | B02 | S2 | 09 | R00 | ACF08 | PE-1 |  | c |  |  |  |  |  |  |  |
|  | EP2 | **PARKING AREA :Zone PE-2** |  | 2011-10-01 | 2012-11-08 |  |  |  |  |  |  |  |  |  |  |  |  |  |  |  |  |  |  |  |  |  |  |  |  |  |  |  |  |  |  |  |  |  |  |  |  |  |  |  |  |  |  |
| PP1EP09901C20 |  | PA-P1 ; Prime & 1st coat (Wall & Ceiling) (Parking Area)_PE-2 | 18d | 2011-10-01 | 2011-10-20 | PGLS203392C0 SS, PGLS103391C60 SS, PP2EP09901C20 SS |  |  |  |  | 215d | 60d | CEILING PAINT [3440 h]; WALL PAINT [744 h]; CEILING PAINT [4293.1 m2]; WALL PAINT [927.15 m2]; Cost |  |  | CP3PA09901C0 | PP1EP09901C0 |  |  |  |  | PA | C | P1 | PK | PA | 099 | 01 |  | PE | S | BILL 2 | B02 | S2 | 01 | R00 | ACF06 | PE-2 |  | 099 |  |  |  |  |  | 328 | 956 |
| PP1EP21114C20 |  | PA-P1 ; 1st Fix, Fire Fighting system (Parking Area)_PE-2 | 30d | 2012-01-07 | 2012-02-11 | PGLS103391C60, PP1EP09901C20, PP2EP21114C20 |  |  |  |  | 155d | 0d | MECHANICAL [282 h]; Cost |  |  | CP3PA21109C0 | PP1EP21114C0 |  |  |  |  | PA | C | P1 | PK | ME | 211 | 14 | 1S | PE | S | BILL 2 | B02 | S2 | 1F | R00 | ACF04 | PE-2 | MEP | 211 | M1F |  |  |  |  |  |  |
| PP1EP21124C20 |  | PA-P1 ; 2nd Fix, Fire Fighting system (Parking Area)_PE-2 | 30d | 2012-02-12 | 2012-03-17 | PP1EP21114C20 |  |  |  |  | 227d | 115.57d | MECHANICAL [282 h]; Cost |  |  | CP3PA21115C0 | PP1EP21124C0 |  |  |  |  | PA | C | P1 | PK | ME | 211 | 24 | 2n | PE | S | BILL 2 | B02 | S2 | 2F | R00 | ACF07 | PE-2 | MEP | 211 |  |  |  |  |  |  |  |
| PP1EP22015C20 |  | PA-P1 ; 1st Fix, Plumbing / Drainage System (Parking Area)_PE-2 | 30d | 2012-02-12 | 2012-03-17 | PP1EP09901C20, PP1EP21114C20 |  |  |  |  | 155d | 0d | PLUMBING [754.8 h]; Cost |  |  | CP3PA22001C0 | PP1EP22015C0 |  |  |  |  | PA | C | P1 | PK | ME | 220 | 15 | 1S | PE | S | BILL 2 | B02 | S2 | 1F | R00 | ACF04 | PE-2 | MEP | 220 | M1F |  |  |  |  |  |  |
| PP1EP22025C20 |  | PA-P1 ; 2nd Fix, Plumbing / Drainage System (Parking Area)_PE-2 | 30d | 2012-03-18 | 2012-04-21 | PP1EP22015C20 |  |  |  |  | 209d | 97.57d | PLUMBING [754.8 h]; Cost |  |  | CP3PA22011C0 | PP1EP22025C0 |  |  |  |  | PA | C | P1 | PK | ME | 220 | 25 | 2n | PE | S | BILL 2 | B02 | S2 | 2F | R00 | ACF07 | PE-2 | MEP | 220 |  |  |  |  |  |  |  |
| PP1EP23011C20 |  | PA-P1 ; 1st Fix, CHW / HVAC System (Parking Area)_PE-2 | 30d | 2012-03-18 | 2012-04-21 | PP1EP09901C20, PP1EP22015C20 |  |  |  |  | 155d | 0d | MECHANICAL [1951.2 h]; Cost |  |  | CP3PA23001C0 | PP1EP23011C0 |  |  |  |  | PA | C | P1 | PK | ME | 230 | 11 | 1S | PE | S | BILL 2 | B02 | S2 | 1F | R00 | ACF04 | PE-2 | MEP | 230 | M1F |  |  |  |  |  |  |
| PP1EP23021C20 |  | PA-P1 ; 2nd Fix, CHW / HVAC System (Parking Area)_PE-2 | 30d | 2012-04-22 | 2012-05-26 | PP1EP23011C20 |  |  |  |  | 191d | 79.57d | MECHANICAL [1951.2 h]; Cost |  |  | CP3PA23011C0 | PP1EP23021C0 |  |  |  |  | PA | C | P1 | PK | ME | 230 | 21 | 2n | PE | S | BILL 2 | B02 | S2 | 2F | R00 | ACF07 | PE-2 | MEP | 230 |  |  |  |  |  |  |  |
| PP1EP26012C20 |  | PA-P1 ; 1st Fix, Electrical System (Parking Area)_PE-2 | 30d | 2012-04-22 | 2012-05-26 | PP1EP09901C20, PP1EP23011C20 |  |  |  |  | 155d | 0d | ELECTRICAL [1815.6 h]; Cost |  |  | CP3PA26001C0 | PP1EP26012C0 |  |  |  |  | PA | C | P1 | PK | ME | 260 | 12 | 1S | PE | S | BILL 2 | B02 | S2 | 1F | R00 | ACF04 | PE-2 | MEP | 260 | M1F |  |  |  |  |  |  |
| PP1EP26022C20 |  | PA-P1 ; 2nd Fix, Electrical System (Parking Area)_PE-2 | 30d | 2012-05-27 | 2012-07-01 | PP1EP26012C20 |  |  |  |  | 173d | 61.57d | ELECTRICAL [1815.6 h]; Cost |  |  | CP3PA26005C0 | PP1EP26022C0 |  |  |  |  | PA | C | P1 | PK | ME | 260 | 22 | 2n | PE | S | BILL 2 | B02 | S2 | 2F | R00 | ACF07 | PE-2 | MEP | 260 |  |  |  |  |  |  |  |
| PP1EP27013C20 |  | PA-P1 ; 1st Fix, ELV system (Parking Area)_PE-2 | 30d | 2012-05-27 | 2012-07-01 | PP1EP09901C20, PP1EP26012C20 |  |  |  |  | 155d | 0d | ELECTRICAL [295.2 h]; Cost |  |  | CP3PA27010C0 | PP1EP27013C0 |  |  |  |  | PA | C | P1 | PK | ME | 270 | 13 | 1S | PE | S | BILL 2 | B02 | S2 | 1F | R00 | ACF04 | PE-2 | MEP | 270 | M1F |  |  |  |  |  |  |
| PP1EP27023C20 |  | PA-P1 ; 2nd Fix, ELV system (Parking Area)_PE-2 | 30d | 2012-07-02 | 2012-08-05 | PP1EP27013C20 |  |  |  |  | 155d | 43.57d | ELECTRICAL [295.2 h]; Cost |  |  | CP3PA27020C0 | PP1EP27023C0 |  |  |  |  | PA | C | P1 | PK | ME | 270 | 23 | 2n | PE | S | BILL 2 | B02 | S2 | 2F | R00 | ACF07 | PE-2 | MEP | 270 |  |  |  |  |  |  |  |
| PP1EP09902C20 |  | PA-P1 ; 2nd coat (Wall & Ceiling) (Parking Area)_PE-2 | 12.91d | 2012-07-16 | 2012-07-31 | PP1EP09901C20, PGLS103391C250, PGLS103331C270, PP1EM26008C0 SS |  |  |  |  | 111.43d | 0d | CEILING PAINT [1852 h]; WALL PAINT [401 h]; CEILING PAINT [2311.75 m2]; WALL PAINT [499.1 m2]; Cost |  |  | CP3PA09903C0 | PP1EP09902C0 |  |  |  |  | PA | C | P1 | PK | PA | 099 | 02 |  | PE | S | BILL 2 | B02 | S2 | 02 | R00 | ACF06 | PE-2 |  | 099 |  |  |  |  |  | 329 | 957 |
| PP1EP21113C20 |  | PA-P1 ; Final Fix, Fire Fighting system (Parking Area)_PE-2 | 12d | 2012-07-31 | 2012-08-14 | PP1EP09902C20, PP1EP21124C20, PGLS103391C250, PGLS103331C270, PP1EM26008C0 SS |  |  |  |  | 111.43d | 0d | MECHANICAL [282 h]; Cost |  |  | CP3PA21113C0 | PP1EP21113C0 |  |  |  |  | PA | C | P1 | PK | ME | 211 | 13 | FF | PE | S | BILL 2 | B02 | S2 | FF | R00 | ACF07 | PE-2 | MEP | 211 |  |  |  |  |  |  |  |
| PP1EP22011C20 |  | PA-P1 ; Final Fix, Drainage System (Parking Area)_PE-2 | 12d | 2012-08-14 | 2012-08-30 | PP1EP09902C20, PP1EP22025C20, PGLS103391C250, PGLS103331C270, PP1EM26008C0 SS, PP1EP21113C20 |  |  |  |  | 111.43d | 0d | PLUMBING [754.8 h]; Cost |  |  | CP3PA22011C0 | PP1EP22011C0 |  |  |  |  | PA | C | P1 | PK | ME | 220 | 11 | FF | PE | S | BILL 2 | B02 | S2 | FF | R00 | ACF07 | PE-2 | MEP | 220 |  |  |  |  |  |  |  |
| PP1EP23019C20 |  | PA-P1 ; Final Fix, CHW / HVAC System (Parking Area)_PE-2 | 12d | 2012-08-30 | 2012-09-13 | PP1EP09902C20, PP1EP23021C20, PGLS103391C250, PGLS103331C270, PP1EM26008C0 SS, PP1EP22011C20 |  |  |  |  | 111.43d | 0d | MECHANICAL [1951.2 h]; Cost |  |  | CP3PA23019C0 | PP1EP23019C0 |  |  |  |  | PA | C | P1 | PK | ME | 230 | 19 | FF | PE | S | BILL 2 | B02 | S2 | FF | R00 | ACF07 | PE-2 | MEP | 230 |  |  |  |  |  |  |  |
| PP1EP26017C20 |  | PA-P1 ; Final Fix, Electrical System (Parking Area)_PE-2 | 12d | 2012-09-13 | 2012-09-27 | PP1EP09902C20, PP1EP26022C20, PGLS103391C250, PGLS103331C270, PP1EM26008C0 SS, PP1EP23019C20 |  |  |  |  | 111.43d | 0d | ELECTRICAL [1815.6 h]; Cost |  |  | CP3PA26017C0 | PP1EP26017C0 |  |  |  |  | PA | C | P1 | PK | ME | 260 | 17 | FF | PE | S | BILL 2 | B02 | S2 | FF | R00 | ACF07 | PE-2 | MEP | 260 |  |  |  |  |  |  |  |
| PP1EP27030C20 |  | PA-P1 ; Final Fix, ELV system (Parking Area)_PE-2 | 12d | 2012-09-27 | 2012-10-11 | PP1EP09902C20, PP1EP27023C20, PP1EP27023C20 FF, PGLS103391C250, PGLS103331C270, PP1EM26008C0 SS, PP1EP26017C20 |  |  |  |  | 111.43d | 0d | ELECTRICAL [295.2 h]; Cost |  |  | CP3PA27030C0 | PP1EP27030C0 |  |  |  |  | PA | C | P1 | PK | ME | 270 | 30 | FF | PE | S | BILL 2 | B02 | S2 | FF | R00 | ACF07 | PE-2 | MEP | 270 |  |  |  |  |  |  |  |
| PP1EP09903C20 |  | PA-P1 ; Concrete Sealer (Floor) (Parking Area)_PE-2 | 12d | 2012-10-11 | 2012-10-25 | PP1EP21113C20, PP1EP22011C20, PP1EP23019C20, PP1EP26017C20, PP1EP27030C20, PGLS103391C250, PGLS103331C270, PP1EM26008C0 SS |  |  |  |  | 111.43d | 0d | ASSORTED FLOOR FINISH [5784 h]; ASSORTED FLOOR FINISH [3209.15 m2]; Cost |  |  | AP1PK09903C0 | PP1EP09903C0 |  |  |  |  | PA | C | P1 | PK | FF | 096 | 03 |  | PE | S | BILL 2 | B02 | S2 | 05 | R00 | ACF06 | PE-2 |  | CS |  |  |  |  |  |  |  |
| PP1EP05509C20 |  | PA-P1 ; Grill & Louvers (Parking Area)_PE-2 | 5.78d | 2012-10-25 | 2012-11-04 | PP1EP09903C20, PGLS103391C250, PGLS103331C270, PP1EM26008C0 SS |  |  |  |  | 115.65d | 47.58d | SECONDARY STEEL [445 h]; Cost |  |  | CP3PA09901C0 | PP3AP09901C0 |  |  |  |  | PA | C | P1 | PK | SW | 055 | 01 |  | PE | S | BILL 2 | B02 | S2 | 02 | R00 | ACF03 | PE-2 |  | 056 |  |  |  |  |  | 328 | 956 |
| PP1EP11006C20 |  | PA-P1 ; Wall Protection (WP, CG, WG, FCG) (Parking Area)_PE-2 | 4.91d | 2012-10-25 | 2012-11-03 | PP1EP09903C20, PGLS103391C250, PGLS103331C270, PP1EM26008C0 SS |  |  |  |  | 111.43d | 0d | FF&E [112 h]; Cost |  |  | CP3PA11001C0 | PP1EP11006C0 |  |  |  |  | PA | C | P1 | PK | WF | 097 | 06 |  | PE | S | BILL 2 | B02 | S2 | 03 | R00 | ACF08 | PE-2 |  | 097 |  |  |  |  |  | 326 | 1001 |
| PP1EP11004C20 |  | PA-P1 ; Floor Marking & Signage (Parking Area)_PE-2 | 5.09d | 2012-11-03 | 2012-11-08 | PP1EP09903C20, PP1EP11006C20, PGLS103391C250, PGLS103331C270, PP1EM26008C0 SS |  |  |  |  | 111.43d | 43.36d | SIGNAGES [1336 h]; SIGNAGES [185.85 no]; Cost |  |  | AP1PK11004C0 | PP1EP11004C0 |  |  |  |  | PA | C | P1 | PK | SA | 110 | 04 |  | PE | S | BILL 2 | B02 | S2 | 09 | R00 | ACF08 | PE-2 |  | c |  |  |  |  |  |  |  |

| ID | WBS | Activity | Duration | Start | Finish | Predecessors | Complete | Remaining | Planned start | Planned finish | Total float | Free float | Resources | Cost | Actual cost | Change Order # | NEW ACTIVITY ID | change id | IDDD | CCAD BUILDING(SET) | CCAD PHASE(SET) | CCAD FLOOR(SET) | CCAD ZONE(SET) | CCAD WORK(SET) | CCAD SECTION(SET) | CCAD SERIAL No.(SET) | CCAD Carpark code(SET) | CCAD Carpark district code(set) | CCAD CBS(SET) | CCAD BILL(SET) | CCAD HANDOVER(SET) | CCAD TAG(SET) | CCAD REV(SET) | CCADACF (SET) | FSP CODE | CCAD SSCF | CCAD SUB ZONE MEP(SET) | CCAD CSA | Act Selector % | CCAD DIVISION(SET) | CCAD MEQ |
| --- | --- | --- | --- | --- | --- | --- | --- | --- | --- | --- | --- | --- | --- | --- | --- | --- | --- | --- | --- | --- | --- | --- | --- | --- | --- | --- | --- | --- | --- | --- | --- | --- | --- | --- | --- | --- | --- | --- | --- | --- | --- |
|  | EP3 | **PARKING AREA :Zone PE-3** |  | 2011-09-05 | 2012-11-21 |  |  |  |  |  |  |  |  |  |  |  |  |  |  |  |  |  |  |  |  |  |  |  |  |  |  |  |  |  |  |  |  |  |  |  |  |
| PP1EP11006C30 |  | PA-P1 ; Wall Protection (WP, CG, WG, FCG) (Parking Area)_PE-3 | 5d | 2011-09-05 A | 2012-11-14 | PP1EP09903C30 | 12% | 4.42d | 2012-04-25 | 2012-05-01 | 45.69d | 0d | FF&E [112 h]; Cost |  |  | 326 | 1001 | CP3PA11001C0 | PP1EP11006C0 | PA | C | P1 | PK | WF | 097 | 06 | PE | S | BILL 2 | B02 | S2 | 03 | R00 | ACF08 | PE-3 | 097 |  |  |  |  |  |
| PP1EP21114C30 |  | PA-P1 ; 1st Fix, Fire Fighting system (Parking Area)_PE-3 | 18d | 2011-09-05 A | 2011-11-12 | PP1EP09901C30 | 20% | 14.4d | 2011-12-07 | 2011-12-28 | 236.79d | 0d | MECHANICAL [282 h]; Cost [14636.1 AED] | 14,636.14 | 2,927.23 |  |  | CP3PA21109C0 | PP1EP21114C0 | PA | C | P1 | PK | ME | 211 | 14 | PE | S | BILL 2 | B02 | S2 | 1F | R00 | ACF04 | PE-3 | 211 | 1S | MEP | M1F |  |  |
| PP1EP22015C30 |  | PA-P1 ; 1st Fix, Plumbing / Drainage System (Parking Area)_PE-3 | 18d | 2011-09-05 A | 2011-11-29 | PP1EP09901C30, PP1EP21114C30 | 20% | 14.4d | 2012-01-16 | 2012-02-07 | 236.79d | 0d | PLUMBING [754.8 h]; Cost [39247.8 AED] | 39,247.83 | 7,849.57 |  |  | CP3PA22001C0 | PP1EP22015C0 | PA | C | P1 | PK | ME | 220 | 15 | PE | S | BILL 2 | B02 | S2 | 1F | R00 | ACF04 | PE-3 | 220 | 1S | MEP | M1F |  |  |
| PP1EP23011C30 |  | PA-P1 ; 1st Fix, CHW / HVAC System (Parking Area)_PE-3 | 18d | 2011-09-05 A | 2011-12-17 | PP1EP09901C30, PP1EP22015C30 | 20% | 14.4d | 2012-02-01 | 2012-02-23 | 236.79d | 0d | MECHANICAL [1951.2 h]; Cost [101523 AED] | 101,522.74 | 20,304.55 |  |  | CP3PA23001C0 | PP1EP23011C0 | PA | C | P1 | PK | ME | 230 | 11 | PE | S | BILL 2 | B02 | S2 | 1F | R00 | ACF04 | PE-3 | 230 | 1S | MEP | M1F |  |  |
| PP1EP26012C30 |  | PA-P1 ; 1st Fix, Electrical System (Parking Area)_PE-3 | 18d | 2011-09-05 A | 2012-01-04 | PP1EP09901C30, PP1EP23011C30 | 20% | 14.4d | 2011-12-24 | 2012-01-15 | 236.79d | 0d | ELECTRICAL [1815.6 h]; Cost [92758.2 AED] | 92,758.18 | 18,551.64 |  |  | CP3PA26001C0 | PP1EP26012C0 | PA | C | P1 | PK | ME | 260 | 12 | PE | S | BILL 2 | B02 | S2 | 1F | R00 | ACF04 | PE-3 | 260 | 1S | MEP | M1F |  |  |
| PP1EP27013C30 |  | PA-P1 ; 1st Fix, ELV system (Parking Area)_PE-3 | 18d | 2011-09-05 A | 2012-01-21 | PP1EP09901C30, PP1EP26012C30 | 20% | 14.4d | 2012-01-10 | 2012-01-31 | 236.79d | 0d | ELECTRICAL [295.2 h]; Cost [14034.6 AED] | 14,034.62 | 2,806.92 |  |  | CP3PA27010C0 | PP1EP27013C0 | PA | C | P1 | PK | ME | 270 | 13 | PE | S | BILL 2 | B02 | S2 | 1F | R00 | ACF04 | PE-3 | 270 | 1S | MEP | M1F |  |  |
| PP1EP09901C30 |  | PA-P1 ; Prime & 1st coat (Wall & Ceiling) (Parking Area)_PE-3 | 18d | 2011-10-01 | 2011-10-22 | PGLS103393C0 SS, PGLS103391C80 SS |  |  |  |  | 236.79d | 0d | CEILING PAINT [3440 h]; WALL PAINT [744 h]; CEILING PAINT [4293.1 m2]; WALL PAINT [927.15 m2]; Cost |  |  | 328 | 956 | CP3PA09901C0 | PP1EP09901C0 | PA | C | P1 | PK | PA | 099 | 01 | PE | S | BILL 2 | B02 | S2 | 01 | R00 | ACF06 | PE-3 | 099 |  |  |  |  |  |
| PP1EP09902C30 |  | PA-P1 ; 2nd coat (Wall & Ceiling) (Parking Area)_PE-3 | 12.91d | 2011-10-22 | 2011-11-09 | PP1EP09901C30 |  |  |  |  | 289.88d | 244.19d | CEILING PAINT [1852 h]; WALL PAINT [401 h]; CEILING PAINT [2311.75 m2]; WALL PAINT [499.1 m2]; Cost |  |  | 329 | 957 | CP3PA09903C0 | PP1EP09902C0 | PA | C | P1 | PK | PA | 099 | 02 | PE | S | BILL 2 | B02 | S2 | 02 | R00 | ACF06 | PE-3 | 099 |  |  |  |  |  |
| PP1EP21124C30 |  | PA-P1 ; 2nd Fix, Fire Fighting system (Parking Area)_PE-3 | 30d | 2011-11-12 | 2011-12-19 | PP1EP21114C30 |  |  |  |  | 246.39d | 200.7d | MECHANICAL [282 h]; Cost |  |  |  |  | CP3PA21115C0 | PP1EP21124C0 | PA | C | P1 | PK | ME | 211 | 24 | PE | S | BILL 2 | B02 | S2 | 2F | R00 | ACF07 | PE-3 | 211 | 2n | MEP |  |  |  |
| PP1EP22025C30 |  | PA-P1 ; 2nd Fix, Plumbing / Drainage System (Parking Area)_PE-3 | 30d | 2011-11-29 | 2012-01-05 | PP1EP22015C30 |  |  |  |  | 243.99d | 198.3d | PLUMBING [754.8 h]; Cost |  |  |  |  | CP3PA22011C0 | PP1EP22025C0 | PA | C | P1 | PK | ME | 220 | 25 | PE | S | BILL 2 | B02 | S2 | 2F | R00 | ACF07 | PE-3 | 220 | 2n | MEP |  |  |  |
| PP1EP23021C30 |  | PA-P1 ; 2nd Fix, CHW / HVAC System (Parking Area)_PE-3 | 30d | 2011-12-17 | 2012-01-22 | PP1EP23011C30 |  |  |  |  | 241.59d | 195.9d | MECHANICAL [1951.2 h]; Cost |  |  |  |  | CP3PA23011C0 | PP1EP23021C0 | PA | C | P1 | PK | ME | 230 | 21 | PE | S | BILL 2 | B02 | S2 | 2F | R00 | ACF07 | PE-3 | 230 | 2n | MEP |  |  |  |
| PP1EP26022C30 |  | PA-P1 ; 2nd Fix, Electrical System (Parking Area)_PE-3 | 30d | 2012-01-04 | 2012-02-09 | PP1EP26012C30 |  |  |  |  | 239.19d | 193.5d | ELECTRICAL [1815.6 h]; Cost |  |  |  |  | CP3PA26005C0 | PP1EP26022C0 | PA | C | P1 | PK | ME | 260 | 22 | PE | S | BILL 2 | B02 | S2 | 2F | R00 | ACF07 | PE-3 | 260 | 2n | MEP |  |  |  |
| PP1EP27023C30 |  | PA-P1 ; 2nd Fix, ELV system (Parking Area)_PE-3 | 30d | 2012-01-21 | 2012-02-26 | PP1EP27013C30 |  |  |  |  | 236.79d | 191.1d | ELECTRICAL [295.2 h]; Cost |  |  |  |  | CP3PA27020C0 | PP1EP27023C0 | PA | C | P1 | PK | ME | 270 | 23 | PE | S | BILL 2 | B02 | S2 | 2F | R00 | ACF07 | PE-3 | 270 | 2n | MEP |  |  |  |
| PP1EP21113C30 |  | PA-P1 ; Final Fix, Fire Fighting system (Parking Area)_PE-3 | 12d | 2012-08-12 | 2012-08-28 | PP1EP09902C30 FF, PP1EP21124C30, PP3DP21113C20 SS |  |  |  |  | 45.69d | 0d | MECHANICAL [282 h]; Cost |  |  |  |  | CP3PA21113C0 | PP1EP21113C0 | PA | C | P1 | PK | ME | 211 | 13 | PE | S | BILL 2 | B02 | S2 | FF | R00 | ACF07 | PE-3 | 211 | FF | MEP |  |  |  |
| PP1EP22011C30 |  | PA-P1 ; Final Fix, Drainage System (Parking Area)_PE-3 | 12d | 2012-08-28 | 2012-09-11 | PP1EP09902C30 FF, PP1EP22025C30, PP3DP21113C20 SS, PP1EP21113C30 |  |  |  |  | 45.69d | 0d | PLUMBING [754.8 h]; Cost |  |  |  |  | CP3PA22011C0 | PP1EP22011C0 | PA | C | P1 | PK | ME | 220 | 11 | PE | S | BILL 2 | B02 | S2 | FF | R00 | ACF07 | PE-3 | 220 | FF | MEP |  |  |  |
| PP1EP23019C30 |  | PA-P1 ; Final Fix, CHW / HVAC System (Parking Area)_PE-3 | 12d | 2012-09-11 | 2012-09-25 | PP1EP09902C30 FF, PP1EP23021C30, PP3DP21113C20 SS, PP1EP22011C30 |  |  |  |  | 45.69d | 0d | MECHANICAL [1951.2 h]; Cost |  |  |  |  | CP3PA23019C0 | PP1EP23019C0 | PA | C | P1 | PK | ME | 230 | 19 | PE | S | BILL 2 | B02 | S2 | FF | R00 | ACF07 | PE-3 | 230 | FF | MEP |  |  |  |
| PP1EP26017C30 |  | PA-P1 ; Final Fix, Electrical System (Parking Area)_PE-3 | 12d | 2012-09-25 | 2012-10-09 | PP1EP26022C30, PP3DP21113C20 SS, PP1EP23019C30 |  |  |  |  | 45.69d | 0d | ELECTRICAL [1815.6 h]; Cost |  |  |  |  | CP3PA26017C0 | PP1EP26017C0 | PA | C | P1 | PK | ME | 260 | 17 | PE | S | BILL 2 | B02 | S2 | FF | R00 | ACF07 | PE-3 | 260 | FF | MEP |  |  |  |
| PP1EP27030C30 |  | PA-P1 ; Final Fix, ELV system (Parking Area)_PE-3 | 12d | 2012-10-09 | 2012-10-23 | PP1EP09902C30 FF, PP1EP27023C30, PP1EP27023C30 FF, PP3DP21113C20 SS, PP1EP26017C30 |  |  |  |  | 45.69d | 0d | ELECTRICAL [295.2 h]; Cost |  |  |  |  | CP3PA27030C0 | PP1EP27030C0 | PA | C | P1 | PK | ME | 270 | 30 | PE | S | BILL 2 | B02 | S2 | FF | R00 | ACF07 | PE-3 | 270 | FF | MEP |  |  |  |
| PP1EP09903C30 |  | PA-P1 ; Concrete Sealer (Floor) (Parking Area)_PE-3 | 12d | 2012-10-23 | 2012-11-08 | PP1EP21113C30, PP1EP22011C30, PP1EP23019C30, PP1EP26017C30, PP1EP27030C30, PP3DP21113C20 SS |  |  |  |  | 45.69d | 0d | ASSORTED FLOOR FINISH [5784 h]; ASSORTED FLOOR FINISH [3209.15 m2]; Cost |  |  |  |  | AP1PK09903C0 | PP1EP09903C0 | PA | C | P1 | PK | FF | 096 | 03 | PE | S | BILL 2 | B02 | S2 | 05 | R00 | ACF06 | PE-3 | CS |  |  |  |  |  |
| PP1EP05509C30 |  | PA-P1 ; Grill & Louvers (Parking Area)_PE-3 | 5.78d | 2012-11-08 | 2012-11-17 | PP1EP09903C30, PP3DP21113C20 SS |  |  |  |  | 49.42d | 37.34d | SECONDARY STEEL [445 h]; Cost |  |  | 328 | 956 | CP3PA09901C0 | PP3AP09901C0 | PA | C | P1 | PK | SW | 055 | 01 | PE | S | BILL 2 | B02 | S2 | 02 | R00 | ACF03 | PE-3 | 056 |  |  |  |  |  |
| PP1EP11004C30 |  | PA-P1 ; Floor Marking & Signage (Parking Area)_PE-3 | 5.09d | 2012-11-14 | 2012-11-21 | PP1EP09903C30, PP1EP11006C30, PP3DP21113C20 SS |  |  |  |  | 45.69d | 33.62d | SIGNAGES [1336 h]; SIGNAGES [185.85 no]; Cost |  |  |  |  | AP1PK11004C0 | PP1EP11004C0 | PA | C | P1 | PK | SA | 110 | 04 | PE | S | BILL 2 | B02 | S2 | 09 | R00 | ACF08 | PE-3 | c |  |  |  |  |  |
|  | EE2 | **ELECTRICAL ROOMS (4 NOS.) :Zone PE-2** |  | 2012-01-03 | 2012-10-29 |  |  |  |  |  |  |  |  |  |  |  |  |  |  |  |  |  |  |  |  |  |  |  |  |  |  |  |  |  |  |  |  |  |  |  |  |
| PP1EE09903C0 |  | PA-P1 ; Ceiling Prime & 1st coat (Elec RM)_PE-2 | 18d | 2012-01-03 | 2012-01-24 | PGLS203392C0, PGLS103391C60, PP2EE09903C0 |  |  |  |  | 120.72d | 0d | ASSORTED CEILING FINISH [23 h]; Cost |  |  |  | 1544 | CP2ME09905C0 | PP1EE09903C0 | PA | C | P1 | ER | PA | 099 | 03 | PE | S | BILL 2 | B02 | S2 | 01 | R00 | ACF06 | PE-2 | 099 |  |  |  |  |  |
| PP1EE04001C0 |  | PA-P1 ; Block Wall Works (Elec RM)_PE-2 | 30d | 2012-01-24 | 2012-02-29 | PP1EE09903C0 |  |  |  |  | 120.72d | 0d | BLOCKWORKS [2380 h]; BLOCKWORKS [680 m2]; Cost |  |  |  |  | AP1ER04001C0 | PP1EE04001C0 | PA | C | P1 | ER | BL | 040 | 01 | PE | S | BILL 2 | B02 | S2 | BL | R00 | ACF06 | PE-2 | 040 |  |  |  |  |  |
| PP1EE09201C0 |  | PA-P1 ; Metal Studs (Elec RM)_PE-2 | 20d | 2012-02-29 | 2012-03-24 | PP1EE04001C0 |  |  |  |  | 200.34d | 0d | PARTITIONS [29 h]; PARTITIONS [4 m]; Cost |  |  | 313 | 1372 | CP2ME09201C0 | PP1EE09201C0 | PA | C | P1 | ER | PT | 092 | 01 | PE | S | BILL 2 | B02 | S2 | 1F | R00 | ACF06 | PE-2 | 092 |  | GP | PMS |  |  |
| PP1EE09902C0 |  | PA-P1 ; Wall Prime & 1st coat (Elec RM)_PE-2 | 18d | 2012-02-29 | 2012-03-21 | PP1EE04001C0 |  |  |  |  | 239.34d | 0d | WALL PAINT [512 h]; WALL PAINT [637 m2]; Cost |  |  | 328 | 1378 | CP2ME09901C0 | PP1EE09902C0 | PA | C | P1 | ER | PA | 099 | 02 | PE | S | BILL 2 | B02 | S2 | 01 | R00 | ACF06 | PE-2 | 099 |  |  |  |  |  |
| PP1EE23001C0 |  | PA-P1 ; 1st Fix, Inst. of Supports for MEP (Elec RM)_PE-2 | 18d | 2012-02-29 | 2012-03-21 | PP1EE04001C0 |  |  |  |  | 120.72d | 0d | MECHANICAL [625.2 h]; Cost |  |  |  |  | CP2ME23010C0 | PP1EE23001C0 | PA | C | P1 | ER | ME | 230 | 01 | PE | S | BILL 2 | B02 | S2 | 1F | R00 | ACF04 | PE-2 | 230 | 1S | MEP | M1F |  |  |
| PP1EE26001C0 |  | PA-P1 ; 1st Fix, Inst of Trunking/Conduiting (Elec RM)_PE-2 | 39d | 2012-02-29 | 2012-04-15 | PP1EE04001C0 |  |  |  |  | 177.72d | 0d | ELECTRICAL [192 h]; Cost |  |  |  |  | CP2ME26010C0 | PP1EE26001C0 | PA | C | P1 | ER | ME | 260 | 01 | PE | S | BILL 2 | B02 | S2 | 1F | R00 | ACF04 | PE-2 | 260 | 1S | MEP | M1F |  |  |
| PP1EE27002C0 |  | PA-P1 ; 1st Fix, Inst of Trunking for ELV system (Elec RM)_PE-2 | 39d | 2012-02-29 | 2012-04-15 | PP1EE04001C0 |  |  |  |  | 172.59d | 0d | ELECTRICAL [535.2 h]; Cost |  |  |  |  | CP2ME27010C0 | PP1EE27002C0 | PA | C | P1 | ER | ME | 270 | 02 | PE | S | BILL 2 | B02 | S2 | 1F | R00 | ACF04 | PE-2 | 270 | 1S | MEP | M1F |  |  |
| PP1EE09202C0 |  | PA-P1 ; Partitions 1st face (Elec RM)_PE-2 | 33d | 2012-03-14 | 2012-04-22 | PP1EE09201C0 SS+12d |  |  |  |  | 200.34d | 79.62d | PARTITIONS [4 m]; PARTITIONS [16 h]; Cost |  |  | 314 | 1373 | CP2ME09203C0 | PP1EE09202C0 | PA | C | P1 | ER | PT | 092 | 02 | PE | S | BILL 2 | B02 | S2 | 2F | R00 | ACF06 | PE-2 | 092 |  | GP | P1F |  |  |
| PP1EE08109C0 |  | PA-P1 ; Access Floor (Elec RM)_PE-2 | 18d | 2012-03-21 | 2012-04-11 | PP1EE09902C0 |  |  |  |  | 239.34d | 42d | ASSORTED DOORS [8 h]; Cost |  |  | 317 | 1375 | CP2ER08105C0 |  | PA | C | P1 | ER | FF | 096 | 09 | PE | S | BILL 2 | B02 | S2 | 04 | R00 | ACF06 | PE-2 | AF |  |  |  | 08 |  |
| PP1EE23002C0 |  | PA-P1 ; 1st Fix, Inst of CHW pipe (Elec RM)_PE-2 | 39d | 2012-03-21 | 2012-05-06 | PP1EE23001C0, PP1EE04001C0 |  |  |  |  | 159.72d | 39d | MECHANICAL [3097.2 h]; Cost |  |  |  |  | CP2ME23012C0 | PP1EE23002C0 | PA | C | P1 | ER | ME | 230 | 02 | PE | S | BILL 2 | B02 | S2 | 1F | R00 | ACF04 | PE-2 | 230 | 1S | MEP | M1F |  |  |
| PP1EE23003C0 |  | PA-P1 ; 1st Fix, Inst of Ducting (Elec RM)_PE-2 | 39d | 2012-03-21 | 2012-05-06 | PP1EE23001C0, PP1EE04001C0 |  |  |  |  | 120.72d | 0d | MECHANICAL [3948 h]; Cost |  |  |  |  | CP2ME23014C0 | PP1EE23003C0 | PA | C | P1 | ER | ME | 230 | 03 | PE | S | BILL 2 | B02 | S2 | 1F | R00 | ACF04 | PE-2 | 230 | 1S | MEP | M1F |  |  |
| PP1EE23007C0 |  | PA-P1 ; 2nd Fix, Inst of VAV'S CHW connection (Elec RM)_PE-2 | 30d | 2012-03-21 | 2012-04-25 | PP1EE23001C0 |  |  |  |  | 227.34d | 9d | MECHANICAL [50.4 h]; Cost |  |  |  |  | CP2ME23020C0 | PP1EE23007C0 | PA | C | P1 | ER | ME | 230 | 07 | PE | S | BILL 2 | B02 | S2 | 2F | R00 | ACF07 | PE-2 | 230 | 2n | MEP |  |  |  |
| PP1EE23010C0 |  | PA-P1 ; 2nd Fix, Insulation of CHW pipe & Duct (Elec RM)_PE-2 | 30d | 2012-03-21 | 2012-04-25 | PP1EE23001C0 |  |  |  |  | 227.34d | 9d | MECHANICAL [3702 h]; Cost |  |  |  |  | CP2ME23026C0 | PP1EE23010C0 | PA | C | P1 | ER | ME | 230 | 10 | PE | S | BILL 2 | B02 | S2 | 2F | R00 | ACF07 | PE-2 | 230 | 2n | MEP |  |  |  |
| PP1EE08102C0 |  | PA-P1 ; Metal Door Frames (Elec RM)_PE-2 | 12d | 2012-03-24 | 2012-04-07 | PP1EE09201C0, GNHE08101C0 |  |  |  |  | 255.34d | 134.62d | METAL DOORS [49 h]; Cost |  |  | 316 | 1374 | CP2ME08101C0 | PP1EE08102C0 | PA | C | P1 | ER | DO | 081 | 02 | PE | S | BILL 2 | B02 | S2 | DF | R00 | ACF06 | PE-2 | 081 |  |  |  | 08 |  |
| PP1EE26007C0 |  | PA-P1 ; 2nd Fix, Wiring for Power/Lighting/Emergency (Elec RM)_PE-2 | 30d | 2012-04-15 | 2012-05-20 | PP1EE26001C0 |  |  |  |  | 199.59d | 78.88d | ELECTRICAL [76.8 h]; Cost |  |  |  |  | CP2ME26020C0 | PP1EE26007C0 | PA | C | P1 | ER | ME | 260 | 07 | PE | S | BILL 2 | B02 | S2 | 2F | R00 | ACF07 | PE-2 | 260 | 2n | MEP |  |  |  |
| PP1EE27001C0 |  | PA-P1 ; 1st Fix, Wiring/ Cabling work (Elec RM)_PE-2 | 39d | 2012-04-15 | 2012-05-30 | PP1EE04001C0, PP1EE27002C0 |  |  |  |  | 172.59d | 0d | ELECTRICAL [76.8 h]; Cost |  |  |  |  | CP2ME27012C0 | PP1EE27001C0 | PA | C | P1 | ER | ME | 270 | 01 | PE | S | BILL 2 | B02 | S2 | 1F | R00 | ACF04 | PE-2 | 270 | 1S | MEP | M1F |  |  |
| PP1EE23004C0 |  | PA-P1 ; 1st Fix, Inst of VCD's/FD's (Elec RM)_PE-2 | 39d | 2012-05-06 | 2012-06-21 | PP1EE23003C0, PP1EE04001C0 |  |  |  |  | 120.72d | 0d | MECHANICAL [1168.8 h]; Cost |  |  |  |  | CP2ME23016C0 | PP1EE23004C0 | PA | C | P1 | ER | ME | 230 | 04 | PE | S | BILL 2 | B02 | S2 | 1F | R00 | ACF04 | PE-2 | 230 | 1S | MEP | M1F |  |  |
| PP1EE23009C0 |  | PA-P1 ; 2nd Fix, Inst of VCD's/FD's (Elec RM)_PE-2 | 30d | 2012-05-06 | 2012-06-10 | PP1EE23003C0, PP1EE23007C0, PP1EE23010C0 |  |  |  |  | 218.34d | 79.62d | MECHANICAL [1168.8 h]; Cost |  |  |  |  | CP2ME23024C0 | PP1EE23009C0 | PA | C | P1 | ER | ME | 230 | 09 | PE | S | BILL 2 | B02 | S2 | 2F | R00 | ACF07 | PE-2 | 230 | 2n | MEP |  |  |  |
| PP1EE26002C0 |  | PA-P1 ; 1st Fix, Inst of Cable Tray (Elec RM)_PE-2 | 39d | 2012-05-06 | 2012-06-21 | PP1EE04001C0, PP1EE23003C0 |  |  |  |  | 120.72d | 0d | ELECTRICAL [63.6 h]; Cost |  |  |  |  | CP2ME26012C0 | PP1EE26002C0 | PA | C | P1 | ER | ME | 260 | 02 | PE | S | BILL 2 | B02 | S2 | 1F | R00 | ACF04 | PE-2 | 260 | 1S | MEP | M1F |  |  |
| PP1EE23006C0 |  | PA-P1 ; 2nd Fix, Inst of Flexible Duct & Plenum boxes (Elec RM)_PE-2 | 18d | 2012-05-30 | 2012-06-21 | PP1EE27001C0 |  |  |  |  | 172.59d | 51.88d | MECHANICAL [33.6 h]; Cost |  |  |  |  | CP2ME23032C0 | PP1EE23006C0 | PA | C | P1 | ER | ME | 230 | 06 | PE | S | BILL 2 | B02 | S2 | FF | R00 | ACF07 | PE-2 | 230 | FF | MEP |  |  |  |
| PP1EE23008C0 |  | PA-P1 ; 2nd Fix, Inst of Equipment (FCU,FAN,PUMP) (Elec RM)_PE-2 | 30d | 2012-05-30 | 2012-07-05 | PP1EE27001C0 |  |  |  |  | 179.34d | 58.62d | MECHANICAL [2184 h]; Cost |  |  |  |  | CP2ME23022C0 | PP1EE23008C0 | PA | C | P1 | ER | ME | 230 | 08 | PE | S | BILL 2 | B02 | S2 | 2F | R00 | ACF04 | PE-2 | 230 | 2n | MEP |  |  | H |
| PP1EE26009C0 |  | PA-P1 ; 2nd Fix, Inst of Equipment (DB, TR, SG) (Elec RM)_PE-2 | 30d | 2012-05-30 | 2012-07-05 | PP1EE08109C0, PP1EE27001C0 |  |  |  |  | 197.34d | 62.62d | ELECTRICAL [1192.8 h]; Cost |  |  |  |  | CP2ME26024C0 | PP1EE26009C0 | PA | C | P1 | ER | ME | 260 | 09 | PE | S | BILL 2 | B02 | S2 | 2F | R00 | ACF04 | PE-2 | 260 | 2n | MEP |  |  | E |
| PP1EE09501C0 |  | PA-P1 ; Ceiling Grid and Service Tile (Elec RM)_PE-2 | 21.88d | 2012-06-21 | 2012-07-17 | PP1EE23002C0, PP1EE23003C0, PP1EE23004C0, PP1EE26001C0, PP1EE26002C0 |  |  |  |  | 120.72d | 0d | CEILING GRID FOR GYPSUM [3058.36 h]; CEILING GRID FOR GYPSUM [261.78 m2]; Cost |  |  | 323 | 1408 | CP2ME09501C0 | PP1EE09501C0 | PA | C | P1 | ER | CE | 095 | 01 | PE | S | BILL 2 | B02 | S2 | 01 | R00 | ACF06 | PE-2 | 095 |  |  |  |  |  |
| PP1EE26008C0 |  | PA-P1 ; 2nd Fix, Cable Pulling (Elec RM)_PE-2 | 30d | 2012-06-21 | 2012-07-26 | PP1EE26002C0 |  |  |  |  | 142.59d | 21.88d | ELECTRICAL [4096.8 h]; Cost |  |  |  |  | CP2ME26022C0 | PP1EE26008C0 | PA | C | P1 | ER | ME | 260 | 08 | PE | S | BILL 2 | B02 | S2 | 2F | R00 | ACF07 | PE-2 | 260 | 2n | MEP |  |  |  |
| PP1EE21104C0 |  | PA-P1 ; 2nd Fix, Inst of Sprinkler droppers (Elec RM)_PE-2 | 30d | 2012-07-17 | 2012-08-23 | PP1EE09501C0 |  |  |  |  | 175.47d | 107.39d | MECHANICAL [3199.2 h]; Cost |  |  |  |  | CP2ME21120C0 | PP1EE21104C0 | PA | C | P1 | ER | ME | 211 | 04 | PE | S | BILL 2 | B02 | S2 | 2F | R00 | ACF07 | PE-2 | 211 | 2n | MEP |  |  |  |
| PP1EE21105C0 |  | PA-P1 ; 2nd Fix, Inst of Zone Control Valve (Elec RM)_PE-2 | 30d | 2012-07-17 | 2012-08-23 | PP1EE09501C0 |  |  |  |  | 175.47d | 107.39d | MECHANICAL [735.6 h]; Cost |  |  |  |  | CP2ME21124C0 | PP1EE21105C0 | PA | C | P1 | ER | ME | 211 | 05 | PE | S | BILL 2 | B02 | S2 | 2F | R00 | ACF07 | PE-2 | 211 | 2n | MEP |  |  |  |
| PP1EE27005C0 |  | PA-P1 ; 2nd Fix, Wiring Droppers (Elec RM)_PE-2 | 30d | 2012-07-17 | 2012-08-23 | PP1EE09501C0 |  |  |  |  | 120.72d | 0d | ELECTRICAL [76.8 h]; Cost |  |  |  |  | CP2ME27022C0 | PP1EE27005C0 | PA | C | P1 | ER | ME | 270 | 05 | PE | S | BILL 2 | B02 | S2 | 2F | R00 | ACF07 | PE-2 | 270 | 2n | MEP |  |  |  |
| PP1EE27006C0 |  | PA-P1 ; 2nd Fix, Inst of ELV Equipment (Panels) (Elec RM)_PE-2 | 30d | 2012-07-17 | 2012-08-23 | PP1EE09501C0 |  |  |  |  | 175.47d | 107.39d | ELECTRICAL [183.6 h]; Cost |  |  |  |  | CP2ME27020C0 | PP1EE27006C0 | PA | C | P1 | ER | ME | 270 | 06 | PE | S | BILL 2 | B02 | S2 | 2F | R00 | ACF04 | PE-2 | 270 | 2n | MEP |  |  | E |
| PP1EE09203C0 |  | PA-P1 ; Partitions Closing (Elec RM)_PE-2 | 42d | 2012-07-25 | 2012-09-15 | PAFOA09201C1 FF, PP1EE09202C0, PP1EE08102C0 FF, PGLS103391C250, PGLS103331C270, PP1EE09502C0 FF, PP1EM26008C0 SS |  |  |  |  | 120.72d | 0d | PARTITIONS [4 m]; PARTITIONS [36 h]; Cost |  |  |  | 1540 | CP2ME09205C0 | PP1EE09203C0 | PA | C | P1 | ER | PT | 092 | 03 | PE | S | BILL 2 | B02 | S2 | FF | R00 | ACF06 | PE-2 | 092 |  | GP | P2F |  |  |
| PP1EE26004C0 |  | PA-P1 ; Final Fix, Inst of Ceiling rose (Elec RM)_PE-2 | 24d | 2012-08-15 | 2012-09-15 | PP1EE09501C0, PGLS103391C250, PGLS103331C270, PP1EE09502C0 FF, PP1EM26008C0 SS |  |  |  |  | 156.72d | 88.64d | ELECTRICAL [25.2 h]; Cost |  |  |  |  | CP2ME26032C0 | PP1EE26004C0 | PA | C | P1 | ER | ME | 260 | 04 | PE | S | BILL 2 | B02 | S2 | FF | R00 | ACF07 | PE-2 | 260 | FF | MEP |  |  |  |
| PP1EE09502C0 |  | PA-P1 ; Ceiling closure (Elec RM)_PE-2 | 18.75d | 2012-08-23 | 2012-09-15 | PAFOA09500C1 FF, PP1EE09501C0, PP1EE23006C0, PP1EE26007C0, PP1EE26008C0, PP1EE27001C0, PP1EE27005C0, PGLS103391C250, PGLS103331C270, PP1EM26008C0 SS |  |  |  |  | 120.72d | 0d | ASSORTED CEILING FINISH [172.81 h]; CEILING GYPSUM [85.89 h]; ASSORTED CEILING FINISH [281 m2]; CEILING GYPSUM [262 m2]; Cost |  |  | 324 | 1409 | CP2ME09503C0 | PP1EE09502C0 | PA | C | P1 | ER | CE | 095 | 02 | PE | S | BILL 2 | B02 | S2 | 02 | R00 | ACF06 | PE-2 | 095 |  |  |  |  |  |
| PP1EE05501C0 |  | PA-P1 ; Handrails & balustrade (Elec RM)_PE-2 | 36d | 2012-08-25 | 2012-10-06 | PP1EE09902C0, PGLS103391C250, PGLS103331C270, PP1EE08103C0 FF |  |  |  |  | 138.72d | 70.64d | SECONDARY STEEL [328 h]; Cost |  |  |  |  | CP2ME05501C0 | PP1EE05501C0 | PA | C | P1 | ER | SW | 055 | 01 | PE | S | BILL 2 | B02 | S2 | 01 | R00 | ACF03 | PE-2 | a |  |  |  |  |  |
| PP1EE09901C0 |  | PA-P1 ; Wall - final Paint (Elec RM)_PE-2 | 12d | 2012-09-01 | 2012-09-15 | PP1EE09902C0, PGLS103391C250, PGLS103331C270, PP1EE09904C0 FF, PP1EM26008C0 SS |  |  |  |  | 138.72d | 18d | WALL PAINT [276 h]; WALL PAINT [343 m2]; Cost |  |  | 329 | 1379 | CP2ME09903C0 | PP1EE09901C0 | PA | C | P1 | ER | PA | 099 | 01 | PE | S | BILL 2 | B02 | S2 | 02 | R00 | ACF06 | PE-2 | 099 |  |  |  |  |  |
| PP1EE09904C0 |  | PA-P1 ; Ceiling - final Paint (Elec RM)_PE-2 | 11.88d | 2012-09-01 | 2012-09-15 | PP1EE09903C0, PGLS103391C250, PGLS103331C270, PP1EE09502C0 FF, PP1EM26008C0 SS |  |  |  |  | 138.72d | 0d | ASSORTED CEILING FINISH [12 h]; Cost |  |  |  | 1546 | CP2ME09907C0 | PP1EE09904C0 | PA | C | P1 | ER | PA | 099 | 04 | PE | S | BILL 2 | B02 | S2 | 02 | R00 | ACF06 | PE-2 | 099 |  |  |  |  |  |
| PP1EE09601C0 |  | PA-P1 ; Flooring (Elec RM)_PE-2 | 18d | 2012-09-15 | 2012-10-06 | PP1EE09902C0, PP1EE09903C0, PP1EE23008C0, PGLS103391C250, PGLS103331C270, PP1EE09901C0 FF, PP1EM26008C0 SS, PP1EE09203C0 |  |  |  |  | 120.72d | 0d | ASSORTED FLOOR FINISH [2200 h]; ASSORTED FLOOR FINISH [1219 m2]; Cost |  |  | 326 | 1377 | CP2ME09601C0 | PP1EE09601C0 | PA | C | P1 | ER | FF | 096 | 01 | PE | S | BILL 2 | B02 | S2 | 01 | R00 | ACF06 | PE-2 | FF |  |  |  |  |  |
| PP1EE21101C0 |  | PA-P1 ; Final Fix, Gaseous Fire Suppression Electrical Room (Elec RM)_PE-2 | 28d | 2012-09-15 | 2012-10-17 | PP1EE09502C0, PGLS103391C250, PGLS103331C270, PP1EM26008C0 SS |  |  |  |  | 128.72d | 60.64d | MECHANICAL [697.2 h]; Cost |  |  |  |  | CP2ME21109C0 | PP1EE21101C0 | PA | C | P1 | ER | ME | 211 | 01 | PE | S | BILL 2 | B02 | S2 | FF | R00 | ACF07 | PE-2 | 211 | FF | MEP |  |  |  |
| PP1EE21102C0 |  | PA-P1 ; Final Fix, Gaseous Fire Suppression Transformer room (Elec RM)_PE-2 | 28d | 2012-09-15 | 2012-10-17 | PP1EE09502C0, PGLS103391C250, PGLS103331C270, PP1EM26008C0 SS |  |  |  |  | 128.72d | 60.64d | MECHANICAL [697.2 h]; Cost |  |  |  |  | CP2ME21111C0 | PP1EE21102C0 | PA | C | P1 | ER | ME | 211 | 02 | PE | S | BILL 2 | B02 | S2 | FF | R00 | ACF07 | PE-2 | 211 | FF | MEP |  |  |  |
| PP1EE21103C0 |  | PA-P1 ; Final Fix, Gaseous Fire Suppression Telecom Room (Elec RM)_PE-2 | 28d | 2012-09-15 | 2012-10-17 | PP1EE09502C0, PGLS103391C250, PGLS103331C270, PP1EM26008C0 SS |  |  |  |  | 128.72d | 60.64d | MECHANICAL [697.2 h]; Cost |  |  |  |  | CP2ME21113C0 | PP1EE21103C0 | PA | C | P1 | ER | ME | 211 | 03 | PE | S | BILL 2 | B02 | S2 | FF | R00 | ACF07 | PE-2 | 211 | FF | MEP |  |  |  |
| PP1EE23005C0 |  | PA-P1 ; Final Fix, Inst of Grilles & Diffusers (Elec RM)_PE-2 | 18d | 2012-09-15 | 2012-10-06 | PP1EE09502C0, PGLS103391C250, PGLS103331C270, PP1EM26008C0 SS, PP1EE23009C0 |  |  |  |  | 138.72d | 70.64d | MECHANICAL [495.6 h]; Cost |  |  |  |  | CP2ME23030C0 | PP1EE23005C0 | PA | C | P1 | ER | ME | 230 | 05 | PE | S | BILL 2 | B02 | S2 | FF | R00 | ACF07 | PE-2 | 230 | FF | MEP |  |  |  |
| PP1EE26003C0 |  | PA-P1 ; Final Fix, Termination & Gladding of Cables (Elec RM)_PE-2 | 22d | 2012-09-15 | 2012-10-10 | PP1EE09502C0, PGLS103391C250, PGLS103331C270, PP1EM26008C0 SS |  |  |  |  | 134.72d | 0d | ELECTRICAL [512.4 h]; Cost |  |  |  |  | CP2ME26030C0 | PP1EE26003C0 | PA | C | P1 | ER | ME | 260 | 03 | PE | S | BILL 2 | B02 | S2 | FF | R00 | ACF07 | PE-2 | 260 | FF | MEP |  |  |  |
| PP1EE26005C0 |  | PA-P1 ; Final Fix, Inst of Switch/Sockets (Elec RM)_PE-2 | 22d | 2012-09-15 | 2012-10-10 | PP1EE09502C0, PGLS103391C250, PGLS103331C270, PP1EM26008C0 SS |  |  |  |  | 134.72d | 66.64d | ELECTRICAL [124.8 h]; Cost |  |  |  |  | CP2ME26034C0 | PP1EE26005C0 | PA | C | P1 | ER | ME | 260 | 05 | PE | S | BILL 2 | B02 | S2 | FF | R00 | ACF07 | PE-2 | 260 | FF | MEP |  |  |  |
| PP1EE26006C0 |  | PA-P1 ; Final Fix, Inst of Light fittings (Elec RM)_PE-2 | 22d | 2012-09-15 | 2012-10-10 | PP1EE09502C0, PGLS103391C250, PGLS103331C270, PP1EM26008C0 SS |  |  |  |  | 134.72d | 66.64d | ELECTRICAL [3124.8 h]; Cost |  |  |  |  | CP2ME26039C0 | PP1EE26006C0 | PA | C | P1 | ER | ME | 260 | 06 | PE | S | BILL 2 | B02 | S2 | FF | R00 | ACF07 | PE-2 | 260 | FF | MEP |  |  |  |
| PP1EE27004C0 |  | PA-P1 ; Final Fix, Inst of ELV device (Detector/Speaker) (Elec RM)_PE-2 | 18d | 2012-09-15 | 2012-10-06 | PP1EE09502C0, PGLS103391C250, PGLS103331C270, PP1EM26008C0 SS |  |  |  |  | 138.72d | 70.64d | ELECTRICAL [78 h]; Cost |  |  |  |  | CP2ME27030C0 | PP1EE27004C0 | PA | C | P1 | ER | ME | 270 | 04 | PE | S | BILL 2 | B02 | S2 | FF | R00 | ACF07 | PE-2 | 270 | FF | MEP |  |  |  |
| PP1EE27003C0 |  | PA-P1 ; Final Fix, BMS connection work to Equipment (Elec RM)_PE-2 | 18d | 2012-09-19 | 2012-10-10 | PP1EE26009C0, PGLS103391C250, PGLS103331C270, PP1EE26003C0 FF, PP1EM26008C0 SS |  |  |  |  | 134.72d | 66.64d | ELECTRICAL [2473.2 h]; Cost |  |  |  |  | CP2ME27032C0 | PP1EE27003C0 | PA | C | P1 | ER | ME | 270 | 03 | PE | S | BILL 2 | B02 | S2 | FF | R00 | ACF07 | PE-2 | 270 | FF | MEP |  |  |  |
| PP1EE08103C0 |  | PA-P1 ; Metal Doors (Elec RM)_PE-2 | 12d | 2012-09-22 | 2012-10-06 | PP1EE08102C0, PGLS103391C250, PGLS103331C270, PP1EE09601C0 FF, PP1EM26008C0 SS |  |  |  |  | 124.72d | 0d | METAL DOORS [40 h]; METAL DOORS [4 no]; Cost |  |  | 317 | 1375 | CP2ME08105C0 | PP1EE08103C0 | PA | C | P1 | ER | DO | 081 | 03 | PE | S | BILL 2 | B02 | S2 | DR | R00 | ACF06 | PE-2 | 081 |  |  |  | 08 |  |
| PP1EE08701C0 |  | PA-P1 ; Ironmongery (Elec RM)_PE-2 | 14d | 2012-10-06 | 2012-10-22 | PP1EE08103C0, PGLS103391C250, PGLS103331C270, PP1EM26008C0 SS |  |  |  |  | 124.72d | 56.64d | IRONMONGERY [40 h]; IRONMONGERY [4 no]; Cost |  |  | 322 | 6230 | CP2ME08709C0 | PP1EE08701C0 | PA | C | P1 | ER | DO | 087 | 01 | PE | S | BILL 2 | B02 | S2 | IM | R00 | ACF06 | PE-2 | 087 |  |  |  | 08 |  |
| PP1EE22001C0 |  | PA-P1 ; Final Fix, Inst of All drain (Elec RM)_PE-2 | 18d | 2012-10-06 | 2012-10-29 | PP1EE09601C0, PGLS103391C250, PGLS103331C270, PP1EM26008C0 SS |  |  |  |  | 120.72d | 52.64d | PLUMBING [2156.4 h]; Cost |  |  |  |  | CP2ME22037C0 | PP1EE22001C0 | PA | C | P1 | ER | ME | 220 | 01 | PE | S | BILL 2 | B02 | S2 | FF | R00 | ACF07 | PE-2 | 220 | FF | MEP |  |  |  |

| ID | WBS | Activity | Duration | Start | Finish | Predecessors | Complete | Remaining | Planned start | Planned finish | Total float | Free float | Resources | Cost | Actual cost | change id | IDDD | CCAD BUILDING(SET) | CCAD PHASE(SET) | CCAD FLOOR(SET) | CCAD ZONE(SET) | CCAD WORK(SET) | CCAD SECTION(SET) | CCAD SERIAL No.(SET) | CCAD Carpark code(SET) | CCAD Carpark district code(set) | CCAD CBS(SET) | CCAD BILL(SET) | CCAD HANDOVER(SET) | CCAD TAG(SET) | CCAD REV(SET) | CCADACF (SET) | FSP CODE | CCAD SSCF | July2011 Target% Complete | Claimed This Month | P_811 | P_711 | CCAD SUB ZONE MEP(SET) | CCAD CSA | Act Selector % | Change Order # | NEW ACTIVITY ID | CCAD MEQ | CCAD DIVISION(SET) |
| --- | --- | --- | --- | --- | --- | --- | --- | --- | --- | --- | --- | --- | --- | --- | --- | --- | --- | --- | --- | --- | --- | --- | --- | --- | --- | --- | --- | --- | --- | --- | --- | --- | --- | --- | --- | --- | --- | --- | --- | --- | --- | --- | --- | --- | --- |
|  | EM1 | **MECHANICAL ROOMS (1 NOS.) :Zone PE-1** |  | 2011-06-14 | 2012-06-04 |  |  |  |  |  |  |  |  |  |  |  |  |  |  |  |  |  |  |  |  |  |  |  |  |  |  |  |  |  |  |  |  |  |  |  |  |  |  |  |  |
| PP1EM04001C10 |  | PA-P1 ; Block Wall Works (Mech RM)_PE-1 | 4d | 2011-06-14 A | 2011-07-31 A | PGLS103391C30, PP1EM09902C10 | 100% |  | 2011-06-30 | 2011-07-04 |  |  | BLOCKWORKS [1700 h]; BLOCKWORKS [485.71 m2]; Cost |  |  | AP1M104001C0 | PP1EM04001C0 | PA | C | P1 | M1 | BL | 040 | 01 | PE | S | BILL 2 | B02 | S2 | BL | R00 | ACF06 | PE-1 | 040 |  |  |  |  |  |  |  |  |  |  |  |
| PP1EM23003C10 |  | PA-P1 ; 1st Fix, Inst. of Supports for MEP (Mech RM)_PE-1 | 3.77d | 2011-06-20 A | 2011-08-30 A | PP1EM04001C10 | 100% |  | 2011-07-12 | 2011-07-16 |  |  | MECHANICAL [88.8 h]; Cost [5036.17 AED] | 5,036.17 | 5,036.17 | C04ME23001C0 | PP1EM23003C0 | PA | C | P1 | M1 | ME | 230 | 03 | PE | S | BILL 2 | B02 | S2 | 1F | R00 | ACF04 | PE-1 | 230 | 45 | 1416.68 | 100 | 45 | 1S | MEP | M1F |  |  |  |  |
| PP1EM22003C10 |  | PA-P1 ; 1st Fix, Inst of Water supply pipe (Mech RM)_PE-1 | 7d | 2011-06-22 A | 2011-08-30 A | PP1EM22001C10 SS, PP1EM23003C10 SS, PP1EM04001C10 | 100% |  | 2011-08-06 | 2011-08-14 |  |  | PLUMBING [868.8 h]; Cost [47459.9 AED] | 47,459.95 | 47,459.95 | C04ME22006C0 | PP1EM22003C0 | PA | C | P1 | M1 | ME | 220 | 03 | PE | S | BILL 2 | B02 | S2 | 1F | R00 | ACF04 | PE-1 | 220 | 45 | 11007.35 | 100 | 45 | 1S | MEP | M1F |  |  |  |  |
| PP1EM26002C10 |  | PA-P1 ; 1st Fix, Inst of Trunking/Conduiting (Mech RM)_PE-1 | 7d | 2011-06-22 A | 2011-10-02 | PP1EM23003C10 SS, PP1EM04001C10 | 90% | 0.7d | 2011-07-16 | 2011-07-24 | 262.3d | 0d | ELECTRICAL [27.6 h]; Cost [1607.01 AED] | 1,607.01 | 1,446.31 | C04ME26001C0 | PP1EM26002C0 | PA | C | P1 | M1 | ME | 260 | 02 | PE | S | BILL 2 | B02 | S2 | 1F | R00 | ACF04 | PE-1 | 260 | 45 | 357.83 | 60 | 35 | 1S | MEP | M1F |  |  |  |  |
| PP1EM22001C10 |  | PA-P1 ; 1st Fix, Inst of Drainage pipe (Mech RM)_PE-1 | 8d | 2011-06-23 A | 2011-08-30 A | PP1EM23003C10 SS, PP1EM26002C10 SS, PP1EM04001C10 | 100% |  | 2011-07-27 | 2011-08-06 |  |  | PLUMBING [308.4 h]; Cost [16820.5 AED] | 16,820.5 | 16,820.5 | C04ME22011C0 | PP1EM22001C0 | PA | C | P1 | M1 | ME | 220 | 01 | PE | S | BILL 2 | B02 | S2 | 1F | R00 | ACF04 | PE-1 | 220 | 45 | 1952.11 | 100 | 45 | 1S | MEP | M1F |  |  |  |  |
| PP1EM21101C10 |  | PA-P1 ; 1st Fix, Inst of Sprinkler branch pipe (Mech RM)_PE-1 | 8d | 2011-06-25 A | 2011-08-30 A | PP1EM21102C10 SS, PP1EM04001C10 | 100% |  | 2011-08-29 | 2011-09-10 |  |  | MECHANICAL [1153.2 h]; Cost [63050.2 AED] | 63,050.21 | 63,050.21 | C04ME21119C0 | PP1EM21101C0 | PA | C | P1 | M1 | ME | 211 | 01 | PE | S | BILL 2 | B02 | S2 | 1F | R00 | ACF04 | PE-1 | 211 | 75 | 18267.69 | 100 | 75 | 1S | MEP | M1F |  |  |  |  |
| PP1EM21102C10 |  | PA-P1 ; 1st Fix, Inst of Sprinkler main pipe (Mech RM)_PE-1 | 10d | 2011-06-25 A | 2011-08-30 A | PP1EM22003C10 SS, PP1EM23003C10 SS, PP1EM04001C10 | 100% |  | 2011-08-17 | 2011-08-29 |  |  | MECHANICAL [1402.8 h]; Cost [76638 AED] | 76,637.99 | 76,637.99 | C04ME21111C0 | PP1EM21102C0 | PA | C | P1 | M1 | ME | 211 | 02 | PE | S | BILL 2 | B02 | S2 | 1F | R00 | ACF04 | PE-1 | 211 | 65 | 22220.45 | 100 | 65 | 1S | MEP | M1F |  |  |  |  |
| PP1EM23001C10 |  | PA-P1 ; 1st Fix, Inst of CHW pipe (Mech RM)_PE-1 | 10d | 2011-06-26 A | 2011-08-30 A | PP1EM21102C10 SS, PP1EM23003C10 SS, PP1EM04001C10 | 100% |  | 2011-09-05 | 2011-09-17 |  |  | MECHANICAL [442.8 h]; Cost [24164 AED] | 24,164.05 | 24,164.05 | C04ME23019C0 | PP1EM23001C0 | PA | C | P1 | M1 | ME | 230 | 01 | PE | S | BILL 2 | B02 | S2 | 1F | R00 | ACF04 | PE-1 | 230 | 45 | 2802.92 | 100 | 45 | 1S | MEP | M1F |  |  |  |  |
| PP1EM23002C10 |  | PA-P1 ; 1st Fix, Inst of Ducting (Mech RM)_PE-1 | 10.71d | 2011-08-10 A | 2011-09-29 A | PP1EM23003C10 SS, PP1EM04001C10 | 100% |  | 2011-12-27 | 2012-01-09 |  |  | MECHANICAL [564 h]; Cost [30818.1 AED] | 30,818.14 | 30,818.14 | C04ME23005C0 | PP1EM23002C0 | PA | C | P1 | M1 | ME | 230 | 02 | PE | S | BILL 2 | B02 | S2 | 1F | R00 | ACF04 | PE-1 | 230 |  |  | 20 | 0 | 1S | MEP | M1F |  |  |  |  |
| PP1EM26001C10 |  | PA-P1 ; 1st Fix, Inst of Cable Tray (Mech RM)_PE-1 | 7d | 2011-08-10 A | 2011-10-02 | PP1EM04001C10 | 90% | 0.7d | 2011-12-31 | 2012-01-08 | 261.6d | 0d | ELECTRICAL [9.6 h]; Cost [661.71 AED] | 661.71 | 595.54 | C04ME26011C0 | PP1EM26001C0 | PA | C | P1 | M1 | ME | 260 | 01 | PE | S | BILL 2 | B02 | S2 | 1F | R00 | ACF04 | PE-1 | 260 |  |  | 60 | 0 | 1S | MEP | M1F |  |  |  |  |
| PP1EM09902C10 |  | PA-P1 ; Wall Prime & 1st coat (Mech RM)_PE-1 | 4d | 2011-09-05 A | 2011-09-29 A | PGLS103391C40 FS+12d, PGLS103391C10 FS+12d | 100% |  | 2012-01-18 | 2012-01-23 |  |  | WALL PAINT [366 h]; WALL PAINT [455 m2]; Cost |  |  | C04ME09901C0 | PP1EM09902C0 | PA | C | P1 | M1 | PA | 099 | 02 | PE | S | BILL 2 | B02 | S2 | 01 | R00 | ACF06 | PE-1 | 099 |  |  |  |  |  |  |  | 328 | 1469 |  |  |
| PP1EM21104C10 |  | PA-P1 ; 2nd Fix, Inst of Sprinkler droppers (Mech RM)_PE-1 | 4d | 2011-09-05 A | 2011-09-29 A | PP1EM21101C10, PAFOA09201C1, PP1EM22001C10, PP1EM22003C10, PP1EM04001C10 SS+26d, PP1EM04001C10 FS+12d, PP1EM23004C10 FS+12d | 100% |  | 2012-01-18 | 2012-01-23 |  |  | MECHANICAL [457.2 h]; Cost [24923.7 AED] | 24,923.67 | 24,923.67 | C04ME21115C0 | PP1EM21104C0 | PA | C | P1 | M1 | ME | 211 | 04 | PE | S | BILL 2 | B02 | S2 | 2F | R00 | ACF07 | PE-1 | 211 |  |  |  |  | 2n | MEP |  |  |  |  |  |
| PP1EM23008C10 |  | PA-P1 ; 2nd Fix, Insulation of CHW pipe & Duct (Mech RM)_PE-1 | 30d | 2011-09-05 A | 2011-10-04 | PP1EM23001C10, PP1EM23002C10 | 90% | 3d | 2012-01-11 | 2012-02-16 | 301.3d | 27d | MECHANICAL [529.2 h]; Cost [28887.5 AED] | 28,887.52 | 25,998.77 | C04ME23017C0 | PP1EM23008C0 | PA | C | P1 | M1 | ME | 230 | 08 | PE | S | BILL 2 | B02 | S2 | 2F | R00 | ACF07 | PE-1 | 230 |  |  |  |  | 2n | MEP |  |  |  |  |  |
| PP1EM27001C10 |  | PA-P1 ; 1st Fix, Inst of Trunking for ELV system (Mech RM)_PE-1 | 6d | 2011-09-05 A | 2011-10-02 | PP1EM23002C10 SS, PP1EM04001C10 | 85% | 0.9d | 2011-12-31 | 2012-01-08 | 291.4d | 0d | ELECTRICAL [76.8 h]; Cost [4225.55 AED] | 4,225.55 | 3,591.71 | C04ME27010C0 | PP1EM27001C0 | PA | C | P1 | M1 | ME | 270 | 01 | PE | S | BILL 2 | B02 | S2 | 1F | R00 | ACF04 | PE-1 | 270 |  |  |  |  | 1S | MEP | M1F |  |  |  |  |
| PP1EM27002C10 |  | PA-P1 ; 1st Fix, Wiring/ Cabling work (Mech RM)_PE-1 | 6d | 2011-09-05 A | 2011-10-02 | PP1EM26001C10 SS, PP1EM26002C10 SS, PP1EM27001C10 SS, PP1EM04001C10 | 90% | 0.6d | 2012-01-08 | 2012-01-15 | 291.7d | 30.1d | ELECTRICAL [10.8 h]; Cost [610.3 AED] | 610.3 | 549.27 | C04ME27001C0 | PP1EM27002C0 | PA | C | P1 | M1 | ME | 270 | 02 | PE | S | BILL 2 | B02 | S2 | 1F | R00 | ACF04 | PE-1 | 270 |  |  |  |  | 1S | MEP | M1F |  |  |  |  |
| PP1EM23004C10 |  | PA-P1 ; 2nd Fix, Inst of Equipment (AHU) (Mech RM)_PE-1 | 30d | 2011-10-01 | 2011-11-05 | PP1EM04001C10, PP1EM22001C10 FF, PP1EM22003C10 FF |  |  |  |  | 232.3d | 0d | MECHANICAL [75.6 h]; Cost |  |  | C04ME23013C0 | PP1EM23004C0 | PA | C | P1 | M1 | ME | 230 | 04 | PE | S | BILL 2 | B02 | S2 | 2F | R00 | ACF04 | PE-1 | 230 |  |  |  |  | 2n | MEP |  |  |  | H |  |
| PP1EM23007C10 |  | PA-P1 ; 2nd Fix, Inst of VCD's/FD's (Mech RM)_PE-1 | 30d | 2011-10-01 | 2011-11-05 | PP1EM23002C10 |  |  |  |  | 274.3d | 0d | MECHANICAL [166.8 h]; Cost |  |  | C04ME23015C0 | PP1EM23007C0 | PA | C | P1 | M1 | ME | 230 | 07 | PE | S | BILL 2 | B02 | S2 | 2F | R00 | ACF07 | PE-1 | 230 |  |  |  |  | 2n | MEP |  |  |  |  |  |
| PP1EM26003C10 |  | PA-P1 ; 2nd Fix, Cable Pulling (Mech RM)_PE-1 | 30d | 2011-10-02 | 2011-11-09 | PP1EM26001C10 |  |  |  |  | 261.6d | 0d | ELECTRICAL [585.6 h]; Cost |  |  | C04ME26007C0 | PP1EM26003C0 | PA | C | P1 | M1 | ME | 260 | 03 | PE | S | BILL 2 | B02 | S2 | 2F | R00 | ACF07 | PE-1 | 260 |  |  |  |  | 2n | MEP |  |  |  |  |  |
| PP1EM08102C10 |  | PA-P1 ; Metal Door Frames (Mech RM)_PE-1 | 2.73d | 2011-11-05 | 2011-11-12 | GNHE08101C0, PP1EM04001C10 SS+14d, PP1EM04001C10, PP1EM23004C10, PGLS103331C260 |  |  |  |  | 298.57d | 148.69d | METAL DOORS [35 h]; Cost |  |  | C04ME08101C0 | PP1EM08102C0 | PA | C | P1 | M1 | DO | 081 | 02 | PE | S | BILL 2 | B02 | S2 | DF | R00 | ACF06 | PE-1 | 081 |  |  |  |  |  |  |  | 316 | 1465 |  | 08 |
| PP1EM21105C10 |  | PA-P1 ; 2nd Fix, Inst of Zone Control Valve (Mech RM)_PE-1 | 30d | 2011-11-05 | 2011-12-15 | PP1EM23001C10, PP1EM23004C10 |  |  |  |  | 262.3d | 121.42d | MECHANICAL [105.6 h]; Cost |  |  | C04ME21117C0 | PP1EM21105C0 | PA | C | P1 | M1 | ME | 211 | 05 | PE | S | BILL 2 | B02 | S2 | 2F | R00 | ACF07 | PE-1 | 211 |  |  |  |  | 2n | MEP |  |  |  |  |  |
| PP1EM23005C10 |  | PA-P1 ; 2nd Fix, Inst of Equipment (FCU,FAN,PUMP) (Mech RM)_PE-1 | 30d | 2011-11-05 | 2011-12-15 | PP1EM23004C10 |  |  |  |  | 232.3d | 0d | MECHANICAL [312 h]; Cost |  |  | C04ME23011C0 | PP1EM23005C0 | PA | C | P1 | M1 | ME | 230 | 05 | PE | S | BILL 2 | B02 | S2 | 2F | R00 | ACF04 | PE-1 | 230 |  |  |  |  | 2n | MEP |  |  |  | H |  |
| PP1EM23009C10 |  | PA-P1 ; 2nd Fix, Inst of Flexible Duct & Plenum boxes (Mech RM)_PE-1 | 18d | 2011-11-05 | 2011-11-30 | PP1EM23007C10, PP1EM23008C10, PGLS103331C260 |  |  |  |  | 274.3d | 133.43d | MECHANICAL [4.8 h]; Cost |  |  | C04ME23023C0 | PP1EM23009C0 | PA | C | P1 | M1 | ME | 230 | 09 | PE | S | BILL 2 | B02 | S2 | FF | R00 | ACF07 | PE-1 | 230 |  |  |  |  | FF | MEP |  |  |  |  |  |
| PP1EM26004C10 |  | PA-P1 ; 2nd Fix, Inst of Equipment (DB, TR, SG) (Mech RM)_PE-1 | 30d | 2011-11-05 | 2011-12-15 | PP1EM23004C10 |  |  |  |  | 262.3d | 121.42d | ELECTRICAL [170.4 h]; Cost |  |  | C04ME26009C0 | PP1EM26004C0 | PA | C | P1 | M1 | ME | 260 | 04 | PE | S | BILL 2 | B02 | S2 | 2F | R00 | ACF04 | PE-1 | 260 |  |  |  |  | 2n | MEP |  |  |  | E |  |
| PP1EM27003C10 |  | PA-P1 ; 2nd Fix, Inst of ELV Equipment (Panels) (Mech RM)_PE-1 | 30d | 2011-11-05 | 2011-12-15 | PP1EM23004C10 |  |  |  |  | 262.3d | 121.42d | ELECTRICAL [26.4 h]; Cost |  |  | C04ME27020C0 | PP1EM27003C0 | PA | C | P1 | M1 | ME | 270 | 03 | PE | S | BILL 2 | B02 | S2 | 2F | R00 | ACF04 | PE-1 | 270 |  |  |  |  | 2n | MEP |  |  |  | E |  |
| PP1EM26005C10 |  | PA-P1 ; 2nd Fix, Wiring for Power/Lighting/Emergency (Mech RM)_PE-1 | 30d | 2011-11-09 | 2011-12-17 | PP1EM26001C10, PP1EM26002C10, PP1EM26003C10, PP1EM27001C10, PP1EM27002C10 |  |  |  |  | 261.6d | 120.72d | ELECTRICAL [10.8 h]; Cost |  |  | C04ME26005C0 | PP1EM26005C0 | PA | C | P1 | M1 | ME | 260 | 05 | PE | S | BILL 2 | B02 | S2 | 2F | R00 | ACF07 | PE-1 | 260 |  |  |  |  | 2n | MEP |  |  |  |  |  |
| PP1EM23006C10 |  | PA-P1 ; 2nd Fix, Inst of VAV'S CHW connection (Mech RM)_PE-1 | 30d | 2011-12-15 | 2012-01-21 | PP1EM23005C10 |  |  |  |  | 232.3d | 91.42d | MECHANICAL [7.2 h]; Cost |  |  | C04ME23009C0 | PP1EM23006C0 | PA | C | P1 | M1 | ME | 230 | 06 | PE | S | BILL 2 | B02 | S2 | 2F | R00 | ACF07 | PE-1 | 230 |  |  |  |  | 2n | MEP |  |  |  |  |  |
| PP1EM08103C10 |  | PA-P1 ; Metal Doors (Mech RM)_PE-1 | 3d | 2012-05-08 | 2012-05-12 | PP1EM08102C10, PGLS103331C260, PP1DP09902C10 SS |  |  |  |  | 149.88d | 0d | METAL DOORS [31 h]; METAL DOORS [3.14 no]; Cost |  |  | C04ME08105C0 | PP1EM08103C0 | PA | C | P1 | M1 | DO | 081 | 03 | PE | S | BILL 2 | B02 | S2 | DR | R00 | ACF06 | PE-1 | 081 |  |  |  |  |  |  |  | 317 | 1466 |  | 08 |
| PP1EM09601C10 |  | PA-P1 ; Floor Finishes (Mech RM)_PE-1 | 5d | 2012-05-08 | 2012-05-14 | PAFOA09201C1, PP1EM22001C10, PP1EM22003C10, PP1EM04001C10 SS+26d, PP1EM04001C10 FS+12d, PP1EM23004C10 FS+12d, PGLS103331C260, PP1DP09902C10 SS |  |  |  |  | 135.88d | 0d | ASSORTED FLOOR FINISH [1568 h]; ASSORTED FLOOR FINISH [871 m2]; Cost |  |  | C04ME09601C0 | PP1EM09601C0 | PA | C | P1 | M1 | FF | 096 | 01 | PE | S | BILL 2 | B02 | S2 | 01 | R00 | ACF06 | PE-1 | FF |  |  |  |  |  |  |  | 326 | 1501 |  |  |
| PP1EM09901C10 |  | PA-P1 ; Wall - final Paint (Mech RM)_PE-1 | 4d | 2012-05-08 | 2012-05-13 | PP1EM09902C10, PGLS103331C260, PP1DP09902C10 SS |  |  |  |  | 154.88d | 146.88d | WALL PAINT [198 h]; WALL PAINT [245 m2]; Cost |  |  | C04ME09903C0 | PP1EM09901C0 | PA | C | P1 | M1 | PA | 099 | 01 | PE | S | BILL 2 | B02 | S2 | 02 | R00 | ACF06 | PE-1 | 099 |  |  |  |  |  |  |  | 329 | 1470 |  |  |
| PP1EM21106C10 |  | PA-P1 ; Final Fix, Inst of Fire Extinguishers/FHC (Mech RM)_PE-1 | 18d | 2012-05-08 | 2012-05-29 | PAFOA09201C1, PP1EM22001C10, PP1EM22003C10, PP1EM04001C10 SS+26d, PP1EM04001C10 FS+12d, PP1EM23004C10 FS+12d, PGLS103331C260, PP1DP09902C10 SS |  |  |  |  | 140.88d | 132.88d | MECHANICAL [288 h]; Cost |  |  | C04ME21123C0 | PP1EM21106C0 | PA | C | P1 | M1 | ME | 211 | 06 | PE | S | BILL 2 | B02 | S2 | FF | R00 | ACF07 | PE-1 | 211 |  |  |  |  | FF | MEP |  |  |  |  |  |
| PP1EM21107C10 |  | PA-P1 ; Final Fix, Inst of Sprinklers head (Mech RM)_PE-1 | 18d | 2012-05-08 | 2012-05-29 | PP1EM21104C10, PGLS103331C260, PP1DP09902C10 SS |  |  |  |  | 140.88d | 132.88d | MECHANICAL [199.2 h]; Cost |  |  | C04ME21121C0 | PP1EM21107C0 | PA | C | P1 | M1 | ME | 211 | 07 | PE | S | BILL 2 | B02 | S2 | FF | R00 | ACF07 | PE-1 | 211 |  |  |  |  | FF | MEP |  |  |  |  |  |
| PP1EM23010C10 |  | PA-P1 ; Final Fix, Inst of Grilles & Diffusers (Mech RM)_PE-1 | 18d | 2012-05-08 | 2012-05-29 | PP1EM23009C10, PGLS103331C260, PP1DP09902C10 SS |  |  |  |  | 140.88d | 132.88d | MECHANICAL [70.8 h]; Cost |  |  | C04ME23021C0 | PP1EM23010C0 | PA | C | P1 | M1 | ME | 230 | 10 | PE | S | BILL 2 | B02 | S2 | FF | R00 | ACF07 | PE-1 | 230 |  |  |  |  | FF | MEP |  |  |  |  |  |
| PP1EM26006C10 |  | PA-P1 ; Final Fix, Inst of Ceiling rose (Mech RM)_PE-1 | 18d | 2012-05-08 | 2012-05-29 | PAFOA09201C1, PP1EM22001C10, PP1EM22003C10, PP1EM04001C10 SS+26d, PP1EM04001C10 FS+12d, PP1EM23004C10 FS+12d, PGLS103331C260, PP1DP09902C10 SS |  |  |  |  | 140.88d | 132.88d | ELECTRICAL [3.6 h]; Cost |  |  | C04ME26015C0 | PP1EM26006C0 | PA | C | P1 | M1 | ME | 260 | 06 | PE | S | BILL 2 | B02 | S2 | FF | R00 | ACF07 | PE-1 | 260 |  |  |  |  | FF | MEP |  |  |  |  |  |
| PP1EM26007C10 |  | PA-P1 ; Final Fix, Inst of Light fittings (Mech RM)_PE-1 | 18d | 2012-05-08 | 2012-05-29 | PP1EM09902C10, PGLS103331C260, PP1DP09902C10 SS |  |  |  |  | 140.88d | 132.88d | ELECTRICAL [446.4 h]; Cost |  |  | C04ME26019C0 | PP1EM26007C0 | PA | C | P1 | M1 | ME | 260 | 07 | PE | S | BILL 2 | B02 | S2 | FF | R00 | ACF07 | PE-1 | 260 |  |  |  |  | FF | MEP |  |  |  |  |  |
| PP1EM26008C10 |  | PA-P1 ; Final Fix, Inst of Switch/Sockets (Mech RM)_PE-1 | 18d | 2012-05-08 | 2012-05-29 | PP1EM09902C10, PGLS103331C260, PP1DP09902C10 SS |  |  |  |  | 140.88d | 132.88d | ELECTRICAL [18 h]; Cost |  |  | C04ME26017C0 | PP1EM26008C0 | PA | C | P1 | M1 | ME | 260 | 08 | PE | S | BILL 2 | B02 | S2 | FF | R00 | ACF07 | PE-1 | 260 |  |  |  |  | FF | MEP |  |  |  |  |  |
| PP1EM26009C10 |  | PA-P1 ; Final Fix, Termination & Gladding of Cables (Mech RM)_PE-1 | 18d | 2012-05-08 | 2012-05-29 | PP1EM26005C10, PAFOA09201C1, PP1EM22001C10, PP1EM22003C10, PP1EM04001C10 SS+26d, PP1EM04001C10 FS+12d, PP1EM23004C10 FS+12d, PGLS103331C260, PP1DP09902C10 SS |  |  |  |  | 140.88d | 132.88d | ELECTRICAL [73.2 h]; Cost |  |  | C04ME26013C0 | PP1EM26009C0 | PA | C | P1 | M1 | ME | 260 | 09 | PE | S | BILL 2 | B02 | S2 | FF | R00 | ACF07 | PE-1 | 260 |  |  |  |  | FF | MEP |  |  |  |  |  |
| PP1EM27004C10 |  | PA-P1 ; Final Fix, BMS connection work to Equipment (Mech RM)_PE-1 | 18d | 2012-05-08 | 2012-05-29 | PP1EM21105C10, PP1EM23004C10, PP1EM23005C10, PP1EM23007C10, PP1EM26004C10, PP1EM27002C10, PP1EM27003C10, PGLS103331C260, PP1DP09902C10 SS |  |  |  |  | 140.88d | 132.88d | ELECTRICAL [333.6 h]; Cost |  |  | C04ME27003C0 | PP1EM27004C0 | PA | C | P1 | M1 | ME | 270 | 04 | PE | S | BILL 2 | B02 | S2 | FF | R00 | ACF07 | PE-1 | 270 |  |  |  |  | FF | MEP |  |  |  |  |  |
| PP1EM27005C10 |  | PA-P1 ; Final Fix, Inst of ELV device (Detector/Speaker) (Mech RM)_PE-1 | 18d | 2012-05-08 | 2012-05-29 | PP1EM09902C10, PP1EM23006C10, PP1EM27003C10, PGLS103331C260, PP1DP09902C10 SS |  |  |  |  | 140.88d | 132.88d | ELECTRICAL [10.8 h]; Cost |  |  | C04ME27030C0 | PP1EM27005C0 | PA | C | P1 | M1 | ME | 270 | 05 | PE | S | BILL 2 | B02 | S2 | FF | R00 | ACF07 | PE-1 | 270 |  |  |  |  | FF | MEP |  |  |  |  |  |
| PP1EM08101C10 |  | PA-P1 ; Al / Glass doors (Mech RM)_PE-1 | 3d | 2012-05-12 | 2012-05-15 | PP1EM08103C10, PGLS103331C260, PP1DP09902C10 SS |  |  |  |  | 149.88d | 0d | ASSORTED DOORS [49 h]; ASSORTED DOORS [4.86 no]; Cost |  |  | C04ME08109C0 | PP1EM08101C0 | PA | C | P1 | M1 | DO | 081 | 01 | PE | S | BILL 2 | B02 | S2 | 03 | R00 | ACF06 | PE-1 | 081 |  |  |  |  |  |  |  |  |  |  |  |
| PP1EM22004C10 |  | PA-P1 ; Final Fix, Inst of All drain (Mech RM)_PE-1 | 18d | 2012-05-14 | 2012-06-04 | PP1EM09601C10, PGLS103331C260, PP1DP09902C10 SS |  |  |  |  | 135.88d | 127.88d | PLUMBING [308.4 h]; Cost |  |  | C04ME22003C0 | PP1EM22004C0 | PA | C | P1 | M1 | ME | 220 | 04 | PE | S | BILL 2 | B02 | S2 | FF | R00 | ACF07 | PE-1 | 220 |  |  |  |  | FF | MEP |  |  |  |  |  |
| PP1EM08701C10 |  | PA-P1 ; Ironmongery (Mech RM)_PE-1 | 3d | 2012-05-15 | 2012-05-19 | PP1EM08101C10, PP1EM08103C10, PGLS103331C260, PP1DP09902C10 SS |  |  |  |  | 149.88d | 141.88d | IRONMONGERY [31 h]; IRONMONGERY [3.14 no]; Cost |  |  | C04ME08709C0 | PP1EM08701C0 | PA | C | P1 | M1 | DO | 087 | 01 | PE | S | BILL 2 | B02 | S2 | IM | R00 | ACF06 | PE-1 | 087 |  |  |  |  |  |  |  | 322 | 1467 |  | 08 |

| ID | WBS | Activity | Duration | Start | Finish | Predecessors | Total float | Free float | Resources | Change Order # | NEW ACTIVITY ID | change id | IDDD | CCAD BUILDING(SET) | CCAD PHASE(SET) | CCAD FLOOR(SET) | CCAD ZONE(SET) | CCAD WORK(SET) | CCAD SECTION(SET) | CCAD SERIAL No.(SET) | CCAD Carpark code(SET) | CCAD Carpark district code(set) | CCAD CBS(SET) | CCAD BILL(SET) | CCAD HANDOVER(SET) | CCAD TAG(SET) | CCAD REV(SET) | CCADACF (SET) | FSP CODE | CCAD SSCF | July2011 Target% Complete | Claimed This Month | CCAD SUB ZONE MEP(SET) | CCAD CSA | Act Selector % | CCAD MEQ | CCAD DIVISION(SET) |
| --- | --- | --- | --- | --- | --- | --- | --- | --- | --- | --- | --- | --- | --- | --- | --- | --- | --- | --- | --- | --- | --- | --- | --- | --- | --- | --- | --- | --- | --- | --- | --- | --- | --- | --- | --- | --- | --- |
|  | EM2 | **MECHANICAL ROOMS (6 NOS.) :Zone PE-2** |  | 2011-12-12 | 2012-12-13 |  |  |  |  |  |  |  |  |  |  |  |  |  |  |  |  |  |  |  |  |  |  |  |  |  |  |  |  |  |  |  |  |
| PP1EM09902C0 |  | PA-P1 ; Wall Prime & 1st coat (Mech RM)_PE-2 | 18d | 2011-12-12 | 2012-01-03 | PGLS203392C0, PGLS103391C60, PP3EM09902C20 | 76.34d | 0d | WALL PAINT [2187 h]; WALL PAINT [2730 m2]; Cost | 328 | 1469 | C04ME09901C0 | PP1EM09902C0 | PA | C | P1 | M1 | PA | 099 | 02 | PE | S | BILL 2 | B02 | S2 | 01 | R00 | ACF06 | PE-2 | 099 |  |  |  |  |  |  |  |
| PP1EM04001C0 |  | PA-P1 ; Block Wall Works (Mech RM)_PE-2 | 30d | 2012-01-03 | 2012-02-08 | PP1EM09902C0 | 76.34d | 0d | BLOCKWORKS [10200 h]; BLOCKWORKS [2914.29 m2]; Cost |  |  | AP1M104001C0 | PP1EM04001C0 | PA | C | P1 | M1 | BL | 040 | 01 | PE | S | BILL 2 | B02 | S2 | BL | R00 | ACF06 | PE-2 | 040 |  |  |  |  |  |  |  |
| PP1EM23003C0 |  | PA-P1 ; 1st Fix, Inst. of Supports for MEP (Mech RM)_PE-2 | 18d | 2012-02-08 | 2012-02-29 | PP1EM04001C0 | 91.34d | 0d | MECHANICAL [536.4 h]; Cost |  |  | C04ME23001C0 | PP1EM23003C0 | PA | C | P1 | M1 | ME | 230 | 03 | PE | S | BILL 2 | B02 | S2 | 1F | R00 | ACF04 | PE-2 | 230 | 45 | 8500.06 | 1S | MEP | M1F |  |  |
| PP1EM23004C0 |  | PA-P1 ; 2nd Fix, Inst of Equipment (AHU) (Mech RM)_PE-2 | 65d | 2012-02-08 | 2012-04-24 | PP1EM04001C0, PP1EM22001C0 FF, PP1EM22003C0 FF | 76.34d | 0d | MECHANICAL [452.4 h]; Cost |  |  | C04ME23013C0 | PP1EM23004C0 | PA | C | P1 | M1 | ME | 230 | 04 | PE | S | BILL 2 | B02 | S2 | 2F | R00 | ACF04 | PE-2 | 230 |  |  | 2n | MEP |  | H |  |
| PP1EM21102C0 |  | PA-P1 ; 1st Fix, Inst of Sprinkler main pipe (Mech RM)_PE-2 | 32d | 2012-02-29 | 2012-04-07 | PP1EM23003C0, PP1EM04001C0 | 125.34d | 0d | MECHANICAL [8420.4 h]; Cost |  |  | C04ME21111C0 | PP1EM21102C0 | PA | C | P1 | M1 | ME | 211 | 02 | PE | S | BILL 2 | B02 | S2 | 1F | R00 | ACF04 | PE-2 | 211 |  |  | 1S | MEP | M1F |  |  |
| PP1EM22001C0 |  | PA-P1 ; 1st Fix, Inst of Drainage pipe (Mech RM)_PE-2 | 32d | 2012-02-29 | 2012-04-07 | PP1EM23003C0, PP1EM04001C0 | 91.34d | 15d | PLUMBING [1848 h]; Cost |  |  | C04ME22011C0 | PP1EM22001C0 | PA | C | P1 | M1 | ME | 220 | 01 | PE | S | BILL 2 | B02 | S2 | 1F | R00 | ACF04 | PE-2 | 220 |  |  | 1S | MEP | M1F |  |  |
| PP1EM22003C0 |  | PA-P1 ; 1st Fix, Inst of Water supply pipe (Mech RM)_PE-2 | 32d | 2012-02-29 | 2012-04-07 | PP1EM23003C0, PP1EM04001C0 | 91.34d | 15d | PLUMBING [5200.8 h]; Cost |  |  | C04ME22006C0 | PP1EM22003C0 | PA | C | P1 | M1 | ME | 220 | 03 | PE | S | BILL 2 | B02 | S2 | 1F | R00 | ACF04 | PE-2 | 220 |  |  | 1S | MEP | M1F |  |  |
| PP1EM23001C0 |  | PA-P1 ; 1st Fix, Inst of CHW pipe (Mech RM)_PE-2 | 32d | 2012-02-29 | 2012-04-07 | PP1EM23003C0, PP1EM04001C0 | 189.34d | 15d | MECHANICAL [2654.4 h]; Cost |  |  | C04ME23019C0 | PP1EM23001C0 | PA | C | P1 | M1 | ME | 230 | 01 | PE | S | BILL 2 | B02 | S2 | 1F | R00 | ACF04 | PE-2 | 230 |  |  | 1S | MEP | M1F |  |  |
| PP1EM21101C0 |  | PA-P1 ; 1st Fix, Inst of Sprinkler branch pipe (Mech RM)_PE-2 | 32d | 2012-04-07 | 2012-05-14 | PP1EM21102C0, PP1EM04001C0 | 192.34d | 0d | MECHANICAL [6922.8 h]; Cost |  |  | C04ME21119C0 | PP1EM21101C0 | PA | C | P1 | M1 | ME | 211 | 01 | PE | S | BILL 2 | B02 | S2 | 1F | R00 | ACF04 | PE-2 | 211 |  |  | 1S | MEP | M1F |  |  |
| PP1EM23002C0 |  | PA-P1 ; 1st Fix, Inst of Ducting (Mech RM)_PE-2 | 32d | 2012-04-07 | 2012-05-14 | PP1EM23003C0, PP1EM04001C0, PP1EM21102C0 | 125.34d | 0d | MECHANICAL [3384 h]; Cost |  |  | C04ME23005C0 | PP1EM23002C0 | PA | C | P1 | M1 | ME | 230 | 02 | PE | S | BILL 2 | B02 | S2 | 1F | R00 | ACF04 | PE-2 | 230 |  |  | 1S | MEP | M1F |  |  |
| PP1EM09201C0 |  | PA-P1 ; Metal Studs (Mech RM)_PE-2 | 45d | 2012-04-24 | 2012-06-17 | PP1EM04001C0 SS+14d, PP1EM04001C0, PP1EM23004C0 | 76.34d | 0d | PARTITIONS [123 h]; PARTITIONS [17.14 m]; Cost |  |  | C04ME09201C0 | PP1EM09201C0 | PA | C | P1 | M1 | PT | 092 | 01 | PE | S | BILL 2 | B02 | S2 | 1F | R00 | ACF06 | PE-2 | 092 |  |  |  | GP | PMS |  |  |
| PP1EM21105C0 |  | PA-P1 ; 2nd Fix, Inst of Zone Control Valve (Mech RM)_PE-2 | 35d | 2012-04-24 | 2012-06-04 | PP1EM23001C0, PP1EM23004C0 | 209.34d | 84d | MECHANICAL [630 h]; Cost |  |  | C04ME21117C0 | PP1EM21105C0 | PA | C | P1 | M1 | ME | 211 | 05 | PE | S | BILL 2 | B02 | S2 | 2F | R00 | ACF07 | PE-2 | 211 |  |  | 2n | MEP |  |  |  |
| PP1EM23005C0 |  | PA-P1 ; 2nd Fix, Inst of Equipment (FCU,FAN,PUMP) (Mech RM)_PE-2 | 35d | 2012-04-24 | 2012-06-04 | PP1EM23004C0 | 103.79d | 0d | MECHANICAL [1872 h]; Cost |  |  | C04ME23011C0 | PP1EM23005C0 | PA | C | P1 | M1 | ME | 230 | 05 | PE | S | BILL 2 | B02 | S2 | 2F | R00 | ACF04 | PE-2 | 230 |  |  | 2n | MEP |  | H |  |
| PP1EM26004C0 |  | PA-P1 ; 2nd Fix, Inst of Equipment (DB, TR, SG) (Mech RM)_PE-2 | 35d | 2012-04-24 | 2012-06-04 | PP1EM23004C0 | 209.34d | 84d | ELECTRICAL [1022.4 h]; Cost |  |  | C04ME26009C0 | PP1EM26004C0 | PA | C | P1 | M1 | ME | 260 | 04 | PE | S | BILL 2 | B02 | S2 | 2F | R00 | ACF04 | PE-2 | 260 |  |  | 2n | MEP |  | E |  |
| PP1EM27003C0 |  | PA-P1 ; 2nd Fix, Inst of ELV Equipment (Panels) (Mech RM)_PE-2 | 35d | 2012-04-24 | 2012-06-04 | PP1EM23004C0 | 138.79d | 35d | ELECTRICAL [157.2 h]; Cost |  |  | C04ME27020C0 | PP1EM27003C0 | PA | C | P1 | M1 | ME | 270 | 03 | PE | S | BILL 2 | B02 | S2 | 2F | R00 | ACF04 | PE-2 | 270 |  |  | 2n | MEP |  | E |  |
| PP1EM21104C0 |  | PA-P1 ; 2nd Fix, Inst of Sprinkler droppers (Mech RM)_PE-2 | 35d | 2012-05-14 | 2012-06-25 | PP1EM21101C0 | 192.34d | 35d | MECHANICAL [2742 h]; Cost |  |  | C04ME21115C0 | PP1EM21104C0 | PA | C | P1 | M1 | ME | 211 | 04 | PE | S | BILL 2 | B02 | S2 | 2F | R00 | ACF07 | PE-2 | 211 |  |  | 2n | MEP |  |  |  |
| PP1EM23007C0 |  | PA-P1 ; 2nd Fix, Inst of VCD's/FD's (Mech RM)_PE-2 | 35d | 2012-05-14 | 2012-06-25 | PP1EM23002C0 | 157.34d | 0d | MECHANICAL [1002 h]; Cost |  |  | C04ME23015C0 | PP1EM23007C0 | PA | C | P1 | M1 | ME | 230 | 07 | PE | S | BILL 2 | B02 | S2 | 2F | R00 | ACF07 | PE-2 | 230 |  |  | 2n | MEP |  |  |  |
| PP1EM23008C0 |  | PA-P1 ; 2nd Fix, Insulation of CHW pipe & Duct (Mech RM)_PE-2 | 35d | 2012-05-14 | 2012-06-25 | PP1EM23001C0, PP1EM23002C0 | 157.34d | 0d | MECHANICAL [3172.8 h]; Cost |  |  | C04ME23017C0 | PP1EM23008C0 | PA | C | P1 | M1 | ME | 230 | 08 | PE | S | BILL 2 | B02 | S2 | 2F | R00 | ACF07 | PE-2 | 230 |  |  | 2n | MEP |  |  |  |
| PP1EM26001C0 |  | PA-P1 ; 1st Fix, Inst of Cable Tray (Mech RM)_PE-2 | 32d | 2012-05-14 | 2012-06-21 | PP1EM04001C0, PP1EM23002C0 | 125.34d | 0d | ELECTRICAL [54 h]; Cost |  |  | C04ME26011C0 | PP1EM26001C0 | PA | C | P1 | M1 | ME | 260 | 01 | PE | S | BILL 2 | B02 | S2 | 1F | R00 | ACF04 | PE-2 | 260 |  |  | 1S | MEP | M1F |  |  |
| PP1EM26002C0 |  | PA-P1 ; 1st Fix, Inst of Trunking/Conduiting (Mech RM)_PE-2 | 32d | 2012-05-14 | 2012-06-21 | PP1EM23003C0, PP1EM04001C0, PP1EM23002C0 | 160.34d | 32d | ELECTRICAL [164.4 h]; Cost |  |  | C04ME26001C0 | PP1EM26002C0 | PA | C | P1 | M1 | ME | 260 | 02 | PE | S | BILL 2 | B02 | S2 | 1F | R00 | ACF04 | PE-2 | 260 |  |  | 1S | MEP | M1F |  |  |
| PP1EM27001C0 |  | PA-P1 ; 1st Fix, Inst of Trunking for ELV system (Mech RM)_PE-2 | 32d | 2012-05-14 | 2012-06-21 | PP1EM23002C0 SS, PP1EM04001C0, PP1EM23002C0 | 128.34d | 0d | ELECTRICAL [458.4 h]; Cost |  |  | C04ME27010C0 | PP1EM27001C0 | PA | C | P1 | M1 | ME | 270 | 01 | PE | S | BILL 2 | B02 | S2 | 1F | R00 | ACF04 | PE-2 | 270 |  |  | 1S | MEP | M1F |  |  |
| PP1EM23006C0 |  | PA-P1 ; 2nd Fix, Inst of VAV'S CHW connection (Mech RM)_PE-2 | 35d | 2012-06-04 | 2012-07-16 | PP1EM23005C0 | 103.79d | 0d | MECHANICAL [43.2 h]; Cost |  |  | C04ME23009C0 | PP1EM23006C0 | PA | C | P1 | M1 | ME | 230 | 06 | PE | S | BILL 2 | B02 | S2 | 2F | R00 | ACF07 | PE-2 | 230 |  |  | 2n | MEP |  |  |  |
| PP1EM08102C0 |  | PA-P1 ; Metal Door Frames (Mech RM)_PE-2 | 25d | 2012-06-17 | 2012-07-16 | PP1EM09201C0, GNHE08101C0 | 99.34d | 23d | METAL DOORS [209 h]; Cost | 316 | 1465 | C04ME08101C0 | PP1EM08102C0 | PA | C | P1 | M1 | DO | 081 | 02 | PE | S | BILL 2 | B02 | S2 | DF | R00 | ACF06 | PE-2 | 081 |  |  |  |  |  |  | 08 |
| PP1EM09202C0 |  | PA-P1 ; Partitions 1st face (Mech RM)_PE-2 | 24d | 2012-06-17 | 2012-07-15 | PP1EM09201C0 | 76.34d | 0d | PARTITIONS [17.14 m]; PARTITIONS [97 h]; Cost | 314 | 1463 | C04ME09203C0 | PP1EM09202C0 | PA | C | P1 | M1 | PT | 092 | 02 | PE | S | BILL 2 | B02 | S2 | 2F | R00 | ACF06 | PE-2 | 092 |  |  |  | GP | P1F |  |  |
| PP1EM26003C0 |  | PA-P1 ; 2nd Fix, Cable Pulling (Mech RM)_PE-2 | 35d | 2012-06-21 | 2012-08-01 | PP1EM26001C0 | 125.34d | 0d | ELECTRICAL [3511.2 h]; Cost |  |  | C04ME26007C0 | PP1EM26003C0 | PA | C | P1 | M1 | ME | 260 | 03 | PE | S | BILL 2 | B02 | S2 | 2F | R00 | ACF07 | PE-2 | 260 |  |  | 2n | MEP |  |  |  |
| PP1EM27002C0 |  | PA-P1 ; 1st Fix, Wiring/ Cabling work (Mech RM)_PE-2 | 32d | 2012-06-21 | 2012-07-29 | PP1EM26001C0 SS, PP1EM26002C0 SS, PP1EM27001C0 SS, PP1EM04001C0, PP1EM27001C0 | 128.34d | 3d | ELECTRICAL [66 h]; Cost |  |  | C04ME27001C0 | PP1EM27002C0 | PA | C | P1 | M1 | ME | 270 | 02 | PE | S | BILL 2 | B02 | S2 | 1F | R00 | ACF04 | PE-2 | 270 |  |  | 1S | MEP | M1F |  |  |
| PP1EM23009C0 |  | PA-P1 ; 2nd Fix, Inst of Flexible Duct & Plenum boxes (Mech RM)_PE-2 | 35d | 2012-06-25 | 2012-08-05 | PP1EM23007C0, PP1EM23008C0 | 157.34d | 0d | MECHANICAL [28.8 h]; Cost |  |  | C04ME23023C0 | PP1EM23009C0 | PA | C | P1 | M1 | ME | 230 | 09 | PE | S | BILL 2 | B02 | S2 | FF | R00 | ACF07 | PE-2 | 230 |  |  | FF | MEP |  |  |  |
| PP1EM26007C0 |  | PA-P1 ; Final Fix, Inst of Light fittings (Mech RM)_PE-2 | 25d | 2012-07-12 | 2012-08-11 | PP1EM09902C0, PGLS103391C250, PGLS103331C270, PP1EM26008C0 FF | 177.34d | 101d | ELECTRICAL [2678.4 h]; Cost |  |  | C04ME26019C0 | PP1EM26007C0 | PA | C | P1 | M1 | ME | 260 | 07 | PE | S | BILL 2 | B02 | S2 | FF | R00 | ACF07 | PE-2 | 260 |  |  | FF | MEP |  |  |  |
| PP1EM09203C0 |  | PA-P1 ; Partitions Closing (Mech RM)_PE-2 | 24d | 2012-07-15 | 2012-08-12 | PAFOA09201C1 FF, PP1EM09202C0, PP1EM22001C0, PP1EM22003C0, PP1EM08102C0 FF, PGLS103391C250, PGLS103331C270, PV10AF09207R2 | 76.34d | 0d | PARTITIONS [17.14 m]; PARTITIONS [124 h]; Cost | 315 | 1464 | C04ME09205C0 | PP1EM09203C0 | PA | C | P1 | M1 | PT | 092 | 03 | PE | S | BILL 2 | B02 | S2 | FF | R00 | ACF06 | PE-2 | 092 |  |  |  | GP | P2F |  |  |
| PP1EM26008C0 |  | PA-P1 ; Final Fix, Inst of Switch/Sockets (Mech RM)_PE-2 | 22d | 2012-07-16 | 2012-08-11 | PP1EM09902C0, PGLS103391C250, PGLS103331C270, PP1EM27005C0 FF | 103.79d | 0d | ELECTRICAL [106.8 h]; Cost |  |  | C04ME26017C0 | PP1EM26008C0 | PA | C | P1 | M1 | ME | 260 | 08 | PE | S | BILL 2 | B02 | S2 | FF | R00 | ACF07 | PE-2 | 260 |  |  | FF | MEP |  |  |  |
| PP1EM27005C0 |  | PA-P1 ; Final Fix, Inst of ELV device (Detector/Speaker) (Mech RM)_PE-2 | 22d | 2012-07-16 | 2012-08-11 | PP1EM09902C0, PP1EM23006C0, PP1EM27003C0, PGLS103391C250, PGLS103331C270 | 103.79d | 0d | ELECTRICAL [67.2 h]; Cost |  |  | C04ME27030C0 | PP1EM27005C0 | PA | C | P1 | M1 | ME | 270 | 05 | PE | S | BILL 2 | B02 | S2 | FF | R00 | ACF07 | PE-2 | 270 |  |  | FF | MEP |  |  |  |
| PP1EM26005C0 |  | PA-P1 ; 2nd Fix, Wiring for Power/Lighting/Emergency (Mech RM)_PE-2 | 35d | 2012-08-01 | 2012-09-13 | PP1EM26001C0, PP1EM26002C0, PP1EM26003C0, PP1EM27001C0, PP1EM27002C0 | 125.34d | 0d | ELECTRICAL [66 h]; Cost |  |  | C04ME26005C0 | PP1EM26005C0 | PA | C | P1 | M1 | ME | 260 | 05 | PE | S | BILL 2 | B02 | S2 | 2F | R00 | ACF07 | PE-2 | 260 |  |  | 2n | MEP |  |  |  |
| PP1EM21107C0 |  | PA-P1 ; Final Fix, Inst of Sprinklers head (Mech RM)_PE-2 | 25d | 2012-08-05 | 2012-09-05 | PP1EM21104C0, PGLS103391C250, PGLS103331C270, PP1EM23010C0 FF | 157.34d | 81d | MECHANICAL [1197.6 h]; Cost |  |  | C04ME21121C0 | PP1EM21107C0 | PA | C | P1 | M1 | ME | 211 | 07 | PE | S | BILL 2 | B02 | S2 | FF | R00 | ACF07 | PE-2 | 211 |  |  | FF | MEP |  |  |  |
| PP1EM23010C0 |  | PA-P1 ; Final Fix, Inst of Grilles & Diffusers (Mech RM)_PE-2 | 25d | 2012-08-05 | 2012-09-05 | PP1EM23009C0, PGLS103391C250, PGLS103331C270 | 157.34d | 0d | MECHANICAL [424.8 h]; Cost |  |  | C04ME23021C0 | PP1EM23010C0 | PA | C | P1 | M1 | ME | 230 | 10 | PE | S | BILL 2 | B02 | S2 | FF | R00 | ACF07 | PE-2 | 230 |  |  | FF | MEP |  |  |  |
| PP1EM09601C0 |  | PA-P1 ; Floor Finishes (Mech RM)_PE-2 | 35d | 2012-08-12 | 2012-09-24 | PP1EM09203C0, PGLS103391C250, PGLS103331C270 | 76.34d | 0d | ASSORTED FLOOR FINISH [9408 h]; ASSORTED FLOOR FINISH [5226 m2]; Cost | 326 | 1501 | C04ME09601C0 | PP1EM09601C0 | PA | C | P1 | M1 | FF | 096 | 01 | PE | S | BILL 2 | B02 | S2 | 01 | R00 | ACF06 | PE-2 | FF |  |  |  |  |  |  |  |
| PP1EM21106C0 |  | PA-P1 ; Final Fix, Inst of Fire Extinguishers/FHC (Mech RM)_PE-2 | 25d | 2012-08-12 | 2012-09-12 | PP1EM09203C0, PGLS103391C250, PGLS103331C270 | 151.34d | 75d | MECHANICAL [1728 h]; Cost |  |  | C04ME21123C0 | PP1EM21106C0 | PA | C | P1 | M1 | ME | 211 | 06 | PE | S | BILL 2 | B02 | S2 | FF | R00 | ACF07 | PE-2 | 211 |  |  | FF | MEP |  |  |  |
| PP1EM26006C0 |  | PA-P1 ; Final Fix, Inst of Ceiling rose (Mech RM)_PE-2 | 35d | 2012-08-12 | 2012-09-24 | PP1EM09203C0, PGLS103391C250, PGLS103331C270 | 141.34d | 65d | ELECTRICAL [21.6 h]; Cost |  |  | C04ME26015C0 | PP1EM26006C0 | PA | C | P1 | M1 | ME | 260 | 06 | PE | S | BILL 2 | B02 | S2 | FF | R00 | ACF07 | PE-2 | 260 |  |  | FF | MEP |  |  |  |
| PP1EM09901C0 |  | PA-P1 ; Wall - final Paint (Mech RM)_PE-2 | 30d | 2012-08-18 | 2012-09-24 | PP1EM09902C0, PGLS103391C250, PGLS103331C270, PP1EM09601C0 FF, PV10P103307R2 FF | 141.34d | 65d | WALL PAINT [1178 h]; WALL PAINT [1470 m2]; Cost | 329 | 1470 | C04ME09903C0 | PP1EM09901C0 | PA | C | P1 | M1 | PA | 099 | 01 | PE | S | BILL 2 | B02 | S2 | 02 | R00 | ACF06 | PE-2 | 099 |  |  |  |  |  |  |  |
| PP1EM26009C0 |  | PA-P1 ; Final Fix, Termination & Gladding of Cables (Mech RM)_PE-2 | 25d | 2012-09-13 | 2012-10-13 | PP1EM09203C0, PP1EM26005C0, PGLS103391C250, PGLS103331C270 | 125.34d | 0d | ELECTRICAL [439.2 h]; Cost |  |  | C04ME26013C0 | PP1EM26009C0 | PA | C | P1 | M1 | ME | 260 | 09 | PE | S | BILL 2 | B02 | S2 | FF | R00 | ACF07 | PE-2 | 260 |  |  | FF | MEP |  |  |  |
| PP1EM27004C0 |  | PA-P1 ; Final Fix, BMS connection work to Equipment (Mech RM)_PE-2 | 25d | 2012-09-13 | 2012-10-13 | PP1EM21105C0, PP1EM23004C0, PP1EM23005C0, PP1EM23007C0, PP1EM26004C0, PP1EM27002C0, PP1EM27003C0, PGLS103391C250, PGLS103331C270, PP1EM26009C0 FF | 125.34d | 49d | ELECTRICAL [2001.6 h]; Cost |  |  | C04ME27003C0 | PP1EM27004C0 | PA | C | P1 | M1 | ME | 270 | 04 | PE | S | BILL 2 | B02 | S2 | FF | R00 | ACF07 | PE-2 | 270 |  |  | FF | MEP |  |  |  |
| PP1EM08101C0 |  | PA-P1 ; Al / Glass doors (Mech RM)_PE-2 | 40d | 2012-09-24 | 2012-11-12 | PP1EM08103C0 SS, PGLS103391C250, PGLS103331C270, PZ9GZ08155R2 FF | 76.34d | 0d | ASSORTED DOORS [291 h]; ASSORTED DOORS [29.14 no]; Cost |  |  | C04ME08109C0 | PP1EM08101C0 | PA | C | P1 | M1 | DO | 081 | 01 | PE | S | BILL 2 | B02 | S2 | 03 | R00 | ACF06 | PE-2 | 081 |  |  |  |  |  |  |  |
| PP1EM08103C0 |  | PA-P1 ; Metal Doors (Mech RM)_PE-2 | 40d | 2012-09-24 | 2012-11-12 | PP1EM08102C0, PGLS103391C250, PGLS103331C270, PP1EM09601C0 | 76.34d | 0d | METAL DOORS [189 h]; METAL DOORS [18.86 no]; Cost | 317 | 1466 | C04ME08105C0 | PP1EM08103C0 | PA | C | P1 | M1 | DO | 081 | 03 | PE | S | BILL 2 | B02 | S2 | DR | R00 | ACF06 | PE-2 | 081 |  |  |  |  |  |  | 08 |
| PP1EM22004C0 |  | PA-P1 ; Final Fix, Inst of All drain (Mech RM)_PE-2 | 20d | 2012-09-24 | 2012-10-17 | PP1EM09601C0, PGLS103391C250, PGLS103331C270 | 121.34d | 45d | PLUMBING [1848 h]; Cost |  |  | C04ME22003C0 | PP1EM22004C0 | PA | C | P1 | M1 | ME | 220 | 04 | PE | S | BILL 2 | B02 | S2 | FF | R00 | ACF07 | PE-2 | 220 |  |  | FF | MEP |  |  |  |
| PP1EM08701C0 |  | PA-P1 ; Ironmongery (Mech RM)_PE-2 | 25d | 2012-11-12 | 2012-12-13 | PP1EM08101C0, PP1EM08103C0, PGLS103391C250, PGLS103331C270 | 76.34d | 0d | IRONMONGERY [189 h]; IRONMONGERY [18.86 no]; Cost | 322 | 1467 | C04ME08709C0 | PP1EM08701C0 | PA | C | P1 | M1 | DO | 087 | 01 | PE | S | BILL 2 | B02 | S2 | IM | R00 | ACF06 | PE-2 | 087 |  |  |  |  |  |  | 08 |

| ID | WBS | Activity | Duration | Start | Finish | Predecessors | Total float | Free float | Constraint | Resources | change id | CCAD BUILDING(SET) | CCAD PHASE(SET) | CCAD FLOOR(SET) | CCAD ZONE(SET) | CCAD WORK(SET) | CCAD SECTION(SET) | CCAD SERIAL No.(SET) | CCAD Carpark district code(set) | CCAD CBS(SET) | CCAD BILL(SET) | CCAD HANDOVER(SET) | CCAD TAG(SET) | CCAD REV(SET) | CCADACF (SET) | CCAD SSCF | Change Order # | NEW ACTIVITY ID | CCAD DIVISION(SET) | user_text2 |
| --- | --- | --- | --- | --- | --- | --- | --- | --- | --- | --- | --- | --- | --- | --- | --- | --- | --- | --- | --- | --- | --- | --- | --- | --- | --- | --- | --- | --- | --- | --- |
|  | 2 | **T&C & Snagging** |  | 2012-12-31 | 2013-04-11 |  |  |  |  |  |  |  |  |  |  |  |  |  |  |  |  |  |  |  |  |  |  |  |  |  |
|  | 10 | **North Parking** |  | 2013-02-28 | 2013-04-11 |  |  |  |  |  |  |  |  |  |  |  |  |  |  |  |  |  |  |  |  |  |  |  |  |  |
| PP3TS01801C0 |  | PA-P3 ; MEP de-snag, FIREM sign-off | 12d | 2013-02-28 | 2013-03-14 | PP1BE05501C0, PP1BE05501C10, PP1BE08701C0, PP1BE08701C10, PP1BE09901C0, PP1BE09901C10, PP1BE09904C0, PP1BE09904C10, PP1BE21101C0, PP1BE21101C10, PP1BE21102C0, PP1BE21102C10, PP1BE21103C0, PP1BE21103C10, PP1BE21104C0, PP1BE21104C10, PP1BE21105C0, PP1BE21105C10, PP1BE22001C0, PP1BE22001C10, PP1BE23005C0, PP1BE23005C10, PP1BE26003C0, PP1BE26003C10, PP1BE26004C0, PP1BE26004C10, PP1BE26005C0, PP1BE26005C10, PP1BE26006C0, PP1BE26006C10, PP1BE27003C0, PP1BE27003C10, PP1BE27004C0, PP1BE27004C10, PP1BE27005C0, PP1BE27005C10, PP1BE27006C0, PP1BE27006C10, PP1BM08701C0, PP1BM09901C0, PP1BM21106C0, PP1BM21107C0, PP1BM22004C0, PP1BM23010C0, PP1BM26006C0, PP1BM26007C0, PP1BM26008C0, PP1BM26009C0, PP1BM27004C0, PP1BM27005C0, PP1BP05509C10, PP1BP05509C20, PP1BP05509C30, PP1BP11004C10, PP1BP11004C20, PP1BP11004C30, PP1BP11009C10, PP1BP11009C20, PP1BP11009C30, PP2AE05501C0, PP2AE08701C0, PP2AE09901C0, PP2AE09904C0, PP2AE21101C0, PP2AE21102C0, PP2AE21103C0, PP2AE21104C0, PP2AE21105C0, PP2AE22001C0, PP2AE23005C0, PP2AE26003C0, PP2AE26004C0, PP2AE26005C0, PP2AE26006C0, PP2AE27003C0, PP2AE27004C0, PP2AE27005C0, PP2AE27006C0, PP2AM08701C0, PP2AM09901C0, PP2AM21106C0, PP2AM21107C0, PP2AM22004C0, PP2AM23010C0, PP2AM26006C0, PP2AM26007C0, PP2AM26008C0, PP2AM26009C0, PP2AM27004C0, PP2AM27005C0, PP2AP05509C10, PP2AP05509C20, PP2AP11004C10, PP2AP11004C20, PP2BE05501C0, PP2BE08701C0, PP2BE09901C0, PP2BE09904C0, PP2BE21101C0, PP2BE21102C0, PP2BE21103C0, PP2BE21104C0, PP2BE21105C0, PP2BE22001C0, PP2BE23005C0, PP2BE26003C0, PP2BE26004C0, PP2BE26005C0, PP2BE26006C0, PP2BE27003C0, PP2BE27004C0, PP2BE27005C0, PP2BE27006C0, PP2BM08701C0, PP2BM09901C0, PP2BM21106C0, PP2BM21107C0, PP2BM22004C0, PP2BM23010C0, PP2BM26006C0, PP2BM26007C0, PP2BM26008C0, PP2BM26009C0, PP2BM27004C0, PP2BM27005C0, PP2BP05509C10, PP2BP05509C20, PP2BP05509C30, PP2BP11004C10, PP2BP11004C20, PP2BP11004C30, PP2BP11009C10, PP2BP11009C20, PP2BP11009C30, PP3AE05501C0, PP3AE08701C0, PP3AE09901C0, PP3AE21101C0, PP3AE21102C0, PP3AE21103C0, PP3AE21104C0, PP3AE21105C0, PP3AE23005C0, PP3AE26003C0, PP3AE26004C0, PP3AE26005C0, PP3AE26006C0, PP3AE27003C0, PP3AE27004C0, PP3AE27005C0, PP3AE27006C0, PP3AM08701C0, PP3AM09901C0, PP3AM21106C0, PP3AM21107C0, PP3AM22004C0, PP3AM23010C0, PP3AM26006C0, PP3AM26007C0, PP3AM26008C0, PP3AM26009C0, PP3AM27004C0, PP3AM27005C0, PP3AP05509C10, PP3AP05509C20, PP3AP11004C10, PP3AP11004C20, PP3BE05501C0, PP3BE08701C0, PP3BE09901C0, PP3BE09904C0, PP3BE21101C0, PP3BE21102C0, PP3BE21103C0, PP3BE21104C0, PP3BE21105C0, PP3BE22001C0, PP3BE23005C0, PP3BE26003C0, PP3BE26004C0, PP3BE26005C0, PP3BE26006C0, PP3BE27003C0, PP3BE27004C0, PP3BE27005C0, PP3BE27006C0, PP3BM08701C0, PP3BM08701C10, PP3BM09901C0, PP3BM09901C10, PP3BM21106C0, PP3BM21106C10, PP3BM21107C0, PP3BM21107C10, PP3BM22004C0, PP3BM22004C10, PP3BM23010C0, PP3BM23010C10, PP3BM26006C0, PP3BM26006C10, PP3BM26007C0, PP3BM26007C10, PP3BM26008C0, PP3BM26008C10, PP3BM27004C0, PP3BM27004C10, PP3BM27005C0, PP3BM27005C10, PP3BP05509C10, PP3BP05509C20, PP3BP05509C30, PP3BP11004C10, PP3BP11004C20, PP3BP11004C30, PP3BP11009C10, PP3BP11009C20, PP3BP11009C30, LEXCO04415C0 | 19.24d | 0d |  | TESTING & COMMISSIONING [2040 h]; Cost | PP3TS01801C0 | PA | C | P3 | TS | SC | 018 | 01 | N | BILL 2 | B02 | S1 | 01 | R00 | ACF07 | 018 |  |  |  |  |
| PP3TS01802C0 |  | PA-P3 ; Touch-up & Clean / JV inspection /CIR /De-snag | 18d | 2013-03-14 | 2013-04-04 | PP1BE05501C0, PP1BE05501C10, PP1BE08701C0, PP1BE08701C10, PP1BE09901C0, PP1BE09901C10, PP1BE09904C0, PP1BE09904C10, PP1BE21101C0, PP1BE21101C10, PP1BE21102C0, PP1BE21102C10, PP1BE21103C0, PP1BE21103C10, PP1BE21104C0, PP1BE21104C10, PP1BE21105C0, PP1BE21105C10, PP1BE22001C0, PP1BE22001C10, PP1BE23005C0, PP1BE23005C10, PP1BE26003C0, PP1BE26003C10, PP1BE26004C0, PP1BE26004C10, PP1BE26005C0, PP1BE26005C10, PP1BE26006C0, PP1BE26006C10, PP1BE27003C0, PP1BE27003C10, PP1BE27004C0, PP1BE27004C10, PP1BE27005C0, PP1BE27005C10, PP1BE27006C0, PP1BE27006C10, PP1BM08701C0, PP1BM09901C0, PP1BM21106C0, PP1BM21107C0, PP1BM22004C0, PP1BM23010C0, PP1BM26006C0, PP1BM26007C0, PP1BM26008C0, PP1BM26009C0, PP1BM27004C0, PP1BM27005C0, PP1BP05509C10, PP1BP05509C20, PP1BP05509C30, PP1BP11004C10, PP1BP11004C20, PP1BP11004C30, PP1BP11009C10, PP1BP11009C20, PP1BP11009C30, PP2AE05501C0, PP2AE08701C0, PP2AE09901C0, PP2AE09904C0, PP2AE21101C0, PP2AE21102C0, PP2AE21103C0, PP2AE21104C0, PP2AE21105C0, PP2AE22001C0, PP2AE23005C0, PP2AE26003C0, PP2AE26004C0, PP2AE26005C0, PP2AE26006C0, PP2AE27003C0, PP2AE27004C0, PP2AE27005C0, PP2AE27006C0, PP2AM08701C0, PP2AM09901C0, PP2AM21106C0, PP2AM21107C0, PP2AM22004C0, PP2AM23010C0, PP2AM26006C0, PP2AM26007C0, PP2AM26008C0, PP2AM26009C0, PP2AM27004C0, PP2AM27005C0, PP2AP05509C10, PP2AP05509C20, PP2AP11004C10, PP2AP11004C20, PP2BE05501C0, PP2BE08701C0, PP2BE09901C0, PP2BE09904C0, PP2BE21101C0, PP2BE21102C0, PP2BE21103C0, PP2BE21104C0, PP2BE21105C0, PP2BE22001C0, PP2BE23005C0, PP2BE26003C0, PP2BE26004C0, PP2BE26005C0, PP2BE26006C0, PP2BE27003C0, PP2BE27004C0, PP2BE27005C0, PP2BE27006C0, PP2BM08701C0, PP2BM09901C0, PP2BM21106C0, PP2BM21107C0, PP2BM22004C0, PP2BM23010C0, PP2BM26006C0, PP2BM26007C0, PP2BM26008C0, PP2BM26009C0, PP2BM27004C0, PP2BM27005C0, PP2BP05509C10, PP2BP05509C20, PP2BP05509C30, PP2BP11004C10, PP2BP11004C20, PP2BP11004C30, PP2BP11009C10, PP2BP11009C20, PP2BP11009C30, PP3AE05501C0, PP3AE08701C0, PP3AE09901C0, PP3AE09904C0, PP3AE21101C0, PP3AE21102C0, PP3AE21103C0, PP3AE21104C0, PP3AE21105C0, PP3AE22001C0, PP3AE23005C0, PP3AE26003C0, PP3AE26004C0, PP3AE26005C0, PP3AE26006C0, PP3AE27003C0, PP3AE27004C0, PP3AE27005C0, PP3AE27006C0, PP3AM08701C0, PP3AM09901C0, PP3AM21106C0, PP3AM21107C0, PP3AM22004C0, PP3AM23010C0, PP3AM26006C0, PP3AM26007C0, PP3AM26008C0, PP3AM26009C0, PP3AM27004C0, PP3AM27005C0, PP3AP05509C10, PP3AP05509C20, PP3AP11004C10, PP3AP11004C20, PP3BE05501C0, PP3BE08701C0, PP3BE09901C0, PP3BE09904C0, PP3BE21101C0, PP3BE21102C0, PP3BE21103C0, PP3BE21104C0, PP3BE21105C0, PP3BE22001C0, PP3BE23005C0, PP3BE26003C0, PP3BE26004C0, PP3BE26005C0, PP3BE26006C0, PP3BE27003C0, PP3BE27004C0, PP3BE27005C0, PP3BE27006C0, PP3BM08701C0, PP3BM08701C10, PP3BM09901C0, PP3BM09901C10, PP3BM21106C0, PP3BM21106C10, PP3BM21107C0, PP3BM21107C10, PP3BM22004C0, PP3BM22004C10, PP3BM23010C0, PP3BM23010C10, PP3BM26006C0, PP3BM26006C10, PP3BM26007C0, PP3BM26007C10, PP3BM26008C0, PP3BM26008C10, PP3BM27004C0, PP3BM27004C10, PP3BM27005C0, PP3BM27005C10, PP3BP05509C10, PP3BP05509C20, PP3BP05509C30, PP3BP11004C10, PP3BP11004C20, PP3BP11004C30, PP3BP11009C10, PP3BP11009C20, PP3BP11009C30, PP3TS01801C0, LP1CO04419C0 | 19.24d | 0d |  | TESTING & COMMISSIONING [340 h]; Cost | PP3TS01802C0 | PA | C | P3 | TS | SC | 018 | 02 | N | BILL 2 | B02 | S1 | 02 | R00 | ACF07 | 018 |  |  |  |  |
| PP3TS01803C0 |  | PA-P3 ; Consultant's final de-snag inspection | 6d | 2013-04-04 | 2013-04-11 | PP3TS01802C0 | 19.24d | 16.36d |  | Labor General [1 h]; Cost | PP3TS01803C0 | PA | C | P3 | TS | SC | 018 | 03 | N | BILL 2 | B02 | S1 | 03 | R00 | ACF07 | 018 |  |  |  |  |
|  | 1 | **South Parking** |  | 2012-12-31 | 2013-02-13 |  |  |  |  |  |  |  |  |  |  |  |  |  |  |  |  |  |  |  |  |  |  |  |  |  |
| PP2TS01801C0 |  | PA-P2 ; MEP de-snag, FIREM sign-off | 12d | 2012-12-31 | 2013-01-15 | PP1CE05501C0, PP1CE05501C10, PP1CE08701C0, PP1CE08701C10, PP1CE09901C0, PP1CE09901C10, PP1CE09904C0, PP1CE09904C10, PP1CE21101C0, PP1CE21101C10, PP1CE21102C0, PP1CE21102C10, PP1CE21103C0, PP1CE21103C10, PP1CE21104C0, PP1CE21104C10, PP1CE21105C0, PP1CE21105C10, PP1CE22001C0, PP1CE22001C10, PP1CE23005C0, PP1CE23005C10, PP1CE26003C0, PP1CE26003C10, PP1CE26004C0, PP1CE26004C10, PP1CE26005C0, PP1CE26005C10, PP1CE26006C0, PP1CE26006C10, PP1CE27003C0, PP1CE27003C10, PP1CE27004C0, PP1CE27004C10, PP1CE27005C0, PP1CE27005C10, PP1CE27006C0, PP1CE27006C10, PP1CM08701C0, PP1CM08701C10, PP1CM09901C0, PP1CM09901C10, PP1CM21106C0, PP1CM21106C10, PP1CM21107C0, PP1CM21107C10, PP1CM22004C0, PP1CM22004C10, PP1CM23010C0, PP1CM23010C10, PP1CM26006C0, PP1CM26006C10, PP1CM26007C0, PP1CM26007C10, PP1CM26008C0, PP1CM26008C10, PP1CM26009C0, PP1CM26009C10, PP1CM27004C0, PP1CM27004C10, PP1CM27005C0, PP1CM27005C10, PP1CP05509C10, PP1CP05509C20, PP1CP11004C10, PP1CP11004C20, PP1DM08701C0, PP1DM09901C0, PP1DM21106C0, PP1DM21107C0, PP1DM22004C0, PP1DM23010C0, PP1DM26006C0, PP1DM26007C0, PP1DM26008C0, PP1DM26009C0, PP1DM27004C0, PP1DM27005C0, PP1DP05509C10, PP1DP05509C20, PP1DP11004C10, PP1DP11004C20, PP1DP11009C10, PP1DP11009C20, PP1EE05501C0, PP1EE08701C0, PP1EE09901C0, PP1EE09904C0, PP1EE21101C0, PP1EE21102C0, PP1EE21103C0, PP1EE21104C0, PP1EE21105C0, PP1EE22001C0, PP1EE23005C0, PP1EE26003C0, PP1EE26004C0, PP1EE26005C0, PP1EE26006C0, PP1EE27003C0, PP1EE27004C0, PP1EE27006C0, PP1EM26009C0, PP1EM26009C10, PP1EM27004C0, PP1EM27004C10, PP1EP05509C10, PP1EP05509C20, PP1EP05509C30, PP1EP11004C10, PP1EP11004C20, PP1EP11004C30, PP2CE05501C0, PP2CE05501C10, PP2CE08701C0, PP2CE08701C10, PP2CE09901C0, PP2CE09901C10, PP2CE09904C0, PP2CE09904C10, PP2CE21101C0, PP2CE21101C10, PP2CE21102C0, PP2CE21102C10, PP2CE21103C0, PP2CE21103C10, PP2CE21104C0, PP2CE21104C10, PP2CE21105C0, PP2CE21105C10, PP2CE22001C0, PP2CE22001C10, PP2CE23005C0, PP2CE23005C10, PP2CE26003C0, PP2CE26003C10, PP2CE26004C0, PP2CE26004C10, PP2CE26005C0, PP2CE26005C10, PP2CE26006C0, PP2CE26006C10, PP2CE27003C0, PP2CE27003C10, PP2CE27004C0, PP2CE27004C10, PP2CE27005C0, PP2CE27005C10, PP2CE27006C0, PP2CE27006C10, PP2CP05509C10, PP2CP05509C20, PP2CP11004C10, PP2CP11004C20, PP2DP05509C10, PP2DP05509C20, PP2DP11004C10, PP2DP11004C20, PP2DP11009C10, PP2DP11009C20, PP2EE05501C0, PP2EE05501C10, PP2EE08701C0, PP2EE08701C10, PP2EE09901C0, PP2EE09901C10, PP2EE09904C0, PP2EE09904C10, PP2EE21101C0, PP2EE21101C10, PP2EE21102C0, PP2EE21102C10, PP2EE21103C0, PP2EE21103C10, PP2EE21104C0, PP2EE21104C10, PP2EE21105C0, PP2EE21105C10, PP2EE22001C0, PP2EE22001C10, PP2EE23005C0, PP2EE23005C10, PP2EE26003C0, PP2EE26003C10, PP2EE26004C0, PP2EE26004C10, PP2EE26005C0, PP2EE26005C10, PP2EE26006C0, PP2EE26006C10, PP2EE27003C0, PP2EE27003C10, PP2EE27004C0, PP2EE27004C10, PP2EE27005C0, PP2EE27005C10, PP2EE27006C0, PP2EE27006C10, PP2EM21106C0, PP2EM22004C0, PP2EM23010C0, PP2EM26006C0, PP2EM26009C0, PP2EM27004C0, PP2EP05509C10, PP2EP05509C20, PP2EP05509C30, PP2EP11004C10, PP2EP11004C20, PP2EP11004C30, PP3CE05501C0, PP3CE08701C0, PP3CE09901C0, PP3CE09904C0, PP3CE21101C0, PP3CE21102C0, PP3CE21103C0, PP3CE21104C0, PP3CE21105C0, PP3CE22001C0, PP3CE23005C0, PP3CE26003C0, PP3CE26004C0, PP3CE26005C0, PP3CE26006C0, PP3CE27003C0, PP3CE27004C0, PP3CE27005C0, PP3CE27006C0, PP3CM08701C0, PP3CM09901C0, PP3CM21106C0, PP3CM21107C0, PP3CM22004C0, PP3CM23010C0, PP3CM26006C0, PP3CM26007C0, PP3CM26008C0, PP3CM26009C0, PP3CM27004C0, PP3CM27005C0, PP3CP05509C10, PP3CP05509C20, PP3CP11004C10, PP3CP11004C20, PP3DM08701C0, PP3DM08701C10, PP3DM09901C0, PP3DM09901C10, PP3DM21106C0, PP3DM21106C10, PP3DM21107C0, PP3DM21107C10, PP3DM22004C0, PP3DM22004C10, PP3DM23010C0, PP3DM23010C10, PP3DM26006C0, PP3DM26006C10, PP3DM26007C0, PP3DM26007C10, PP3DM26008C0, PP3DM26008C10, PP3DM26009C0, PP3DM26009C10, PP3DM27004C0, PP3DM27004C10, PP3DM27005C0, PP3DM27005C10, PP3DP05509C10, PP3DP05509C20, PP3DP11004C10, PP3DP11004C20, PP3DP11009C10, PP3DP11009C20, PP3EE05501C0, PP3EE05501C10, PP3EE08701C0, PP3EE08701C10, PP3EE09901C0, PP3EE09901C10, PP3EE09904C0, PP3EE09904C10, PP3EE21101C0, PP3EE21101C10, PP3EE21102C0, PP3EE21102C10, PP3EE21103C0, PP3EE21103C10, PP3EE21104C0, PP3EE21104C10, PP3EE21105C0, PP3EE21105C10, PP3EE22001C0, PP3EE22001C10, PP3EE23005C0, PP3EE23005C10, PP3EE26003C0, PP3EE26003C10, PP3EE26004C0, PP3EE26004C10, PP3EE26005C0, PP3EE26005C10, PP3EE26006C0, PP3EE26006C10, PP3EE27003C0, PP3EE27003C10, PP3EE27004C0, PP3EE27004C10, PP3EE27005C0, PP3EE27005C10, PP3EE27006C0, PP3EE27006C10, PP3EM08701C0, PP3EM08701C10, PP3EM08701C20, PP3EM09901C0, PP3EM09901C10, PP3EM09901C20, PP3EM21106C0, PP3EM21106C10, PP3EM21106C20, PP3EM21107C0, PP3EM21107C10, PP3EM21107C20, PP3EM22004C0, PP3EM22004C10, PP3EM22004C20, PP3EM23010C0, PP3EM23010C10, PP3EM23010C20, PP3EM26006C0, PP3EM26006C10, PP3EM26006C20, PP3EM26007C0, PP3EM26007C10, PP3EM26007C20, PP3EM26008C0, PP3EM26008C10, PP3EM26008C20, PP3EM26009C0, PP3EM26009C10, PP3EM26009C20, PP3EM27004C0, PP3EM27004C10, PP3EM27004C20, PP3EM27005C0, PP3EM27005C10, PP3EM27005C20, PP3EP05509C10, PP3EP05509C20, PP3EP05509C30, PP3EP11004C10, PP3EP11004C20, PP3EP11004C30 | 68.08d | 0d |  | TESTING & COMMISSIONING [1785 h]; Cost | PP2TS01801C0 | PA | C | P2 | TS | SC | 018 | 01 | S | BILL 2 | B02 | S2 | 01 | R00 | ACF07 | 018 |  |  |  |  |
| PP2TS01802C0 |  | PA-P2 ; Touch-up & Clean / JV inspection /CIR /De-snag | 18d | 2013-01-15 | 2013-02-06 | PP1CE09901C0, PP1CE09901C10, PP1CE09904C0, PP1CE09904C10, PP1CE21101C0, PP1CE21101C10, PP1CE21102C0, PP1CE21102C10, PP1CE21103C0, PP1CE21103C10, PP1CE21104C0, PP1CE21104C10, PP1CE21105C0, PP1CE21105C10, PP1CE22001C0, PP1CE22001C10, PP1CE23005C0, PP1CE23005C10, PP1CE26003C0, PP1CE26003C10, PP1CE26004C0, PP1CE26004C10, PP1CE26005C0, PP1CE26005C10, PP1CE26006C0, PP1CE26006C10, PP1CE27003C0, PP1CE27003C10, PP1CE27004C0, PP1CE27004C10, PP1CE27005C0, PP1CE27005C10, PP1CE27006C0, PP1CE27006C10, PP1CM08701C0, PP1CM08701C10, PP1CM09901C0, PP1CM09901C10, PP1CM21106C0, PP1CM21106C10, PP1CM21107C0, PP1CM21107C10, PP1CM22004C0, PP1CM22004C10, PP1CM23010C0, PP1CM23010C10, PP1CM26006C0, PP1CM26006C10, PP1CM26007C0, PP1CM26007C10, PP1CM26008C0, PP1CM26008C10, PP1CM26009C0, PP1CM26009C10, PP1CM27004C0, PP1CM27004C10, PP1CM27005C0, PP1CM27005C10, PP1CP05509C10, PP1CP05509C20, PP1CP11004C10, PP1CP11004C20, PP1DM08701C0, PP1DM09901C0, PP1DM21106C0, PP1DM21107C0, PP1DM22004C0, PP1DM23010C0, PP1DM26006C0, PP1DM26007C0, PP1DM26008C0, PP1DM26009C0, PP1DM27004C0, PP1DM27005C0, PP1DP05509C10, PP1DP05509C20, PP1DP11004C10, PP1DP11004C20, PP1DP11009C10, PP1DP11009C20, PP1EE05501C0, PP1EE08701C0, PP1EE09901C0, PP1EE09904C0, PP1EE21101C0, PP1EE21102C0, PP1EE21103C0, PP1EE21104C0, PP1EE21105C0, PP1EE22001C0, PP1EE23005C0, PP1EE26003C0, PP1EE26004C0, PP1EE26005C0, PP1EE26006C0, PP1EE27003C0, PP1EE27004C0, PP1EE27006C0, PP1EM08701C0, PP1EM08701C10, PP1EM09901C0, PP1EM09901C10, PP1EM21106C0, PP1EM21106C10, PP1EM21107C0 FF+7d, PP1EM21107C10 FF+7d, PP1EM22004C0 FF+7d, PP1EM22004C10 FF+7d, PP1EM23010C0, PP1EM23010C10, PP1EM26006C0, PP1EM26006C10, PP1EM26007C0 FF+7d, PP1EM26007C10 FF+7d, PP1EM26008C0 FF+7d, PP1EM26008C10 FF+7d, PP1EM26009C0, PP1EM26009C10, PP1EM27004C0, PP1EM27004C10, PP1EM27005C0, PP1EM27005C10, PP1EP05509C10, PP1EP05509C20, PP1EP05509C30, PP1EP11004C10, PP1EP11004C20, PP1EP11004C30, PP2CE05501C0, PP2CE05501C10, PP2CE08701C0, PP2CE08701C10, PP2CE09901C0, PP2CE09901C10, PP2CE09904C0, PP2CE09904C10, PP2CE21101C0, PP2CE21101C10, PP2CE21102C0, PP2CE21102C10, PP2CE21103C0, PP2CE21103C10, PP2CE21104C0, PP2CE21104C10, PP2CE21105C0, PP2CE21105C10, PP2CE22001C0, PP2CE22001C10, PP2CE23005C0, PP2CE23005C10, PP2CE26003C0, PP2CE26003C10, PP2CE26004C0, PP2CE26004C10, PP2CE26005C0, PP2CE26005C10, PP2CE26006C0, PP2CE26006C10, PP2CE27003C0, PP2CE27003C10, PP2CE27004C0, PP2CE27004C10, PP2CE27005C0, PP2CE27005C10, PP2CE27006C0, PP2CE27006C10, PP2CP05509C10, PP2CP05509C20, PP2CP11004C10, PP2CP11004C20, PP2DP05509C10, PP2DP05509C20, PP2DP11004C10, PP2DP11004C20, PP2DP11009C10, PP2DP11009C20, PP2EE05501C0, PP2EE05501C10, PP2EE08701C0, PP2EE08701C10, PP2EE09901C0, PP2EE09901C10, PP2EE09904C0, PP2EE09904C10, PP2EE21101C0, PP2EE21101C10, PP2EE21102C0, PP2EE21102C10, PP2EE21103C0, PP2EE21103C10, PP2EE21104C0, PP2EE21104C10, PP2EE21105C0, PP2EE21105C10, PP2EE22001C0, PP2EE22001C10, PP2EE23005C0, PP2EE23005C10, PP2EE26003C0, PP2EE26003C10, PP2EE26004C0, PP2EE26004C10, PP2EE26005C0, PP2EE26005C10, PP2EE26006C0, PP2EE26006C10, PP2EE27003C0, PP2EE27003C10, PP2EE27004C0, PP2EE27004C10, PP2EE27005C0, PP2EE27005C10, PP2EE27006C0, PP2EE27006C10, PP2EM08701C0 FF+5d, PP2EM09901C0 FF+5d, PP2EM21106C0, PP2EM21107C0 FF+7d, PP2EM23010C0, PP2EM26006C0, PP2EM26009C0, PP2EM27004C0, PP2EP05509C10, PP2EP05509C20, PP2EP05509C30, PP2EP11004C10, PP2EP11004C20, PP2EP11004C30, PP2TS01801C0, PP3CE05501C0, PP3CE08701C0, PP3CE09901C0, PP3CE09904C0, PP3CE21101C0, PP3CE21102C0, PP3CE21103C0, PP3CE21104C0, PP3CE21105C0, PP3CE22001C0, PP3CE23005C0, PP3CE26003C0, PP3CE26004C0, PP3CE26005C0, PP3CE26006C0, PP3CE27003C0, PP3CE27004C0, PP3CE27005C0, PP3CE27006C0, PP3CM08701C0, PP3CM09901C0, PP3CM21106C0, PP3CM21107C0, PP3CM22004C0, PP3CM23010C0, PP3CM26006C0, PP3CM26007C0, PP3CM26008C0, PP3CM26009C0, PP3CM27004C0, PP3CM27005C0, PP3CP05509C10, PP3CP05509C20, PP3CP11004C10, PP3CP11004C20, PP3DM08701C0, PP3DM08701C10, PP3DM09901C0, PP3DM09901C10, PP3DM21106C0, PP3DM21106C10, PP3DM21107C0, PP3DM21107C10, PP3DM22004C0, PP3DM22004C10, PP3DM23010C0, PP3DM23010C10, PP3DM26006C0, PP3DM26006C10, PP3DM26007C0, PP3DM26007C10, PP3DM26008C0, PP3DM26008C10, PP3DM26009C0, PP3DM26009C10, PP3DM27004C0, PP3DM27004C10, PP3DM27005C0, PP3DM27005C10, PP3DP05509C10, PP3DP05509C20, PP3DP11004C10, PP3DP11004C20, PP3DP11009C10, PP3DP11009C20, PP3EE05501C0, PP3EE05501C10, PP3EE08701C0, PP3EE08701C10, PP3EE09901C0, PP3EE09901C10, PP3EE09904C0, PP3EE09904C10, PP3EE21101C0, PP3EE21101C10, PP3EE21102C0, PP3EE21102C10, PP3EE21103C0, PP3EE21103C10, PP3EE21104C0, PP3EE21104C10, PP3EE21105C0, PP3EE21105C10, PP3EE22001C0, PP3EE22001C10, PP3EE23005C0, PP3EE23005C10, PP3EE26003C0, PP3EE26003C10, PP3EE26004C0, PP3EE26004C10, PP3EE26005C0, PP3EE26005C10, PP3EE26006C0, PP3EE26006C10, PP3EE27003C0, PP3EE27003C10, PP3EE27004C0, PP3EE27004C10, PP3EE27005C0, PP3EE27005C10, PP3EE27006C0, PP3EE27006C10, PP3EM08701C0, PP3EM08701C10, PP3EM08701C20, PP3EM09901C0, PP3EM09901C10, PP3EM09901C20, PP3EM21106C0, PP3EM21106C10, PP3EM21106C20, PP3EM21107C0, PP3EM21107C10, PP3EM21107C20, PP3EM22004C0, PP3EM22004C10, PP3EM22004C20, PP3EM23010C0, PP3EM23010C10, PP3EM23010C20, PP3EM26006C0, PP3EM26006C10, PP3EM26006C20, PP3EM26007C0, PP3EM26007C10, PP3EM26007C20, PP3EM26008C0, PP3EM26008C10, PP3EM26008C20, PP3EM26009C0, PP3EM26009C10, PP3EM26009C20, PP3EM27004C0, PP3EM27004C10, PP3EM27004C20, PP3EM27005C0, PP3EM27005C10, PP3EM27005C20, PP3EP05509C10, PP3EP05509C20, PP3EP05509C30, PP3EP11004C10, PP3EP11004C20, PP3EP11004C30, DGLCO04427C0 | 68.08d | 0d |  | TESTING & COMMISSIONING [298 h]; Cost | PP2TS01802C0 | PA | C | P2 | TS | SC | 018 | 02 | S | BILL 2 | B02 | S2 | 02 | R00 | ACF07 | 018 |  |  |  |  |
| PP2TS01803C0 |  | PA-P2 ; Consultant's final de-snag inspection | 6d | 2013-02-06 | 2013-02-13 | PP2TS01802C0 | 68.08d | 65.2d |  | Labor General [1 h]; Cost | PP2TS01803C0 | PA | C | P2 | TS | SC | 018 | 03 | S | BILL 2 | B02 | S2 | 03 | R00 | ACF07 | 018 |  |  |  |  |
|  | GL | **Landscaping & External Cladding** |  | 2011-09-05 | 2013-04-13 |  |  |  |  |  |  |  |  |  |  |  |  |  |  |  |  |  |  |  |  |  |  |  |  |  |
|  | 9 | **Landscaping - P3(Promenade Green)** |  | 2012-09-09 | 2013-01-09 |  |  |  |  |  |  |  |  |  |  |  |  |  |  |  |  |  |  |  |  |  |  |  |  |  |
| LP33W03301C0 |  | LA-P3 ; Concrete works & staircase (Promenade Green) | 36d | 2012-09-09 | 2012-10-21 | BLZTC01547C0, G02CO04404C0, PP1S903371C0, PP1S903372C0, PP1SX03371C0, PP1SX03372C0, BLZTC01546C0, PP1SX03371C10 | 58.77d | 0d |  | CONCRETE [2680 h]; Cost | DR5LS03301C0 | LA | C | GL | 3W | CT | 033 | 01 | S | BILL 13 | B13 | S2 | 02 | R00 | ACF03 | 033 | 302 | 335 | 03 |  |
| LP33W05301C0 |  | LA-GL ; Steel Bracket for Corten / Pavilion (Promenade Green) | 36d | 2012-10-21 | 2012-12-06 | LP33W03301C0 | 72.65d | 6d |  | STRUCTURAL STEEL; Cost | DR5LS05301C0 | LA | C | GL | 3W | SW | 055 | 01 | S | BILL 13 | B13 | S2 | 02 | R00 | ACF03 | 055 | 302 | 335 | 05 | to be deleted - add cost to metal works |
| LP33W07101C0 |  | LA-P3 ; Water Proofing (Promenade Green) | 12d | 2012-10-21 | 2012-11-06 | LP33W03301C0 | 58.77d | 0d |  | THERMAL & MOISTURE [408 h]; Cost | DR5LS07101C0 | LA | C | GL | 3W | FF | 071 | 01 | S | BILL 13 | B13 | S2 | 02 | R00 | ACF10 | 071 | 302 | 335 | 07 |  |
| LP33W07101C60 |  | LA-P3 ; Backfill and formation (Promenade Green) | 0d | 2012-11-06 | 2012-11-06 | LP33W07101C0 | 58.77d | 0d |  | Cost |  | LA |  |  | 3W | XW | 312 |  |  |  | B13 |  |  | R00 |  | 312 |  |  |  |  |
| LP33W32105C0 |  | LA-P3 ; Drainage/Irrigation utility lines (Promenade Green) | 18d | 2012-11-06 | 2012-11-28 | LP33W07101C60 | 58.77d | 0d |  | EXCAVATION & BACKFILLING [557 m3]; EXCAVATION & BACKFILLING [111 h]; ANTI-TERMITE [446 m2]; ANTI-TERMITE [446 h]; Cost | CR5LS32105C0 | LA | C | GL | 3W | LN | 328 | 05 | S | BILL 13 | B13 | S2 | 02 | R00 | ACF10 | 328 | 1081 | 196 | 24 |  |
| LP33W31001C0 |  | LA-P3 ; Paving & Surfacing (Promenade Green) | 12d | 2012-11-28 | 2012-12-13 | LP33W32105C0 | 58.77d | 0d |  | EXCAVATION & BACKFILLING [3354 m3]; EXCAVATION & BACKFILLING [671 h]; ANTI-TERMITE [2687 m2]; ANTI-TERMITE [2687 h]; Cost | DR5LS11001C0 | LA | C | GL | 3W | LN | 312 | 01 | S | BILL 13 | B13 | S2 | 02 | R00 | ACF09 | 312 | 302 | 335 | 60 |  |
| LP33W10201C0 |  | LA-P3 ; Metal works, guard rails (Promenade Green) | 11.88d | 2012-12-13 | 2012-12-27 | LP33W31001C0 | 76.78d | 10.12d |  | SECONDARY STEEL [1281 h]; Cost | DR5LS10201C0 | LA | C | GL | 3W | LN | 055 | 01 | S | BILL 13 | B13 | S2 | 02 | R00 | ACF10 | 056 | 302 | 335 | 05 |  |
| LP33W11001C0 |  | LA-P3 ; Site Furniture's / finishes (Promenade Green) | 11.88d | 2012-12-13 | 2012-12-27 | LP33W31001C0 | 58.77d | 40.12d |  | FF&E [25 h]; FF&E [8.44 no]; Cost | DR5LS11001C0 | LA | C | GL | 3W | LN | 110 | 01 | S | BILL 13 | B13 | S2 | 02 | R00 | ACF10 | f | 302 | 335 | 60 |  |
| LP33W32901C0 |  | LA-P3 ; Plant / Planting (Promenade Green) | 22d | 2012-12-13 | 2013-01-09 | LP33W31001C0, A1010 FF, LP33W05301C0, LP33W10201C0 FF | 66.65d | 48d |  | LANDSCAPING [1903 h]; Cost | DR5LS32901C0 | LA | C | GL | 3W | LN | 329 | 01 | S | BILL 13 | B13 | S2 | 02 | R00 | ACF10 | 329 | 302 | 335 | 60 |  |
|  | 2 | **Landscaping - P3(Water Feature)** |  | 2011-11-01 | 2013-02-14 |  |  |  |  |  |  |  |  |  |  |  |  |  |  |  |  |  |  |  |  |  |  |  |  |  |
| LP33P03301C0 |  | LA-P3 ; Concrete works (P3) | 48d | 2011-11-01 | 2012-01-03 | G02S203399C0 FS+21d, PGLS103391C10 FS+14d, PGLS103391C20A FS+14d, PV08AF03301R2, PV08P123001R2 | 253.3d | 0d | start on or after 2011-11-01 | PLUMBING [19730 h]; Cost | CR5LS32105C0 | LA | C | P3 | 3P | LN | 220 | 05 | S | BILL 13 | B13 | S2 | 01 | R00 | ACF10 | 220 | 1081 | 196 | 20 |  |
| LP33P07101C0 |  | LA-P3 ; Waterproofing (P3) | 24d | 2012-01-03 | 2012-01-31 | LP33P03301C0, GAFCI50038R02 FS+58d | 253.3d | 234.65d |  | CONCRETE [3310 h]; Cost | DR5LS03301C0 | LA | C | P3 | 3P | CT | 033 | 01 | S | BILL 13 | B13 | S2 | 01 | R00 | ACF03 | 071 | 302 | 335 | 03 |  |
| LP33P32105C0 |  | LA-P3 ;Drainage/Irrigation Utility Lines | 24d | 2012-11-07 | 2012-12-08 | LP33P07101C0, GP3CO04410C0, LP11P32105C0 | 18.65d | 0d |  | THERMAL & MOISTURE [966 h]; Cost | DR5LS07101C0 | LA | C | P3 | 3P | FF | 071 | 01 | S | BILL 13 | B13 | S2 | 01 | R00 | ACF10 | 328 | 302 | 335 | 07 |  |
| LP33P10201C0 |  | LA-P3 ; Plant/Planting, Paving & Surfacing (P3) | 42d | 2012-12-08 | 2013-01-28 | LP33P32105C0 | 18.65d | 0d |  | LANDSCAPING [12541 h]; Cost | DR5LS10201C0 | LA | C | P3 | 3P | LN | 093 | 01 | S | BILL 13 | B13 | S2 | 01 | R00 | ACF10 | PV | 302 | 335 | 09 |  |
| LP33P11001C0 |  | LA-P3 ;Site Furnitures/Finishes (P3) | 15d | 2013-01-28 | 2013-02-14 | LP33P10201C0 | 18.65d | 0d |  | FF&E [11736 h]; Cost | DR5LS11001C0 | LA | C | P3 | 3P | LN | 110 | 01 | S | BILL 13 | B13 | S2 | 01 | R00 | ACF10 | f | 302 | 335 | 11 |  |

| ID | WBS | Activity | Duration | Start | Finish | Predecessors | Complete | Remaining | Planned start | Planned finish | Total float | Free float | Resources | Change Order # | NEW ACTIVITY ID | change id | CCAD BUILDING(SET) | CCAD PHASE(SET) | CCAD DIVISION(SET) | CCAD FLOOR(SET) | CCAD ZONE(SET) | CCAD WORK(SET) | CCAD SECTION(SET) | CCAD SERIAL No.(SET) | CCAD Carpark district code(set) | CCAD CBS(SET) | CCAD BILL(SET) | CCAD HANDOVER(SET) | CCAD TAG(SET) | CCAD REV(SET) | CCADACF (SET) | CCAD SSCF | user_text2 |
| --- | --- | --- | --- | --- | --- | --- | --- | --- | --- | --- | --- | --- | --- | --- | --- | --- | --- | --- | --- | --- | --- | --- | --- | --- | --- | --- | --- | --- | --- | --- | --- | --- | --- |
|  | 3 | **Landscaping - P1(Water Feature)** |  | 2012-05-30 | 2012-11-26 |  |  |  |  |  |  |  |  |  |  |  |  |  |  |  |  |  |  |  |  |  |  |  |  |  |  |  |  |
| LP11P03301C0 |  | LA-P1 ; Concreworks incl for Waterfeatures (P1) | 30d | 2012-05-30 | 2012-07-05 | BLZHC01586C0, BLZHC01587C0, BLZHC01589C0, G02CO04404C0, PGLS103391C160 FS+14d, PGLS103391C260 FS+14d, PGLS103392R02 FS+14d, PP1S903371C0 FS+14d, PP1S903372C0 FS+14d, PP1SX03371C0 FS+14d, PP1SX03372C0 FS+14d, PP1SX03373C0, SEXCO04403C0 |  |  |  |  | 26.9d | 0d | PLUMBING [19730 h]; Cost | 1081 | 196 | CR5LS32105C0 | LA | C | 20 | P1 | 1P | LN | 220 | 05 | S | BILL 13 | B13 | S2 | 03 | R00 | ACF10 | 220 |  |
| LP11P07101C0 |  | LA-P1 ; Waterproofing (P1) | 24.5d | 2012-07-05 | 2012-08-04 | LP11P03301C0, GAFCI50038R02 FS+58d, LV10AF09207R2 |  |  |  |  | 26.9d | 8.25d | CONCRETE [6601 h]; Cost | 302 | 335 | DR5LS03301C0 | LA | C | 03 | P1 | 1P | CT | 033 | 01 | S | BILL 13 | B13 | S2 | 03 | R00 | ACF03 | 071 |  |
| LP11P10201C0 |  | LA-P1 ; Paving & Surfacing/Tileworks (P1) | 42d | 2012-08-13 | 2012-10-03 | LP11P07101C0, BLZTC01546C0, BLZTC01553C0 |  |  |  |  | 18.65d | 0d | THERMAL & MOISTURE [1926 h]; Cost | 302 | 335 | DR5LS07101C0 | LA | C | 07 | P1 | 1P | FF | 071 | 01 | S | BILL 13 | B13 | S2 | 03 | R00 | ACF10 | PV |  |
| LP11P32105C0 |  | LA-P1 ; MEP Utiity Lines/Irrigation (P1) | 28d | 2012-10-03 | 2012-11-07 | LP11P10201C0, LV09GZ22059R2 FF |  |  |  |  | 18.65d | 0d | LANDSCAPING [25009 h]; Cost | 302 | 335 | DR5LS10201C0 | LA | C | 09 | P1 | 1P | LN | 321 | 01 | S | BILL 13 | B13 | S2 | 03 | R00 | ACF10 | 328 |  |
| LP11P11001C0 |  | LA-P1 ; Plants/Planting, Finishes (Fittings etc) (P1) | 15d | 2012-11-07 | 2012-11-26 | LP11P32105C0, LZ9GZ13354R2 FF, LZ9GZ10253R2 FF |  |  |  |  | 84.65d | 66d | FF&E [23404 h]; Cost | 302 | 335 | DR5LS11001C0 | LA | C | 11 | P1 | 1P | LN | 110 | 01 | S | BILL 13 | B13 | S2 | 03 | R00 | ACF10 | a |  |
|  | 4 | **Landscaping - Cube Pool** |  | 2011-11-05 | 2012-07-19 |  |  |  |  |  |  |  |  |  |  |  |  |  |  |  |  |  |  |  |  |  |  |  |  |  |  |  |  |
| LGLGP32105C0 |  | LA-GL ; MEP utility lines (Cube) | 24d | 2011-11-05 | 2011-12-08 | PGLS103391C70 FS+14d, PGLS103391C80 FS+14d |  |  |  |  | 190.14d | 0d | PLUMBING [19730 h]; Cost | 1081 | 196 | CR5LS32105C0 | LA | C | 20 | GL | GP | LN | 220 | 05 | S | BILL 13 | B13 | S2 | 04 | R00 | ACF10 | 220 |  |
| LGLGP03301C0 |  | LA-GL ; Concrete works for water features (Cube) | 48d | 2011-12-08 | 2012-02-05 | LGLGP32105C0 |  |  |  |  | 190.14d | 0d | CONCRETE [3232 h]; Cost | 302 | 335 | DR5LS03301C0 | LA | C | 03 | GL | GP | CT | 033 | 01 | S | BILL 13 | B13 | S2 | 04 | R00 | ACF03 | 033 |  |
| LGLGP05509C0 |  | LA-GL ; Steel supports for water features (Cube/Reflecting Pool) | 47.88d | 2012-02-05 | 2012-04-01 | LGLGP03301C0 |  |  |  |  | 301.77d | 283.12d | SECONDARY STEEL [2369 h]; Cost | 302 | 335 | DR5LS03301C0 | LA | C | 03 | GL | GP | SW | 055 | 01 | S | BILL 13 | B02 | S2 | 04 | R00 |  | 055 |  |
| LGLGP07101C0 |  | LA-GL ; Water Proofing and screed (Cube) | 36d | 2012-02-05 | 2012-03-18 | BLZTC01556C0, LGLGP03301C0 |  |  |  |  | 190.14d | 0d | THERMAL & MOISTURE [496 h]; Cost | 302 | 335 | DR5LS07101C0 | LA | C | 07 | GL | GP | FF | 071 | 01 | S | BILL 13 | B13 | S2 | 04 | R00 | ACF10 | 071 |  |
| LGLGP04409C0 |  | LA-GL ; Glass wall and stone cladding (Cube) - NEW | 36d | 2012-03-18 | 2012-04-29 | LGLGP07101C0 |  |  |  |  | 190.14d | 0d | SECONDARY STEEL; Cost | 302 | 335 | DR5LS03301C0 | LA | C | 03 | GL | GP | FA | 044 | 01 | S | BILL 13 | B13 | S2 | 04 | R00 | ACF03 | 044 |  |
| LGLGP10201C0 |  | LA-GL ; Tile works (Cube) | 54.5d | 2012-04-29 | 2012-07-02 | LGLGP04409C0 |  |  |  |  | 190.14d | 0d | LANDSCAPING [21142 h]; Cost | 302 | 335 | DR5LS10201C0 | LA | C | 09 | GL | GP | LN | 093 | 01 | S | BILL 13 | B13 | S2 | 04 | R00 | ACF10 | CT |  |
| LGLGP11001C0 |  | LA-GL ; Finishes (Fittings etc) (Cube) | 15d | 2012-07-02 | 2012-07-19 | LGLGP10201C0 |  |  |  |  | 190.14d | 171.49d | FF&E [19785 h]; Cost | 302 | 335 | DR5LS11001C0 | LA | C | 11 | GL | GP | LN | 110 | 01 | S | BILL 13 | B13 | S2 | 04 | R00 | ACF10 | a |  |
|  | 01 | **Landscaping - CUP Area** |  | 2011-09-05 | 2012-09-06 |  |  |  |  |  |  |  |  |  |  |  |  |  |  |  |  |  |  |  |  |  |  |  |  |  |  |  |  |
| LGLGC03301C0 |  | LA-GL ; Concrete works (CUP Area) | 29.88d | 2011-09-05 A | 2011-10-05 | UGLS103301C0 FS+14d, UGLS103302C0 FS+14d, UGLS103303C0 FS+14d, UGLS203301C0 FS+14d, UGLS203302C0 FS+14d, UGLS303301C0 FS+14d, UGLS303302C0 FS+14d | 85% | 4.48d | 2011-09-04 | 2011-10-08 | 333.64d | 0d | CONCRETE [4432 h]; Cost | 302 | 335 | DR5LS03301C0 | LA | C | 03 | GL | GC | CT | 033 | 01 | S | BILL 13 | B13 | S2 | 05 | R00 | ACF03 | 033 |  |
| LGLGC05301C0 |  | LA-GL ; External metal works - guardrails (CUP Area) | 36d | 2011-10-05 | 2011-11-20 | LGLGC03301C0 |  |  |  |  | 381.52d | 231.52d | STRUCTURAL STEEL; Cost | 302 | 335 | DR5LS05301C0 | LA | C | 05 | GL | GC | SW | 055 | 01 | S | BILL 13 | B13 | S2 | 05 | R00 | ACF03 | 056 | to be deleted - cost to be added to external metal works |
| LGLGC07101C0 |  | LA-GL ; Water Proofing (CUP Area) | 24d | 2011-10-05 | 2011-11-02 | LGLGC03301C0 |  |  |  |  | 333.64d | 0d | THERMAL & MOISTURE [672 h]; Cost | 302 | 335 | DR5LS07101C0 | LA | C | 07 | GL | GC | FF | 071 | 01 | S | BILL 13 | B13 | S2 | 05 | R00 | ACF10 | 071 |  |
| LGLGC32105C0 |  | LA-GL ; drainage/Irrigation utility lines (CUP Area) | 23.88d | 2011-11-02 | 2011-12-06 | LGLGC07101C0 |  |  |  |  | 333.64d | 0d | EXCAVATION & BACKFILLING [918 m3]; EXCAVATION & BACKFILLING [184 h]; ANTI-TERMITE [736 m2]; ANTI-TERMITE [736 h]; Cost | 1081 | 196 | CR5LS32105C0 | LA | C | 24 | GL | GC | LN | 328 | 05 | S | BILL 13 | B13 | S2 | 05 | R00 | ACF10 | 328 |  |
| LGLGC10201C0 |  | LA-GL ; External metal works - guardrails (CUP Area) | 12d | 2011-12-06 | 2011-12-20 | LGLGC32105C10 |  |  |  |  | 333.64d | 0d | SECONDARY STEEL [2121 h]; Cost | 302 | 335 | DR5LS10201C0 | LA | C | 05 | GL | GC | LN | 055 | 01 | S | BILL 13 | B13 | S2 | 05 | R00 | ACF10 | 056 |  |
| LGLGC31001C0 |  | LA-GL ; Paving & Surfacing (CUP Area) | 12d | 2011-12-06 | 2011-12-20 | LGLGC32105C10, LGLGC10201C0 FF |  |  |  |  | 333.64d | 0d | EXCAVATION & BACKFILLING [5551 m3]; EXCAVATION & BACKFILLING [1110 h]; ANTI-TERMITE [4447 m2]; ANTI-TERMITE [4447 h]; Cost | 302 | 335 | DR5LS11001C0 | LA | C | 60 | GL | GC | LN | 312 | 01 | S | BILL 13 | B13 | S2 | 05 | R00 | ACF09 | 312 |  |
| LGLGC32105C10 |  | LA-GL ; Backfill - formation (CUP area) | 0d | 2011-12-06 | 2011-12-06 | LGLGC32105C0 |  |  |  |  | 333.64d | 0d | Cost |  |  |  | LA |  |  |  | GC | XW | 312 |  |  |  | B13 |  |  | R00 |  | 312 |  |
| LGLGC32901C0 |  | LA-GL ; Plant / Planting (CUP Area) | 24d | 2011-12-20 | 2012-01-18 | UFNS231205C0, LGLGC31001C0 |  |  |  |  | 333.64d | 183.64d | LANDSCAPING [3149 h]; Cost | 302 | 335 | DR5LS32901C0 | LA | C | 60 | GL | GC | LN | 329 | 01 | S | BILL 13 | B13 | S2 | 05 | R00 | ACF10 | 329 |  |
| LGLGC11001C0 |  | LA-GL ; SIte Furniture's / finishes (CUP Area) | 12d | 2012-08-25 | 2012-09-06 | LGLGC31001C0, LGLGC32901C0, LGLGC05301C0, LP31L07104R62 |  |  |  |  | 150d | 131.35d | FF&E [42 h]; FF&E [13.96 no]; Cost | 302 | 335 | DR5LS11001C0 | LA | C | 60 | GL | GC | LN | 110 | 01 | S | BILL 13 | B13 | S2 | 05 | R00 | ACF10 | f |  |
| LP31L07104R62 |  | LA-GL ; Leave-out surface and paving (Cup Area) | 0d | 2012-08-25 | 2012-08-25 | LP31L07104R22, LGLGC31001C0, LGLGC32901C0 |  |  |  |  | 150d | 0d | Cost |  |  |  | LA |  |  |  | GC | XW | 312 |  |  |  | B13 |  |  | R00 |  | 312 | new |

| ID | WBS | Activity | Duration | Start | Finish | Predecessors | Total float | Free float | Resources | Change Order # | NEW ACTIVITY ID | change id | CCAD BUILDING(SET) | CCAD PHASE(SET) | CCAD DIVISION(SET) | CCAD FLOOR(SET) | CCAD ZONE(SET) | CCAD WORK(SET) | CCAD SECTION(SET) | CCAD SERIAL No.(SET) | CCAD Carpark district code(set) | CCAD CBS(SET) | CCAD BILL(SET) | CCAD HANDOVER(SET) | CCAD TAG(SET) | CCAD REV(SET) | CCADACF (SET) | CCAD SSCF | user_text2 |
| --- | --- | --- | --- | --- | --- | --- | --- | --- | --- | --- | --- | --- | --- | --- | --- | --- | --- | --- | --- | --- | --- | --- | --- | --- | --- | --- | --- | --- | --- |
|  | 5 | **Landscaping - North Park Area** |  | 2012-08-25 | 2013-01-20 |  |  |  |  |  |  |  |  |  |  |  |  |  |  |  |  |  |  |  |  |  |  |  |  |
| LGLGN03301C0 |  | LA-GL ; Concrete works (North Park Area) | 30d | 2012-08-25 | 2012-09-27 | BLZHC01582C0, BLZTC01541C0, PGLS103391C120, PGLS103391C130, PGLS103391C140, PGLS103391C160, PGLS103391C180, PGLS103391C190, PGLS103391C200, PGLS103391C100, PGLS103391C110, BLZTC01543C0, PGLS703394R02, PGLS703394C0, PGLS103391C260, PGLS103392R02, PGLS103391C170, PGLS103394R02, PGLS103352R02, LZ9GZ03351R2 FF | 39d | 0d | CONCRETE [8568 h]; Cost | 302 | 335 | DR5LS03301C0 | LA | C | 03 | GL | GN | CT | 033 | 01 | S | BILL 13 | B13 | S2 | 06 | R00 | ACF03 | 033 |  |
| LGLGN05301C0 |  | LA-GL ; Steel Bracket for Corten / Pavilion (North Park Area) | 36d | 2012-09-29 | 2012-11-11 | LGLGN03301C0 | 66d | 27d | STRUCTURAL STEEL; Cost | 302 | 335 | DR5LS05301C0 | LA | C | 05 | GL | GN | SW | 055 | 01 | S | BILL 13 | B13 | S2 | 06 | R00 | ACF03 | 055 | to be deleted - cost to be added to external metalworks |
| LGLGN07101C0 |  | LA-GL ; Water Proofing (North Park Area) | 18d | 2012-09-29 | 2012-10-18 | BLZTC01543C0, BLZTC01550C0, BLZTC01552C0, LGLGN03301C0 | 39d | 0d | THERMAL & MOISTURE [1296 h]; Cost | 302 | 335 | DR5LS07101C0 | LA | C | 07 | GL | GN | FF | 071 | 01 | S | BILL 13 | B13 | S2 | 06 | R00 | ACF10 | 071 |  |
| LGLGN32105C0 |  | LA-GL ; drainage/Irrigation utility lines (North Park Area) | 18d | 2012-10-20 | 2012-11-11 | LGLGN07101C0, LZ9GZ27055R2 FF | 39d | 0d | EXCAVATION & BACKFILLING [1779 m3]; EXCAVATION & BACKFILLING [356 h]; ANTI-TERMITE [1425 m2]; ANTI-TERMITE [1425 h]; Cost | 1081 | 196 | CR5LS32105C0 | LA | C | 24 | GL | GN | LN | 328 | 05 | S | BILL 13 | B13 | S2 | 06 | R00 | ACF10 | 328 |  |
| LGLGC32105C20 |  | LA-GL ; Backfill - formation (CUP area) | 0d | 2012-11-12 | 2012-11-12 | LGLGN32105C0 | 39d | 0d | Cost |  |  |  | LA |  |  |  | GC | XW | 312 |  |  |  | B13 |  |  | R00 |  | 312 | needs cost |
| LGLGN10201C0 |  | LA-GL ; External metal works - Guardrails, Shades (North Park Area) | 12d | 2012-11-12 | 2012-11-26 | LGLGC32105C20 | 54d | 15d | SECONDARY STEEL [4101 h]; Cost | 302 | 335 | DR5LS10201C0 | LA | C | 05 | GL | GN | LN | 055 | 01 | S | BILL 13 | B13 | S2 | 06 | R00 | ACF10 | 056 |  |
| LGLGN31001C0 |  | LA-GL ; Paving & Surfacing (North Park Area) | 27d | 2012-11-12 | 2012-12-15 | LGLGC32105C20, LGLGN10201C0 FF | 39d | 0d | EXCAVATION & BACKFILLING [10735 m3]; EXCAVATION & BACKFILLING [2147 h]; ANTI-TERMITE [8600 m2]; ANTI-TERMITE [8600 h]; Cost | 302 | 335 | DR5LS11001C0 | LA | C | 60 | GL | GN | LN | 312 | 01 | S | BILL 13 | B13 | S2 | 06 | R00 | ACF09 | 312 |  |
| LGLGN32901C0 |  | LA-GL ; Plant / Planting (North Park Area) | 18d | 2012-12-16 | 2013-01-06 | LGLGN31001C0, LGLGN05301C0, LP31L07104R52 | 39d | 0d | LANDSCAPING [6089 h]; Cost | 302 | 335 | DR5LS32901C0 | LA | C | 60 | GL | GN | LN | 329 | 01 | S | BILL 13 | B13 | S2 | 06 | R00 | ACF10 | 329 |  |
| LP31L07104R52 |  | LA-GL ; Leave-out surface and paving (North Park Area) | 0d | 2012-12-16 | 2012-12-16 | BLZTC01541C0, LGLGN31001C0 | 39d | 0d | Cost |  |  |  | LA |  |  |  | GN | XW | 312 |  |  |  | B13 |  |  | R00 |  | 312 | new |
| LGLGN11001C0 |  | LA-GL ; Site Furniture's / finishes (North Park Area) | 12d | 2013-01-07 | 2013-01-20 | LGLGN31001C0, LGLGN32901C0, LZ9GZ05152R2 FF | 39d | 20.35d | FF&E [81 h]; FF&E [27 no]; Cost | 302 | 335 | DR5LS11001C0 | LA | C | 60 | GL | GN | LN | 110 | 01 | S | BILL 13 | B13 | S2 | 06 | R00 | ACF10 | f |  |
|  | 6 | **Landscaping - Emergency Parking Area** |  | 2012-07-04 | 2012-10-30 |  |  |  |  |  |  |  |  |  |  |  |  |  |  |  |  |  |  |  |  |  |  |  |  |
| LGLGA03301C0 |  | LA-GL ; Concrete works incl. Waterfeartures (Emergency Area) | 20.75d | 2012-07-04 | 2012-07-29 | BLZHC01588C0, BLZTC01545C0, IEXCO04405C0, PGLS703391C0, PGLS703392C0, PGLS503392C0 | 106.95d | 0d | CONCRETE [5584 h]; Cost | 302 | 335 | DR5LS03301C0 | LA | C | 03 | GL | GA | CT | 033 | 01 | S | BILL 13 | B13 | S2 | 07 | R00 | ACF03 | 033 |  |
| LGLGA05301C0 |  | LA-GL ; Steel Bracket for Corten / Pavilion (Emergency Area) | 39.55d | 2012-07-29 | 2012-09-16 | LGLGA03301C0 | 124.9d | 17.95d | STRUCTURAL STEEL; Cost | 302 | 335 | DR5LS05301C0 | LA | C | 05 | GL | GA | SW | 055 | 01 | S | BILL 13 | B13 | S2 | 07 | R00 | ACF03 | 055 | to be deleted - cost to the external metal works |
| LGLGA07101C0 |  | LA-GL ; Water Proofing (Emergency Area) | 15.62d | 2012-07-29 | 2012-08-16 | LGLGA03301C0 | 106.95d | 0d | THERMAL & MOISTURE [848 h]; Cost | 302 | 335 | DR5LS07101C0 | LA | C | 07 | GL | GA | FF | 071 | 01 | S | BILL 13 | B13 | S2 | 07 | R00 | ACF10 | 071 |  |
| LP31L07103R2 |  | LA-GL ; Water feature E1 tile works (Emergency Area) | 0d | 2012-07-29 | 2012-07-29 | LP31L22000R2 | 182.45d | 0d | Cost |  |  |  | LA |  |  | GL | GA | LN | 500 |  |  |  | B13 |  |  | R00 |  | WF | new |
| LP31L07104R2 |  | LA-GL ; Water feature E1 Finishes and fittings (Emergency Area) | 0d | 2012-07-29 | 2012-07-29 | LP31L07103R2 | 182.45d | 163.8d | Cost |  |  |  | LA |  |  | GL | GA | LN | 500 |  |  |  | B13 |  |  | R00 |  | WF | new |
| LP31L22000R2 |  | LA-GL ; Water feature E1 MEP Utility lines (Emergency Area) | 0d | 2012-07-29 | 2012-07-29 | LGLGA03301C0 | 182.45d | 0d | Cost |  |  |  | LA |  |  | GL | GA | LN | 500 |  |  |  | B13 |  |  | R00 |  | WF |  |
| LGLGA32105C0 |  | LA-GL ; Drainage/Irrigation utility lines (Emergency Area) | 17.88d | 2012-08-16 | 2012-09-09 | LGLGA07101C0 | 106.95d | 0d | EXCAVATION & BACKFILLING [712 m3]; EXCAVATION & BACKFILLING [142 h]; ANTI-TERMITE [570 m2]; ANTI-TERMITE [570 h]; Cost | 1081 | 196 | CR5LS32105C0 | LA | C | 24 | GL | GA | LN | 328 | 05 | S | BILL 13 | B13 | S2 | 07 | R00 | ACF10 | 328 |  |
| LGLGA10201C0 |  | LA-GL ; External metal works - Shades (Emergency Area) | 12d | 2012-09-09 | 2012-09-23 | LGLGC32105C30 | 118.95d | 12d | SECONDARY STEEL [2670 h]; Cost | 302 | 335 | DR5LS10201C0 | LA | C | 05 | GL | GA | LN | 055 | 01 | S | BILL 13 | B13 | S2 | 07 | R00 | ACF10 | 056 |  |
| LGLGA31001C0 |  | LA-GL ; Paving & Surfacing (Emergency Area) | 24d | 2012-09-09 | 2012-10-07 | LGLGC32105C30, LGLGA10201C0 FF | 106.95d | 0d | EXCAVATION & BACKFILLING [6989 m3]; EXCAVATION & BACKFILLING [1398 h]; ANTI-TERMITE [5599 m2]; ANTI-TERMITE [5599 h]; Cost | 302 | 335 | DR5LS11001C0 | LA | C | 60 | GL | GA | LN | 312 | 01 | S | BILL 13 | B13 | S2 | 07 | R00 | ACF09 | 312 |  |
| LGLGC32105C30 |  | LA-GL ; Backfill - formation (Emergency area) | 0d | 2012-09-09 | 2012-09-09 | LGLGA32105C0 | 106.95d | 0d | Cost |  |  |  | LA |  |  | GL | GA | XW | 312 |  |  |  | B13 |  |  | R00 |  | 312 | new |
| LGL31L07104R |  | LA-GL ; Leave-out surface and paving (Emergency Area) | 0d | 2012-10-07 | 2012-10-07 | LGLGA31001C0, BLZTC01545C0 | 124.95d | 106.3d | Cost |  |  |  | LA |  |  | GL | GA | XW | 312 |  |  |  | B13 |  |  | R00 |  | 312 | new |
| LGLGA32901C0 |  | LA-GL ; Plant / Planting (Emergency Area) | 12d | 2012-10-07 | 2012-10-21 | LGLGA31001C0, LGLGA05301C0 | 106.95d | 0d | LANDSCAPING [3964 h]; Cost | 302 | 335 | DR5LS32901C0 | LA | C | 60 | GL | GA | LN | 329 | 01 | S | BILL 13 | B13 | S2 | 07 | R00 | ACF10 | 329 |  |
| LGLGA11001C0 |  | LA-GL ; Site Furniture's / finishes (Emergency Area) | 6d | 2012-10-21 | 2012-10-30 | LGLGA31001C0, LGLGA32901C0 | 106.95d | 88.3d | FF&E [53 h]; FF&E [17.58 no]; Cost | 302 | 335 | DR5LS11001C0 | LA | C | 60 | GL | GA | LN | 110 | 01 | S | BILL 13 | B13 | S2 | 07 | R00 | ACF10 | f |  |

| ID | WBS | Activity | Duration | Start | Finish | Predecessors | Complete | Remaining | Planned start | Planned finish | Total float | Free float | Resources | Change Order # | NEW ACTIVITY ID | change id | CCAD BUILDING(SET) | CCAD PHASE(SET) | CCAD DIVISION(SET) | CCAD FLOOR(SET) | CCAD ZONE(SET) | CCAD WORK(SET) | CCAD SECTION(SET) | CCAD SERIAL No.(SET) | CCAD Carpark district code(set) | CCAD CBS(SET) | CCAD BILL(SET) | CCAD HANDOVER(SET) | CCAD TAG(SET) | CCAD REV(SET) | CCADACF (SET) | CCAD SSCF | user_text2 |
| --- | --- | --- | --- | --- | --- | --- | --- | --- | --- | --- | --- | --- | --- | --- | --- | --- | --- | --- | --- | --- | --- | --- | --- | --- | --- | --- | --- | --- | --- | --- | --- | --- | --- |
|  | 7 | **Landscaping - Great Lawn Area** |  | 2011-09-05 | 2012-10-01 |  |  |  |  |  |  |  |  |  |  |  |  |  |  |  |  |  |  |  |  |  |  |  |  |  |  |  |  |
| LGLGS03301C0 |  | LA-GL ; Concrete works incl. waterfeature E3 (Great Lawn) | 48d | 2011-09-05 A | 2011-12-05 | PGLS103391C50, PGLS103391C60, PGLS203392C0, PGLS203393C0, PGLS103391C20A, PGLS103391C40, PGLS103393C0 | 25% | 36d | 2011-12-06 | 2012-02-01 | 247.59d | 0d | CONCRETE [7056 h]; Cost | 302 | 335 | DR5LS03301C0 | LA | C | 03 | GL | GS | CT | 033 | 01 | S | BILL 13 | B13 | S2 | 08 | R00 | ACF03 | 033 |  |
| LGLGS05301C0 |  | LA-GL ; Steel Bracket for Corten / Pavilion (Great Lawn) | 18d | 2011-12-05 | 2011-12-26 | LGLGS03301C0 |  |  |  |  | 247.59d | 0d | STRUCTURAL STEEL [2251 h]; Cost | 302 | 335 | DR5LS05301C0 | LA | C | 05 | GL | GS | SW | 055 | 01 | S | BILL 13 | B13 | S2 | 08 | R00 | ACF03 | 055 |  |
| LP31L07103R12 |  | LA-GL ; Water feature E3 tile works (Great Lawn) | 0d | 2011-12-05 | 2011-12-05 | LP31L22000R12 |  |  |  |  | 382.34d | 0d | Cost |  |  |  | LA |  |  | GL | GS | LN | 500 |  |  |  | B13 |  |  | R00 |  | WF | new |
| LP31L07104R12 |  | LA-GL ; Water feature E3 Finishes and fittings (Great Lawn) | 0d | 2011-12-05 | 2011-12-05 | LP31L07103R12 |  |  |  |  | 382.34d | 363.69d | Cost |  |  |  | LA |  |  | GL | GS | XW | 312 |  |  |  | B13 |  |  | R00 |  | 312 | new |
| LP31L22000R12 |  | LA-GL ; Water feature E3 MEP Utility lines (Great Lawn) | 0d | 2011-12-05 | 2011-12-05 | LGLGS03301C0 |  |  |  |  | 382.34d | 0d | Cost |  |  |  | LA |  |  | GL | GS | LN | 500 |  |  |  | B13 |  |  | R00 |  | WF | new |
| LGLGS07101C0 |  | LA-GL ; Water Proofing (Great Lawn) | 24d | 2011-12-26 | 2012-01-24 | BLZTC01549C0 FF, LGLGS05301C0 |  |  |  |  | 247.59d | 0d | THERMAL & MOISTURE [1072 h]; Cost | 302 | 335 | DR5LS07101C0 | LA | C | 07 | GL | GS | FF | 071 | 01 | S | BILL 13 | B13 | S2 | 08 | R00 | ACF10 | 071 |  |
| LGLGS32105C0 |  | LA-GL ; Drainage/Irrigation utility lines (Great Lawn) | 24d | 2012-01-24 | 2012-02-22 | LGLGS07101C0 |  |  |  |  | 247.59d | 0d | EXCAVATION & BACKFILLING [1463 m3]; EXCAVATION & BACKFILLING [293 h]; ANTI-TERMITE [1172 m2]; ANTI-TERMITE [1172 h]; Cost | 1081 | 196 | CR5LS32105C0 | LA | C | 24 | GL | GS | LN | 328 | 05 | S | BILL 13 | B13 | S2 | 08 | R00 | ACF10 | 328 |  |
| LGLGC32105C40 |  | LA-GL ; Backfill - formation (Great Lawn) | 0d | 2012-02-22 | 2012-02-22 | LGLGS32105C0 |  |  |  |  | 247.59d | 0d | Cost |  |  |  | LA |  |  | GL | GS | XW | 312 |  |  |  | B13 |  |  | R00 |  | 312 | needs cost |
| LGLGS31001C0 |  | LA-GL ; Paving & Surfacing (Great Lawn) | 36d | 2012-02-22 | 2012-04-04 | LGLGC32105C40 |  |  |  |  | 247.59d | 0d | EXCAVATION & BACKFILLING [8839 m3]; EXCAVATION & BACKFILLING [1768 h]; ANTI-TERMITE [7081 m2]; ANTI-TERMITE [7081 h]; Cost | 302 | 335 | DR5LS11001C0 | LA | C | 60 | GL | GS | LN | 312 | 01 | S | BILL 13 | B13 | S2 | 08 | R00 | ACF09 | 312 |  |
| LGLGS10201C0 |  | LA-GL ; Corten / Pavilion (Great Lawn) | 18d | 2012-04-04 | 2012-04-25 | LGLGS31001C0, LGLGS05301C0 |  |  |  |  | 262.34d | 243.69d | SECONDARY STEEL [3377 h]; Cost | 302 | 335 | DR5LS10201C0 | LA | C | 05 | GL | GS | LN | 102 | 01 | S | BILL 13 | B13 | S2 | 08 | R00 | ACF10 | 102 |  |
| LGLGS32901C0 |  | LA-GL ; Plant / Planting (Great Lawn) | 23d | 2012-08-25 | 2012-09-19 | LGLGS31001C0, LP31L07104R22 |  |  |  |  | 129.25d | 0d | LANDSCAPING [5013 h]; Cost | 302 | 335 | DR5LS32901C0 | LA | C | 60 | GL | GS | LN | 329 | 01 | S | BILL 13 | B13 | S2 | 08 | R00 | ACF10 | 329 |  |
| LP31L07104R22 |  | LA-GL ; Leave-out surface and paving (Great Lawn) | 0d | 2012-08-25 | 2012-08-25 | LGLGS31001C0, BLZTC01542C0, LGLGS31001C0 FF |  |  |  |  | 129.25d | 0d | Cost |  |  |  | LA |  |  | GL | GS | LN | 312 |  |  |  | B13 |  |  | R00 |  | 312 | new |
| LGLGS11001C0 |  | LA-GL ; SIte Furniture's / finishes (Great Lawn) | 9.75d | 2012-09-20 | 2012-10-01 | LGLGS31001C0, LGLGS32901C0 |  |  |  |  | 129.25d | 110.6d | FF&E [67 h]; FF&E [22.23 no]; Cost | 302 | 335 | DR5LS11001C0 | LA | C | 60 | GL | GS | LN | 110 | 01 | S | BILL 13 | B13 | S2 | 08 | R00 | ACF10 | f |  |
|  | 8 | **Landscaping - Clinic Entrance Area** |  | 2012-08-25 | 2012-12-31 |  |  |  |  |  |  |  |  |  |  |  |  |  |  |  |  |  |  |  |  |  |  |  |  |  |  |  |  |
| LGLGE03301C0 |  | LA-GL ; Concrete works (Clinic Entrance) | 28.5d | 2012-08-25 | 2012-09-26 | BLZHC01581C0, BLZHC01582C0, BLZTC01542C0, PGLS403391C0, PGLS403392C0, PGLS503391C0, PGLS503392C0, TEXCO04413C0 FF |  |  |  |  | 55.5d | 0d | CONCRETE [3432 h]; Cost | 302 | 335 | DR5LS03301C0 | LA | C | 03 | GL | GE | CT | 033 | 01 | S | BILL 13 | B13 | S2 | 09 | R00 | ACF03 | 033 |  |
| LGLGE05301C0 |  | LA-GL ; Steel Bracket for Gallery canopy (Clinic Entrance) | 6d | 2012-09-26 | 2012-10-03 | LGLGE03301C0 |  |  |  |  | 55.5d | 0d | STRUCTURAL STEEL [1094 h]; Cost | 302 | 335 | DR5LS05301C0 | LA | C | 05 | GL | GE | SW | 055 | 01 | S | BILL 13 | B13 | S2 | 09 | R00 | ACF03 | 055 |  |
| LP31L07103R22 |  | LA-GL ; Water features S3, S4, E2 tile works (Clinic Entrance) | 0d | 2012-09-26 | 2012-09-26 | LP31L22000R22 |  |  |  |  | 133.5d | 0d | Cost |  |  |  | LA |  |  | GL | GE | LN | 500 |  |  |  | B13 |  |  | R00 |  | WF | new |
| LP31L07104R32 |  | LA-GL ; Water features S3, S4, E2 Finishes and fittings (Clinic Entrance) | 0d | 2012-09-26 | 2012-09-26 | LP31L07103R22 |  |  |  |  | 133.5d | 114.85d | Cost |  |  |  | LA |  |  | GL | GE | LN | 500 |  |  |  | B13 |  |  | R00 |  | WF | new |
| LP31L22000R22 |  | LA-GL ; Water features S3, S4, E2 MEP Utility lines (Clinic Entrance) | 0d | 2012-09-26 | 2012-09-26 | LGLGE03301C0 |  |  |  |  | 133.5d | 0d | Cost |  |  |  | LA |  |  | GL | GE | LN | 500 |  |  |  | B13 |  |  | R00 |  | WF | new |
| LGLGE07101C0 |  | LA-GL ; Water Proofing (Clinic Entrance) | 24d | 2012-10-03 | 2012-11-03 | BLZTC01551C0, LGLGE05301C0 |  |  |  |  | 55.5d | 0d | THERMAL & MOISTURE [520 h]; Cost | 302 | 335 | DR5LS07101C0 | LA | C | 07 | GL | GE | FF | 071 | 01 | S | BILL 13 | B13 | S2 | 09 | R00 | ACF10 | 071 |  |
| LGLGE32105C0 |  | LA-GL ; drainage/Irrigation utility lines (Clinic Entrance) | 18d | 2012-11-03 | 2012-11-25 | LGLGE07101C0 |  |  |  |  | 55.5d | 0d | EXCAVATION & BACKFILLING [310 m3]; EXCAVATION & BACKFILLING [62 h]; ANTI-TERMITE [248 m2]; ANTI-TERMITE [248 h]; Cost | 1081 | 196 | CR5LS32105C0 | LA | C | 24 | GL | GE | LN | 328 | 05 | S | BILL 13 | B13 | S2 | 09 | R00 | ACF10 | 328 |  |
| LGLGC32105C50 |  | LA-GL ; Backfill - formation (Clinic Entrance) | 0d | 2012-11-25 | 2012-11-25 | LGLGE32105C0 |  |  |  |  | 55.5d | 0d | Cost |  |  |  | LA |  |  | GL | GE | XW | 312 |  |  |  | B13 |  |  | R00 |  | 312 | needs cost |
| LGLGE10201C0 |  | LA-GL ; External Metal works, Gallery Canopy, Guardrails (Clinic Entrance) | 24d | 2012-11-25 | 2012-12-24 | LGLGE07101C0, LGLGC32105C50 |  |  |  |  | 61.5d | 42.85d | SECONDARY STEEL [1641 h]; Cost | 302 | 335 | DR5LS10201C0 | LA | C | 05 | GL | GE | LN | 055 | 01 | S | BILL 13 | B13 | S2 | 09 | R00 | ACF10 | 056 |  |
| LGLGE31001C0 |  | LA-GL ; Paving & Surfacing (Clinic Entrance) | 12d | 2012-11-25 | 2012-12-10 | LGLGC32105C50 |  |  |  |  | 55.5d | 0d | EXCAVATION & BACKFILLING [4296 m3]; EXCAVATION & BACKFILLING [859 h]; ANTI-TERMITE [3442 m2]; ANTI-TERMITE [3442 h]; Cost | 302 | 335 | DR5LS11001C0 | LA | C | 60 | GL | GE | LN | 312 | 01 | S | BILL 13 | B13 | S2 | 09 | R00 | ACF09 | 312 |  |
| LGLGE32901C0 |  | LA-GL ; Plant / Planting (Clinic Entrance) | 12d | 2012-12-10 | 2012-12-24 | LGLGE32105C0, LGLGE31001C0 |  |  |  |  | 55.5d | 0d | LANDSCAPING [2437 h]; Cost | 302 | 335 | DR5LS32901C0 | LA | C | 60 | GL | GE | LN | 329 | 01 | S | BILL 13 | B13 | S2 | 09 | R00 | ACF10 | 329 |  |
| LP31L07104R42 |  | LA-GL ; Leave-out surface and paving (Clinic Entrance) | 0d | 2012-12-10 | 2012-12-10 | BLZTC01542C0, LGLGE31001C0 |  |  |  |  | 73.5d | 54.85d | Cost |  |  |  | LA |  |  | GL | GE | XW | 312 |  |  |  | B13 |  |  | R00 |  | 312 | new |
| LGLGE11001C0 |  | LA-GL ; SIte Furniture's / finishes (Clinic Entrance) | 6d | 2012-12-24 | 2012-12-31 | LGLGE32901C0 |  |  |  |  | 55.5d | 36.85d | FF&E [32 h]; FF&E [10.8 no]; Cost | 302 | 335 | DR5LS11001C0 | LA | C | 60 | GL | GE | LN | 110 | 01 | S | BILL 13 | B13 | S2 | 09 | R00 | ACF10 | f |  |

| ID | WBS | Activity | Type | Duration | Start | Finish | Predecessors | Complete | Remaining | Planned start | Planned finish | Total float | Free float | Resources | change id | CCAD BUILDING(SET) | CCAD PHASE(SET) | CCAD DIVISION(SET) | CCAD FLOOR(SET) | CCAD ZONE(SET) | CCAD WORK(SET) | CCAD SECTION(SET) | CCAD SERIAL No.(SET) | CCAD Carpark district code(set) | CCAD CBS(SET) | CCAD BILL(SET) | CCAD HANDOVER(SET) | CCAD TAG(SET) | CCAD REV(SET) | CCADACF (SET) | CCAD CSA | CCAD SSCF | CCA VO (SET) | P_811 | P_711 | Claimed This Month | CCAD (VO) |
| --- | --- | --- | --- | --- | --- | --- | --- | --- | --- | --- | --- | --- | --- | --- | --- | --- | --- | --- | --- | --- | --- | --- | --- | --- | --- | --- | --- | --- | --- | --- | --- | --- | --- | --- | --- | --- | --- |
|  | 1 | **External Cladding works** |  |  | 2012-01-15 | 2012-05-28 |  |  |  |  |  |  |  |  |  |  |  |  |  |  |  |  |  |  |  |  |  |  |  |  |  |  |  |  |  |  |  |
| LGLCO04405C0 |  | IC-GL ; C4 Glazing (ICU Core) |  | 34.5d | 2012-01-15 | 2012-02-25 | PGLS703391C0 FS+28d |  |  |  |  | 332.5d | 0d | FACADE CURTAIN WALL 4 [8781.4 h]; Cost | PAFCO04407C0 | IC | C | 04 | GL | CO | FA | 044 | 07 | S | BILL 13 | B08 | S2 | FC4 | R00 | ACF05 | FA | 044 |  |  |  |  |  |
| L01CO04405C0 |  | IC-01 ; C4 Glazing (ICU Core) |  | 33.25d | 2012-01-21 | 2012-02-29 | LGLCO04405C0 SS+5d |  |  |  |  | 347.5d | 0d | FACADE CURTAIN WALL 4 [8781.4 h]; Cost | PAFCO04407C0 | IC | C | 04 | 01 | CO | FA | 044 | 07 | S | BILL 13 | B08 | S2 | FC4 | R00 | ACF05 | FA | 044 |  |  |  |  |  |
| L02CO04405C0 |  | IC-02 ; C4 Glazing (ICU Core) |  | 32d | 2012-01-26 | 2012-03-04 | L01CO04405C0 SS+5d |  |  |  |  | 347.5d | 0d | FACADE CURTAIN WALL 4 [8781.4 h]; Cost | PAFCO04407C0 | IC | C | 04 | 02 | CO | FA | 044 | 07 | S | BILL 13 | B08 | S2 | FC4 | R00 | ACF05 | FA | 044 |  |  |  |  |  |
| L03CO04405C0 |  | IC-03 ; C4 Glazing (ICU Core) |  | 30.75d | 2012-02-01 | 2012-03-08 | L02CO04405C0 SS+5d |  |  |  |  | 347.5d | 0d | FACADE CURTAIN WALL 4 [8781.4 h]; Cost | PAFCO04407C0 | IC | C | 04 | 03 | CO | FA | 044 | 07 | S | BILL 13 | B08 | S2 | FC4 | R00 | ACF05 | FA | 044 |  |  |  |  |  |
| LP3CO04418C0 |  | PA-P3 ; Louvers installation (Car Park Area) |  | 84d | 2012-02-06 | 2012-05-14 | PGLS103391C180 FS+14d, PGLS103391C100 FS+14d, PP1SX03372C0 FS+14d, PP1SX03373C0 FS+14d |  |  |  |  | 259.88d | 0d | FACADE STEEL GRILL [7337.4 h]; Cost | PAFCO04407C0 | PA | C | 04 | P3 | CO | FA | 044 | 09 | S | BILL 2 | B02 | S2 | FSL | R00 | ACF05 | FA | 044 |  |  |  |  |  |
| L04CO04405C0 |  | IC-04 ; C4 Glazing (ICU Core) |  | 30.5d | 2012-02-08 | 2012-03-14 | L03CO04405C0 SS+5d |  |  |  |  | 347.5d | 344.62d | FACADE CURTAIN WALL 4 [8781.4 h]; Cost | PAFCO04407C0 | IC | C | 04 | 04 | CO | FA | 044 | 07 | S | BILL 13 | B08 | S2 | FC4 | R00 | ACF05 | FA | 044 |  |  |  |  |  |
| LP2CO04417C0 |  | PA-P2 ; Louvers installation (Car Park Area) |  | 84d | 2012-02-13 | 2012-05-21 | LP3CO04418C0 SS+6d |  |  |  |  | 259.88d | 0d | FACADE STEEL GRILL [7337.4 h]; Cost | PAFCO04407C0 | PA | C | 04 | P2 | CO | FA | 044 | 07 | S | BILL 2 | B02 | S2 | FSL | R00 | ACF05 | FA | 044 |  |  |  |  |  |
| LP1CO04419C0 |  | PA-P1 ; Louvers installation (Car Park Area) |  | 84d | 2012-02-20 | 2012-05-28 | LP2CO04417C0 SS+6d |  |  |  |  | 259.88d | 240.64d | FACADE STEEL GRILL [7359.1 h]; Cost | PAFCO04407C0 | PA | C | 04 | P1 | CO | FA | 044 | 09 | S | BILL 2 | B02 | S2 | FSL | R00 | ACF05 | FA | 044 |  |  |  |  |  |
| LEXCO04407C0 |  | PA-EX ; Granite veneer Bracket, mullion & transom installation (Parking Area) |  | 18d | 2012-03-04 | 2012-03-24 | PP1S903371C0 FS+14d, PP1S903372C0 FS+14d, PP1SX03371C0 FS+14d, PP1SX03372C0 FS+14d, GP1CO04407C10 |  |  |  |  | 261d | 0d | FACADE GRANITE VENEER [6470.5 h]; Cost | UEXCO04407C0 | PA | C |  | EX | CO | FA | 044 | 07 |  | BILL 2 | B13 |  | FGV | R00 | ACF05 | FA | 044 |  |  |  |  |  |
| LEXCO04415C0 |  | PA-EX ; Granite veneer installation (Parking Area) |  | 42d | 2012-03-25 | 2012-05-12 | LEXCO04407C0 |  |  |  |  | 261d | 241.76d | FACADE GRANITE VENEER [19410.4 h]; Cost | UEXCO04415C0 | PA | C |  | EX | CO | FA | 044 | 15 |  | BILL 2 | B13 |  | FGV | R00 | ACF05 | FA | 044 |  |  |  |  |  |
|  | 10 | **Precommissioning Tesing & snagging** |  |  | 2013-02-14 | 2013-04-13 |  |  |  |  |  |  |  |  |  |  |  |  |  |  |  |  |  |  |  |  |  |  |  |  |  |  |  |  |  |  |  |
| LEXTS01801C0 |  | LA-EX ; MEP de-snag |  | 18d | 2013-02-14 | 2013-03-07 | LGLGA11001C0, LGLGA31001C0, LGLGC11001C0, LGLGC31001C0, LGLGE11001C0, LGLGE31001C0, LGLGN11001C0, LGLGN31001C0, LGLGP11001C0, LGLGS11001C0, LGLGS31001C0, LP33W11001C0, LP33W31001C0, LP31L07104R42, LP31L07104R32, LGLGE10201C0, LP31L07104R22, LGLGS10201C0, LP31L07104R12, LGL31L07104R, LP31L07104R2, LP31L07104R52, LP31L07104R62, GP3CO04410C0, G02S203399C0 FS+21d, PGLS103391C10 FS+14d, PGLS103391C20A FS+14d, LP33P11001C0, LP11P11001C0 |  |  |  |  | 18.65d | 0d | TESTING & COMMISSIONING [2040 h]; Cost | PEXTS01801C0 | LA | C |  | EX | TS | SC | 018 | 01 |  | BILL 13 | B13 | S2 | 01 | R00 | ACF07 |  | 018 |  |  |  |  |  |
| LEXTS01802C0 |  | LA-EX ; Touch-up/JV inspection /De-snag |  | 24d | 2013-03-07 | 2013-04-04 | LEXTS01801C0, LGLCO04405C0, LGLCO04407C0, LGLGA11001C0, LGLGA31001C0, LGLGC11001C0, LGLGC31001C0, LGLGE11001C0, LGLGE31001C0, LGLGP11001C0, LGLGS11001C0, LGLGS31001C0, LP1CO04409C0, LP2CO04407C0, LP33W11001C0, LP33W31001C0, LP3CO04409C0, GGLCO04410C10, GP1CO04419C0, GP3CO04410C0, G02S203399C0 FS+21d, PGLS103391C10 FS+14d, PGLS103391C20A FS+14d, LGLCO04407C10, LP1CO04409C10, LP2CO04407C10, LP3CO04409C10, LP33P11001C0, LP11P11001C0, LP33W32901C0, LGLGP05509C0 |  |  |  |  | 18.65d | 0d | TESTING & COMMISSIONING [340 h]; Cost | PEXTS01802C0 | LA | C |  | EX | TS | SC | 018 | 02 |  | BILL 13 | B13 | S2 | 02 | R00 | ACF07 |  | 018 |  |  |  |  |  |
| LEXTS01803C0 |  | LA-EX ; Consultant's final de-snag inspection |  | 7d | 2013-04-04 | 2013-04-13 | LEXTS01802C0 |  |  |  |  | 18.65d | 15.78d | Labor General [1 h]; Cost | PEXTS01803C0 | LA | C |  | EX | TS | SC | 018 | 03 |  | BILL 13 | B13 | S2 | 03 | R00 | ACF07 |  | 018 |  |  |  |  |  |
|  | VO | **Approved Variation Orders** |  |  | 2010-04-15 | 2013-06-22 |  |  |  |  |  |  |  |  |  |  |  |  |  |  |  |  |  |  |  |  |  |  |  |  |  |  |  |  |  |  |  |
|  | 001 | **VO 001/ Additional Piles** |  |  | 2010-04-17 | 2011-04-05 |  |  |  |  |  |  |  |  |  |  |  |  |  |  |  |  |  |  |  |  |  |  |  |  |  |  |  |  |  |  |  |
| UAFOA31201C1 |  | CU-VO 001 ;Additional Works for Existing Piles - E.I.No 001 , 004 & 006 - CUP | level of effort | 3d | 2010-04-17 A | 2011-04-05 A | UFNS403301C0 SS | 100% |  | 2011-03-01 | 2011-03-03 |  |  | Cost |  | UP | C |  | AF | GEN | PI | 312 |  |  |  | B03 |  | 01 | VO | ACFVO |  | 0VO | VO_001 |  |  |  |  |
| DAFOA31202C1 |  | DT-VO 001 ;Additional Works for Existing Piles - E.I.No 001 , 004 & 006 - D&T | level of effort | 3d | 2010-05-13 A | 2010-09-20 A | DFNS103317C0 SS, DFNS203317C0 SS | 100% |  | 2011-03-01 | 2011-03-03 |  |  | Cost |  | DT | C |  | AF | GEN | PI | 312 |  |  |  | B05 |  | 01 | VO | ACFVO |  | 0VO | VO_001 |  |  |  |  |
| PAFOA31200C1 |  | PA-VO 001 ; Additional Works for Existing Piles - E.I.No 001 , 004 & 006 - Carpark | level of effort | 3d | 2010-05-24 A | 2010-10-13 A | PFNS103301C100 SS, PFNS103301C50 SS, PFNS103301C60 SS, PFNS103303C0 SS, PFNS403301C0 SS, PFNS503301C0 SS | 100% |  | 2011-03-01 | 2011-03-03 |  |  | Cost |  | PA | C |  | AF | GEN | PI | 312 |  |  |  | B02 |  | 01 | VO | ACFVO |  | 0VO | VO_001 |  |  |  |  |
| GAFOA31203C1 |  | GA-VO 001 ;Additional Works for Existing Piless - E.I.No 001 , 004 & 006 - Gallery | level of effort | 3d | 2010-06-21 A | 2011-01-05 A | GFNS203317C0 SS | 100% |  | 2011-03-01 | 2011-03-03 |  |  | Cost |  | GA | C |  | AF | GEN | PI | 312 |  |  |  | B06 |  | 01 | VO | ACFVO |  | 0VO | VO_001 |  |  |  |  |
|  | 002 | **VO 002/ Mold Resistant Board for Ceilings and Partitions** |  |  | 2010-09-13 | 2013-02-11 |  |  |  |  |  |  |  |  |  |  |  |  |  |  |  |  |  |  |  |  |  |  |  |  |  |  |  |  |  |  |  |
| PAFOA09201C1 |  | PA-VO 002 ; Mold resistant board for partitions - Carpark | level of effort | 357.52d | 2010-09-13 A | 2012-12-16 | PP1BE09202C0 SS, PP1BE09202C10 SS, PP1BM09202C0 SS, PP1CE09202C0 SS, PP1CE09202C10 SS, PP1CM09202C0 SS, PP1CM09202C10 SS, PP1EE09202C0 SS, PP1EM09202C0 SS, PP2AE09202C0 SS, PP2AM09202C0 SS, PP2BE09202C0 SS, PP2BM09202C0 SS, PP2CE09202C10 SS, PP2EM09202C0 SS, PP3AE09202C0 SS, PP3AM09202C0 SS, PP3BE09202C0 SS, PP3BM09202C0 SS, PP3BM09202C10 SS, PP3CE09202C0 SS, PP3CM09202C0 SS, PP1DM04001C0 SS+26d, PP1DM04001C0 FS+12d, PP1DM23004C0 FS+12d, PP1EM04001C10 SS+26d, PP1EM04001C10 FS+12d, PP1EM23004C10 FS+12d, PP2CE04001C0 FS+12d, PP2EE04001C0 FS+12d, PP2EE04001C10 FS+12d, PP3DM04001C0 SS+26d, PP3DM04001C0 FS+12d, PP3DM23004C0 FS+12d, PP3DM04001C10 SS+26d, PP3DM04001C10 FS+12d, PP3DM23004C10 FS+12d, OGNMU00015S0, OGNMU00009S0 FS+12d, PP3EE04001C0 FS+12d, PP3EE04001C10 FS+12d, PP3EM04001C0 SS+42d, PP3EM23004C0 FS+12d, PP3EM04001C10 SS+42d, PP3EM23004C10 FS+12d, PP3EM04001C20 SS+42d, PP3EM23004C20 FS+12d |  | 365.8d | 2011-09-15 | 2012-11-20 | 63.2d | 0d | Labor General [145 h]; Cost |  | PA | C |  | AF | GEN | PT | 092 |  |  |  | B02 |  | GY | VO | ACFVO | GP | 0VO | VO_002 |  |  |  |  |
| DAFOA09206C1 |  | DT-VO 002 ; Mold resistant board for Partitions - D&T | level of effort | 221d | 2011-03-24 A | 2012-04-16 | D01ER09203C0 SS, D01M109203C0 SS, D01M209203C0 SS, D01PA09203C0 SS, D01TR09203C0 SS, D02CV09203C0 SS, D02LA09203C0 SS, D02NE09203C0 SS, D02OF09203C0 SS, D02PA09203C0 SS, D02TR09203C0 SS, D03EY09203C0 SS, D03G109203C0 SS, D03G209203C0 SS, D03PA09203C0 SS, D03TR09203C0 SS, D03UR09203C0 SS, D04ER09203C0 SS, D04M109203C0 SS, D04M209203C0 SS, D04TR09203C0 SS, DGLMR09203C0 SS, DGLPA09203C0 SS, DGLPR09203C0 SS, DGLTF09203C0 SS, DGLTR09203C0 SS, DP1CL09203C0 SS, DP1ET09203C0 SS, DP1PA09203C0 SS, DP1PH09203C0 SS, DP1SF09203C0 SS, DP1TR09203C0 SS, DP2KS09203C0 SS, DP2LO09203C0, DP2PA09203C0, DP2TR09203C0, DP3FW09203C0, DP3PA09203C0, DP3SR09203C0, DP3TR09203C0 | 25% | 163.1d | 2011-03-24 | 2011-12-15 | 109.9d | 0d | Cost |  | DT | C |  | AF | GEN | PT | 092 |  |  |  | B05 |  | GY | VO | ACFVO | GP | 0VO | VO_002 | 20 | 17 |  |  |
| CAFOA09204C1 |  | CB-VO 002 ; Mold resistant board for Partitions - Clinic | level of effort | 248d | 2011-04-04 A | 2012-03-19 | C01E109203C0 SS, C01E209203C0 SS, C01LW09203C0 SS, C01PA09203C0 SS, C01TR09203C0 SS, C02E109203C0 SS, C02E209203C0 SS, C02PA09203C0 SS, C02TR09203C0 SS, C03E109203C0 SS, C03E209203C0 SS, C03PA09203C0 SS, C03TR09203C0 SS, C04M109203C0 SS, C04TR09203C0 SS, CGLE109203C0 SS, CGLE209203C0 SS, CGLPA09203C0 SS, CGLPU09203C0 SS, CGLTR09203C0 SS, CP1E109203C0 SS, CP1E209203C0 SS, CP1PA09203C0 SS, CP1TR09203C0 SS, CP2DC09203C0 SS, CP2ER09203C0 SS, CP2PA09203C0 SS, CP2TR09203C0 SS, CP3M109203C0 SS, CP3PA09203C0 SS, CP3TO09203C0 SS, CP3TR09203C0 SS | 30% | 139.2d | 2011-02-28 | 2011-12-24 | 33.27d | 0d | Cost |  | CB | C |  | AF | GEN | PT | 092 |  |  |  | B04 |  | GY | VO | ACFVO | GP | 0VO | VO_002 | 24 | 11 | 232920.81 |  |
| GAFOA09208C1 |  | GA-VO 002 ; Mold resistant board for Partitions - Gallery | level of effort | 215d | 2011-05-31 A | 2012-04-19 | G01M109203C10 SS, G01PA09203C50 SS, G01TR09203C0 SS, G02M109203C0 SS, GGLPA09203C0 SS, GGLRD09203C0 SS, GGLTR09203C0 SS, GP1RG09203C0 SS, GP1TR09203C0 SS, GP2AB09203C0 SS, GP2FT09203C0 SS, GP2PA09203C0 SS, GP2TR09203C0 SS, GP3M109203C0 SS, GP3PA09203C0 SS, GP1PA09203C0 SS | 13% | 166.8d | 2011-05-31 | 2012-02-16 | 158.95d | 0d | Cost |  | GA | C |  | AF | GEN | PT | 092 |  |  |  | B06 |  | GY | VO | ACFVO | GP | 0VO | VO_002 | 13 | 5 |  | CP |
| IAFOA09210C1 |  | IC-VO 002 ; Mold resistant board for Partitions - ICU | level of effort | 243d | 2011-06-01 A | 2012-04-07 | I05M109203C0 SS, I05M209203C0 SS, I05PA09203C0 SS, I05TR09203C0 SS, I06P109203C0 SS, I06P209203C0 SS, I06PA09203C0 SS, I06SL09203C0 SS, I06TR09203C0 SS, I07P109203C0 SS, I07P209203C0 SS, I07PA09203C0 SS, I07SL09203C0 SS, I07TR09203C0 SS, I08P109203C0 SS, I08P209203C0 SS, I08PA09203C0 SS, I08SL09203C0 SS, I08TR09203C0 SS, IR8M109203C0 SS, IR8M109205C0 SS, IR8PA09203C0 SS, IR8PA09205C0 SS | 10% | 155.7d | 2011-06-01 | 2012-03-22 | 37.05d | 0d | Cost |  | IC | C |  | AF | GEN | PT | 092 |  |  |  | B08 |  | GY | VO | ACFVO | GP | 0VO | VO_002 | 12 | 5 |  |  |
| SAFOA09212C1 |  | SW-VO 002 ; Mold resistant board for Partitions - SWING WING | level of effort | 275d | 2011-06-07 A | 2012-04-10 | S05M109203C0 SS, S05M209203C0 SS, S05PA09203C0 SS, S05TR09203C0 SS, S06AC09203C0 SS, S06F109203C0 SS, S06KI09203C0 SS, S06PA09203C0 SS, S06TR09203C0 SS, S07AL09203C0 SS, S07F109203C0 SS, S07PA09203C0 SS, S07TR09203C0 SS, S08F109203C0 SS, S08F209203C0 SS, S08PA09203C0 SS, S08TR09203C0 SS, SR8M109203C0 SS, SR8PA09203C0 SS | 16% | 159d | 2011-07-04 | 2012-05-30 | 147.5d | 0d | Cost |  | SW | C |  | AF | GEN | PT | 092 |  |  |  | B09 |  | GY | VO | ACFVO | GP | 0VO | VO_002 | 15 | 1 |  |  |
| TAFOA09214C1 |  | PT-VO 002 ; Mold resistant board for Partitions - PT | level of effort | 266d | 2011-08-10 A | 2012-08-16 | T12PA09203C0 SS, T12TR09203C0 SS, T13P109203C0 SS, T13P209203C0 SS, T13PA09203C0 SS, T13TR09203C0 SS, T14P109203C0 SS, T14P209203C0 SS, T14PA09203C0 SS, T14TR09203C0 SS, T15P109203C0 SS, T15P209203C0 SS, T15PA09203C0 SS, T15TR09203C0 SS, T16P109203C0 SS, T16P209203C0 SS, T16PA09203C0 SS, T16TR09203C0 SS, T17P109203C0 SS, T17P209203C0 SS, T17PA09203C0 SS, T17TR09203C0 SS, T18P109203C0 SS, T18P209203C0 SS, T18PA09203C0 SS, T18TR09203C0 SS, T19ER09203C0 SS, T19M109203C0 SS, T19M209203C0 SS, T19PA09203C0 SS, T19RK09203C0 SS, T19TR09203C0 SS, T20PA09203C0 SS, T20R109203C0 SS, T20R209203C0 SS, T20TR09203C0 SS, T21PA09203C0 SS | 6% | 268d | 2011-10-19 | 2012-09-04 | 67.12d | 0d | Cost |  | PT | C |  | AF | GEN | PT | 092 |  |  |  | B10 |  | GY | VO | ACFVO | GP | 0VO | VO_002 | 3 | 0 |  |  |
| UAFOA09202C1 |  | CU-VO 002 ; Mold Resistant board for Partitions - CUP | level of effort | 32.15d | 2011-10-01 | 2011-11-10 | UP3OS09202C0 SS |  |  |  |  | -77.95d | 0d | Labor General [166 h]; Cost |  | UP | C |  | AF | GEN | PT | 092 |  |  |  | B03 |  | GY | VO | ACFVO | GP | 0VO | VO_002 |  |  |  |  |
| PAFOA09500C1 |  | PA-VO 002 ; Mold resistant board for ceiling - Carpark | level of effort | 233.58d | 2011-12-11 | 2012-09-15 | PP2AE09502C0 SS, PP2BE09502C0 SS, PP2CE09502C0 SS, PP2CE09502C10 SS, PP2EE09503C0 SS, PP2EE09503C10 SS, PP3AE09502C0 SS, PP3BE09502C0 SS, PP3CE09502C0 SS, PP3EE09502C0 SS, PP3EE09502C10 SS |  |  |  |  | 138.72d | 0d | Labor General [494 h]; Cost |  | PA | C |  | AF | GEN | CE | 095 |  |  |  | B02 |  | GF | VO | ACFVO |  | 0VO | VO_002 |  |  |  |  |
| DAFOA09505C1 |  | DT-VO 002 ; Mold resistant board for ceiling - D&T | level of effort | 197.1d | 2012-03-25 | 2012-11-17 | D01TR09503C0 SS, D02TR09503C0 SS, D03TR09503C0 SS, D04TR09503C0 SS, DGLTR09503C0 SS, DP1TR09503C0 SS, DP2TR09503C0 SS, DP3TR09503C0 SS |  |  |  |  | 12.2d | 0d | Labor General [1363 h]; Cost |  | DT | C |  | AF | GEN | CE | 095 |  |  |  | B05 |  | GF | VO | ACFVO |  | 0VO | VO_002 |  |  |  |  |
| CAFOA09503C1 |  | CB-VO 002 ; Mold resistant board for ceiling - Clinic | level of effort | 142.8d | 2012-04-18 | 2012-10-06 | C01TR09503C0 SS, C02TR09503C0 SS, C03TR09503C0 SS, C04TR09503C0 SS, CGLTR09503C0 SS, CP1TR09503C0 SS, CP2TR09503C0 SS, CP3TR09503C0 SS |  |  |  |  | 9.72d | 0d | Labor General [564 h]; Cost |  | CB | C |  | AF | GEN | CE | 095 |  |  |  | B04 |  | GF | VO | ACFVO |  | 0VO | VO_002 |  |  |  |  |
| GAFOA09507C1 |  | GA-VO 002 ; Mold resistant board for ceiling - Gallery | level of effort | 155.9d | 2012-05-05 | 2012-11-07 | G01TR09503C0 SS, GGLTR09503C0 SS, GP1TR09503C0 SS, GP2TR09503C0 SS, GP3PA09503C0 SS |  |  |  |  | 31.5d | 0d | Labor General [101 h]; Cost |  | GA | C |  | AF | GEN | CE | 095 |  |  |  | B06 |  | GF | VO | ACFVO |  | 0VO | VO_002 |  |  |  |  |
| SAFOA09511C1 |  | SW-VO 002 ; Mold resistant board for ceiling - SWING WING | level of effort | 158.25d | 2012-05-20 | 2012-11-27 | S05TR09503C0 SS, S06TR09503C0 SS, S07TR09503C0 SS, S08TR09503C0 SS, T09PA09503C0 SS, T10TR09503C0 SS, T11TR09503C0 SS, T12TR09503C0 SS, T13TR09503C0 SS, T14TR09503C0 SS, T15TR09503C0 SS, T16TR09503C0 SS, T17TR09503C0 SS, T18TR09503C0 SS, T19TR09503C0 SS, T20TR09503C0 SS |  |  |  |  | 17.5d | 0d | Labor General [113 h]; Cost |  | SW | C |  | AF | GEN | CE | 095 |  |  |  | B09 |  | GF | VO | ACFVO |  | 0VO | VO_002 |  |  |  |  |
| IAFOA09509C1 |  | IC-VO 002 ; Mold resistant board for ceiling - ICU | level of effort | 133.2d | 2012-05-24 | 2012-11-01 | I05TR09503C0 SS, I06TR09503C0 SS, I07TR09503C0 SS, I08TR09503C0 SS |  |  |  |  | 21.25d | 0d | Labor General [282 h]; Cost |  | IC | C |  | AF | GEN | CE | 095 |  |  |  | B08 |  | GF | VO | ACFVO |  | 0VO | VO_002 |  |  |  |  |
| TAFOA09513C1 |  | PT-VO 002 ; Mold resistant board for ceiling - PT | level of effort | 213.35d | 2012-05-28 | 2013-02-11 | T10TR09503C0 SS, T11TR09503C0 SS, T12TR09503C0 SS, T13TR09503C0 SS, T14TR09503C0 SS, T15TR09503C0 SS, T16TR09503C0 SS, T17TR09503C0 SS, T18TR09503C0 SS, T19TR09503C0 SS, T20TR09503C0 SS |  |  |  |  | 15.65d | 0d | Labor General [1709 h]; Cost |  | PT | C |  | AF | GEN | CE | 095 |  |  |  | B10 |  | GF | VO | ACFVO |  | 0VO | VO_002 |  |  |  |  |

| ID | WBS | Activity | Type | Duration | Start | Finish | Predecessors | Complete | Remaining | Planned start | Planned finish | Total float | Free float | Resources | CCAD BUILDING(SET) | CCAD PHASE(SET) | CCAD FLOOR(SET) | CCAD ZONE(SET) | CCAD WORK(SET) | CCAD SECTION(SET) | CCAD BILL(SET) | CCAD TAG(SET) | CCAD REV(SET) | CCADACF (SET) | CCAD SSCF | CCA VO (SET) | CCAD CSA | Claimed This Month | P_811 | P_711 | CCAD (VO) |
| --- | --- | --- | --- | --- | --- | --- | --- | --- | --- | --- | --- | --- | --- | --- | --- | --- | --- | --- | --- | --- | --- | --- | --- | --- | --- | --- | --- | --- | --- | --- | --- |
|  | 003 | **VO 003/ Free Issue Fill Material - Car Park** |  |  | 2010-04-15 | 2010-09-27 |  |  |  |  |  |  |  |  |  |  |  |  |  |  |  |  |  |  |  |  |  |  |  |  |  |
| CP3OA31200C1 |  | CB-VO 003 ; Free Issue fill material - Clinic |  | 3d | 2010-04-15 A | 2010-09-27 A | MGNMI00101M0 | 100% |  | 2011-03-01 | 2011-03-03 |  |  | Cost | CB | C | P3 | GEN | EK | 312 | B04 | 03 | VO | ACFVO | 0VO | VO_003 |  |  |  |  |  |
| DP3OA31200C1 |  | -VO 003 ; DT Free Issue fill material |  | 3d | 2010-04-15 A | 2010-09-27 A | MGNMI00101M0 | 100% |  | 2011-03-01 | 2011-03-03 |  |  | Cost | DT | C | P3 | GEN | EK | 312 | B05 | 03 | VO | ACFVO | 0VO | VO_003 |  |  |  |  |  |
| PP3OA31200C1 |  | PA-VO 003 ; Free Issue fill material - Carpark |  | 3d | 2010-04-15 A | 2010-09-27 A | MGNMI00101M0 | 100% |  | 2011-03-01 | 2011-03-03 |  |  | Cost | PA | C | P3 | GEN | EK | 312 | B02 | 03 | VO | ACFVO | 0VO | VO_003 |  |  |  |  |  |
| UP3OA31200C1 |  | UP-VO 003 ; Free Issue fill material - CUP |  | 3d | 2010-04-15 A | 2010-09-27 A | MGNMI00101M0 | 100% |  | 2011-03-01 | 2011-03-03 |  |  | Cost | UP | C | P3 | GEN | EK | 312 | B03 | 03 | VO | ACFVO | 0VO | VO_003 |  |  |  |  |  |
|  | 004 | **VO 004 Post Tension Modificaitons** |  |  | 2011-01-11 | 2012-06-13 |  |  |  |  |  |  |  |  |  |  |  |  |  |  |  |  |  |  |  |  |  |  |  |  |  |
| UP2OA03300C1 |  | CU-VO 004 ; Post tension modifications - CUP - Level P2 | level of effort | 3d | 2011-01-11 A | 2011-06-30 A | UP2S103301C0 SS, UP2S103302C0 SS, UP2S303303C0 SS | 100% |  | 2011-03-01 | 2011-03-03 |  |  | Cost | UP | C | P2 | P2 | CT | 033 | B03 | 07 | VO | ACFVO | 0VO | VO_004 | PT |  |  |  |  |
| CAFOA03300C1 |  | PA-VO 004 ; Post tension modifications - Carpark - Level P2 & P1 (Dwg Zone B,F,P) | level of effort | 143d | 2011-07-10 A | 2012-06-13 | PP2S103351C150 SS, PP2S103351C170 SS, PP2S103352R02 SS | 90% | 213.51d | 2011-07-04 | 2011-12-25 | 19.24d | 0d | Cost | PA | C | AF | GEN | CT | 033 | B02 | 07 | VO | ACFVO | 0VO | VO_004 | PT | 63596 | 60 | 45 | CP |
|  | 005 | **VO 005/ Bulletin 2 Changes Under EI-005** |  |  | 2010-10-28 | 2012-11-14 |  |  |  |  |  |  |  |  |  |  |  |  |  |  |  |  |  |  |  |  |  |  |  |  |  |
| DP2CO09500R02 |  | VO005: DT P2 - Horizontal Ceiling -GWB2 | level of effort | 607d | 2010-10-28 A | 2012-09-26 | PP3S103331C10 SS |  | 301d | 2011-09-01 | 2013-08-29 | 48.5d | 0d | Labor General [212 h]; Cost | DT | C | 02 | CO | CE | 095 | B05 | 01 | VO | ACFVO | 0VO | VO_005 |  |  |  |  |  |
| PFNS3209500R02 |  | CP-VO005: FDN, Grade Beams Modifications to match MEP Duct Route, Zone S3_2 | level of effort | 1.88d | 2011-01-05 A | 2011-02-12 A | PFNS103311C80 SS | 100% |  | 2011-09-01 | 2011-09-03 |  |  | Labor General [15 h]; Cost | PA | C | FN | CO | CT | 033 | B02 |  | VO | ACFVO | 0VO | VO_005 |  |  |  |  |  |
| GP2GN03300R02 |  | GA-VO005: P2 - Specification Changes to Communication Air Flow Monitoring Stations & Expansion Modules | level of effort | 1d | 2011-07-10 A | 2012-10-03 | GP2PA23017C0 SS |  | 306.07d | 2011-09-01 | 2011-09-01 | 53.43d | 0d | Labor General [64 h]; Cost | GA | C | P2 | CO | ME | 265 | B06 |  | VO | ACFVO | 0VO | VO_005 |  |  |  |  |  |
| DAFCO09500R02 |  | DT-VO005: Upgrade 4 Breakers to 800A from 500A (CCAD-AED-DG-E-529) | level of effort | 1d | 2011-08-02 A | 2012-04-04 | DGLTR26009C0 SS |  | 154d | 2011-09-01 | 2011-09-01 | 78d | 0d | Labor General [9 h]; Cost | DT | C | GN | CO | ME | 260 | B05 |  | VO | ACFVO | 0VO | VO_005 |  |  |  |  |  |
| DAFCO09501R02 |  | DT-VO005: DB Change from MCB to RCBO (CCAD-AED-DG-E-829) | level of effort | 0.88d | 2011-08-02 A | 2012-04-04 | DGLTR26009C0 SS |  | 154d | 2011-09-01 | 2011-09-01 | 78d | 0d | Labor General [7 h]; Cost | DT | C | GN | CO | ME | 260 | B05 |  | VO | ACFVO | 0VO | VO_005 |  |  |  |  |  |
| UP3GN03300R02 |  | CUP-VO005: P3 - Specification Changes to Communication Air Flow Monitoring Stations & Expansion Modules | level of effort | 1.62d | 2011-08-10 A | 2011-10-06 | UP3CS23002C0 SS, GP3PA23019C0 |  | 5.85d | 2011-09-01 | 2011-09-03 | -8.85d | 0d | Labor General [13 h]; Cost | UP | C | P3 | CO | ME | 265 | B03 |  | VO | ACFVO | 0VO | VO_005 |  |  |  |  |  |
| UP2GN03300R02 |  | CUP-VO005: P2 - Specification Changes to Communication Air Flow Monitoring Stations & Expansion Modules | level of effort | 9.17d | 2011-11-28 | 2011-12-10 | UP2MF27004C0 SS |  |  |  |  | -58d | 0d | Labor General [617 h]; Cost | UP | C | P2 | CO | ME | 265 | B03 |  | VO | ACFVO | 0VO | VO_005 |  |  |  |  |  |
| UAFGN03300R02 |  | CUP-VO005: Communications Containment Works by ETA | level of effort | 0.83d | 2011-12-06 | 2011-12-06 | UP2ML27004C0 SS |  |  |  |  | -55.83d | 0d | Labor General [28 h]; Cost | UP | C | GN | CO | ME | 265 | B03 |  | VO | ACFVO | 0VO | VO_005 |  |  |  |  |  |
| IP2CO09900R02 |  | IC-VO005: P2 - Interior Painting | level of effort | 213d | 2012-03-06 | 2012-11-14 | DP2PA09903C0 SS, DP2PA09907C0 SS, DP2KS09901C0 SS |  |  |  |  | 34d | 0d | Labor General [18 h]; Cost | IC | C | P2 | CO | PA | 099 | B08 |  | VO | ACFVO | 0VO | VO_005 |  |  |  |  |  |
| PP2GN03300R02 |  | CP-VO005: P2 - Specification Changes to Communication Air Flow Monitoring Stations & Expansion Modules | level of effort | 144.66d | 2012-03-27 | 2012-09-15 | PP2AP23011C10 SS |  |  |  |  | 48.36d | 0d | Labor General [181 h]; Cost | PA | C | P2 | CO | ME | 265 | B02 |  | VO | ACFVO | 0VO | VO_005 |  |  |  |  |  |
| D02CO10200R02 |  | DT-VO005: L2 - Surface Mounted Handrail Bumper - HDRL | level of effort | 36d | 2012-05-02 | 2012-06-13 | D02CV05501C0 SS, D02OF05501C0 SS |  |  |  |  | 46.4d | 0d | Labor General [655 h]; Cost | DT | C | 02 | CO | AC | 102 | B05 |  | VO | ACFVO | 0VO | VO_005 |  |  |  |  |  |
| PP2S3209500R02 |  | CP-VO005: P2, Perforated Metal Ceiling Tile, Zone L | level of effort | 67d | 2012-05-28 | 2012-08-15 | PP2CE09501C10 SS |  |  |  |  | 31.2d | 0d | Labor General [303 h]; Cost | PA | C | P2 | CO | CT | 033 | B02 |  | VO | ACFVO | 0VO | VO_005 |  |  |  |  |  |
|  | 006 | **VO 006/ Workflow 3657, RFI 001326, RFI 001154, RFI 001457, RFI 001861** |  |  | 2011-03-28 | 2013-01-02 |  |  |  |  |  |  |  |  |  |  |  |  |  |  |  |  |  |  |  |  |  |  |  |  |  |
| DGF8203301R02 |  | DT-VO006: RFI 001861-P2 ,Revised Light Fixture Type, Area F&G | level of effort | 274.75d | 2011-03-28 A | 2012-05-28 | DP2LD26013C0 SS | 27% | 199.95d | 2011-09-01 | 2012-07-26 | 167.93d | 0d | Labor General [-16.18 h]; Cost | DT | C | P2 |  | ME | 260 | B05 |  | VO |  | 0VO | VO_006 |  |  |  |  |  |
| GGF8203301R02 |  | GR-VO006: RFI 001861-P2 ,Revised Light Fixture Type, Area F&G | level of effort | 274.75d | 2011-03-28 A | 2012-05-28 | DP2LD26013C0 SS | 27% | 199.95d | 2011-09-01 | 2012-07-26 | 167.93d | 0d | Labor General [-15 h]; Cost | AB | C | P2 |  | ME | 260 | B01 |  | VO |  | 260 | VO_006 |  |  |  |  |  |
| SAF8203301R02 |  | SW-VO006: RF 001457-L6,L7,L8,-Area E, Change Fire Rated C6 to C2 Inner Skin (non fire rated) with GL-4Glass | level of effort | 207.22d | 2011-10-23 | 2012-06-30 | S08CO04403C0, S07CO04403C0, S06CO04403C0 |  |  |  |  | 40.58d | 0d | Labor General [-46390 h]; Cost | SW | C | AF |  | FA | 044 | B09 |  | VO |  | 0VO | VO_006 |  |  |  |  |  |
| PP2CO03301R02 |  | PA-VO006: RF I001154,GL Omission of Beam8-B01, Zone8-2 | level of effort | 95.37d | 2012-04-17 | 2012-08-07 | PGLS103392R02 SS |  |  |  |  | 83.61d | 0d | Labor General [-337 h]; Cost | PA | C | GL |  | CT | 033 | B02 |  | VO |  | 0VO | VO_006 |  |  |  |  |  |
| CAFGN09600R02 |  | CB-VO006: P1-P2-P3,Omission of Terrazzo Finish to treads and Landings of Staircases (Workflow3657) | level of effort | 7.67d | 2012-08-02 | 2012-08-11 | PP2EP09903C10 SS |  |  |  |  | 35.2d | 0d | Labor General [-5244.8 h]; Cost | CB | C | AF |  | FI | 096 | B04 |  | VO |  | 0VO | VO_006 |  |  |  |  |  |
| DAFGN09600R02 |  | DT-VO006: P1-P2-P3,Omission of Terrazzo Finish to treads and Landings of Staircases (Workflow3657) | level of effort | 7.67d | 2012-08-02 | 2012-08-11 | PP2EP09903C10 SS |  |  |  |  | 35.2d | 0d | Labor General [-8444.62 h]; Cost | DT | C | AF |  | FI | 096 | B05 |  | VO |  | 0VO | VO_006 |  |  |  |  |  |
| GAFGN09600R02 |  | GA-VO006: P1-P2-P3,Omission of Terrazzo Finish to treads and Landings of Staircases (Workflow3657) | level of effort | 7.67d | 2012-08-02 | 2012-08-11 | PP2EP09903C10 SS |  |  |  |  | 35.2d | 0d | Labor General [-1474 h]; Cost | GA | C | AF |  | FI | 096 | B06 |  | VO |  | 0VO | VO_006 |  |  |  |  |  |
| IAFGN09600R02 |  | IC-VO006: P1-P2-P3,Omission of Terrazzo Finish to treads and Landings of Staircases (Workflow3657) | level of effort | 7.67d | 2012-08-02 | 2012-08-11 | PP2EP09903C10 SS |  |  |  |  | 35.2d | 0d | Labor General [-1529 h]; Cost | IC | C | AF |  | FI | 096 | B08 |  | VO |  | 0VO | VO_006 |  |  |  |  |  |
| PAFGN09600R02 |  | CP-VO006: P1-P2-P3,Omission of Terrazzo Finish to treads and Landings of Staircases (Workflow3657) | level of effort | 7.67d | 2012-08-02 | 2012-08-11 | PP2EP09903C10 SS |  |  |  |  | 35.2d | 0d | Labor General [-4502 h]; Cost | PA | C | AF |  | FI | 096 | B02 |  | VO |  | 0VO | VO_006 |  |  |  |  |  |
| SAFGN09600R02 |  | SW-VO006: P1-P2-P3,Omission of Terrazzo Finish to treads and Landings of Staircases (Workflow3657) | level of effort | 7.67d | 2012-08-02 | 2012-08-11 | PP2EP09903C10 SS |  |  |  |  | 35.2d | 0d | Labor General [-2025 h]; Cost | SW | C | AF |  | FI | 096 | B09 |  | VO |  | 0VO | VO_006 |  |  |  |  |  |
| TAFGN09600R02 |  | PT-VO006: P1-P2-P3,Omission of Terrazzo Finish to treads and Landings of Staircases (Workflow3657) | level of effort | 7.67d | 2012-08-02 | 2012-08-11 | PP2EP09903C10 SS |  |  |  |  | 35.2d | 0d | Labor General [-4458 h]; Cost | PT | C | AF |  | FI | 096 | B10 |  | VO |  | 0VO | VO_006 |  |  |  |  |  |
| UAFGN09600R02 |  | UP-VO006: P1-P2-P3,Omission of Terrazzo Finish to treads and Landings of Staircases (Workflow3657) | level of effort | 7.67d | 2012-08-02 | 2012-08-11 | PP2EP09903C10 SS |  |  |  |  | 35.2d | 0d | Labor General [-1024 h]; Cost | UP | C | AF |  | FI | 096 | B03 |  | VO |  | 0VO | VO_006 |  |  |  |  |  |
| LAFGN26001R02 |  | CP-VO006: RFI 001326,Omission of Lighting Fixtures at Boundary Wall on Grid Line AU & 14-18 | level of effort | 89d | 2012-09-15 | 2013-01-02 | PP1BP26012C20 SS, PP2BP26012C20 SS, PP3BP26012C20 SS |  |  |  |  | 67.24d | 0d | Labor General [-971 h]; Cost | LA | C | AF |  | ME | 260 | B12 |  | VO |  | 0VO | VO_006 |  |  |  |  |  |

| ID | WBS | Activity | Type | Duration | Start | Finish | Predecessors | Complete | Remaining | Planned start | Planned finish | Total float | Free float | Resources | CCAD BUILDING(SET) | CCAD PHASE(SET) | CCAD FLOOR(SET) | CCAD WORK(SET) | CCAD SECTION(SET) | CCAD BILL(SET) | CCAD REV(SET) | CCAD SSCF | CCA VO (SET) | CCAD ZONE(SET) | CCAD TAG(SET) | CCADACF (SET) |
| --- | --- | --- | --- | --- | --- | --- | --- | --- | --- | --- | --- | --- | --- | --- | --- | --- | --- | --- | --- | --- | --- | --- | --- | --- | --- | --- |
|  | 007 | **VO 007/ Amend Simulation Center Areas** |  |  | 2011-02-16 | 2012-11-18 |  |  |  |  |  |  |  |  |  |  |  |  |  |  |  |  |  |  |  |  |
| DP1SC22000R02 |  | DT-P1, VO 007 - Changes to Plumbing , Simulation Center | level of effort | 4d | 2011-02-16 A | 2012-07-24 | DP1SF22005C0 SS |  | 247.47d | 2011-09-01 | 2011-09-05 | 75.53d | 0d | Labor General [62 h]; Cost | DT | C | P1 | ME | 220 | B05 | VO | 0VO | VO_007 |  |  |  |
| DP1SC23000R02 |  | DT-P1, VO 007 - Changes to HVAC, Simulation Center | level of effort | 4d | 2011-02-19 A | 2012-09-16 | DP1SF23017C0 SS, DP1SF23023C0 SS |  | 291.6d | 2011-09-01 | 2011-09-05 | 37.4d | 0d | Labor General [2 h]; Cost | DT | C | P1 | ME | 230 | B05 | VO | 0VO | VO_007 |  |  |  |
| DP1SC26000R02 |  | DT-P1, VO 007 - Changes to Electrical, Simulation Center | level of effort | 4d | 2011-04-09 A | 2012-10-07 | DP1SF26001C0 SS, DP1SF26013C0 SS |  | 309.6d | 2011-09-15 | 2011-09-19 | 61.4d | 0d | Labor General [310 h]; Cost | DT | C | P1 | ME | 260 | B05 | VO | 0VO | VO_007 |  |  |  |
| DP1SC21100R02 |  | DT-P1, VO 007 - Changes to Fire Suppression System, Simulation Center | level of effort | 4d | 2011-04-11 A | 2012-09-02 | DP1SF21117C0 SS |  | 279.6d | 2011-09-06 | 2011-09-10 | 49.4d | 0d | Labor General [-19 h]; Cost | DT | C | P1 | ME | 211 | B05 | VO | 0VO | VO_007 |  |  |  |
| DP1SC08100R02 |  | DT-P1, VO 007 - Changes to Doors and Windows, Simulation Center | level of effort | 160.5d | 2011-09-05 A | 2012-09-23 | DP1SF08103C0 SS |  | 297.6d | 2011-11-12 | 2012-05-21 | 49.65d | 0d | Labor General [-142 h]; Cost | DT | C | P1 | DO | 081 | B05 | VO | 0VO | VO_007 |  |  |  |
| DP1SC28000R02 |  | DT-P1, VO 007 - Changes to Electronic Safety & Security, Simulation Center |  | 12d | 2012-02-11 | 2012-02-25 | DP1ET26007C0 |  |  |  |  | 260.9d | 235.5d | Labor General [88 h]; Cost | DT | C | P1 | ME | 260 | B05 | VO | 0VO | VO_007 |  |  |  |
| DP1SC26500R02 |  | DT-P1, VO 007 - Changes to Communications, Simulation Center |  | 18d | 2012-05-12 | 2012-06-02 | DP1ET26026C0, DP1PA26007C0 |  |  |  |  | 167.3d | 141.9d | Labor General [1495 h]; Cost | DT | C | P1 | ME | 260 | B05 | VO | 0VO | VO_007 |  |  |  |
| DP1SC06100R02 |  | DT-P1, VO 007 - Add Vanity Counters, Simulation Center |  | 60d | 2012-08-02 | 2012-10-14 | DP1SF06101C0 SS |  |  |  |  | 64.4d | 39d | Labor General [150 h]; Cost | DT | C | P1 | WO | 061 | B05 | VO | 0VO | VO_007 |  |  |  |
| DP1SC09700R02 |  | DT-P1, VO 007 - Changes to Finishing, Simulation Center |  | 48d | 2012-08-02 | 2012-09-30 | DP1SF09701C0 SS |  |  |  |  | 76.4d | 51d | Labor General [-2 h]; Cost | DT | C | P1 | CE | 097 | B05 | VO | 0VO | VO_007 |  |  |  |
| DP1SC10201R02 |  | DT-P1, VO 007 - Changes to Furnishings, Simulation Center |  | 15d | 2012-09-30 | 2012-10-16 | DP1CL11003C0 SS |  |  |  |  | 62d | 36.6d | Labor General [207 h]; Cost | DT | C | P1 | AC | 110 | B05 | VO | 0VO | VO_007 |  |  |  |
| DP1SC10200R02 |  | DT-P1, VO 007 - Changes to Accessories, Simulation Center |  | 15d | 2012-10-30 | 2012-11-18 | DP1SF11003C0 SS |  |  |  |  | 37.4d | 12d | Labor General [51 h]; Cost | DT | C | P1 | AC | 110 | B05 | VO | 0VO | VO_007 |  |  |  |
|  | 008 | **VO 008 / RFI 00311, 00552, 00703, 00712, 00999, 01031, 01036, 01132** |  |  | 2010-07-14 | 2013-01-07 |  |  |  |  |  |  |  |  |  |  |  |  |  |  |  |  |  |  |  |  |
| AFNGN03300R02 |  | AB-FDN, VO 008 / RFI 0703, Delete Concrete Plinths and Drain Trench from service trenches (CCAD-AEDA-DG_M-911 Rev 00 | level of effort | 10d | 2010-07-14 A | 2011-07-31 A | PFNS703301C0 SS | 100% |  | 2011-09-01 | 2011-09-12 |  |  | Labor General [-1378 h]; Cost | PA | C | FN | CT | 033 | B02 | VO | 0VO | VO_008 |  |  |  |
| AGLCO05501R02 |  | DT-GL, VO 008 / RFI 01031, Deletion of PRVs from Hot Water Return Line | level of effort | 10d | 2010-11-26 A | 2013-01-07 | D04S205101C0 SS | 10% | 383.89d | 2011-09-01 | 2011-09-12 | 38.11d | 0d | Labor General [-1521 h]; Cost | DT | C | GL | ME | 220 | B05 | VO | 0VO | VO_008 | GEN | MPL | ACFVO |
| CGLCO05501R02 |  | CB-GL, VO 008 / RFI 01031, Deletion of PRVs from Hot Water Return Line | level of effort | 10d | 2010-11-26 A | 2013-01-07 | D04S205101C0 SS | 10% | 383.89d | 2011-09-01 | 2011-09-12 | 38.11d | 0d | Labor General [-1521 h]; Cost | CB | C | GL | ME | 220 | B04 | VO | 0VO | VO_008 | GEN | MPL | ACFVO |
| GGLCO05501R02 |  | GA-GL, VO 008 / RFI 01031, Deletion of PRVs from Hot Water Return Line | level of effort | 10d | 2010-11-26 A | 2013-01-07 | D04S205101C0 SS | 10% | 383.89d | 2011-09-01 | 2011-09-12 | 38.11d | 0d | Labor General [-1521 h]; Cost | GA | C | GL | ME | 220 | B06 | VO | 0VO | VO_008 | GEN | MPL | ACFVO |
| IGLCO05501R02 |  | IC-GL, VO 008 / RFI 01031, Deletion of PRVs from Hot Water Return Line | level of effort | 10d | 2010-11-26 A | 2013-01-07 | D04S205101C0 SS | 10% | 383.89d | 2011-09-01 | 2011-09-12 | 38.11d | 0d | Labor General [-1521 h]; Cost | IC | C | GL | ME | 220 | B08 | VO | 0VO | VO_008 | GEN | MPL | ACFVO |
| SGLCO05501R02 |  | SW-GL, VO 008 / RFI 01031, Deletion of PRVs from Hot Water Return Line | level of effort | 10d | 2010-11-26 A | 2013-01-07 | D04S205101C0 SS | 10% | 383.89d | 2011-09-01 | 2011-09-12 | 38.11d | 0d | Labor General [-1521 h]; Cost | SW | C | GL | ME | 220 | B09 | VO | 0VO | VO_008 | GEN | MPL | ACFVO |
| TGLCO05501R02 |  | PT-GL, VO 008 / RFI 01031, Deletion of PRVs from Hot Water Return Line | level of effort | 10d | 2010-11-26 A | 2013-01-07 | D04S205101C0 SS | 10% | 383.89d | 2011-09-01 | 2011-09-12 | 38.11d | 0d | Labor General [-1521 h]; Cost | PT | C | GL | ME | 220 | B10 | VO | 0VO | VO_008 | GEN | MPL | ACFVO |
| DP2GN05501R02 |  | DT-P2, VO 008 / RFI 01036, Omission of Blockwork Wall and Associated Finishes to walk in Coolers | level of effort | 10d | 2011-01-20 A | 2011-07-19 A | DP2CO04001C0 SS | 100% |  | 2011-09-01 | 2011-09-12 |  |  | Labor General [-3687 h]; Cost | DT | C | P2 | BL | 040 | B05 | VO | 0VO | VO_008 |  |  |  |
| DAFCO21101R02 |  | DT-GL, VO 008 / RFI 0311,Omission of Steelwork for folding partitions, Area L | level of effort | 0d | 2011-03-20 A | 2011-11-24 | DGLPA09201C0 SS |  | 45d | 2011-09-01 | 2011-09-01 | 46.25d | 0d | Labor General; Cost | DT | C | GL | ST | 055 | B05 | VO | 0VO | VO_008 |  |  |  |
| DAFGN05501R02 |  | DT-GL, VO 008 / RFI 0552, Deletion of Staircase Sprinklers | level of effort | 287d | 2011-06-08 A | 2012-09-17 | DP3PA21111C0 SS |  | 293d | 2011-09-01 | 2012-08-09 | 34d | 0d | Labor General [-294 h]; Cost | DT | C | AF | ST | 211 | B05 | VO | 0VO | VO_008 |  |  |  |
| AGLER05501R02 |  | DT- VO 008 / RFI 01036, Omission of Water Reheat Coil connections from VAVs in Electrical and Telephone Rooms | level of effort | 10d | 2011-07-12 A | 2011-11-24 | DGLTR23009C0 SS |  | 44.7d | 2011-09-01 | 2011-09-12 | 62.1d | 0d | Labor General [-15568 h]; Cost | DT | C | GL | ME | 230 | B05 | VO | 0VO | VO_008 | TR |  |  |
| CGLER05501R02 |  | CB- VO 008 / RFI 01036, Omission of Water Reheat Coil connections from VAVs in Electrical and Telephone Rooms | level of effort | 10d | 2011-07-12 A | 2011-11-24 | DGLTR23009C0 SS |  | 44.7d | 2011-09-01 | 2011-09-12 | 62.1d | 0d | Labor General [-15568 h]; Cost | CB | C | GL | ME | 230 | B04 | VO | 0VO | VO_008 | TR |  |  |
| GGLER05501R02 |  | GA- VO 008 / RFI 01036, Omission of Water Reheat Coil connections from VAVs in Electrical and Telephone Rooms | level of effort | 10d | 2011-07-12 A | 2011-11-24 | DGLTR23009C0 SS |  | 44.7d | 2011-09-01 | 2011-09-12 | 62.1d | 0d | Labor General [-15568 h]; Cost | GA | C | GL | ME | 230 | B06 | VO | 0VO | VO_008 | TR |  |  |
| IGLER05501R02 |  | IC- VO 008 / RFI 01036, Omission of Water Reheat Coil connections from VAVs in Electrical and Telephone Rooms | level of effort | 10d | 2011-07-12 A | 2011-11-24 | DGLTR23009C0 SS |  | 44.7d | 2011-09-01 | 2011-09-12 | 62.1d | 0d | Labor General [-15568 h]; Cost | IC | C | GL | ME | 230 | B08 | VO | 0VO | VO_008 | TR |  |  |
| SGLER05501R02 |  | SW- VO 008 / RFI 01036, Omission of Water Reheat Coil connections from VAVs in Electrical and Telephone Rooms | level of effort | 10d | 2011-07-12 A | 2011-11-24 | DGLTR23009C0 SS |  | 44.7d | 2011-09-01 | 2011-09-12 | 62.1d | 0d | Labor General [-15568 h]; Cost | SW | C | GL | ME | 230 | B09 | VO | 0VO | VO_008 | TR |  |  |
| TGLER05501R02 |  | PT- VO 008 / RFI 01036, Omission of Water Reheat Coil connections from VAVs in Electrical and Telephone Rooms | level of effort | 10d | 2011-07-12 A | 2011-11-24 | DGLTR23009C0 SS |  | 44.7d | 2011-09-01 | 2011-09-12 | 62.1d | 0d | Labor General [-15568 h]; Cost | PT | C | GL | ME | 230 | B10 | VO | 0VO | VO_008 | TR |  |  |
| D04CO26501R02 |  | DT-04, VO 008 / RFI 0556, Deletion of Distribution Box 4DBEB1.1.1 | level of effort | 4d | 2011-07-19 A | 2012-02-09 | D04ER26024C0 SS |  | 107d | 2011-09-01 | 2011-09-05 | 26d | 0d | Labor General [-74 h]; Cost | DT | C | 04 | ME | 260 | B05 | VO | 0VO | VO_008 |  |  |  |
| UGLCO21101R02 |  | CUP, VO 008 / RFI 0712, Deletion of 10 Water Flow Switches within the Fire Hose Cabinets | level of effort | 13.93d | 2011-10-12 | 2011-10-29 | UP3HV21105C0 SS |  |  |  |  | -40.73d | 0d | Labor General [-69 h]; Cost | UP | C | AF | ME | 211 | B03 | VO | 0VO | VO_008 |  |  |  |
| PP3GN10201R02 |  | CP-P3, VO 008 / RFI 0999, Omission of two barriers at P3 Level | level of effort | 57d | 2012-09-09 | 2012-11-18 | PP3DP11009C10 SS |  |  |  |  | 104.88d | 0d | Labor General [-686 h]; Cost | PA | C | P3 | AC | 110 | B02 | VO | 0VO | VO_008 |  |  |  |

| ID | WBS | Activity | Duration | Start | Finish | Predecessors | Remaining | Planned start | Planned finish | Total float | Free float | Resources | CCAD BUILDING(SET) | CCAD PHASE(SET) | CCAD FLOOR(SET) | CCAD WORK(SET) | CCAD SECTION(SET) | CCAD BILL(SET) | CCAD REV(SET) | CCAD SSCF | CCA VO (SET) |
| --- | --- | --- | --- | --- | --- | --- | --- | --- | --- | --- | --- | --- | --- | --- | --- | --- | --- | --- | --- | --- | --- |
|  | 009 | **VO 009 / RFI 2089, 2126, 2151, 2430 & EIs-17,21, 22,02** |  |  |  |  |  |  |  |  |  |  |  |  |  |  |  |  |  |  |  |
|  | V09 | **VO 009 / RFI 2089, 2126, 2151, 2430 & EIs-17,21, 22,02 n** |  | 2011-06-14 | 2013-05-01 |  |  |  |  |  |  |  |  |  |  |  |  |  |  |  |  |
|  | 01 | **VO 009 RFI-2089 / Additional Rooms to House Novac Fire Suppression Cylinders** |  | 2011-08-08 | 2012-02-28 |  |  |  |  |  |  |  |  |  |  |  |  |  |  |  |  |
|  | 1 | **VO 009 RFI-2089 / DT Building** |  | 2011-08-08 | 2012-02-28 |  |  |  |  |  |  |  |  |  |  |  |  |  |  |  |  |
| DV08P208101R2 |  | DT-P2, VO 009 / RFI 02089, Doors & Windows, Additional Rooms to House Novac Fire Suppression Cylinders | 12d | 2011-08-08 A | 2012-01-16 | DP2KS09203C0 | 12d | 2012-01-05 | 2012-01-19 | 261.75d | 224.1d | Labor General [63 h]; Cost | DT | C | P2 | DO | 081 | B05 | VO | 0VO | VO_009 |
| DV08P226001R2 |  | DT-P2, VO 009 / RFI 02089, Electrical, Additional Rooms to House Novac Fire Suppression Cylinders | 12d | 2012-01-03 | 2012-01-16 | DP2KS09203C0 |  |  |  | 225.75d | 0d | Labor General [18 h]; Cost | DT | C | P2 | ME | 260 | B05 | VO | 0VO | VO_009 |
| DV08P226002R2 |  | DT-P2, VO 009 / RFI 02089, ESS, Additional Rooms to House Novac Fire Suppression Cylinders | 12d | 2012-01-17 | 2012-01-30 | DV08P226001R2 |  |  |  | 225.75d | 0d | Labor General [6 h]; Cost | DT | C | P2 | ME | 260 | B05 | VO | 0VO | VO_009 |
| DV08P209701R2 |  | DT-P2, VO 009 / RFI 02089, Finishes, Additional Rooms to House Novac Fire Suppression Cylinders | 12d | 2012-01-31 | 2012-02-14 | DV08P226002R2 |  |  |  | 225.75d | 0d | Labor General [18 h]; Cost | DT | C | P2 | WF | 097 | B05 | VO | 0VO | VO_009 |
| DV08P210201R2 |  | DT-P2, VO 009 / RFI 02089, Accessories, Additional Rooms to House Novac Fire Suppression Cylinders | 12d | 2012-02-15 | 2012-02-28 | DV08P209701R2 |  |  |  | 225.75d | 188.1d | Labor General [85 h]; Cost | DT | C | P2 | AC | 102 | B05 | VO | 0VO | VO_009 |
|  | 2 | **VO 009 RFI-2089 / Clinic Building** |  | 2011-08-08 | 2012-01-31 |  |  |  |  |  |  |  |  |  |  |  |  |  |  |  |  |
| CV08P208101R2 |  | CB-P2, VO 009 / RFI 02089, Doors & Windows, Additional Rooms to House Novac Fire Suppression Cylinders | 12d | 2011-08-08 A | 2011-12-19 | CP2DC09203C0 | 12d | 2011-12-05 | 2011-12-19 | 237.79d | 218.36d | Labor General [63 h]; Cost | CB | C | P2 | DO | 081 | B04 | VO | 0VO | VO_009 |
| CV08P226001R2 |  | CB-P2, VO 009 / RFI 02089, Electrical, Additional Rooms to House Novac Fire Suppression Cylinders | 12d | 2011-12-05 | 2011-12-19 | CP2DC09203C0 |  |  |  | 201.79d | 0d | Labor General [12 h]; Cost | CB | C | P2 | ME | 260 | B04 | VO | 0VO | VO_009 |
| CV08P226002R2 |  | CB-P2, VO 009 / RFI 02089, ESS, Additional Rooms to House Novac Fire Suppression Cylinders | 12d | 2011-12-19 | 2012-01-03 | CV08P226001R2 |  |  |  | 201.79d | 0d | Labor General [3 h]; Cost | CB | C | P2 | ME | 260 | B04 | VO | 0VO | VO_009 |
| CV08P209701R2 |  | CB-P2, VO 009 / RFI 02089, Finishes, Additional Rooms to House Novac Fire Suppression Cylinders | 12d | 2012-01-03 | 2012-01-17 | CV08P226002R2 |  |  |  | 201.79d | 0d | Labor General [19 h]; Cost | CB | C | P2 | WF | 097 | B04 | VO | 0VO | VO_009 |
| CV08P210201R2 |  | CB-P2, VO 009 / RFI 02089, Accessories, Additional Rooms to House Novac Fire Suppression Cylinders | 12d | 2012-01-17 | 2012-01-31 | CV08P209701R2 |  |  |  | 201.79d | 182.36d | Labor General [90 h]; Cost | CB | C | P2 | AC | 102 | B04 | VO | 0VO | VO_009 |
|  | 02 | **VO 009 RFI-2126 / DT P1 Dialysis Units in Simulation Center** |  | 2012-02-15 | 2012-03-10 |  |  |  |  |  |  |  |  |  |  |  |  |  |  |  |  |
| DV08P110202R2 |  | DT-P1, VO 009 / RFI 02126, Dialysis Boxes for Dialysis Units in Simulation Center | 21d | 2012-02-15 | 2012-03-10 | DP1CL27001C0 |  |  |  | 140.12d | 45d | Labor General [195 h]; Cost | DT | C | P1 | ME | 110 | B05 | VO | 0VO | VO_009 |
|  | 03 | **VO 009 RFI-2151 / PT Level 9 - Electrical Closet & Stair Door Relocation** |  | 2012-01-02 | 2012-01-15 |  |  |  |  |  |  |  |  |  |  |  |  |  |  |  |  |
| TV080910201R2 |  | PT-09, VO 009 / RFI 02151, Relocate Doors for Electrical Closet & Stairs | 12d | 2012-01-02 | 2012-01-15 | T09M108101C0 SS |  |  |  | 147d | 8.5d | Labor General [93 h]; Cost | PT | C | 09 | DO | 081 | B10 | VO | 0VO | VO_009 |
|  | 04 | **VO 009 RFI-2430 / CP - Revised Car Park Details to Cantiliever Beams** |  | 2011-08-02 | 2011-10-22 |  |  |  |  |  |  |  |  |  |  |  |  |  |  |  |  |
| PV08AF03301R2 |  | CP-AF, VO 009 / RFI 02430, Revised Rebar Details to Cantilever Beams at P1, P2 & GF, Zone S1-1 | 18d | 2011-08-02 A | 2011-10-22 | PGLS103391C10 SS | 18d | 2011-10-01 | 2011-10-22 | 262.3d | 9d | Labor General [148 h]; Cost | PA | C | AF | DO | 081 | B02 | VO | 0VO | VO_009 |
|  | 05 | **VO 009 EI-17 / Amendments to ETS Rooms** |  | 2011-08-08 | 2011-10-27 |  |  |  |  |  |  |  |  |  |  |  |  |  |  |  |  |
| UV08P322001R2 |  | CUP-P3, VO 009 / EI-17, Revisions to Chilled Water Piping, ETS Room | 20d | 2011-08-08 A | 2011-10-27 | UP3HE23005C0 SS | 20d | 2011-10-04 | 2011-10-27 | -58.59d | 0d | Labor General [10869 h]; Cost | UP | C | P3 | ME | 220 | B03 | VO | 0VO | VO_009 |
|  | 06 | **VO 009 EI-20 / Revised Mechanicl Duct Routings at P1 (Infinity Pool)** |  | 2011-08-02 | 2011-10-15 |  |  |  |  |  |  |  |  |  |  |  |  |  |  |  |  |
| PV08P123001R2 |  | CP-P1, VO 009 / EI-20, Revised Mechanical Ducts Routing at Level P1 (Infinity Pool) | 12d | 2011-08-02 A | 2011-10-15 | PP2S103351C10 SS | 12d | 2011-10-01 | 2011-10-15 | 268.3d | 15d | Labor General [5434 h]; Cost | PA | C | P1 | ME | 230 | B02 | VO | 0VO | VO_009 |

| ID | WBS | Activity | Type | Duration | Start | Finish | Predecessors | Complete | Remaining | Planned start | Planned finish | Total float | Free float | Resources | CCAD BUILDING(SET) | CCAD PHASE(SET) | CCAD FLOOR(SET) | CCAD WORK(SET) | CCAD SECTION(SET) | CCAD BILL(SET) | CCAD REV(SET) | CCAD SSCF | CCA VO (SET) | CCAD ZONE(SET) | CCADACF (SET) | CCAD TAG(SET) |
| --- | --- | --- | --- | --- | --- | --- | --- | --- | --- | --- | --- | --- | --- | --- | --- | --- | --- | --- | --- | --- | --- | --- | --- | --- | --- | --- |
|  | 07 | **VO 009 EI-21 / Cooling Domestic Water** |  |  | 2011-08-15 | 2011-10-27 |  |  |  |  |  |  |  |  |  |  |  |  |  |  |  |  |  |  |  |  |
| DV08P302201R2 |  | DT-P3, VO 009 / EI-21, Cooling of Domestic Water Supply |  | 12d | 2011-08-15 A | 2011-10-27 | DP3FW23017C0 SS |  | 12d | 2011-10-15 | 2011-10-27 | 104d | 18d | Labor General [4149 h]; Cost | DT | C | P3 | ME | 220 | B05 | VO | 0VO | VO_009 |  |  |  |
|  | 08 | **VO 009 EI-22 / 5th Floor Drainage in Planter and Roof Areas** |  |  | 2011-08-08 | 2011-10-10 |  |  |  |  |  |  |  |  |  |  |  |  |  |  |  |  |  |  |  |  |
| DV080522000R2 |  | DT-05, VO 009 / EI-22 Changes in Drain Location in the Roof Areas on the 5th Floor |  | 12d | 2011-08-08 A | 2011-08-16 A | DR5S303399C0, CR5S203335C0 | 100% |  | 2011-10-01 | 2011-10-13 |  |  | Labor General [30 h]; Cost | DT | C | 05 | ME | 211 | B05 | VO | 0VO | VO_009 |  |  |  |
| CV080522000R2 |  | CB-05, VO 009 / EI-22 Changes in Drain Location in the Roof Areas on the 5th Floor |  | 12d | 2011-08-09 A | 2011-10-10 | CR5S203335C0, DR5S303399C0 | 25% | 9d | 2011-10-01 | 2011-10-13 | 318.12d | 304.1d | Labor General [291 h]; Cost | CB | C | 05 | ME | 211 | B04 | VO | 0VO | VO_009 |  |  |  |
|  | 09 | **VO 009 / Bulletin No. 1B (Changes unde EI-02)** |  |  | 2011-06-14 | 2013-05-01 |  |  |  |  |  |  |  |  |  |  |  |  |  |  |  |  |  |  |  |  |
|  | CU | **VO 009, EI-02 / CUP** |  |  | 2011-08-08 | 2011-12-31 |  |  |  |  |  |  |  |  |  |  |  |  |  |  |  |  |  |  |  |  |
| UV09GZ26015R2 |  | VO-009, E1-002 / CUP, Electrical |  | 74d | 2011-08-08 A | 2011-12-31 | UZ9GZ23052R2 SS, UZ9GZ23052R2 FF |  | 74d | 2011-08-08 | 2011-11-03 | 409d | 0d | Labor General [4529 h]; Cost | UP | C |  | ME | 260 | B03 | VO | 0VO | VO_009 | GZ | ACFVO |  |
| UV09GZ04052R2 |  | VO-009, E1-002 / CUP, Masonry | level of effort | 360d | 2011-08-09 A | 2011-08-16 A | UV09GZ03351R2 | 100% |  | 2012-08-26 | 2013-11-02 |  |  | Labor General [19 h]; Cost | UP | C | Z9 | BL | 040 | B03 | VO | 0VO | VO_009 | GZ | ACFVO |  |
| UV09GZ28006R2 |  | VO-009, E1-002 / CUP, Electronic Safety & Security |  | 74d | 2011-08-09 A | 2011-12-31 | UZ9GZ23052R2 SS, UZ9GZ23052R2 FF |  | 74d | 2011-10-01 | 2011-12-31 | 409d | 0d | Labor General [368 h]; Cost | UP | C | Z9 | ME | 260 | B03 | VO | 0VO | VO_009 | GZ | ACFVO |  |
| UV09GZ03351R2 |  | VO-009, E1-002 / CUP, Concrete | level of effort | 6d | 2011-08-14 A | 2011-08-29 A | UGLS403301C0 SS | 100% |  | 2011-10-01 | 2011-10-06 |  |  | Labor General [-1152 h]; Cost | UP | C | Z9 | CT | 033 | B03 | VO | 0VO | VO_009 | GZ | ACFVO |  |
| UV09GZ11051R2 |  | VO-009, E1-002 / CUP, Special Construction |  | 74d | 2011-08-15 A | 2011-12-31 | MGNMI00101M0 |  | 74d | 2011-10-01 | 2011-12-31 | 409d | 0d | Labor General [2946 h]; Cost | UP | C | Z9 | FU | 110 | B03 | VO | 0VO | VO_009 | GZ | ACFVO |  |
|  | CL | **VO 009, EI-02 / Clinic Buidling** |  |  | 2011-06-14 | 2012-11-24 |  |  |  |  |  |  |  |  |  |  |  |  |  |  |  |  |  |  |  |  |
| CV09GZ22060R2 |  | VO-009, E1-002 / CB- Plumbing | level of effort | 320.4d | 2011-06-14 A | 2012-10-20 | CP3PA22011C0 SS |  | 320.4d | 2011-10-01 | 2012-10-20 | 9.72d | 0d | Labor General [-47 h]; Cost | CB | C | Z9 | ME | 220 | B04 | VO | 0VO | VO_009 | GZ | ACFVO |  |
| CV09GZ21158R2 |  | VO-009, E1-002 / CB- Fire Suppression | level of effort | 172.56d | 2011-08-01 A | 2012-05-21 | CP3TO21103C0 SS |  | 172.56d | 2011-10-25 | 2012-05-21 | 37.33d | 0d | Labor General [7 h]; Cost | CB | C | Z9 | ME | 211 | B04 | VO | 0VO | VO_009 | GZ | ACFVO |  |
| CV09GZ27062R2 |  | VO-009, E1-002 / CB- Electrical | level of effort | 320.4d | 2011-08-01 A | 2012-10-20 | CZ9GZ03351R2 SS, C04M126001C0 SS |  | 320.4d | 2011-10-01 | 2012-10-20 | 9.72d | 0d | Labor General [132 h]; Cost | CB | C | Z9 | ME | 260 | B04 | VO | 0VO | VO_009 | GZ | ACFVO |  |
| CV09GZ28064R2 |  | VO-009, E1-002 / CB- Electronic Safety & Security | level of effort | 270.24d | 2011-08-01 A | 2012-08-22 | CZ9GZ03351R2 SS |  | 270.24d | 2011-10-01 | 2012-08-22 | 15.01d | 0d | Labor General [2411 h]; Cost | CB | C | Z9 | ME | 270 | B04 | VO | 0VO | VO_009 | GZ | ACFVO |  |
| CV09GZ09055R2 |  | VO-009, E1-002 / CB- Finishes | level of effort | 287.68d | 2011-12-15 | 2012-11-24 | CZ9GZ03351R2 |  |  |  |  | 7.33d | 0d | Labor General [150 h]; Cost | CB | C | Z9 | FI | 090 | B04 | VO | 0VO | VO_009 | GZ | ACFVO |  |
| CV09GZ06154R2 |  | VO-009, E1-002 / CB- Special Construction | level of effort | 165.07d | 2012-05-08 | 2012-11-24 | CGLE106102C0 SS |  |  |  |  | 7.33d | 0d | Labor General [52 h]; Cost | CB | C | Z9 | FU | 110 | B04 | VO | 0VO | VO_009 | GZ | ACFVO |  |
| CV09GZ10257R2 |  | VO-009, E1-002 / CB- Accessories | level of effort | 165.07d | 2012-05-08 | 2012-11-24 | CGLE106102C0 SS |  |  |  |  | 7.33d | 0d | Labor General [-59 h]; Cost | CB | C | Z9 | AC | 102 | B04 | VO | 0VO | VO_009 | GZ | ACFVO |  |
| CV09GZ11058R2 |  | VO-009, E1-002 / CB- Furnishing | level of effort | 165.07d | 2012-05-08 | 2012-11-24 | CGLE106102C0 SS |  |  |  |  | 7.33d | 0d | Labor General [-13 h]; Cost | CB | C | Z9 | FU | 110 | B04 | VO | 0VO | VO_009 | GZ | ACFVO |  |
|  | DT | **VO 009, EI-02 / DT** |  |  | 2011-08-02 | 2013-01-15 |  |  |  |  |  |  |  |  |  |  |  |  |  |  |  |  |  |  |  |  |
| DV09GZ22060R2 |  | VO-009, E1-002 /, DT- Plumbing | level of effort | 341.25d | 2011-08-02 A | 2012-12-01 | D04M222011C0 SS |  | 339.9d | 2011-10-17 | 2012-12-04 | 14.1d | 0d | Labor General [966 h]; Cost | DT | C | Z9 | ME | 220 | B05 | VO | 0VO | VO_009 | GZ | ACFVO |  |
| DV09GZ21159R2 |  | VO-009, E1-002 / DT- Fire Suppression | level of effort | 283.1d | 2011-08-02 A | 2012-10-11 | D01M221111C0 SS |  | 283.1d | 2011-08-02 | 2012-07-09 | 14.03d | 0d | Labor General [3 h]; Cost | DT | C | Z9 | ME | 211 | B05 | VO | 0VO | VO_009 | GZ | ACFVO |  |
| DV09GZ28064R2 |  | VO-009, E1-002 / DT- Electronic Safety & Security/Communications | level of effort | 294.7d | 2011-08-02 A | 2012-10-06 | D04ER27010C0 SS |  | 294.7d | 2011-08-02 | 2012-07-22 | 19.8d | 0d | Labor General [262 h]; Cost | DT | C | Z9 | ME | 270 | B05 | VO | 0VO | VO_009 | GZ | ACFVO |  |
| DV09GZ04050R2 |  | VO-009, E1-002 / DT- Masonry |  | 12d | 2011-08-09 A | 2011-08-15 A | D01CO04001C0 | 100% |  | 2011-10-05 | 2011-10-19 |  |  | Labor General; Cost | DT | C | AF | BL | 040 | B05 | VO | 0VO | VO_009 | GZ | ACFVO | BL |
| DV09GZ23061R2 |  | VO-009, E1-002 /, DT- HVAC | level of effort | 305d | 2011-08-10 A | 2012-10-01 | DP3PA23008C0 SS |  | 305d | 2011-10-01 | 2012-10-01 | 22d | 0d | Labor General [-1235 h]; Cost | DT | C | Z9 | ME | 230 | B05 | VO | 0VO | VO_009 | GZ | ACFVO |  |
| DV09GZ03351R2 |  | VO-009, E1-002 / DT- Concrete |  | 60d | 2011-08-15 A | 2011-08-16 A | DR5LS03301C0 SS | 100% |  | 2011-10-01 | 2011-12-14 |  |  | Labor General [45.8 h]; Cost | DT | C |  | CT | 033 | B05 | VO | 0VO | VO_009 | GZ | ACFVO |  |
| DV09GZ05153R2 |  | VO-009, E1-002 / DT- Metals | level of effort | 222.1d | 2011-10-01 | 2012-06-25 | DZ9GZ03351R2, DZ9GZ03351R2 FF, DZ9GZ03351R2 SS |  |  |  |  | 311.9d | 0d | Labor General [64 h]; Cost | DT | C | Z9 | ST | 055 | B05 | VO | 0VO | VO_009 | GZ | ACFVO |  |
| DV09GZ27062R2 |  | VO-009, E1-002 / DT- Electrical | level of effort | 353.9d | 2011-10-01 | 2012-12-01 | D04ER26010C0 SS |  |  |  |  | 14.1d | 0d | Labor General [1 h]; Cost | DT | C | Z9 | ME | 260 | B05 | VO | 0VO | VO_009 | GZ | ACFVO |  |
| DV09GZ09056R2 |  | VO-009, E1-002 / DT- Finishes | level of effort | 330.9d | 2011-12-15 | 2013-01-15 | DZ9GZ03351R2 |  |  |  |  | 14.1d | 0d | Labor General [390 h]; Cost | DT | C | Z9 | FI | 090 | B05 | VO | 0VO | VO_009 | GZ | ACFVO |  |
| DV09GZ06154R2 |  | VO-009, E1-002 / DT- Woods and Plastics | level of effort | 101.6d | 2012-06-19 | 2012-10-18 | DP3SR06101C0 SS |  |  |  |  | 14.03d | 0d | Labor General [72 h]; Cost | DT | C | Z9 | WO | 061 | B05 | VO | 0VO | VO_009 | GZ | ACFVO |  |
| DV09GZ10258R2 |  | VO-009, E1-002 /, DT- Accessories | level of effort | 173.4d | 2012-06-19 | 2013-01-15 | DP3SR06101C0 SS |  |  |  |  | 14.1d | 0d | Labor General [7472 h]; Cost | DT | C | Z9 | AC | 110 | B05 | VO | 0VO | VO_009 | GZ | ACFVO |  |
| DV09GZ11060R2 |  | VO-009, E1-002 /, DT- Furnishing | level of effort | 173.4d | 2012-06-19 | 2013-01-15 | DP3SR06101C0 SS |  |  |  |  | 14.1d | 0d | Labor General [-87 h]; Cost | DT | C | Z9 | FU | 110 | B05 | VO | 0VO | VO_009 | GZ | ACFVO |  |
| DV09GZ14455R2 |  | VO-009, E1-002 / DT- Conveying Equipment | level of effort | 173.4d | 2012-06-19 | 2013-01-15 | DP3SR06101C0 SS |  |  |  |  | 14.1d | 0d | Labor General [2665 h]; Cost | DT | C | Z9 | FU | 110 | B05 | VO | 0VO | VO_009 | GZ | ACFVO |  |

| ID | WBS | Activity | Type | Duration | Start | Finish | Predecessors | Complete | Remaining | Planned start | Planned finish | Total float | Free float | Resources | CCAD BUILDING(SET) | CCAD PHASE(SET) | CCAD FLOOR(SET) | CCAD ZONE(SET) | CCAD WORK(SET) | CCAD SECTION(SET) | CCAD BILL(SET) | CCAD REV(SET) | CCADACF (SET) | CCAD SSCF | CCA VO (SET) | CCAD TAG(SET) |
| --- | --- | --- | --- | --- | --- | --- | --- | --- | --- | --- | --- | --- | --- | --- | --- | --- | --- | --- | --- | --- | --- | --- | --- | --- | --- | --- |
|  | GA | **VO 009, EI-02 / Gallery** |  |  | 2011-08-02 | 2013-01-29 |  |  |  |  |  |  |  |  |  |  |  |  |  |  |  |  |  |  |  |  |
| GV09GZ27063R2 |  | VO-009, E1-002 /, GA- Electrical | level of effort | 357.88d | 2011-08-02 A | 2012-12-02 | CZ9GZ03351R2 SS | 1% | 354.62d | 2011-08-02 | 2012-10-06 | 45.38d | 0d | Labor General [39 h]; Cost | GA | C | Z9 | GZ | ME | 260 | B06 | VO | ACFVO | 0VO | VO_009 |  |
| GV09GZ27064R2 |  | VO-009, E1-002 /, GA- Electronic Safety & Security | level of effort | 357.88d | 2011-08-02 A | 2012-12-02 | CZ9GZ03351R2 SS | 1% | 354.62d | 2011-08-02 | 2012-10-06 | 45.38d | 0d | Labor General [1088 h]; Cost | GA | C | Z9 | GZ | ME | 260 | B06 | VO | ACFVO | 0VO | VO_009 |  |
| GV09GZ03352R2 |  | VO-009, E1-002 / GA- Concrete |  | 60d | 2011-08-08 A | 2011-08-16 A | G02BM03301C0 | 100% |  | 2011-10-01 | 2011-12-14 |  |  | Labor General [1 h]; Cost | GA | C | Z9 | GZ | CT | 033 | B06 | VO | ACFVO | 0VO | VO_009 |  |
| GV09GZ09056R2 |  | VO-009, E1-002 / GA- Finishes | level of effort | 396.51d | 2011-10-06 | 2013-01-29 | DV10GZ03351R2, DV10GZ03351R2 FF, GZ9GZ03351R2, GZ9GZ03351R2 FF |  |  |  |  | 132d | 0d | Labor General [2087 h]; Cost | GA | C | Z9 | GZ | FI | 090 | B06 | VO | ACFVO | 0VO | VO_009 |  |
| GV09GZ10257R2 |  | VO-009, E1-002 / GA- Accessories | level of effort | 396.51d | 2011-10-06 | 2013-01-29 | DV10GZ03351R2, GZ9GZ03351R2 |  |  |  |  | 28d | 0d | Labor General [1 h]; Cost | GA | C | Z9 | GZ | AC | 110 | B06 | VO | ACFVO | 0VO | VO_009 |  |
|  | IC | **VO 009, EI-02 / ICU** |  |  | 2011-10-01 | 2012-12-23 |  |  |  |  |  |  |  |  |  |  |  |  |  |  |  |  |  |  |  |  |
| IV09GZ27065R2 |  | VO-009, E1-002 / ICU- Electrical | level of effort | 333.2d | 2011-10-01 | 2012-11-06 | I05PA26001C0 SS |  |  |  |  | 29.93d | 0d | Labor General [2 h]; Cost | IC | C | Z9 | GZ | ME | 260 | B08 | VO | ACFVO | 0VO | VO_009 |  |
| IV09GZ09058R2 |  | VO-009,, E1-002 / ICU- Finishes | level of effort | 312d | 2011-12-15 | 2012-12-23 | IZ9GZ03351R2 |  |  |  |  | 21d | 0d | Labor General [16 h]; Cost | IC | C | Z9 | GZ | FI | 090 | B08 | VO | ACFVO | 0VO | VO_009 |  |
|  | SW | **VO 009, EI-02 / Swing Wing** |  |  | 2011-10-01 | 2013-01-29 |  |  |  |  |  |  |  |  |  |  |  |  |  |  |  |  |  |  |  |  |
| SV09GZ03350R2 |  | VO-009, E1-002 / SW- Concrete |  | 12d | 2011-10-01 | 2011-10-13 | SR8BM03301C0 |  |  |  |  | 142d | 0d | Labor General [-1 h]; Cost | SW | C | AF | GZ | EK | 033 | B09 | VO | ACFVO | 0VO | VO_009 | CON |
| SV09GZ10255R2 |  | VO-009, E1-002 / SW- Electronic Safety & Security/Communications | level of effort | 357.75d | 2011-10-13 | 2012-12-19 | S07TR26026C0 SS |  |  |  |  | 15d | 0d | Labor General [69 h]; Cost | SW | C | Z9 | GZ | ME | 270 | B09 | VO | ACFVO | 0VO | VO_009 |  |
| SV09GZ07105R2 |  | VO-009, E1-002 / SW- Thermal and Moisture Protection |  | 21d | 2011-10-15 | 2011-11-10 | SV09GZ03350R2 |  |  |  |  | 142d | 74.7d | Labor General [188 h]; Cost | SW | C | AF | GZ | WP | 071 | B09 | VO | ACFVO | 0VO | VO_009 | 01 |
| SV09GZ04052R2 |  | VO-009, E1-002 / SW- Metals |  | 12d | 2012-01-11 | 2012-01-25 | S07AL05101C10 |  |  |  |  | 98.25d | 46.12d | Labor General [-1 h]; Cost | SW | C | AF | GZ | DO | 040 | B09 | VO | ACFVO | 0VO | VO_009 | BL |
| SV09GZ09055R2 |  | VO-009,E1-002 / SW- Finishes | level of effort | 168d | 2012-07-09 | 2013-01-29 | S07AL06101C0 SS |  |  |  |  | 16d | 0d | Labor General [35 h]; Cost | SW | C | Z9 | GZ | FI | 090 | B09 | VO | ACFVO | 0VO | VO_009 |  |
|  | PT | **VO 009, EI-02 / Patient Tower** |  |  | 2011-08-09 | 2013-04-15 |  |  |  |  |  |  |  |  |  |  |  |  |  |  |  |  |  |  |  |  |
| TV09GZ03351R2 |  | VO-009, E1-002 / PT- Concrete |  | 21d | 2011-08-09 A | 2011-08-10 A | T21CO03399C0 | 100% |  | 2011-10-03 | 2011-10-27 |  |  | Labor General; Cost | PT | C | AF | GZ | CT | 033 | B10 | VO | ACFVO | 0VO | VO_009 | CON |
| TV09GZ07105R2 |  | VO-009, E1-002 PT- Thermal and Moisture Protection |  | 30d | 2011-10-03 | 2011-11-10 | TV09GZ03351R2 |  |  |  |  | 322.89d | 296.26d | Labor General [109 h]; Cost | PT | C | AF | GZ | WP | 071 | B10 | VO | ACFVO | 0VO | VO_009 | 01 |
| TV09GZ27060R2 |  | VO-009, E1-002 / PT- Electrical | level of effort | 421.67d | 2011-10-10 | 2013-03-04 | T13P126001C0 SS |  |  |  |  | 15.65d | 0d | Labor General [15 h]; Cost | PT | C | Z9 | GZ | ME | 260 | B10 | VO | ACFVO | 0VO | VO_009 |  |
| TV09GZ27061R2 |  | VO-009, E1-002 / PT- Electronic Safety and Security | level of effort | 421.67d | 2011-10-10 | 2013-03-04 | T13P126001C0 SS |  |  |  |  | 15.65d | 0d | Labor General [685 h]; Cost | PT | C | Z9 | GZ | ME | 260 | B10 | VO | ACFVO | 0VO | VO_009 |  |
| TV09GZ23059R2 |  | VO-009, E1-002 / PT- HVAC | level of effort | 339.6d | 2011-10-22 | 2012-12-08 | T10P123017C0 SS |  |  |  |  | 28.3d | 0d | Labor General [-195 h]; Cost | PT | C | Z9 | GZ | ME | 230 | B10 | VO | ACFVO | 0VO | VO_009 |  |
| TV09GZ10256R2 |  | VO-009, E1-002 / PT- Accessories | level of effort | 227.85d | 2012-07-14 | 2013-04-15 | T10P106101C0 SS |  |  |  |  | 15.65d | 0d | Labor General [53 h]; Cost | PT | C | Z9 | GZ | AC | 110 | B10 | VO | ACFVO | 0VO | VO_009 |  |
| TV09GZ11057R2 |  | VO-009, E1-002 / PT- Furnishing | level of effort | 227.85d | 2012-07-14 | 2013-04-15 | T10P106101C0 SS |  |  |  |  | 15.65d | 0d | Labor General [1267 h]; Cost | PT | C | Z9 | GZ | FU | 110 | B10 | VO | ACFVO | 0VO | VO_009 |  |
| TV09GZ09055R2 |  | VO-009, E1-002 / PT- Finishes | level of effort | 173.85d | 2012-09-17 | 2013-04-15 | T10P106101C0 |  |  |  |  | 15.65d | 0d | Labor General [-24 h]; Cost | PT | C | Z9 | GZ | FI | 090 | B10 | VO | ACFVO | 0VO | VO_009 |  |

| ID | WBS | Activity | Type | Duration | Start | Finish | Predecessors | Remaining | Planned start | Planned finish | Total float | Free float | Resources | CCAD BUILDING(SET) | CCAD PHASE(SET) | CCAD ZONE(SET) | CCAD WORK(SET) | CCAD SECTION(SET) | CCAD BILL(SET) | CCAD REV(SET) | CCADACF (SET) | CCAD SSCF | CCA VO (SET) | CCAD FLOOR(SET) | CCAD TAG(SET) |
| --- | --- | --- | --- | --- | --- | --- | --- | --- | --- | --- | --- | --- | --- | --- | --- | --- | --- | --- | --- | --- | --- | --- | --- | --- | --- |
|  | CA | **VO 009, , EI-02 / Carpark** |  |  | 2011-08-01 | 2013-05-01 |  |  |  |  |  |  |  |  |  |  |  |  |  |  |  |  |  |  |  |
| PV09GZ03351R2 |  | VO-009, E1-002 / Car Park- Concrete | level of effort | 265.89d | 2011-08-01 A | 2012-08-14 | CZ9GZ03351R2 SS | 265.89d | 2011-10-01 | 2012-08-14 | 77.23d | 0d | Labor General [1241 h]; Cost | PA | C | GZ | CT | 033 | B02 | VO | ACFVO | 0VO | VO_009 |  |  |
| PV09GZ10254R2 |  | VO-009, E1-002 / CP- Electronic Safety & Security/Communications | level of effort | 354.05d | 2011-10-02 | 2012-12-04 | PP3EE26001C0 SS |  |  |  | 60.31d | 0d | Labor General [309 h]; Cost | PA | C | PK | AC | 260 | B02 | VO | ACFVO | 0VO | VO_009 | AF | ESS |
| PV09GZ27058R2 |  | VO-009, E1-002 / CP- Electrical | level of effort | 328.71d | 2011-10-02 | 2012-11-03 | PP3EE26001C0 SS |  |  |  | 49.65d | 0d | Labor General [31 h]; Cost | PA | C | PK | ME | 260 | B02 | VO | ACFVO | 0VO | VO_009 | AF | MEL |
| PV09GZ04053R2 |  | VO-009, E1-002 / CP- Masonry | level of effort | 242.76d | 2011-10-22 | 2012-08-08 | PP3DM04001C0 SS |  |  |  | 19.24d | 0d | Labor General [-1 h]; Cost | PA | C | GZ | BL | 040 | B02 | VO | ACFVO | 0VO | VO_009 | Z9 |  |
| PV09GZ09057R2 |  | VO-009, E1-002 / CP- Finishes | level of effort | 131.78d | 2012-11-25 | 2013-05-01 | PP3AP11006C10 SS |  |  |  | 2.88d | 0d | Labor General [80 h]; Cost | PA | C | GZ | FI | 090 | B02 | VO | ACFVO | 0VO | VO_009 | Z9 |  |
| PV09GZ10258R2 |  | VO-009, E1-002 / CP- Accessories | level of effort | 131.78d | 2012-11-25 | 2013-05-01 | PP3AP11006C10 SS |  |  |  | 2.88d | 0d | Labor General [323 h]; Cost | PA | C | GZ | AC | 110 | B02 | VO | ACFVO | 0VO | VO_009 | Z9 |  |
|  | GL | **VO 009, EI-02 / Landscaping & External Cladding** |  |  | 2011-11-01 | 2013-05-01 |  |  |  |  |  |  |  |  |  |  |  |  |  |  |  |  |  |  |  |
| LV09GZ31251R2 |  | V0 009 /, LEX- Site Construction | level of effort | 452.43d | 2011-11-01 | 2013-05-01 | LP33P03301C0 SS |  |  |  | 2.88d | 0d | Labor General [456 h]; Cost | LA | C | GZ | EK | 312 | B12 | VO | ACFVO | 0VO | VO_009 | Z9 |  |
| LV09GZ22059R2 |  | VO-009, E1-002 /, Landscaping- Plumbing | level of effort | 303.99d | 2011-11-05 | 2012-11-07 | LGLGP32105C0 SS |  |  |  | 18.65d | 0d | Labor General [144 h]; Cost | LA | C | GZ | ME | 220 | B12 | VO | ACFVO | 0VO | VO_009 | AF | MPL |
|  | 010 | **VO 010** |  |  |  |  |  |  |  |  |  |  |  |  |  |  |  |  |  |  |  |  |  |  |  |
|  | V10 | **VO 010 I RFI 2063, 2051, 1815, 2180 & EIs 07 & 16** |  |  | 2010-05-25 | 2013-03-04 |  |  |  |  |  |  |  |  |  |  |  |  |  |  |  |  |  |  |  |
|  | 1 | **VO 010 / RFI 2063, 2051,1915 - Gallery Partitions** |  |  | 2012-08-08 | 2012-11-07 |  |  |  |  |  |  |  |  |  |  |  |  |  |  |  |  |  |  |  |
| GV10GL09202R2 |  | VO 010- RFI 02051 / GA -GLl, Architectural Wall Finishes Revisions |  | 18d | 2012-08-08 A | 2012-09-10 | GV10GL10904R2 SS+12d | 18d | 2012-08-28 | 2012-09-18 | 61.68d | 12d | Labor General [81 h]; Cost | GA | C | GZ | WF | 097 | B06 | VO | ACFVO | 0VO | VO_010 | GL |  |
| GV10GL10904R2 |  | VO 010 - RFI 02063/ GA -01, Architectural Wall Finishes Revisions |  | 18d | 2012-08-11 A | 2012-08-27 | G01PA09701C50 | 18d | 2012-08-11 | 2012-09-03 | 49.8d | 0d | Labor General [262 h]; Cost | GA | C | GZ | WF | 097 | B06 | VO | ACFVO | 0VO | VO_010 | 01 |  |
| GV10GL10903R2 |  | VO 010 - RFI 01915 / GA -GL, Architectural Wall Finishes Revisions |  | 60d | 2012-08-28 | 2012-11-07 | GGLRD09701C0 |  |  |  | 28d | 0d | Labor General [867 h]; Cost | GA | C | GZ | WF | 097 | B06 | VO | ACFVO | 0VO | VO_010 | GL |  |
|  | 2 | **VO 010 / RFI 2180 - Clinic Corridor Celings** |  |  | 2012-02-15 | 2012-09-24 |  |  |  |  |  |  |  |  |  |  |  |  |  |  |  |  |  |  |  |
| CV10GL09502R2 |  | VO 010- RFI 02180 / CB -GL, Ceiling Finish Revisions | level of effort | 183d | 2012-02-15 | 2012-09-19 | CGLTR09501C0 SS |  |  |  | 12.4d | 0d | Labor General [99 h]; Cost | CB | C | GZ | CE | 095 | B04 | VO | ACFVO | 0VO | VO_010 | GL |  |
| CV100109503R2 |  | VO 010- RFI 02180 / CB -01, Ceiling Finish Revisions | level of effort | 172.4d | 2012-02-20 | 2012-09-11 | C01TR09501C0 SS |  |  |  | 12d | 0d | Labor General [99 h]; Cost | CB | C | GZ | CE | 095 | B04 | VO | ACFVO | 0VO | VO_010 | 01 |  |
| CV100209504R2 |  | VO 010- RFI 02180 / CB -02, Ceiling Finish Revisions | level of effort | 177.07d | 2012-02-27 | 2012-09-24 | C02TR09501C0 SS |  |  |  | 7.33d | 0d | Labor General [99 h]; Cost | CB | C | GZ | CE | 095 | B04 | VO | ACFVO | 0VO | VO_010 | 02 |  |
|  | 3 | **VO 010 / Bulletin No. 4** |  |  | 2010-05-25 | 2013-03-04 |  |  |  |  |  |  |  |  |  |  |  |  |  |  |  |  |  |  |  |
| GV10GZ08105R2 |  | VO-010, Bulletin 4 / GR- Doors & Windows | level of effort | 299.1d | 2011-10-15 | 2012-10-09 | DP3PA08103C0 SS |  |  |  | 37.65d | 0d | Labor General [416 h]; Cost | AB | C |  | DO | 081 | B01 | VO | ACFVO | 0VO | VO_010 | AF | 01 |
|  | 1 | **VO 010, Bulletin No. 4 / Car Park** |  |  | 2011-10-01 | 2013-02-28 |  |  |  |  |  |  |  |  |  |  |  |  |  |  |  |  |  |  |  |
| PV10AF26006R2 |  | VO-010, Bulletin 4 / CP-AF, QA Checks - MEP | level of effort | 427.76d | 2011-10-01 | 2013-02-28 | PP1CE23001C0 SS |  |  |  | 19.24d | 0d | Labor General [3515 h]; Cost | PA | C |  | ME | 090 | B02 | VO | ACFVO | 0VO | VO_010 | AF |  |
| PV10P103307R2 |  | VO-010, Bulletin 4 / CP-AF, Omit Maintenance Access Panel | level of effort | 241d | 2011-12-12 | 2012-09-24 | PP3EM04001C20 SS |  |  |  | 141.34d | 0d | Labor General [-28 h]; Cost | PA | C |  | FI | 090 | B02 | VO | ACFVO | 0VO | VO_010 | AF |  |
| PV10AF08106R2 |  | VO-010, Bulletin 4 / CP-AF Door and Hardware Rationalization | level of effort | 225.85d | 2012-01-23 | 2012-10-17 | PP3EM08102C0 SS |  |  |  | 72.45d | 0d | Labor General [-1564 h]; Cost | PA | C |  | DO | 081 | B02 | VO | ACFVO | 0VO | VO_010 | P3 |  |
| PV10AF09207R2 |  | VO-010, Bulletin 4 / CP - AF Rigid Insulation to Airconditioned Rooms | level of effort | 77.96d | 2012-04-14 | 2012-07-15 | PP3AE09202C0 |  |  |  | 76.34d | 0d | Labor General [1566 h]; Cost | PA | C |  | PT | 092 | B02 | VO | ACFVO | 0VO | VO_010 | AF |  |
| PV10P303306R2 |  | VO-010, Bulletin 4 / CP-P3, Precast Concrete Wheel Stops | level of effort | 128.44d | 2012-08-01 | 2013-01-06 | PP3EP09903C10 SS |  |  |  | 44.24d | 0d | Labor General [2062 h]; Cost | PA | C |  | CT | 033 | B02 | VO | ACFVO | 0VO | VO_010 | P3 |  |
| PV10P203307R2 |  | VO-010, Bulletin 4 / CP-P2, Precast Concrete Wheel Stops | level of effort | 95.57d | 2012-08-02 | 2012-11-27 | PP2EP09903C10 SS |  |  |  | 47.31d | 0d | Labor General [1226 h]; Cost | PA | C |  | CT | 033 | B02 | VO | ACFVO | 0VO | VO_010 | P2 |  |
| PV10P103306R2 |  | VO-010, Bulletin 4 / CP-P1, Precast Concrete Wheel Stops | level of effort | 133.45d | 2012-08-18 | 2013-01-30 | PP1EP09903C10 |  |  |  | 25.5d | 0d | Labor General [1825 h]; Cost | PA | C |  | CT | 033 | B02 | VO | ACFVO | 0VO | VO_010 | P1 |  |
| PV10AF08107R2 |  | VO-010, Bulletin 4 / CP- Omit 2 Reception Desks | level of effort | 112.64d | 2012-09-10 | 2013-01-26 | PP2DP11009C10 SS |  |  |  | 48.36d | 0d | Labor General [-136 h]; Cost | PA | C |  | WO | 061 | B02 | VO | ACFVO | 0VO | VO_010 | AF |  |

| ID | WBS | Activity | Type | Duration | Start | Finish | Predecessors | Complete | Remaining | Planned start | Planned finish | Total float | Free float | Resources | CCAD BUILDING(SET) | CCAD PHASE(SET) | CCAD FLOOR(SET) | CCAD WORK(SET) | CCAD SECTION(SET) | CCAD BILL(SET) | CCAD REV(SET) | CCADACF (SET) | CCAD SSCF | CCA VO (SET) | CCAD TAG(SET) |
| --- | --- | --- | --- | --- | --- | --- | --- | --- | --- | --- | --- | --- | --- | --- | --- | --- | --- | --- | --- | --- | --- | --- | --- | --- | --- |
|  | 2 | **VO 010, Bulletin No. 4 / CUP** |  |  | 2011-05-09 | 2011-11-29 |  |  |  |  |  |  |  |  |  |  |  |  |  |  |  |  |  |  |  |
| UV10P103307R2 |  | VO-010, Bulletin 4 / CUP-AF, Omit Maintenance Access Panel | level of effort | 566.56d | 2011-05-09 A | 2011-07-20 A | UP3S204002C0 SS | 100% |  | 2011-10-01 | 2013-08-12 |  |  | Labor General [-5 h]; Cost | UP | C | AF | FI | 090 | B03 | VO | ACFVO | 0VO | VO_010 |  |
| UV10AF08106R2 |  | VO-010, Bulletin 4 / CUP-AF Door and Hardware Rationalization | level of effort | 17.37d | 2011-08-02 A | 2011-11-10 | UP2MF08101C0 SS |  | 32.8d | 2011-10-01 | 2011-10-20 | -52.8d | 0d | Labor General [-10 h]; Cost | UP | C | P3 | DO | 081 | B03 | VO | ACFVO | 0VO | VO_010 |  |
| UV10AF09207R2 |  | VO-010, Bulletin 4 / CUP - Rigid Insulation to Airconditioned Rooms | level of effort | 24.68d | 2011-08-09 A | 2011-11-10 | UP3OS09201C0 SS |  | 32.15d | 2011-10-01 | 2011-10-29 | -77.95d | 0d | Labor General [390 h]; Cost | UP | C | AF | PT | 092 | B03 | VO | ACFVO | 0VO | VO_010 |  |
| UV10AF26006R2 |  | VO-010, Bulletin 4 / CUP-AF, QA Checks - MEP | level of effort | 427.76d | 2011-09-05 A | 2011-11-29 | UP2CS26001C0 SS | 89% | 48d | 2011-10-01 | 2013-02-28 | -50d | 0d | Labor General [2 h]; Cost | UP | C | AF | ME | 090 | B03 | VO | ACFVO | 0VO | VO_010 |  |
|  | CL | **VO 010, Bulletin No. 4 / Clinic Building** |  |  | 2010-05-25 | 2012-11-24 |  |  |  |  |  |  |  |  |  |  |  |  |  |  |  |  |  |  |  |
| CV10GZ07106R2 |  | VO-010, Bulletin 4 / CB- Thermal and Moisture Protection | level of effort | 95.7d | 2010-05-25 A | 2012-03-24 | CFNS107101C0 SS, CFNS207105C0 SS |  | 143.52d | 2011-10-15 | 2012-02-11 | 51.68d | 0d | Labor General [429.9 h]; Cost | CB | C | AF | WP | 071 | B04 | VO | ACFVO | 0VO | VO_010 | 01 |
| CV10GZ23061R2 |  | VO-010, Bulletin 4 / CB- HVAC | level of effort | 270.24d | 2011-08-09 A | 2012-08-22 | C04PA23023C0 SS |  | 270.24d | 2011-10-01 | 2012-08-22 | 15.01d | 0d | Labor General [3162 h]; Cost | CB | C | AF | ME | 230 | B04 | VO | ACFVO | 0VO | VO_010 |  |
| CV10GZ22060R2 |  | VO-010, Bulletin 4 / CB- Plumbing | level of effort | 320.4d | 2011-10-01 | 2012-10-20 | CZ9GZ03351R2 SS |  |  |  |  | 9.72d | 0d | Labor General [-59 h]; Cost | CB | C | AF | ME | 220 | B04 | VO | ACFVO | 0VO | VO_010 |  |
| CV10GZ05553R2 |  | VO-010, Bulletin 4 / CB- Metals | level of effort | 47.88d | 2011-10-18 | 2011-12-18 | C01LW05511C0 SS |  |  |  |  | 92.5d | 0d | Labor General [66 h]; Cost | CB | C | AF | ST | 055 | B04 | VO | ACFVO | 0VO | VO_010 |  |
| CV10GZ08105R2 |  | VO-010, Bulletin 4 / CB- Doors & Windows | level of effort | 257.16d | 2011-10-29 | 2012-09-04 | CP2PA08103C0 SS |  |  |  |  | 19.43d | 0d | Labor General [-31321 h]; Cost | CB | C | AF | DO | 081 | B04 | VO | ACFVO | 0VO | VO_010 | 01 |
| CV10GZ09055R2 |  | VO-010, Bulletin 4 / CB- Finishes | level of effort | 287.68d | 2011-12-15 | 2012-11-24 | CZ9GZ03351R2 |  |  |  |  | 7.33d | 0d | Labor General [827 h]; Cost | CB | C | AF | FI | 090 | B04 | VO | ACFVO | 0VO | VO_010 |  |
| CV10GZ06154R2 |  | VO-010, Bulletin 4 / CB- Woods and Plastics | level of effort | 98.8d | 2012-05-08 | 2012-09-04 | CGLE106102C0 SS |  |  |  |  | 9.72d | 0d | Labor General [-2 h]; Cost | CB | C | AF | WO | 061 | B04 | VO | ACFVO | 0VO | VO_010 |  |
| CV10GZ10258R2 |  | VO-010, Bulletin 4 / CB- Accessories | level of effort | 165.07d | 2012-05-08 | 2012-11-24 | CGLE106102C0 SS |  |  |  |  | 7.33d | 0d | Labor General [65 h]; Cost | CB | C | AF | AC | 102 | B04 | VO | ACFVO | 0VO | VO_010 |  |
|  | DT | **VO 010, Bulletin No. 4 / DT** |  |  | 2011-08-09 | 2013-01-15 |  |  |  |  |  |  |  |  |  |  |  |  |  |  |  |  |  |  |  |
| DV10GZ23061R2 |  | VO-010, Bulletin 4 / DT- HVAC | level of effort | 305d | 2011-08-09 A | 2012-10-01 | D04M223019C0 SS |  | 305d | 2011-10-01 | 2012-10-01 | 22d | 0d | Labor General [370.45 h]; Cost | DT | C | AF | ME | 230 | B05 | VO | ACFVO | 0VO | VO_010 |  |
| DV10GZ05554R2 |  | VO-010, Bulletin 4 / DT- Metals | level of effort | 222.1d | 2011-10-01 | 2012-06-25 | DZ9GZ03351R2, DZ9GZ03351R2 FF, DZ9GZ03351R2 SS |  |  |  |  | 311.9d | 0d | Labor General [2236 h]; Cost | DT | C | AF | ST | 055 | B05 | VO | ACFVO | 0VO | VO_010 |  |
| DV10GZ27062R2 |  | VO-010, Bulletin 4 / DT- Electrical | level of effort | 353.9d | 2011-10-01 | 2012-12-01 | D04ER26010C0 SS |  |  |  |  | 14.1d | 0d | Labor General [-107.66 h]; Cost | DT | C | AF | ME | 260 | B05 | VO | ACFVO | 0VO | VO_010 |  |
| DV10GZ08105R2 |  | VO-010, Bulletin 4 / DT- Doors & Windows | level of effort | 299.1d | 2011-10-15 | 2012-10-09 | DP3PA08103C0 SS |  |  |  |  | 37.65d | 0d | Labor General [9908 h]; Cost | DT | C | AF | DO | 081 | B05 | VO | ACFVO | 0VO | VO_010 | 01 |
| DV10GZ22060R2 |  | VO-010, Bulletin 4 / DT- Plumbing | level of effort | 339.9d | 2011-10-17 | 2012-12-01 | D04M222011C0 SS |  |  |  |  | 14.1d | 0d | Labor General [-117.74 h]; Cost | DT | C | AF | ME | 220 | B05 | VO | ACFVO | 0VO | VO_010 |  |
| DV10GZ03352R2 |  | VO-010, Bulletin 4 / DT- Concrete |  | 60d | 2011-10-22 | 2012-01-05 | DR5LS03301C0 |  |  |  |  | 228d | 0d | Labor General [-10 h]; Cost | DT | C | AF | CT | 033 | B05 | VO | ACFVO | 0VO | VO_010 |  |
| DV10GZ07106R2 |  | VO-010, Bulletin 4 / DT- Thermal and Moisture Protection | level of effort | 157.1d | 2011-10-22 | 2012-04-30 | DR5LS07101C0 SS |  |  |  |  | 68.03d | 0d | Labor General [685 h]; Cost | DT | C | AF | WP | 071 | B05 | VO | ACFVO | 0VO | VO_010 | 01 |
| DV10GZ09057R2 |  | VO-010, Bulletin 4 / DT- Finishes | level of effort | 330.9d | 2011-12-15 | 2013-01-15 | DZ9GZ03351R2 |  |  |  |  | 14.1d | 0d | Labor General [2 h]; Cost | DT | C | AF | FI | 090 | B05 | VO | ACFVO | 0VO | VO_010 |  |
| DV10GZ06154R2 |  | VO-010, Bulletin 4 / DT- Woods and Plastics | level of effort | 101.6d | 2012-06-19 | 2012-10-18 | DP3SR06101C0 SS |  |  |  |  | 14.03d | 0d | Labor General [-735 h]; Cost | DT | C | AF | WO | 061 | B05 | VO | ACFVO | 0VO | VO_010 |  |
| DV10GZ10258R2 |  | VO-010, Bulletin 4 / DT- Accessories | level of effort | 173.4d | 2012-06-19 | 2013-01-15 | DP3SR06101C0 SS |  |  |  |  | 14.1d | 0d | Labor General [480 h]; Cost | DT | C | AF | AC | 110 | B05 | VO | ACFVO | 0VO | VO_010 |  |
| DV10GZ11060R2 |  | VO-010, Bulletin 4 / DT- Furnishing | level of effort | 173.4d | 2012-06-19 | 2013-01-15 | DP3SR06101C0 SS |  |  |  |  | 14.1d | 0d | Labor General [39 h]; Cost | DT | C | AF | FU | 110 | B05 | VO | ACFVO | 0VO | VO_010 |  |
| DV10GZ14455R2 |  | VO-010, Bulletin 4 / DT- Equipment | level of effort | 173.4d | 2012-06-19 | 2013-01-15 | DP3SR06101C0 SS |  |  |  |  | 14.1d | 0d | Labor General [-57.68 h]; Cost | DT | C | AF | FU | 110 | B05 | VO | ACFVO | 0VO | VO_010 |  |

| ID | WBS | Activity | Type | Duration | Start | Finish | Predecessors | Total float | Free float | Resources | CCAD BUILDING(SET) | CCAD PHASE(SET) | CCAD FLOOR(SET) | CCAD WORK(SET) | CCAD SECTION(SET) | CCAD BILL(SET) | CCAD REV(SET) | CCADACF (SET) | CCAD SSCF | CCA VO (SET) |
| --- | --- | --- | --- | --- | --- | --- | --- | --- | --- | --- | --- | --- | --- | --- | --- | --- | --- | --- | --- | --- |
|  | GA | **VO 010, Bulletin No. 4 / Gallery** |  |  | 2011-10-01 | 2013-01-29 |  |  |  |  |  |  |  |  |  |  |  |  |  |  |
| DV10GZ03351R2 |  | VO-010, Bulletin 4 / GA- Concrete |  | 5.49d | 2011-10-01 | 2011-10-06 | MGNMI00101M0, G02BM03301C0 | 528.51d | 518.51d | Labor General [14 h]; Cost | GA | C | AF | CT | 033 | B06 | VO | ACFVO | 0VO | VO_010 |
| DV10GZ22059R2 |  | VO-010, Bulletin 4 / GA- Plumbing | level of effort | 255.88d | 2011-10-01 | 2012-08-02 | GP3M122006C0 SS | 147.87d | 0d | Labor General [-31 h]; Cost | GA | C | AF | ME | 220 | B06 | VO | ACFVO | 0VO | VO_010 |
| DV10GZ23060R2 |  | VO-010, Bulletin 4 / GA- HVAC | level of effort | 314.75d | 2011-10-01 | 2012-10-13 | GP2AB23017C0 SS | 45.38d | 0d | Labor General [-1767 h]; Cost | GA | C | AF | ME | 230 | B06 | VO | ACFVO | 0VO | VO_010 |
| DV10GZ27061R2 |  | VO-010, Bulletin 4 / GA- Electrical | level of effort | 354.62d | 2011-10-01 | 2012-12-02 | CZ9GZ03351R2 SS | 45.38d | 0d | Labor General [7 h]; Cost | GA | C | AF | ME | 260 | B06 | VO | ACFVO | 0VO | VO_010 |
| DV10GZ05552R2 |  | VO-010, Bulletin 4 / GA- Metals | level of effort | 223.71d | 2011-10-06 | 2012-07-03 | DV10GZ03351R2 | 75.3d | 0d | Labor General [321 h]; Cost | GA | C | AF | ST | 055 | B06 | VO | ACFVO | 0VO | VO_010 |
| DV10GZ06156R2 |  | VO-010, Bulletin 4 / GA- Wood & Plastics | level of effort | 396.51d | 2011-10-06 | 2013-01-29 | DV10GZ03351R2 | 28d | 0d | Labor General [1529 h]; Cost | GA | C | AF | FU | 110 | B06 | VO | ACFVO | 0VO | VO_010 |
| DV10GZ07156R2 |  | VO-010, Bulletin 4 / GA-Thermal & Moisture Protection | level of effort | 396.51d | 2011-10-06 | 2013-01-29 | DV10GZ03351R2, DV10GZ03351R2 FF | 132d | 0d | Labor General [11755 h]; Cost | GA | C | AF | FI | 090 | B06 | VO | ACFVO | 0VO | VO_010 |
| DV10GZ09054R2 |  | VO-010, Bulletin 4 / GA-Finishes | level of effort | 396.51d | 2011-10-06 | 2013-01-29 | DV10GZ03351R2, DV10GZ03351R2 FF | 132d | 0d | Labor General [71 h]; Cost | GA | C | AF | FI | 090 | B06 | VO | ACFVO | 0VO | VO_010 |
| DV10GZ10255R2 |  | VO-010, Bulletin 4 / GA- Accessories | level of effort | 396.51d | 2011-10-06 | 2013-01-29 | DV10GZ03351R2 | 28d | 0d | Labor General [23 h]; Cost | GA | C | AF | AC | 110 | B06 | VO | ACFVO | 0VO | VO_010 |
| DV10GZ08153R2 |  | VO-010, Bulletin 4 / GA- Doors and Windows | level of effort | 301.07d | 2012-01-02 | 2012-12-27 | GP3M108101C0 SS | 37.43d | 0d | Labor General [6510 h]; Cost | GA | C | AF | DO | 081 | B06 | VO | ACFVO | 0VO | VO_010 |
|  | 3 | **VO 010, Bulletin No. 4 / ICU** |  |  | 2011-11-01 | 2012-10-11 |  |  |  |  |  |  |  |  |  |  |  |  |  |  |
| IV10AF08106R2 |  | VO-010, Bulletin 4 / ICU -AF Door and Hardware Rationalization | level of effort | 287d | 2011-11-01 | 2012-10-11 | IR8PA08103C0 SS | 61d | 0d | Labor General [4844 h]; Cost | IC | C | P3 | DO | 081 | B08 | VO | ACFVO | 0VO | VO_010 |
| IV10AF04407R2 |  | VO-010, Bulletin 4 / ICU- QA Checks, (Facade, Onyx) | level of effort | 48d | 2012-03-31 | 2012-05-26 | I05CO04402C0 SS | 177.5d | 0d | Labor General [572 h]; Cost | IC | C | AF | FA | 044 | B08 | VO | ACFVO | 0VO | VO_010 |
| IV10AF08109R2 |  | VO-010, Bulletin 4 / ICU- Additional Headwall Footwall, Type A5 | level of effort | 41.5d | 2012-07-24 | 2012-09-12 | I06SL06101C0 SS | 26.5d | 0d | Labor General [1604 h]; Cost | IC | C | AF | WO | 061 | B08 | VO | ACFVO | 0VO | VO_010 |
|  | 4 | **VO 010, Bulletin No. 4 / Swing Wing** |  |  | 2011-11-01 | 2012-11-05 |  |  |  |  |  |  |  |  |  |  |  |  |  |  |
| SV10AF08106R2 |  | VO-010, Bulletin 4 / SW-AF Door and Hardware Rationalization | level of effort | 306d | 2011-11-01 | 2012-11-05 | S05PA08103C0 SS | 61d | 0d | Labor General [215 h]; Cost | SW | C | AF | DO | 081 | B09 | VO | ACFVO | 0VO | VO_010 |
| SV10AF11007R2 |  | VO-010, Bulletin 4 / SW - Utility Belt Panel | level of effort | 148d | 2012-03-04 | 2012-08-27 | S06KI11004C0 SS | 106.25d | 0d | Labor General [52 h]; Cost | SW | C | AF | EQ | 110 | B09 | VO | ACFVO | 0VO | VO_010 |
|  | 5 | **VO 010, Bulletin No. 4 / Patient Tower** |  |  | 2011-10-01 | 2013-03-04 |  |  |  |  |  |  |  |  |  |  |  |  |  |  |
| UV10AF26007R2 |  | VO-010, Bulletin 4 / PT -AF, QA Checks - MEP | level of effort | 430.35d | 2011-10-01 | 2013-03-04 | T12P223001C0 SS | 15.65d | 0d | Labor General [-675 h]; Cost | PT | C | AF | ME | 220 | B10 | VO | ACFVO | 0VO | VO_010 |
| SV10AF08107R2 |  | VO-010, Bulletin 4 / PT-AF Door and Hardware Rationalization | level of effort | 319d | 2011-12-28 | 2013-01-14 | T13TR08101C0 SS | 15d | 0d | Labor General [483 h]; Cost | PT | C | AF | DO | 081 | B10 | VO | ACFVO | 0VO | VO_010 |
| SV10AF0812R2 |  | VO-010, Bulletin 4 / PT - Patient Room and Royal Floor Diffusers | level of effort | 150d | 2012-05-21 | 2012-11-19 | T20R226005C0 SS | 50.15d | 0d | Labor General [-34 h]; Cost | PT | C | 20 | ME | 260 | B10 | VO | ACFVO | 0VO | VO_010 |
| SV10AF08108R2 |  | VO-010, Bulletin 4 / PT - BDP Comments (Finishing) | level of effort | 89.4d | 2012-07-30 | 2012-11-17 | T10PA09701C0 SS | 21d | 0d | Labor General [-108 h]; Cost | PT | C | AF | FI | 090 | B10 | VO | ACFVO | 0VO | VO_010 |
|  | 6 | **VO 010, Bulletin No. 4 / Landscaping** |  |  | 2012-01-31 | 2012-07-05 |  |  |  |  |  |  |  |  |  |  |  |  |  |  |
| LV10AF09207R2 |  | VO-010, Bulletin 4 / LEX - Thermal and Moisture Protection | level of effort | 131.9d | 2012-01-31 | 2012-07-05 | LP33P07101C0 | 26.9d | 0d | Labor General [277 h]; Cost | LA | C | AF | WP | 071 | B12 | VO | ACFVO | 0VO | VO_010 |

| ID | WBS | Activity | Type | Duration | Start | Finish | Predecessors | Remaining | Total float | Free float | Resources | CCAD BUILDING(SET) | CCAD PHASE(SET) | CCAD FLOOR(SET) | CCAD ZONE(SET) | CCAD WORK(SET) | CCAD SECTION(SET) | CCAD BILL(SET) | CCAD REV(SET) | CCADACF (SET) | CCAD SSCF | CCA VO (SET) |
| --- | --- | --- | --- | --- | --- | --- | --- | --- | --- | --- | --- | --- | --- | --- | --- | --- | --- | --- | --- | --- | --- | --- |
|  | 4 | **VO 010 / Sowwah Island Utility Changes by JBI** |  |  | 2011-10-01 | 2012-02-12 |  |  |  |  |  |  |  |  |  |  |  |  |  |  |  |  |
| PV10FN03300R2 |  | VO 010- EI-16 / Car Park Site Wide Utility Changes | level of effort | 108.3d | 2011-10-01 A | 2012-02-12 | PV10FN03320R2 SS | 108.3d | 11.2d | 0d | Labor General [108 h]; Cost | PA | C | FN | GZ | XW | 330 | B02 | VO | ACFVO | 0VO | VO_010 |
| PV10FN03320R2 |  | VO 010- EI-16 / CUP Site Wide Utility Changes |  | 12d | 2011-10-01 A | 2011-10-13 | UFNS131205C0 | 12d | 522d | 512d | Labor General [209 h]; Cost | UP | C | FN | GZ | XW | 330 | B03 | VO | ACFVO | 0VO | VO_010 |
|  | 011 | **VO 011/ RFI 1888, 2003, 2254 2664, 1193** |  |  | 2011-11-30 | 2013-01-15 |  |  |  |  |  |  |  |  |  |  |  |  |  |  |  |  |
| IAFCO08101R2 |  | ICU-AF, VO 011 / RFI 2664, Maintenance Door to ICU Patient Room Toilets | level of effort | 239.7d | 2011-11-30 | 2012-09-11 | I06P108103C0 SS |  | 67.42d | 0d | Labor General [102 h]; Cost | IC | C | AF |  | DO | 081 | B08 | VO |  | 0VO | VO_011 |
| TAFCO05501R2 |  | PT-AF, VO 011 / RFI 2254, Patient Tower C2 for Outrigger Support | level of effort | 60.6d | 2011-12-31 | 2012-03-12 | T10P105511C0 SS |  | 49.77d | 0d | Labor General [230 h]; Cost | PT | C | AF |  | FI | 055 | B10 | VO |  | 0VO | VO_011 |
| DGLCO09701R2 |  | DT-GL, VO 011 / RFI 2003, Architectural Wall Type Revisions | level of effort | 114.5d | 2012-06-03 | 2012-10-18 | D03EY09701C0 SS |  | 14.03d | 0d | Labor General [593 h]; Cost | DT | C | GL |  | WF | 097 | B05 | VO |  | 0VO | VO_011 |
| G03CO09701R2 |  | GA-03, VO 011 / RFI 1888, Architectural Wall Type Revisions | level of effort | 108.08d | 2012-06-13 | 2012-10-21 | GP1RG09701C0 SS |  | 38.43d | 0d | Labor General [637 h]; Cost | GA | C | 03 |  | WF | 097 | B06 | VO |  | 0VO | VO_011 |
| DAFCO11001R2 |  | DT-AF, VO 011 / RFI 1193, Solid Waste Handling Equipment - Trash Compactors | level of effort | 106.8d | 2012-09-08 | 2013-01-15 | DGLPR11003C0 SS |  | 92.1d | 0d | Labor General [3333 h]; Cost | DT | C | AF |  | FI | 110 | B05 | VO |  | 0VO | VO_011 |
|  | 1 | **PCO 119 & Others** |  |  | 2011-10-01 | 2013-06-22 |  |  |  |  |  |  |  |  |  |  |  |  |  |  |  |  |
|  | CU | **PCO 119 - CUP** |  |  | 2011-10-01 | 2011-12-31 |  |  |  |  |  |  |  |  |  |  |  |  |  |  |  |  |
| UZ9GZ11050R2 |  | PCO 119, CUP- Furnishing |  | 74d | 2011-10-01 | 2011-12-31 | MGNMI00101M0 |  | 409d | 0d | Labor General [-35 h]; Cost | UP | C | Z9 | GZ | FU | 110 | B03 | VO | ACFVO | 0VO | PCO 119 |
| UZ9GZ22051R2 |  | PCO 119, CUP- Plumbing |  | 74d | 2011-10-01 | 2011-12-31 | UZ9GZ11050R2 SS, UZ9GZ11050R2 FF, UV09GZ11051R2 SS, UV09GZ11051R2 FF |  | 409d | 0d | Labor General [283 h]; Cost | UP | C | Z9 | GZ | ME | 220 | B03 | VO | ACFVO | 0VO | PCO 119 |
| UZ9GZ23052R2 |  | PCO 119, CUP- HVAC |  | 74d | 2011-10-01 | 2011-12-31 | UZ9GZ22051R2 SS, UZ9GZ22051R2 FF |  | 409d | 0d | Labor General [201 h]; Cost | UP | C | Z9 | GZ | ME | 230 | B03 | VO | ACFVO | 0VO | PCO 119 |
| UZ9GZ27053R2 |  | PCO 119, CUP- Electrical |  | 74d | 2011-10-01 | 2011-12-31 | UZ9GZ23052R2 SS, UZ9GZ23052R2 FF |  | 409d | 0d | Labor General [79129 h]; Cost | UP | C | Z9 | GZ | ME | 260 | B03 | VO | ACFVO | 0VO | PCO 119 |
|  | CL | **PCO 119 - Clinic Buidling** |  |  | 2011-10-01 | 2012-11-24 |  |  |  |  |  |  |  |  |  |  |  |  |  |  |  |  |
| CZ9GZ03351R2 |  | PCO 119, CB- Concrete |  | 60d | 2011-10-01 | 2011-12-14 | MGNMI00101M0 |  | 474d | 0d | Labor General [166 h]; Cost | CB | C | Z9 | GZ | CT | 033 | B04 | VO | ACFVO | 0VO | PCO 119 |
| CZ9GZ05152R2 |  | PCO 119, CB- Metals | level of effort | 203.4d | 2011-10-01 | 2012-06-02 | CZ9GZ03351R2 SS |  | 126.72d | 0d | Labor General [1966 h]; Cost | CB | C | Z9 | GZ | ST | 055 | B04 | VO | ACFVO | 0VO | PCO 119 |
| CZ9GZ22059R2 |  | PCO 119, CB- Plumbing | level of effort | 320.4d | 2011-10-01 | 2012-10-20 | CZ9GZ03351R2 SS |  | 9.72d | 0d | Labor General [9428 h]; Cost | CB | C | Z9 | GZ | ME | 220 | B04 | VO | ACFVO | 0VO | PCO 119 |
| CZ9GZ23060R2 |  | PCO 119, CB- HVAC | level of effort | 270.24d | 2011-10-01 | 2012-08-22 | C04PA23023C0 SS |  | 15.01d | 0d | Labor General [952 h]; Cost | CB | C | Z9 | GZ | ME | 230 | B04 | VO | ACFVO | 0VO | PCO 119 |
| CZ9GZ26562R2 |  | PCO 119, CB- Communications | level of effort | 270.24d | 2011-10-01 | 2012-08-22 | CZ9GZ03351R2 SS |  | 15.01d | 0d | Labor General [227 h]; Cost | CB | C | Z9 | GZ | ME | 270 | B04 | VO | ACFVO | 0VO | PCO 119 |
| CZ9GZ27061R2 |  | PCO 119, CB- Electrical | level of effort | 320.4d | 2011-10-01 | 2012-10-20 | CZ9GZ03351R2 SS, C04M126001C0 SS |  | 9.72d | 0d | Labor General [8011 h]; Cost | CB | C | Z9 | GZ | ME | 260 | B04 | VO | ACFVO | 0VO | PCO 119 |
| CZ9GZ28063R2 |  | PCO 119, CB- Electronic Safety & Security | level of effort | 270.24d | 2011-10-01 | 2012-08-22 | CZ9GZ03351R2 SS |  | 15.01d | 0d | Labor General [-61 h]; Cost | CB | C | Z9 | GZ | ME | 270 | B04 | VO | ACFVO | 0VO | PCO 119 |
| CZ9GZ31250R2 |  | PCO 119, CB- Site Construction | level of effort | 347.68d | 2011-10-01 | 2012-11-24 | CZ9GZ03351R2 SS |  | 7.33d | 0d | Labor General [7333 h]; Cost | CB | C | Z9 | GZ | EK | 312 | B04 | VO | ACFVO | 0VO | PCO 119 |
| CZ9GZ21158R2 |  | PCO 119, CB- Fire Suppression | level of effort | 249d | 2011-10-25 | 2012-08-22 | CP3TO21103C0 SS |  | 15.01d | 0d | Labor General [-3 h]; Cost | CB | C | Z9 | GZ | ME | 211 | B04 | VO | ACFVO | 0VO | PCO 119 |
| CZ9GZ08154R2 |  | PCO 119, CB- Doors and Windows | level of effort | 287.72d | 2011-10-30 | 2012-10-11 | CP3PA08103C0 SS |  | 19.43d | 0d | Labor General [5949 h]; Cost | CB | C | Z9 | GZ | DO | 081 | B04 | VO | ACFVO | 0VO | PCO 119 |
| CZ9GZ09055R2 |  | PCO 119, CB- Finishes | level of effort | 287.68d | 2011-12-15 | 2012-11-24 | CZ9GZ03351R2 |  | 7.33d | 0d | Labor General [97305 h]; Cost | CB | C | Z9 | GZ | FI | 090 | B04 | VO | ACFVO | 0VO | PCO 119 |
| CZ9GZ06153R2 |  | PCO 119, CB- Woods and Plastics | level of effort | 98.8d | 2012-05-08 | 2012-09-04 | CGLE106102C0 SS |  | 9.72d | 0d | Labor General [-27935 h]; Cost | CB | C | Z9 | GZ | WO | 061 | B04 | VO | ACFVO | 0VO | PCO 119 |
| CZ9GZ10256R2 |  | PCO 119, CB- Accessories | level of effort | 165.07d | 2012-05-08 | 2012-11-24 | CGLE106102C0 SS |  | 7.33d | 0d | Labor General [2133 h]; Cost | CB | C | Z9 | GZ | AC | 102 | B04 | VO | ACFVO | 0VO | PCO 119 |
| CZ9GZ11057R2 |  | PCO 119, CB- Furnishing | level of effort | 165.07d | 2012-05-08 | 2012-11-24 | CGLE106102C0 SS |  | 7.33d | 0d | Labor General [4341 h]; Cost | CB | C | Z9 | GZ | FU | 110 | B04 | VO | ACFVO | 0VO | PCO 119 |

| ID | WBS | Activity | Type | Duration | Start | Finish | Predecessors | Total float | Free float | Resources | CCAD BUILDING(SET) | CCAD PHASE(SET) | CCAD FLOOR(SET) | CCAD ZONE(SET) | CCAD WORK(SET) | CCAD SECTION(SET) | CCAD BILL(SET) | CCAD REV(SET) | CCADACF (SET) | CCAD SSCF | CCA VO (SET) |
| --- | --- | --- | --- | --- | --- | --- | --- | --- | --- | --- | --- | --- | --- | --- | --- | --- | --- | --- | --- | --- | --- |
|  | DT | **PCO 119 - DT** |  |  | 2011-10-01 | 2013-01-15 |  |  |  |  |  |  |  |  |  |  |  |  |  |  |  |
| DZ9GZ03351R2 |  | PCO 119, DT- Concrete |  | 60d | 2011-10-01 | 2011-12-14 | CZ9GZ03351R2 SS | 474d | 464d | Labor General [305 h]; Cost | DT | C | Z9 | GZ | CT | 033 | B05 | VO | ACFVO | 0VO | PCO 119 |
| DZ9GZ05152R2 |  | PCO 119, DT- Metals | level of effort | 222.1d | 2011-10-01 | 2012-06-25 | DZ9GZ03351R2, DZ9GZ03351R2 FF, DZ9GZ03351R2 SS | 311.9d | 0d | Labor General [-9300 h]; Cost | DT | C | Z9 | GZ | ST | 055 | B05 | VO | ACFVO | 0VO | PCO 119 |
| DZ9GZ23060R2 |  | PCO 119, DT- HVAC | level of effort | 305d | 2011-10-01 | 2012-10-01 | D04M223019C0 SS | 22d | 0d | Labor General [10612 h]; Cost | DT | C | Z9 | GZ | ME | 230 | B05 | VO | ACFVO | 0VO | PCO 119 |
| DZ9GZ27061R2 |  | PCO 119, DT- Electrical | level of effort | 353.9d | 2011-10-01 | 2012-12-01 | D04ER26010C0 SS | 14.1d | 0d | Labor General [48341 h]; Cost | DT | C | Z9 | GZ | ME | 260 | B05 | VO | ACFVO | 0VO | PCO 119 |
| DZ9GZ31250R2 |  | PCO 119, DT- Site Construction | level of effort | 390.9d | 2011-10-01 | 2013-01-15 | DZ9GZ03351R2 SS | 14.1d | 0d | Labor General [7333 h]; Cost | DT | C | Z9 | GZ | EK | 312 | B05 | VO | ACFVO | 0VO | PCO 119 |
| DZ9GZ08154R2 |  | PCO 119, DT- Doors and Windows | level of effort | 325.48d | 2011-10-15 | 2012-11-11 | DZ9GZ03351R2, DP3PA08103C0 SS | 37.65d | 0d | Labor General [6073 h]; Cost | DT | C | Z9 | GZ | DO | 081 | B05 | VO | ACFVO | 0VO | PCO 119 |
| DZ9GZ22059R2 |  | PCO 119, DT- Plumbing | level of effort | 339.9d | 2011-10-17 | 2012-12-01 | D04M222011C0 SS | 14.1d | 0d | Labor General [12092 h]; Cost | DT | C | Z9 | GZ | ME | 220 | B05 | VO | ACFVO | 0VO | PCO 119 |
| DZ9GZ28063R2 |  | PCO 119, DT- Electronic Safety & Security/Communications | level of effort | 294.7d | 2011-10-17 | 2012-10-06 | D04ER27010C0 SS | 19.8d | 0d | Labor General [-4727 h]; Cost | DT | C | Z9 | GZ | ME | 270 | B05 | VO | ACFVO | 0VO | PCO 119 |
| DZ9GZ21158R2 |  | PCO 119, DT- Fire Suppression | level of effort | 283.1d | 2011-11-05 | 2012-10-11 | D01M221111C0 SS | 14.03d | 0d | Labor General [558 h]; Cost | DT | C | Z9 | GZ | ME | 211 | B05 | VO | ACFVO | 0VO | PCO 119 |
| DZ9GZ09055R2 |  | PCO 119, DT- Finishes | level of effort | 330.9d | 2011-12-15 | 2013-01-15 | DZ9GZ03351R2 | 14.1d | 0d | Labor General [74947 h]; Cost | DT | C | Z9 | GZ | FI | 090 | B05 | VO | ACFVO | 0VO | PCO 119 |
| DZ9GZ06153R2 |  | PCO 119, DT- Woods and Plastics | level of effort | 101.6d | 2012-06-19 | 2012-10-18 | DP3SR06101C0 SS | 14.03d | 0d | Labor General [-4533 h]; Cost | DT | C | Z9 | GZ | WO | 061 | B05 | VO | ACFVO | 0VO | PCO 119 |
| DZ9GZ10256R2 |  | PCO 119, DT- Accessories | level of effort | 173.4d | 2012-06-19 | 2013-01-15 | DP3SR06101C0 SS | 14.1d | 0d | Labor General [3667 h]; Cost | DT | C | Z9 | GZ | AC | 110 | B05 | VO | ACFVO | 0VO | PCO 119 |
| DZ9GZ11057R2 |  | PCO 119, DT- Furnishing | level of effort | 173.4d | 2012-06-19 | 2013-01-15 | DP3SR06101C0 SS | 14.1d | 0d | Labor General [10130 h]; Cost | DT | C | Z9 | GZ | FU | 110 | B05 | VO | ACFVO | 0VO | PCO 119 |
|  | GA | **PCO 119 - Gallery** |  |  | 2011-10-01 | 2013-01-29 |  |  |  |  |  |  |  |  |  |  |  |  |  |  |  |
| GZ9GZ03351R2 |  | PCO 119, GA- Concrete |  | 133.33d | 2011-10-01 | 2012-03-12 | MGNMI00101M0, G02BM03301C0 | 400.67d | 390.66d | Labor General [316 h]; Cost | GA | C | Z9 | GZ | CT | 033 | B06 | VO | ACFVO | 0VO | PCO 119 |
| GZ9GZ22059R2 |  | PCO 119, GA- Plumbing | level of effort | 255.88d | 2011-10-01 | 2012-08-02 | GP3M122006C0 SS | 147.87d | 0d | Labor General [1009 h]; Cost | GA | C | Z9 | GZ | ME | 220 | B06 | VO | ACFVO | 0VO | PCO 119 |
| GZ9GZ23060R2 |  | PCO 119, GA- HVAC | level of effort | 314.75d | 2011-10-01 | 2012-10-13 | GP2AB23017C0 SS | 45.38d | 0d | Labor General [245 h]; Cost | GA | C | Z9 | GZ | ME | 230 | B06 | VO | ACFVO | 0VO | PCO 119 |
| GZ9GZ27061R2 |  | PCO 119, GA- Electrical | level of effort | 354.62d | 2011-10-01 | 2012-12-02 | CZ9GZ03351R2 SS | 45.38d | 0d | Labor General [9699 h]; Cost | GA | C | Z9 | GZ | ME | 260 | B06 | VO | ACFVO | 0VO | PCO 119 |
| GZ9GZ31250R2 |  | PCO 119, GA- Site Construction | level of effort | 402d | 2011-10-01 | 2013-01-29 | GZ9GZ03351R2 SS | 28d | 0d | Labor General [9595 h]; Cost | GA | C | Z9 | GZ | EK | 312 | B06 | VO | ACFVO | 0VO | PCO 119 |
| GZ9GZ26562R2 |  | PCO 119, GA- Communications | level of effort | 336.88d | 2011-10-15 | 2012-11-25 | GGLRD27010C0 SS | 54.87d | 0d | Labor General [71 h]; Cost | GA | C | Z9 | GZ | ME | 270 | B06 | VO | ACFVO | 0VO | PCO 119 |
| GZ9GZ21158R2 |  | PCO 119, GA- Fire Suppression | level of effort | 226.75d | 2011-12-20 | 2012-09-15 | GP3M121117C0 SS | 69.38d | 0d | Labor General [124 h]; Cost | GA | C | Z9 | GZ | ME | 211 | B06 | VO | ACFVO | 0VO | PCO 119 |
| GZ9GZ08153R2 |  | PCO 119, GA- Doors and Windows | level of effort | 301.07d | 2012-01-02 | 2012-12-27 | GP3M108101C0 SS | 54.93d | 0d | Labor General [543 h]; Cost | GA | C | Z9 | GZ | DO | 081 | B06 | VO | ACFVO | 0VO | PCO 119 |
| GZ9GZ05152R2 |  | PCO 119, GA- Metals | level of effort | 95.87d | 2012-03-12 | 2012-07-03 | GZ9GZ03351R2 | 75.3d | 0d | Labor General [5412 h]; Cost | GA | C | Z9 | GZ | ST | 055 | B06 | VO | ACFVO | 0VO | PCO 119 |
| GZ9GZ09054R2 |  | PCO 119, GA- Finishes | level of effort | 268.67d | 2012-03-12 | 2013-01-29 | GZ9GZ03351R2, GZ9GZ03351R2 FF | 132d | 0d | Labor General [2451 h]; Cost | GA | C | Z9 | GZ | FI | 090 | B06 | VO | ACFVO | 0VO | PCO 119 |
| GZ9GZ10255R2 |  | PCO 119, GA- Accessories | level of effort | 268.67d | 2012-03-12 | 2013-01-29 | GZ9GZ03351R2 | 28d | 0d | Labor General [303 h]; Cost | GA | C | Z9 | GZ | AC | 110 | B06 | VO | ACFVO | 0VO | PCO 119 |
| GZ9GZ11056R2 |  | PCO 119, GA- Furnishing | level of effort | 268.67d | 2012-03-12 | 2013-01-29 | GZ9GZ03351R2 | 28d | 0d | Labor General [531 h]; Cost | GA | C | Z9 | GZ | FU | 110 | B06 | VO | ACFVO | 0VO | PCO 119 |
| GZ9GZ13357R2 |  | PCO 119, GA- Special Construction | level of effort | 268.67d | 2012-03-12 | 2013-01-29 | GZ9GZ08153R2, GZ9GZ03351R2 | 28d | 0d | Labor General [167 h]; Cost | GA | C | Z9 | GZ | XC | 110 | B06 | VO | ACFVO | 0VO | PCO 119 |

| ID | WBS | Activity | Type | Duration | Start | Finish | Predecessors | Total float | Free float | Resources | CCAD BUILDING(SET) | CCAD PHASE(SET) | CCAD FLOOR(SET) | CCAD ZONE(SET) | CCAD WORK(SET) | CCAD SECTION(SET) | CCAD BILL(SET) | CCAD REV(SET) | CCADACF (SET) | CCAD SSCF | CCA VO (SET) |
| --- | --- | --- | --- | --- | --- | --- | --- | --- | --- | --- | --- | --- | --- | --- | --- | --- | --- | --- | --- | --- | --- |
|  | IC | **PCO 119 - ICU** |  |  | 2011-10-01 | 2012-12-23 |  |  |  |  |  |  |  |  |  |  |  |  |  |  |  |
| IZ9GZ03351R2 |  | PCO 119, ICU- Concrete |  | 60d | 2011-10-01 | 2011-12-14 | MGNMI00101M0 | 474d | 464d | Labor General [77 h]; Cost | IC | C | Z9 | GZ | CT | 033 | B08 | VO | ACFVO | 0VO | PCO 119 |
| IZ9GZ22060R2 |  | PCO 119, ICU- Plumbing | level of effort | 333.2d | 2011-10-01 | 2012-11-06 | I06P122007C0 SS | 29.93d | 0d | Labor General [6025 h]; Cost | IC | C | Z9 | GZ | ME | 220 | B08 | VO | ACFVO | 0VO | PCO 119 |
| IZ9GZ27062R2 |  | PCO 119, ICU- Electrical | level of effort | 333.2d | 2011-10-01 | 2012-11-06 | I05PA26001C0 SS | 29.93d | 0d | Labor General [2917 h]; Cost | IC | C | Z9 | GZ | ME | 260 | B08 | VO | ACFVO | 0VO | PCO 119 |
| IZ9GZ31250R2 |  | PCO 119, ICU- Site Construction | level of effort | 372d | 2011-10-01 | 2012-12-23 | IZ9GZ03351R2 SS | 21d | 0d | Labor General [7333 h]; Cost | IC | C | Z9 | GZ | EK | 312 | B08 | VO | ACFVO | 0VO | PCO 119 |
| IZ9GZ23061R2 |  | PCO 119, ICU- HVAC | level of effort | 288.7d | 2011-10-08 | 2012-09-19 | IR8M123005C0 SS | 68.12d | 0d | Labor General [246 h]; Cost | IC | C | Z9 | GZ | ME | 230 | B08 | VO | ACFVO | 0VO | PCO 119 |
| IZ9GZ26563R2 |  | PCO 119, ICU- Communications | level of effort | 274.32d | 2011-10-19 | 2012-09-15 | I07P227001C0 SS | 76.72d | 0d | Labor General [221 h]; Cost | IC | C | Z9 | GZ | ME | 270 | B08 | VO | ACFVO | 0VO | PCO 119 |
| IZ9GZ08155R2 |  | PCO 119, ICU- Doors and Windows | level of effort | 287.7d | 2011-11-01 | 2012-10-13 | I05TR08101C0 SS | 60.42d | 0d | Labor General [9869 h]; Cost | IC | C | Z9 | GZ | DO | 081 | B08 | VO | ACFVO | 0VO | PCO 119 |
| IZ9GZ07154R2 |  | PCO 119, ICU- Thermal & Moisture Protection | level of effort | 137.57d | 2011-11-05 | 2012-04-21 | IR8RF07101C0 SS | 101.92d | 0d | Labor General [3051 h]; Cost | IC | C | Z9 | GZ | WP | 071 | B08 | VO | ACFVO | 0VO | PCO 119 |
| IZ9GZ05152R2 |  | PCO 119, ICU- Metals | level of effort | 156.2d | 2011-12-15 | 2012-06-18 | IZ9GZ03351R2 | 68.55d | 0d | Labor General [-195 h]; Cost | IC | C | Z9 | GZ | ST | 055 | B08 | VO | ACFVO | 0VO | PCO 119 |
| IZ9GZ09056R2 |  | PCO 119, ICU- Finishes | level of effort | 312d | 2011-12-15 | 2012-12-23 | IZ9GZ03351R2 | 21d | 0d | Labor General [32946 h]; Cost | IC | C | Z9 | GZ | FI | 090 | B08 | VO | ACFVO | 0VO | PCO 119 |
| IZ9GZ06153R2 |  | PCO 119, ICU- Woods and Plastics | level of effort | 59d | 2012-07-31 | 2012-10-09 | I06P106102C0 SS | 21d | 0d | Labor General [20183 h]; Cost | IC | C | Z9 | GZ | WO | 061 | B08 | VO | ACFVO | 0VO | PCO 119 |
| IZ9GZ10257R2 |  | PCO 119, ICU- Accessories | level of effort | 119d | 2012-07-31 | 2012-12-23 | I06P106102C0 SS | 21d | 0d | Labor General [9048 h]; Cost | IC | C | Z9 | GZ | AC | 110 | B08 | VO | ACFVO | 0VO | PCO 119 |
| IZ9GZ11058R2 |  | PCO 119, ICU- Equipment | level of effort | 119d | 2012-07-31 | 2012-12-23 | I06P106102C0 SS | 21d | 0d | Labor General [578 h]; Cost | IC | C | Z9 | GZ | EQ | 110 | B08 | VO | ACFVO | 0VO | PCO 119 |
| IZ9GZ11059R2 |  | PCO 119, ICU- Furnishing | level of effort | 119d | 2012-07-31 | 2012-12-23 | I06P106102C0 SS | 21d | 0d | Labor General [4259 h]; Cost | IC | C | Z9 | GZ | FU | 110 | B08 | VO | ACFVO | 0VO | PCO 119 |
|  | SW | **PCO 119 - Swing Wing** |  |  | 2011-10-01 | 2013-01-29 |  |  |  |  |  |  |  |  |  |  |  |  |  |  |  |
| SZ9GZ08152R2 |  | PCO 119, SW- Doors and Windows | level of effort | 333d | 2011-10-01 | 2012-11-05 | IZ9GZ03351R2 SS, S05PA08103C0 SS | 61d | 0d | Labor General [-1333 h]; Cost | SW | C | Z9 | GZ | DO | 081 | B09 | VO | ACFVO | 0VO | PCO 119 |
| SZ9GZ22057R2 |  | PCO 119, SW- Plumbing | level of effort | 369d | 2011-10-01 | 2012-12-19 | S05M222006C0 SS | 15d | 0d | Labor General [4840 h]; Cost | SW | C | Z9 | GZ | ME | 220 | B09 | VO | ACFVO | 0VO | PCO 119 |
| SZ9GZ31250R2 |  | PCO 119, SW- Site Construction | level of effort | 402d | 2011-10-01 | 2013-01-29 | IZ9GZ03351R2 SS | 16d | 0d | Labor General [7333 h]; Cost | SW | C | Z9 | GZ | EK | 312 | B09 | VO | ACFVO | 0VO | PCO 119 |
| SZ9GZ27058R2 |  | PCO 119, SW- Electrical | level of effort | 357.75d | 2011-10-13 | 2012-12-19 | S07TR26026C0 SS | 15d | 0d | Labor General [13458 h]; Cost | SW | C | Z9 | GZ | ME | 260 | B09 | VO | ACFVO | 0VO | PCO 119 |
| SZ9GZ21156R2 |  | PCO 119, SW- Fire Suppression | level of effort | 204d | 2012-01-31 | 2012-09-29 | S05M221123C0 SS | 33d | 0d | Labor General [169 h]; Cost | SW | C | Z9 | GZ | ME | 211 | B09 | VO | ACFVO | 0VO | PCO 119 |
| SZ9GZ06151R2 |  | PCO 119, SW- Woods and Plastics | level of effort | 93d | 2012-07-09 | 2012-10-29 | S07AL06101C0 SS | 15d | 0d | Labor General [1952 h]; Cost | SW | C | Z9 | GZ | WO | 061 | B09 | VO | ACFVO | 0VO | PCO 119 |
| SZ9GZ09053R2 |  | PCO 119, SW- Finishes | level of effort | 168d | 2012-07-09 | 2013-01-29 | S07AL06101C0 SS | 16d | 0d | Labor General [45232 h]; Cost | SW | C | Z9 | GZ | FI | 090 | B09 | VO | ACFVO | 0VO | PCO 119 |
| SZ9GZ10254R2 |  | PCO 119, SW- Accessories | level of effort | 168d | 2012-07-09 | 2013-01-29 | S07AL06101C0 SS | 16d | 0d | Labor General [35 h]; Cost | SW | C | Z9 | GZ | AC | 110 | B09 | VO | ACFVO | 0VO | PCO 119 |
| SZ9GZ11055R2 |  | PCO 119, SW- Furnishing | level of effort | 168d | 2012-07-09 | 2013-01-29 | S07AL06101C0 SS | 16d | 0d | Labor General [3700 h]; Cost | SW | C | Z9 | GZ | FU | 110 | B09 | VO | ACFVO | 0VO | PCO 119 |

| ID | WBS | Activity | Type | Duration | Start | Finish | Predecessors | Total float | Free float | Resources | CCAD BUILDING(SET) | CCAD PHASE(SET) | CCAD FLOOR(SET) | CCAD ZONE(SET) | CCAD WORK(SET) | CCAD SECTION(SET) | CCAD BILL(SET) | CCAD REV(SET) | CCADACF (SET) | CCAD SSCF | CCA VO (SET) |
| --- | --- | --- | --- | --- | --- | --- | --- | --- | --- | --- | --- | --- | --- | --- | --- | --- | --- | --- | --- | --- | --- |
|  | PT | **PCO 119 - Patient Tower** |  |  | 2011-10-01 | 2013-04-15 |  |  |  |  |  |  |  |  |  |  |  |  |  |  |  |
| TZ9GZ05150R2 |  | PCO 119, PT- Metals | level of effort | 262.6d | 2011-10-01 | 2012-08-11 | CZ9GZ03351R2 SS | 72.4d | 0d | Labor General [41829 h]; Cost | PT | C | Z9 | GZ | SW | 055 | B10 | VO | ACFVO | 0VO | PCO 119 |
| TZ9GZ27058R2 |  | PCO 119, PT- Electrical | level of effort | 421.67d | 2011-10-10 | 2013-03-04 | T13P126001C0 SS | 15.65d | 0d | Labor General [-24650 h]; Cost | PT | C | Z9 | GZ | ME | 260 | B10 | VO | ACFVO | 0VO | PCO 119 |
| TZ9GZ22056R2 |  | PCO 119, PT- Plumbing | level of effort | 411.75d | 2011-10-22 | 2013-03-04 | T10P122007C0 SS | 15.65d | 0d | Labor General [47243 h]; Cost | PT | C | Z9 | GZ | ME | 220 | B10 | VO | ACFVO | 0VO | PCO 119 |
| TZ9GZ23057R2 |  | PCO 119, PT- HVAC | level of effort | 339.6d | 2011-10-22 | 2012-12-08 | T10P123017C0 SS | 28.3d | 0d | Labor General [7619 h]; Cost | PT | C | Z9 | GZ | ME | 230 | B10 | VO | ACFVO | 0VO | PCO 119 |
| TZ9GZ08152R2 |  | PCO 119, PT- Doors and Windows | level of effort | 323.89d | 2011-12-28 | 2013-01-20 | T09PA08103C0 SS | 57.11d | 0d | Labor General [-6999 h]; Cost | PT | C | Z9 | GZ | DO | 081 | B10 | VO | ACFVO | 0VO | PCO 119 |
| TZ9GZ06151R2 |  | PCO 119, PT- Woods and Plastics | level of effort | 143.85d | 2012-07-14 | 2013-01-06 | T10P106101C0 SS | 15.65d | 0d | Labor General [37365 h]; Cost | PT | C | Z9 | GZ | WO | 061 | B10 | VO | ACFVO | 0VO | PCO 119 |
| TZ9GZ10254R2 |  | PCO 119, PT- Accessories | level of effort | 227.85d | 2012-07-14 | 2013-04-15 | T10P106101C0 SS | 15.65d | 0d | Labor General [43528 h]; Cost | PT | C | Z9 | GZ | AC | 110 | B10 | VO | ACFVO | 0VO | PCO 119 |
| TZ9GZ11055R2 |  | PCO 119, PT- Furnishing | level of effort | 227.85d | 2012-07-14 | 2013-04-15 | T10P106101C0 SS | 15.65d | 0d | Labor General [14903 h]; Cost | PT | C | Z9 | GZ | FU | 110 | B10 | VO | ACFVO | 0VO | PCO 119 |
| TZ9GZ09053R2 |  | PCO 119, PT- Finishes | level of effort | 173.85d | 2012-09-17 | 2013-04-15 | T10P106101C0 | 15.65d | 0d | Labor General [52661 h]; Cost | PT | C | Z9 | GZ | FI | 090 | B10 | VO | ACFVO | 0VO | PCO 119 |
|  | CA | **PCO 119 - Carpark** |  |  | 2011-10-01 | 2013-06-22 |  |  |  |  |  |  |  |  |  |  |  |  |  |  |  |
| PZ9GZ03351R2 |  | PCO 119, CP- Concrete | level of effort | 265.89d | 2011-10-01 | 2012-08-14 | CZ9GZ03351R2 SS | 77.23d | 0d | Labor General [19999 h]; Cost | PA | C | Z9 | GZ | CT | 033 | B02 | VO | ACFVO | 0VO | PCO 119 |
| PZ9GZ05153R2 |  | PCO 119, CP- Metals | level of effort | 382.45d | 2011-10-01 | 2013-01-06 | PAFT2205509C1 SS | 64.55d | 0d | Labor General [5817 h]; Cost | PA | C | Z9 | GZ | ST | 055 | B02 | VO | ACFVO | 0VO | PCO 119 |
| PZ9GZ08155R2 |  | PCO 119, CP- Doors and Windows | level of effort | 338.41d | 2011-10-01 | 2012-11-12 | PP2CE08102C0 SS | 76.34d | 0d | Labor General [1333 h]; Cost | PA | C | Z9 | GZ | DO | 081 | B02 | VO | ACFVO | 0VO | PCO 119 |
| PZ9GZ04052R2 |  | PCO 119, CP- Masonry | level of effort | 242.76d | 2011-10-22 | 2012-08-08 | PP3DM04001C0 SS | 19.24d | 0d | Labor General [492 h]; Cost | PA | C | Z9 | GZ | BL | 040 | B02 | VO | ACFVO | 0VO | PCO 119 |
| PZ9GZ22060R2 |  | PCO 119, CP- Plumbing | level of effort | 309d | 2011-10-23 | 2012-10-31 | PP3EM22001C10 SS | 62.7d | 0d | Labor General [437 h]; Cost | PA | C | Z9 | GZ | ME | 220 | B02 | VO | ACFVO | 0VO | PCO 119 |
| PZ9GZ31250R2 |  | PCO 119, CP- Site Construction | level of effort | 345.75d | 2012-03-13 | 2013-05-01 | PP1BM04001C0 SS | 2.88d | 0d | Labor General [1424 h]; Cost | PA | C | Z9 | GZ | EK | 312 | B02 | VO | ACFVO | 0VO | PCO 119 |
| PZ9GZ21159R2 |  | PCO 119, CP- Fire Suppression | level of effort | 94.75d | 2012-04-29 | 2012-08-21 | PP1BP21114C10 SS | 95.88d | 0d | Labor General [1 h]; Cost | PA | C | Z9 | GZ | ME | 211 | B02 | VO | ACFVO | 0VO | PCO 119 |
| PZ9GZ06154R2 |  | PCO 119, CP- Woods and Plastics | level of effort | 146.25d | 2012-08-16 | 2013-02-12 | PP3DP11006C10 SS | 25.5d | 0d | Labor General [7311 h]; Cost | PA | C | Z9 | GZ | WO | 097 | B02 | VO | ACFVO | 0VO | PCO 119 |
| PZ9GZ09056R2 |  | PCO 119, CP- Finishes | level of effort | 131.78d | 2012-11-25 | 2013-05-01 | PP3AP11006C10 SS | 2.88d | 0d | Labor General [14261 h]; Cost | PA | C | Z9 | GZ | FI | 090 | B02 | VO | ACFVO | 0VO | PCO 119 |
| PZ9GZ10257R2 |  | PCO 119, CP- Accessories | level of effort | 131.78d | 2012-11-25 | 2013-05-01 | PP3AP11006C10 SS | 2.88d | 0d | Labor General [368 h]; Cost | PA | C | Z9 | GZ | AC | 110 | B02 | VO | ACFVO | 0VO | PCO 119 |
| PZ9GZ11058R2 |  | PCO 119, CP- Furnishing | level of effort | 175.65d | 2012-11-25 | 2013-06-22 | PP3AP11006C10 SS | 10d | 0d | Labor General [1010 h]; Cost | PA | C | Z9 | GZ | FU | 110 | B02 | VO | ACFVO | 0VO | PCO 119 |
|  | GL | **PCO 119 - Landscaping & External Cladding** |  |  | 2011-10-05 | 2013-05-01 |  |  |  |  |  |  |  |  |  |  |  |  |  |  |  |
| LZ9GZ03351R2 |  | PCO 119, LEX- Concrete | level of effort | 297.52d | 2011-10-05 | 2012-09-27 | LGLGC03301C0 | 39d | 0d | Labor General [-3327 h]; Cost | LA | C | Z9 | GZ | CT | 033 | B12 | VO | ACFVO | 0VO | PCO 119 |
| LZ9GZ31250R2 |  | PCO 119, LEX- Site Construction | level of effort | 452.43d | 2011-11-01 | 2013-05-01 | LP33P03301C0 SS | 2.88d | 0d | Labor General [69970 h]; Cost | LA | C | Z9 | GZ | EK | 312 | B12 | VO | ACFVO | 0VO | PCO 119 |
| LZ9GZ10253R2 |  | PCO 119, LEX- Accessories | level of effort | 273.65d | 2012-01-03 | 2012-11-26 | LP33P07101C0 SS | 84.65d | 0d | Labor General [-28900 h]; Cost | LA | C | Z9 | GZ | AC | 102 | B12 | VO | ACFVO | 0VO | PCO 119 |
| LZ9GZ13354R2 |  | PCO 119, LEX- Special Construction | level of effort | 273.65d | 2012-01-03 | 2012-11-26 | LP33P07101C0 SS | 84.65d | 0d | Labor General [-140793 h]; Cost | LA | C | Z9 | GZ | XC | 133 | B12 | VO | ACFVO | 0VO | PCO 119 |
| LZ9GZ05152R2 |  | PCO 119, LEX- Metals | level of effort | 73.65d | 2012-10-21 | 2013-01-20 | LP33W05301C0 SS | 39d | 0d | Labor General [-2390 h]; Cost | LA | C | Z9 | GZ | SW | 055 | B12 | VO | ACFVO | 0VO | PCO 119 |
| LZ9GZ27055R2 |  | PCO 119, LEX- Electrical | level of effort | 3.65d | 2012-11-07 | 2012-11-11 | LP33P32105C0 SS | 39d | 0d | Labor General; Cost | LA | C | Z9 | GZ | ME | 260 | B12 | VO | ACFVO | 0VO | PCO 119 |

| ID | WBS | Activity | Type | Duration | Start | Finish | Predecessors | Total float | Free float | Resources | CCAD BUILDING(SET) | CCAD PHASE(SET) | CCAD FLOOR(SET) | CCAD ZONE(SET) | CCAD WORK(SET) | CCAD SECTION(SET) | CCAD BILL(SET) | CCAD REV(SET) | CCADACF (SET) | CCAD SSCF | CCA VO (SET) |
| --- | --- | --- | --- | --- | --- | --- | --- | --- | --- | --- | --- | --- | --- | --- | --- | --- | --- | --- | --- | --- | --- |
|  | VT | **PCO 119 - Lifts** |  |  | 2012-02-01 | 2012-04-17 |  |  |  |  |  |  |  |  |  |  |  |  |  |  |  |
| VZ9GZ14350R2 |  | PCO 119, VT - Additional Elevator 61 | level of effort | 64.88d | 2012-02-01 | 2012-04-17 | SVT4114203C0 SS | 212.12d | 0d | Labor General [7853 h]; Cost | LA | C | Z9 | GZ | EL | 143 | B11 | VO | ACFVO | 0VO | PCO 119 |
|  | B13 | **CPM Rev 3 - Temporary WBS for Programme Development** |  |  |  |  |  |  |  |  |  |  |  |  |  |  |  |  |  |  |  |

## Activity codes

| Code | Value | Meaning |
| --- | --- | --- |
| Act Selector % | M1F | MEP 1st Fix |
| Act Selector % | P1F | Partitions 1st Face |
| Act Selector % | P2F | Partitions, Closing |
| Act Selector % | PMS | Partitions, Metal Studs |
| Are | C | AREA G;EL.130.0m TO EL.154.5m |
| Are | D | AREA G& L;EL.154.5m TO 164.5m |
| Are | E | AREA G&L; EL.164.5m To 184.5m |
| Are | H | AREA G&L; EL.219.5m To 224.5m |
| Are | K1 | AREA L;EL.130.0m TO 154.5m |
| Are | O | AREA M, K; EL.86.5m TO EL.150.0m |
| Are | R | AREA A ,E,J; EL.86.5m TO EL.112.0m |
| Area/ Department | DT | D&T BUILDING (LEVEL P3-L5) |
| Area/ Department | GA | GALLERY AND ADMIN (P3-L3) |
| Area/ Department | IC | ICU BUILDING (LEVEL 5 - 8) |
| Area/ Department | PA | PATIENT TOWER (LEVEL 8-21) |
| Area/ Department | SW | SWING BUILDING (LEVEL 5-8) |
| CCA VO (SET) | VO_001 | Variation Order No. 001 |
| CCA VO (SET) | VO_002 | Variation Order No. 002 |
| CCA VO (SET) | VO_003 | Variation Order No. 003 |
| CCA VO (SET) | VO_004 | Variation Order No. 004 |
| CCA VO (SET) | VO_005 | Variation Order No. 005 |
| CCA VO (SET) | VO_006 | Variation Order No. 006 |
| CCA VO (SET) | VO_007 | Variation Order No. 007 |
| CCA VO (SET) | VO_008 | Variation Order No. 008 |
| CCA VO (SET) | VO_009 | Variation Order No. 009 |
| CCA VO (SET) | VO_010 | Variation Order No. 010 |
| CCA VO (SET) | VO_011 | Variation Order No. 011 |
| CCAD (VO) | CP | Carpark |
| CCAD BILL(SET) | B01 | GENERAL REQUIREMENTS |
| CCAD BILL(SET) | B02 | CAR PARK |
| CCAD BILL(SET) | B03 | CUP |
| CCAD BILL(SET) | B04 | CLINIC |
| CCAD BILL(SET) | B05 | D & T |
| CCAD BILL(SET) | B06 | GALLERY |
| CCAD BILL(SET) | B08 | ICU BUILDING |
| CCAD BILL(SET) | B09 | SWING BUILDING |
| CCAD BILL(SET) | B10 | PATIENT TOWER |
| CCAD BILL(SET) | B11 | VERTICAL TRANSPORTATION |
| CCAD BILL(SET) | B12 | LANDSCAPING TO ROOF AT LEVEL 5 |
| CCAD BILL(SET) | B13 | EXTERNAL WORKS AT GROUND & PODIUM |
| CCAD BILL(SET) | FABR | FABRICATION |
| CCAD BUILDING(SET) | AB | All Building |
| CCAD BUILDING(SET) | CB | Clinic Building |
| CCAD BUILDING(SET) | CM | Contract Milestone |
| CCAD BUILDING(SET) | DT | Diagnostic & Treatment |
| CCAD BUILDING(SET) | GA | Gallery |
| CCAD BUILDING(SET) | GR | General Requirements |
| CCAD BUILDING(SET) | IC | ICU Building |
| CCAD BUILDING(SET) | LA | Landscape & External |
| CCAD BUILDING(SET) | MO | Mockup |
| CCAD BUILDING(SET) | PA | Car Park |
| CCAD BUILDING(SET) | PT | Patient Tower |
| CCAD BUILDING(SET) | S3 | Section 3 Building |
| CCAD BUILDING(SET) | SW | Swing Wing |
| CCAD BUILDING(SET) | UP | Central Utility Plant |
| CCAD CBS(SET) | BILL 10 | Patient Tower |
| CCAD CBS(SET) | BILL 11 | Vertical Transportation |
| CCAD CBS(SET) | BILL 12 | Landscaping to Roof AT |
| CCAD CBS(SET) | BILL 13 | External Work |
| CCAD CBS(SET) | BILL 2 | Car Park |
| CCAD CBS(SET) | BILL 3 | CUP |
| CCAD CBS(SET) | BILL 4 | Clinic |
| CCAD CBS(SET) | BILL 5 | D & T |
| CCAD CBS(SET) | BILL 6 | Gallery |
| CCAD CBS(SET) | BILL 8 | ICU Building |
| CCAD CBS(SET) | BILL 9 | SWING Building |
| CCAD CSA | CPT | Carpet/Carpet Tiles |
| CCAD CSA | FA | Facade |
| CCAD CSA | FK | Food Service and Kitchen Equipment |
| CCAD CSA | GP | Gypsum Partition |
| CCAD CSA | LE | Lift Escalators |
| CCAD CSA | PT | Post Tensioned Slab |
| CCAD CSA | ST | Structural Steel+++ |
| CCAD CUP CODE(SET) | 0 | Zone S4-0 |
| CCAD CUP CODE(SET) | 1 | Zone S2-1 |
| CCAD CUP CODE(SET) | 2 | Zone S2-2 |
| CCAD CUP CODE(SET) | 3 | Zone S1-3 |
| CCAD CUP CODE(SET) | S1 | Zone S1 |
| CCAD Carpark code(SET) | 1 | Zone S6-1 |
| CCAD Carpark code(SET) | 1A | Zone S2-1A |
| CCAD Carpark code(SET) | 1B | Zone S2-1B |
| CCAD Carpark code(SET) | 2 | Zone S7-2 |
| CCAD Carpark code(SET) | 2A | Zone S1-2A |
| CCAD Carpark code(SET) | 2B | Zone S1-2B |
| CCAD Carpark code(SET) | 3 | Zone S1-3 |
| CCAD Carpark code(SET) | 3A | Zone S6-3A |
| CCAD Carpark code(SET) | 3B | Zone S6-3B |
| CCAD Carpark code(SET) | 4A | Zone S7-4A |
| CCAD Carpark code(SET) | 4B | Zone S7-4B |
| CCAD Carpark code(SET) | A | Zone S3-A |
| CCAD Carpark code(SET) | A1 | Zone S11-A1 |
| CCAD Carpark code(SET) | A2 | Zone S11-A2 |
| CCAD Carpark code(SET) | B | Zone S3-B |
| CCAD Carpark code(SET) | B1 | Zone S8-B1 |
| CCAD Carpark code(SET) | B2 | Zone S8-B2 |
| CCAD Carpark code(SET) | C | Zone S3-C |
| CCAD Carpark code(SET) | D | Zone S11-D |
| CCAD Carpark code(SET) | PA | Zone PA |
| CCAD Carpark code(SET) | PB | Zone PB |
| CCAD Carpark code(SET) | PC | Zone PC |
| CCAD Carpark code(SET) | PD | Zone PD |
| CCAD Carpark code(SET) | PE | Zone PE |
| CCAD Carpark code(SET) | SW | RC Wall |
| CCAD Carpark district code(set) | N | North |
| CCAD Carpark district code(set) | S | South |
| CCAD DIVISION(SET) | 01 | General |
| CCAD DIVISION(SET) | 03 | Concrete |
| CCAD DIVISION(SET) | 04 | Masonry |
| CCAD DIVISION(SET) | 05 | Metals |
| CCAD DIVISION(SET) | 07 | Thermal and Moisture Proection |
| CCAD DIVISION(SET) | 08 | Doors and Windows |
| CCAD DIVISION(SET) | 09 | Finishes |
| CCAD DIVISION(SET) | 11 | Equipment |
| CCAD DIVISION(SET) | 20 | Plumbing |
| CCAD DIVISION(SET) | 21 | HVAC |
| CCAD DIVISION(SET) | 22 | Fire Alarm |
| CCAD DIVISION(SET) | 23 | Fire Protection |
| CCAD DIVISION(SET) | 24 | Sanitary Drainage |
| CCAD DIVISION(SET) | 26 | Telecom and Security |
| CCAD DIVISION(SET) | 27 | Lightning Protection |
| CCAD DIVISION(SET) | 31 | Backfilling & Drainage |
| CCAD DIVISION(SET) | 60 | External Improvements |
| CCAD FLOOR(SET) | 01 | Level 1 |
| CCAD FLOOR(SET) | 02 | Level 2 |
| CCAD FLOOR(SET) | 03 | Level 3 |
| CCAD FLOOR(SET) | 04 | Level 4 |
| CCAD FLOOR(SET) | 05 | Level 5 |
| CCAD FLOOR(SET) | 06 | Level 6 |
| CCAD FLOOR(SET) | 07 | Level 7 |
| CCAD FLOOR(SET) | 08 | Level 8 |
| CCAD FLOOR(SET) | 09 | Level 9 |
| CCAD FLOOR(SET) | 10 | Level 10 |
| CCAD FLOOR(SET) | 11 | Level 11 |
| CCAD FLOOR(SET) | 12 | Level 12 |
| CCAD FLOOR(SET) | 13 | Level 13 |
| CCAD FLOOR(SET) | 14 | Level 14 |
| CCAD FLOOR(SET) | 15 | Level 15 |
| CCAD FLOOR(SET) | 16 | Level 16 |
| CCAD FLOOR(SET) | 17 | Level 17 |
| CCAD FLOOR(SET) | 18 | Level 18 |
| CCAD FLOOR(SET) | 19 | Level 19 |
| CCAD FLOOR(SET) | 20 | Level 20 |
| CCAD FLOOR(SET) | 21 | Level 21 |
| CCAD FLOOR(SET) | AF | All Floors |
| CCAD FLOOR(SET) | EX | External |
| CCAD FLOOR(SET) | FN | Foundations |
| CCAD FLOOR(SET) | GL | Ground Level |
| CCAD FLOOR(SET) | GN | General |
| CCAD FLOOR(SET) | LZ | Logistic |
| CCAD FLOOR(SET) | P1 | Podium 1 |
| CCAD FLOOR(SET) | P2 | Podium 2 |
| CCAD FLOOR(SET) | P3 | Podium 3 |
| CCAD FLOOR(SET) | R5 | Roof Level 5 |
| CCAD FLOOR(SET) | R8 | Roof Level 8 |
| CCAD FLOOR(SET) | RX | Roof Level 21 |
| CCAD FLOOR(SET) | VT | Vertical Floor |
| CCAD FLOOR(SET) | Z9 | PC119 |
| CCAD HANDOVER(SET) | S1 | Section 1 - Time for Completion |
| CCAD HANDOVER(SET) | S2 | Section 2 - Time for Completion |
| CCAD HANDOVER(SET) | S3 | Section 3 - Time for Completion |
| CCAD PHASE(SET) | C | Construction |
| CCAD PHASE(SET) | F | Fabrication |
| CCAD PHASE(SET) | G | General |
| CCAD RESPONSIBILITY(SET) | PP | Peter Pynaert |
| CCAD RESPONSIBILITY(SET) | SIS | SIXCO SAMSUNG JV |
| CCAD REV(SET) | R00 | Rev 00 - Original Accepted Baseline |
| CCAD REV(SET) | VO | Variation Order |
| CCAD SECTION(SET) | 000 | Mockup |
| CCAD SECTION(SET) | 001 | Milestones |
| CCAD SECTION(SET) | 010 | Inspection |
| CCAD SECTION(SET) | 015 | Temporary Facilities |
| CCAD SECTION(SET) | 018 | Commissioning |
| CCAD SECTION(SET) | 033 | Concrete work |
| CCAD SECTION(SET) | 040 | Block works |
| CCAD SECTION(SET) | 044 | Ext. Stone works / Cladding |
| CCAD SECTION(SET) | 051 | Structural steel |
| CCAD SECTION(SET) | 053 | Steel Deck |
| CCAD SECTION(SET) | 055 | Secondary steel works (Metal works) |
| CCAD SECTION(SET) | 061 | Wood works/casework |
| CCAD SECTION(SET) | 071 | Waterproofing |
| CCAD SECTION(SET) | 078 | Cementitious Fireproofing |
| CCAD SECTION(SET) | 081 | Doors & Frames |
| CCAD SECTION(SET) | 083 | Overhead Coiling Doors |
| CCAD SECTION(SET) | 087 | Hardware (Ironmongery) |
| CCAD SECTION(SET) | 090 | Finishing (General) |
| CCAD SECTION(SET) | 092 | Gypsum Partitions |
| CCAD SECTION(SET) | 093 | Tile |
| CCAD SECTION(SET) | 095 | Ceiling Finishes |
| CCAD SECTION(SET) | 096 | Floor Finishes |
| CCAD SECTION(SET) | 097 | Wall finishes |
| CCAD SECTION(SET) | 099 | Painting |
| CCAD SECTION(SET) | 102 | Specialities |
| CCAD SECTION(SET) | 110 | FF&E |
| CCAD SECTION(SET) | 133 | Special Cosntruction |
| CCAD SECTION(SET) | 142 | Elevators |
| CCAD SECTION(SET) | 143 | Escalators |
| CCAD SECTION(SET) | 211 | Fire Supression |
| CCAD SECTION(SET) | 220 | Plumbing |
| CCAD SECTION(SET) | 230 | HVAC |
| CCAD SECTION(SET) | 260 | Electrical |
| CCAD SECTION(SET) | 265 | Communications |
| CCAD SECTION(SET) | 270 | ELV Systems |
| CCAD SECTION(SET) | 312 | Site works |
| CCAD SECTION(SET) | 321 | Landscaping |
| CCAD SECTION(SET) | 328 | Irrigation |
| CCAD SECTION(SET) | 329 | Plants & planting |
| CCAD SECTION(SET) | 330 | Utilities |
| CCAD SECTION(SET) | 403 | Pnuematic Conveying Lines |
| CCAD SECTION(SET) | 500 | Water Features |
| CCAD SECTION(SET) | GEN | GENERAL |
| CCAD SERIAL No.(SET) | 01 | Activity 1 |
| CCAD SERIAL No.(SET) | 02 | Activity 1 |
| CCAD SERIAL No.(SET) | 03 | Activity 1 |
| CCAD SERIAL No.(SET) | 04 | Activity 1 |
| CCAD SERIAL No.(SET) | 05 | Activity 1 |
| CCAD SERIAL No.(SET) | 06 | Activity 34 |
| CCAD SERIAL No.(SET) | 07 | Activity 1 |
| CCAD SERIAL No.(SET) | 08 | Activity 34 |
| CCAD SERIAL No.(SET) | 09 | Activity 1 |
| CCAD SERIAL No.(SET) | 10 | Activity 1 |
| CCAD SERIAL No.(SET) | 11 | Activity 1 |
| CCAD SERIAL No.(SET) | 12 | Activity 1 |
| CCAD SERIAL No.(SET) | 13 | Activity 1 |
| CCAD SERIAL No.(SET) | 14 | Activity 34 |
| CCAD SERIAL No.(SET) | 15 | Activity 1 |
| CCAD SERIAL No.(SET) | 16 | Activity 34 |
| CCAD SERIAL No.(SET) | 17 | Activity 1 |
| CCAD SERIAL No.(SET) | 18 | Activity 34 |
| CCAD SERIAL No.(SET) | 19 | Activity 1 |
| CCAD SERIAL No.(SET) | 20 | Activity 1 |
| CCAD SERIAL No.(SET) | 21 | Activity 1 |
| CCAD SERIAL No.(SET) | 22 | Activity 1 |
| CCAD SERIAL No.(SET) | 23 | Activity 12 |
| CCAD SERIAL No.(SET) | 24 | Activity 34 |
| CCAD SERIAL No.(SET) | 25 | Activity 13 |
| CCAD SERIAL No.(SET) | 26 | Activity 34 |
| CCAD SERIAL No.(SET) | 27 | Activity 14 |
| CCAD SERIAL No.(SET) | 28 | Activity 34 |
| CCAD SERIAL No.(SET) | 29 | Activity 15 |
| CCAD SERIAL No.(SET) | 30 | Activity 34 |
| CCAD SERIAL No.(SET) | 31 | Activity 16 |
| CCAD SERIAL No.(SET) | 32 | Activity 34 |
| CCAD SERIAL No.(SET) | 33 | Activity 17 |
| CCAD SERIAL No.(SET) | 34 | Activity 34 |
| CCAD SERIAL No.(SET) | 35 | Activity 18 |
| CCAD SERIAL No.(SET) | 36 | Activity 34 |
| CCAD SERIAL No.(SET) | 37 | Activity 19 |
| CCAD SERIAL No.(SET) | 38 | Activity 34 |
| CCAD SERIAL No.(SET) | 39 | Activity 20 |
| CCAD SERIAL No.(SET) | 40 | Activity 34 |
| CCAD SERIAL No.(SET) | 41 | Activity 21 |
| CCAD SERIAL No.(SET) | 42 | Activity 34 |
| CCAD SERIAL No.(SET) | 43 | Activity 22 |
| CCAD SERIAL No.(SET) | 44 | Activity 34 |
| CCAD SERIAL No.(SET) | 45 | Activity 23 |
| CCAD SERIAL No.(SET) | 46 | Activity 34 |
| CCAD SERIAL No.(SET) | 47 | Activity 24 |
| CCAD SERIAL No.(SET) | 48 | Activity 34 |
| CCAD SERIAL No.(SET) | 49 | Activity 25 |
| CCAD SERIAL No.(SET) | 50 | Activity 34 |
| CCAD SERIAL No.(SET) | 51 | Activity 26 |
| CCAD SERIAL No.(SET) | 52 | Activity 34 |
| CCAD SERIAL No.(SET) | 53 | Activity 27 |
| CCAD SERIAL No.(SET) | 54 | Activity 34 |
| CCAD SERIAL No.(SET) | 55 | Activity 28 |
| CCAD SERIAL No.(SET) | 56 | Activity 34 |
| CCAD SERIAL No.(SET) | 57 | Activity 29 |
| CCAD SERIAL No.(SET) | 58 | Activity 34 |
| CCAD SERIAL No.(SET) | 59 | Activity 30 |
| CCAD SERIAL No.(SET) | 60 | Activity 34 |
| CCAD SERIAL No.(SET) | 61 | Activity 31 |
| CCAD SERIAL No.(SET) | 62 | Activity 34 |
| CCAD SERIAL No.(SET) | 63 | Activity 32 |
| CCAD SERIAL No.(SET) | 64 | Activity 34 |
| CCAD SERIAL No.(SET) | 65 | Activity 33 |
| CCAD SERIAL No.(SET) | 66 | Activity 34 |
| CCAD SERIAL No.(SET) | 67 | Activity 34 |
| CCAD SERIAL No.(SET) | 68 | Activity 34 |
| CCAD SERIAL No.(SET) | 69 | Activity 34 |
| CCAD SERIAL No.(SET) | 70 | Activity 34 |
| CCAD SERIAL No.(SET) | 71 | Activity 34 |
| CCAD SERIAL No.(SET) | 72 | Activity 34 |
| CCAD SERIAL No.(SET) | 73 | Activity 34 |
| CCAD SERIAL No.(SET) | 74 | Activity 34 |
| CCAD SERIAL No.(SET) | 75 | Activity 34 |
| CCAD SERIAL No.(SET) | 76 | Activity 34 |
| CCAD SERIAL No.(SET) | 77 | Activity 34 |
| CCAD SERIAL No.(SET) | 78 | Activity 34 |
| CCAD SERIAL No.(SET) | 79 | Activity 34 |
| CCAD SERIAL No.(SET) | 80 | Activity 34 |
| CCAD SERIAL No.(SET) | 81 | Activity 34 |
| CCAD SERIAL No.(SET) | 82 | Activity 34 |
| CCAD SERIAL No.(SET) | 83 | Activity 34 |
| CCAD SERIAL No.(SET) | 84 | Activity 34 |
| CCAD SERIAL No.(SET) | 85 | Activity 34 |
| CCAD SERIAL No.(SET) | 86 | Activity 34 |
| CCAD SERIAL No.(SET) | 87 | Activity 34 |
| CCAD SERIAL No.(SET) | 88 | Activity 34 |
| CCAD SERIAL No.(SET) | 89 | Activity 34 |
| CCAD SERIAL No.(SET) | 90 | Activity 34 |
| CCAD SERIAL No.(SET) | 91 | Activity 34 |
| CCAD SERIAL No.(SET) | 92 | Activity 34 |
| CCAD SERIAL No.(SET) | 93 | Activity 34 |
| CCAD SERIAL No.(SET) | 94 | Activity 34 |
| CCAD SERIAL No.(SET) | 95 | Activity 34 |
| CCAD SERIAL No.(SET) | 96 | Activity 34 |
| CCAD SERIAL No.(SET) | 97 | Activity 34 |
| CCAD SERIAL No.(SET) | 98 | Activity 34 |
| CCAD SERIAL No.(SET) | 99 | Activity 34 |
| CCAD SSCF | 000 | Mockup |
| CCAD SSCF | 001 | Milestones |
| CCAD SSCF | 010 | Inspection |
| CCAD SSCF | 015 | Temporary Facilities |
| CCAD SSCF | 018 | Commissioning |
| CCAD SSCF | 033 | Concrete work |
| CCAD SSCF | 040 | Block works |
| CCAD SSCF | 044 | Ext. Stone works / Cladding |
| CCAD SSCF | 051 | Structural steel |
| CCAD SSCF | 053 | Steel Deck |
| CCAD SSCF | 055 | Secondary Steel (Stairs) |
| CCAD SSCF | 056 | Secondary steel (excluding Stairs) |
| CCAD SSCF | 061 | Wood works/casework |
| CCAD SSCF | 071 | Waterproofing |
| CCAD SSCF | 078 | Cementitious Fireproofing |
| CCAD SSCF | 081 | Doors & Frames |
| CCAD SSCF | 083 | Overhead Coiling Doors |
| CCAD SSCF | 087 | Hardware (Ironmongery) |
| CCAD SSCF | 092 | Gypsum Partitions |
| CCAD SSCF | 095 | Ceiling Finishes |
| CCAD SSCF | 097 | Wall finishes |
| CCAD SSCF | 099 | Painting |
| CCAD SSCF | 0VO | Variation Orders |
| CCAD SSCF | 102 | Specialities |
| CCAD SSCF | 142 | Elevators |
| CCAD SSCF | 143 | Escalators |
| CCAD SSCF | 211 | Fire Supression |
| CCAD SSCF | 220 | Plumbing |
| CCAD SSCF | 230 | HVAC |
| CCAD SSCF | 260 | Electrical |
| CCAD SSCF | 270 | ELV Systems |
| CCAD SSCF | 312 | Site works |
| CCAD SSCF | 328 | Irrigation |
| CCAD SSCF | 329 | Plants & planting |
| CCAD SSCF | 330 | Utilities |
| CCAD SSCF | 403 | Pnuematic Conveying Lines |
| CCAD SSCF | AF | Access Floor |
| CCAD SSCF | CPT | Carpet Tiles / Carpet |
| CCAD SSCF | CS | Concrete Sealer |
| CCAD SSCF | CT | Ceramic Tiles |
| CCAD SSCF | FF | Floor Finish (General) |
| CCAD SSCF | GEN | GENERAL |
| CCAD SSCF | KE | Kitchen Equipment |
| CCAD SSCF | PV | Paving / Surfacing |
| CCAD SSCF | RF | Rubber Sheet Flooring |
| CCAD SSCF | ST | Stone |
| CCAD SSCF | TZ | Terrazo |
| CCAD SSCF | WD | Wooden Deck |
| CCAD SSCF | WF | Water Features |
| CCAD SSCF | a | FFE |
| CCAD SSCF | b | Secondary Steel for Medical Equipment |
| CCAD SSCF | c | Signage and Floor Markings |
| CCAD SSCF | d | Wall Mounted Sensitve Equipment |
| CCAD SSCF | e | Utility Belt and other Equipment |
| CCAD SSCF | f | Millworks/Furnitures |
| CCAD SUB ZONE MEP(SET) | 1S | 1st fix |
| CCAD SUB ZONE MEP(SET) | 2n | 2nd fix |
| CCAD SUB ZONE MEP(SET) | FF | Final fix |
| CCAD SUB ZONE MEP(SET) | RI | Risers |
| CCAD TAG(SET) | 01 | Client Issue EI/PCO |
| CCAD TAG(SET) | 02 | Concrete, Pilecaps and Grade Beams |
| CCAD TAG(SET) | 03 | Wall Protection |
| CCAD TAG(SET) | 04 | Trench Earthworks & U/G Drainage |
| CCAD TAG(SET) | 05 | Concrete, Walls and Columns |
| CCAD TAG(SET) | 06 | Concrete, Slab on Grade |
| CCAD TAG(SET) | 07 | Concrete, Beams and Elevated Slab |
| CCAD TAG(SET) | 08 | Concrete, Concrete on Metal Deck |
| CCAD TAG(SET) | 09 | Concrete, Duct Banks and MEP Trenches |
| CCAD TAG(SET) | 1 | Section 1 |
| CCAD TAG(SET) | 10 | Miscellaneous Works |
| CCAD TAG(SET) | 11 | Loading Dock FF&E |
| CCAD TAG(SET) | 12 | Lift #33 |
| CCAD TAG(SET) | 13 | Lift #32 |
| CCAD TAG(SET) | 14 | Lift #31 |
| CCAD TAG(SET) | 15 | Lift #30 |
| CCAD TAG(SET) | 16 | Lift #28. 29 |
| CCAD TAG(SET) | 17 | Lift #26 - 27 |
| CCAD TAG(SET) | 18 | Lift #25 |
| CCAD TAG(SET) | 19 | Lift #24 |
| CCAD TAG(SET) | 1F | MEP / ELV, 1st Fix |
| CCAD TAG(SET) | 2 | Section 2 |
| CCAD TAG(SET) | 20 | Lift #20 - 23 |
| CCAD TAG(SET) | 21 | Lift #18 - 19 |
| CCAD TAG(SET) | 22 | Lift #16 - 17 |
| CCAD TAG(SET) | 23 | Lift #14 - 15 |
| CCAD TAG(SET) | 24 | Lift #12 - 13 |
| CCAD TAG(SET) | 25 | Lift #10 -11 |
| CCAD TAG(SET) | 26 | Lift #09 |
| CCAD TAG(SET) | 27 | Lift #07 -08 |
| CCAD TAG(SET) | 28 | Lift #02 ~ 06 |
| CCAD TAG(SET) | 29 | Lift #01 |
| CCAD TAG(SET) | 2F | MEP / HVAC, 2nd Fix |
| CCAD TAG(SET) | 3 | Section 3 |
| CCAD TAG(SET) | BL | Blockwork |
| CCAD TAG(SET) | CA | Facade / Canyon Atrium Interior Glazing |
| CCAD TAG(SET) | CI | Client Documents |
| CCAD TAG(SET) | COM | Commissioning |
| CCAD TAG(SET) | CON | Concrete |
| CCAD TAG(SET) | CP | Key Dates - Car Park |
| CCAD TAG(SET) | CU | Key Dates- CUP |
| CCAD TAG(SET) | CW | Facade / CW Cascade Wall |
| CCAD TAG(SET) | CY | Facade / Courtyard |
| CCAD TAG(SET) | DE | Demolition |
| CCAD TAG(SET) | DF | Metal Door Frames |
| CCAD TAG(SET) | DR | Metal Doors |
| CCAD TAG(SET) | DT | Key Dates- D&T Building |
| CCAD TAG(SET) | EC | Facade / Gallery Entrance Canopy |
| CCAD TAG(SET) | ES | Escalators |
| CCAD TAG(SET) | ESS | MEP / Electronic Safety & Security |
| CCAD TAG(SET) | FC2 | Facade / C2 System |
| CCAD TAG(SET) | FC3 | Facade / C3 System |
| CCAD TAG(SET) | FC4 | Facade / C4 System |
| CCAD TAG(SET) | FC5 | Facade / C5 & C7 Systems |
| CCAD TAG(SET) | FDG | Facade / Diamond Glass System |
| CCAD TAG(SET) | FF | MEP / Plumbing, Final Fix |
| CCAD TAG(SET) | FF&E | FF & E |
| CCAD TAG(SET) | FG | Finishing |
| CCAD TAG(SET) | FGV | Facade / Granite Veneer |
| CCAD TAG(SET) | FM1 | Facade / M1 System |
| CCAD TAG(SET) | FM2 | Facade / M2 System |
| CCAD TAG(SET) | FP | Auto Folding Partitions |
| CCAD TAG(SET) | FS1 | Facade / S1 System |
| CCAD TAG(SET) | FS2 | Facade / S2 System |
| CCAD TAG(SET) | FSL | Facade / Louvers |
| CCAD TAG(SET) | FSY | Facade / Skylight |
| CCAD TAG(SET) | GA | Key Dates - Gallery Building |
| CCAD TAG(SET) | GF | Ceiling Gypsum Board Finish |
| CCAD TAG(SET) | GN | Key Dates - General |
| CCAD TAG(SET) | GY | Gypsum Board Partions |
| CCAD TAG(SET) | IC | Key Dates - ICU Building |
| CCAD TAG(SET) | IM | Ironmongery |
| CCAD TAG(SET) | IN | Inspections |
| CCAD TAG(SET) | L5 | Landscapitng at Roof Level 5 |
| CCAD TAG(SET) | MEL | MEP / Electrical |
| CCAD TAG(SET) | MELV | MEP / ELV |
| CCAD TAG(SET) | MFS | MEP / Fire Suppression |
| CCAD TAG(SET) | MHV | MEP / HVAC |
| CCAD TAG(SET) | MI | Contract Milestones |
| CCAD TAG(SET) | MPL | MEP / Plumbing |
| CCAD TAG(SET) | MU | Mock Up |
| CCAD TAG(SET) | PAR | Facade / Roof Parapet and Ceiling |
| CCAD TAG(SET) | PI | Minor Punch List Inspection |
| CCAD TAG(SET) | PSG | Facade / Perforated Steel Grille |
| CCAD TAG(SET) | PT | Key Dates - Patient Tower |
| CCAD TAG(SET) | RI | MEP / Pneumatic Conveying Lines Risers |
| CCAD TAG(SET) | SF | Facade / S2 System, Stone Facade |
| CCAD TAG(SET) | SG | Facade / Steel Grate Catwalk |
| CCAD TAG(SET) | SO | Facade / Storefront System |
| CCAD TAG(SET) | SP | Specialties |
| CCAD TAG(SET) | ST | Key Dates- Commencement |
| CCAD TAG(SET) | SW | Key Dates- Swing Wing |
| CCAD TAG(SET) | TE | Temporary Enclosure |
| CCAD TAG(SET) | VE | Facade / Vestibule |
| CCAD TAG(SET) | VER | Facade / VE ROOF System |
| CCAD TAG(SET) | WI | Wall Inspection |
| CCAD TAG(SET) | WW | Woodworks / Caseworks |
| CCAD WORK(SET) | AC | Accessories |
| CCAD WORK(SET) | BL | Block work |
| CCAD WORK(SET) | BP | Bathroom Pods |
| CCAD WORK(SET) | CE | Ceiling |
| CCAD WORK(SET) | CT | Concrete Structure |
| CCAD WORK(SET) | DM | Demolition |
| CCAD WORK(SET) | DO | Door |
| CCAD WORK(SET) | EK | Earthworks |
| CCAD WORK(SET) | EL | Lift & Escalator |
| CCAD WORK(SET) | EQ | Equipment |
| CCAD WORK(SET) | FA | Facade |
| CCAD WORK(SET) | FD | Fabrication & Delivery |
| CCAD WORK(SET) | FF | Floor Finish |
| CCAD WORK(SET) | FI | Finish |
| CCAD WORK(SET) | FU | Furnishing |
| CCAD WORK(SET) | IS | Issue IFC Drawings/EI/ Response (by Client) |
| CCAD WORK(SET) | LN | Land scaping |
| CCAD WORK(SET) | ME | MEP |
| CCAD WORK(SET) | MI | Milestones |
| CCAD WORK(SET) | MU | Mockup |
| CCAD WORK(SET) | PA | Painting |
| CCAD WORK(SET) | PI | Piling |
| CCAD WORK(SET) | PT | Partition |
| CCAD WORK(SET) | SA | Signage |
| CCAD WORK(SET) | SC | Snagging & Commissioning |
| CCAD WORK(SET) | ST | Steel Structure |
| CCAD WORK(SET) | SW | Metal / secondary steel work |
| CCAD WORK(SET) | TE | Temporary |
| CCAD WORK(SET) | WF | Wall Finish |
| CCAD WORK(SET) | WO | Wood work |
| CCAD WORK(SET) | WP | Waterproofing |
| CCAD WORK(SET) | XC | Special Construction |
| CCAD WORK(SET) | XW | Site Works |
| CCAD ZONE(SET) | 01 | #01 |
| CCAD ZONE(SET) | 02 | #02~06 |
| CCAD ZONE(SET) | 07 | #07~08 |
| CCAD ZONE(SET) | 09 | #09 |
| CCAD ZONE(SET) | 10 | #10~11 |
| CCAD ZONE(SET) | 12 | #12~13 |
| CCAD ZONE(SET) | 14 | #14~15 |
| CCAD ZONE(SET) | 16 | #16~17 |
| CCAD ZONE(SET) | 18 | #18~19 |
| CCAD ZONE(SET) | 1P | Landscaping- P1 Water Features |
| CCAD ZONE(SET) | 20 | #20~23 |
| CCAD ZONE(SET) | 24 | #24 |
| CCAD ZONE(SET) | 25 | #25 |
| CCAD ZONE(SET) | 26 | #26~27 |
| CCAD ZONE(SET) | 28 | #28~29 |
| CCAD ZONE(SET) | 30 | #30 |
| CCAD ZONE(SET) | 31 | #31 |
| CCAD ZONE(SET) | 32 | #32 |
| CCAD ZONE(SET) | 33 | #33 |
| CCAD ZONE(SET) | 34 | #34~35 |
| CCAD ZONE(SET) | 36 | #36~38 |
| CCAD ZONE(SET) | 39 | #39.40 |
| CCAD ZONE(SET) | 3P | Landscaping- P3 Water Feature |
| CCAD ZONE(SET) | 3W | Landscaping- P3 Promenade Green |
| CCAD ZONE(SET) | 41 | #41.42 |
| CCAD ZONE(SET) | 43 | #43~45 |
| CCAD ZONE(SET) | 46 | #46~48, 61 |
| CCAD ZONE(SET) | 49 | #49 |
| CCAD ZONE(SET) | 50 | #50~52 |
| CCAD ZONE(SET) | 53 | #53~58 |
| CCAD ZONE(SET) | 54 | #54 |
| CCAD ZONE(SET) | AB | Auditorium, Ballroom , TLT , Staging KIT |
| CCAD ZONE(SET) | AC | Artrium / Corridor |
| CCAD ZONE(SET) | AF | All Floor |
| CCAD ZONE(SET) | AL | Ambulatory Lounge |
| CCAD ZONE(SET) | AR | Canyon Artrium (From GF) + ST LNG |
| CCAD ZONE(SET) | BH | BOILER & HOT WATER PUMP ROOM - AP3W023 |
| CCAD ZONE(SET) | BM | BMU |
| CCAD ZONE(SET) | BR | BATTERY ROOM - AP3X007 |
| CCAD ZONE(SET) | CI | Client Issue (IFC/EI/Responses..) |
| CCAD ZONE(SET) | CL | Clinical Lab W/S |
| CCAD ZONE(SET) | CO | Common Zone |
| CCAD ZONE(SET) | CS | CORRIDOR & STAIRCASE |
| CCAD ZONE(SET) | CV | CV OR , PAT HOLD , PREP/RECV |
| CCAD ZONE(SET) | CW | COLD WATER PUMP ROOM & GENERATOR COOLING RADIATOR ROOM |
| CCAD ZONE(SET) | CZ | Controlled Zone |
| CCAD ZONE(SET) | DC | Demo Cooking,Pantry,Retail |
| CCAD ZONE(SET) | DO | LOADING DOCK |
| CCAD ZONE(SET) | DS | Drainage Service |
| CCAD ZONE(SET) | E1 | Exam- 1 |
| CCAD ZONE(SET) | E2 | Exam- 2 |
| CCAD ZONE(SET) | EN | Energisation |
| CCAD ZONE(SET) | ER | Elec Room |
| CCAD ZONE(SET) | ES07 | ES #07 |
| CCAD ZONE(SET) | ES09 | ES #09 |
| CCAD ZONE(SET) | ES11 | ES #11 |
| CCAD ZONE(SET) | ET | Main TR Server & Etisalat Room |
| CCAD ZONE(SET) | EY | EYE OR, PLASTIC OR, INDUCT, PREP/RECV |
| CCAD ZONE(SET) | F1 | Faculty Office |
| CCAD ZONE(SET) | F2 | Faculty Office-2 |
| CCAD ZONE(SET) | FP | BACK FLOW PREVENTION ROOM |
| CCAD ZONE(SET) | FR | FAN ROOM - AP3W021 |
| CCAD ZONE(SET) | FT | Fitness , LKR & TLT |
| CCAD ZONE(SET) | FW | Fire water tank / Grey water tank |
| CCAD ZONE(SET) | G1 | GEN OR, PAT HOLD, PREP/RECV |
| CCAD ZONE(SET) | G2 | GEN OR, PAT HOLD, PREP/RECV-1 |
| CCAD ZONE(SET) | GA | Landscaping- Emergency Parking Area |
| CCAD ZONE(SET) | GC | Landscaping- CUP area |
| CCAD ZONE(SET) | GE | Landscaping- Clinic Entrance Area |
| CCAD ZONE(SET) | GEN | GENERAL |
| CCAD ZONE(SET) | GF | UNDER GROUND FUEL OIL SYSTEM |
| CCAD ZONE(SET) | GN | Landscaping- North Parking Area (GN) |
| CCAD ZONE(SET) | GP | Landscaping- Cube Pool & Reflecting Pool |
| CCAD ZONE(SET) | GS | Landscaping- Great Lawn Area |
| CCAD ZONE(SET) | GZ | General (PC119) |
| CCAD ZONE(SET) | HC | Hoist Car Facility |
| CCAD ZONE(SET) | HE | HEAT EXCH. CHW PUMP RM |
| CCAD ZONE(SET) | HP | HELI PORT |
| CCAD ZONE(SET) | HV | HV ROOM - AP3W009 |
| CCAD ZONE(SET) | KI | Kitchen, Employee Servery & Dinning |
| CCAD ZONE(SET) | KS | Kitchen / Storage / Linen |
| CCAD ZONE(SET) | LA | CATH LAB, EP LAB, PREP-RECV |
| CCAD ZONE(SET) | LD | Loading Dock & Tunnel |
| CCAD ZONE(SET) | LO | Ster Proc / Toilet & Locker Rm |
| CCAD ZONE(SET) | LS | Landscaping |
| CCAD ZONE(SET) | LT | Leave Out |
| CCAD ZONE(SET) | LV | LV RM |
| CCAD ZONE(SET) | LW | Laser,Wave,Intralase |
| CCAD ZONE(SET) | M1 | Mech Room |
| CCAD ZONE(SET) | M2 | Mech Room-2 |
| CCAD ZONE(SET) | ME | MAIN HV ELECTRICAL ROOM - AP3W010 |
| CCAD ZONE(SET) | MF | MECHANICAL FAN ROOM |
| CCAD ZONE(SET) | MG | MEDICAL GAS PLANT ROOM - AP3Y020 |
| CCAD ZONE(SET) | MI | Milestones |
| CCAD ZONE(SET) | ML | MEZZANINE LEVEL WORKS |
| CCAD ZONE(SET) | MR | MRI, RAD, NUC MED & CT |
| CCAD ZONE(SET) | MT | MAIN TRANSFORMER ROOM (3NOS.) |
| CCAD ZONE(SET) | MU | Mockup |
| CCAD ZONE(SET) | NE | NEURO OR , Pat Hold , PREP/RECV |
| CCAD ZONE(SET) | OF | PAT RM-PRE ADMIT, Office, ST LKR & TLT |
| CCAD ZONE(SET) | OS | OFFICES / SHOPS & TOILETS |
| CCAD ZONE(SET) | P1 | PAT RM-1 |
| CCAD ZONE(SET) | P2 | PAT RM-2 |
| CCAD ZONE(SET) | PA | Public area |
| CCAD ZONE(SET) | PH | Pharmacy W/S |
| CCAD ZONE(SET) | PK | Parking Area |
| CCAD ZONE(SET) | PL | Platform Lift |
| CCAD ZONE(SET) | PR | Phlebotomy, Radiograpy |
| CCAD ZONE(SET) | PS | PARALLING SWITCH GEAR ROOM 1,2 & 3 |
| CCAD ZONE(SET) | PU | Pick Up sales STN/AMB Resist/TLT |
| CCAD ZONE(SET) | R1 | Royal PAT RM |
| CCAD ZONE(SET) | R2 | Royal PAT RM-2 |
| CCAD ZONE(SET) | RC | RC WALL |
| CCAD ZONE(SET) | RD | Recept Desk,Hall Way |
| CCAD ZONE(SET) | RF | Roof |
| CCAD ZONE(SET) | RG | Recept ,Gen Wait |
| CCAD ZONE(SET) | RK | Royal Kitchen |
| CCAD ZONE(SET) | S1 | Zone S1 |
| CCAD ZONE(SET) | S2 | Zone S2 |
| CCAD ZONE(SET) | S3 | Zone S3 |
| CCAD ZONE(SET) | S4 | Zone S4 |
| CCAD ZONE(SET) | S5 | Zone S5 |
| CCAD ZONE(SET) | S6 | Zone S6 |
| CCAD ZONE(SET) | S7 | Zone S7 |
| CCAD ZONE(SET) | S8 | Zone S8 |
| CCAD ZONE(SET) | S9 | Zone S9 |
| CCAD ZONE(SET) | SA | Zone SA |
| CCAD ZONE(SET) | SB | Zone SB |
| CCAD ZONE(SET) | SC | Zone SC |
| CCAD ZONE(SET) | SD | Zone SD |
| CCAD ZONE(SET) | SE | Zone SE |
| CCAD ZONE(SET) | SF | Staff Trainning Center |
| CCAD ZONE(SET) | SG | HV SWITCH GEAR ROOM |
| CCAD ZONE(SET) | SL | SLP SUITE, ON-CALL SUITE, CONF, LNG |
| CCAD ZONE(SET) | SO | Section |
| CCAD ZONE(SET) | SP | Solar Panel |
| CCAD ZONE(SET) | SR | Storage /Crawl space |
| CCAD ZONE(SET) | SX | Zone S10 |
| CCAD ZONE(SET) | SY | Zone S11 |
| CCAD ZONE(SET) | TA | TRANSFORMER ROOM - AP3W008 |
| CCAD ZONE(SET) | TC | Tower Crane Facility |
| CCAD ZONE(SET) | TF | Treat, Observ, Fast Track |
| CCAD ZONE(SET) | TH | TR Room Hand Over |
| CCAD ZONE(SET) | TO | Toilet |
| CCAD ZONE(SET) | TR | TR Room |
| CCAD ZONE(SET) | TS | T & C & SNAGGING |
| CCAD ZONE(SET) | UR | PREP/RECV , ENDO, UROL PROC |
| CCAD ZONE(SET) | VT | Vertical Zone |
| CCAD ZONE(SET) | WA | Wild Air |
| CCAD ZONE(SET) | WS | Water Supply |
| CCADACF (SET) | ACF00 | General |
| CCADACF (SET) | ACF01 | Preliminaries/Design |
| CCADACF (SET) | ACF02 | Substructure |
| CCADACF (SET) | ACF03 | Superstructure |
| CCADACF (SET) | ACF04 | MEP 1st Fix |
| CCADACF (SET) | ACF05 | Envelope |
| CCADACF (SET) | ACF06 | Finishes |
| CCADACF (SET) | ACF07 | MEP 2nd Fix |
| CCADACF (SET) | ACF08 | FFE, IT |
| CCADACF (SET) | ACF09 | Infrastructures, Roof Features |
| CCADACF (SET) | ACF10 | Externals |
| CCADACF (SET) | ACF11 | Lifts and Escalators |
| CCADACF (SET) | ACFVO | Variation Orders/Claims |
| FSP CODE | PA-1 | PA-1 ZONE |
| FSP CODE | PA-2 | PA-2 ZONE |
| FSP CODE | PB-1 | PB-1 ZONE |
| FSP CODE | PB-2 | PB-2 ZONE |
| FSP CODE | PB-3 | PB-3 ZONE |
| FSP CODE | PC-1 | PC-1 ZONE |
| FSP CODE | PC-2 | PC-2 ZONE |
| FSP CODE | PD-1 | PD-1 ZONE |
| FSP CODE | PD-2 | PD-2 ZONE |
| FSP CODE | PE-1 | PE-1 ZONE |
| FSP CODE | PE-2 | PE-2 ZONE |
| FSP CODE | PE-3 | PE-3 ZONE |
| Grids | 10TH | L10 - L14 (GRIDS 17 TO 20 & Y TO AM) SEQ-12A |
| Grids | 22ND | L22 ROOF (GRIDS 18 TO 19 & AB TO AK) SEQ-12D |
| Grids | 5TH | L5 - L8LR (GRIDS 17 TO 20 & AG.5 TO AL) SEQ-8B |
| Grids | 6T | L5 - L8LR (GRID 17 TO 20 & AA-AD) SEQ-8A |
| Grids | P03 | P3 - L5 (GRIDS 12.6 TO 17 & Z TO AL) SEQ-3 |
| Grids | P12 | P3 - L3 (GRIDS 6 TO 8 & Z TO AR) SEQ-6 |
| Grids | TRUS | L8 - L10 (GRIDS 17 TO 20 & Y TO AM) SEQ-10 |
| Levels | 10FLR | Level 10 / +164.50 |
| Levels | 11FLR | Level 11 / +169.50 |
| Levels | 1FLR | Level 1 / +106.00 |
| Levels | 6FLR | Level 6 / +135.00 |
| Levels | GFLR | GF - Ground Floor + 100.00 |
| Levels | POD2 | Podium 2 / 90.00 |
| Levels | ROOF | Level 22 Floor Roof / +224.50 |
| Phase | Z2 | CONSTRUCTION |
| Process | EREC | Erection at site |
| Process | FIRE | Fireproofing works |
| Process | MDEC | Metal decking |
| R3 Finish | R3 | R3 Package 3 |
| Weight & Nos | A10 | TOTAL WEIGHT = 2146MT, TOTAL QTY = 1110NOS |
| Weight & Nos | A12A | TOTAL WEIGHT = 1766.4MT, TOTAL QTY = 2321NOS |
| Weight & Nos | A12D | TOTAL WEIGHT = 83.4MT, TOTAL QTY = 224NOS |
| Weight & Nos | A3 | TOTAL WEIGHT = 3978MT, TOTAL QTY = 2823NOS |
| Weight & Nos | A6 | TOTAL WEIGHT = 1152.1MT, TOTAL QTY = 1321NOS |
| Weight & Nos | A8A | TOTAL WEIGHT = 1221MT, TOTAL QTY = 778NOS |
| Weight & Nos | A8B | TOTAL WEIGHT = 1198MT, TOTAL QTY = 725NOS |
